# HBTF - Package 2 (Main Contract Works)

Schedule from Primavera P6, 2012-06-04 to 2014-07-23, data date 2012-05-10, costs in USD.
Must finish by 2014-07-24

## Calendars

- HBTF # 1: Mon-Thu 08:00-16:00; Fri off; Sat-Sun 08:00-16:00. Exceptions (off unless hours are given): 2012-06-17, 2012-08-18 to 2012-08-21, 2012-10-25, 2012-10-27 to 2012-10-29, 2012-11-15, 2013-01-01, 2013-01-24, 2013-05-01, 2013-05-25, 2013-08-08, 2013-08-10 to 2013-08-11, 2013-10-15 to 2013-10-17, 2013-10-19, 2013-11-05, 2013-12-25, 2014-01-01, 2014-01-14, 2014-05-01, 2014-05-25, 2014-05-27.
- HCRA - Global: Mon-Fri 08:00-12:00, 13:00-17:00; Sat-Sun off.
- HCRA - 1 - Normal Calendar: Mon-Thu 08:00-12:00, 13:00-17:00; Fri off; Sat-Sun 08:00-12:00, 13:00-17:00. Exceptions (off unless hours are given): 2012-12-03, 2013-01-01, 2013-12-02, 2014-01-01.
- HBTF # 2 - all days: Mon-Sun 08:00-12:00, 13:00-17:00.

## Resources

| Resource | Group | Rate |
| --- | --- | --- |
| Mixer | equipment | 5 |
| Concrete Pump | equipment | 8 |
| Retaining Walls shutter | material |  |
| EFFORT | equipment | 30 |
| Electrical Skilled Labours | labor | 3.75 |
| Mechnical Skilled Labours | labor | 3.75 |

## Schedule

| ID | WBS | Activity | Duration | Start | Finish | Predecessors | Total float | Free float | Constraint | Bill No. | Responsibility | Phase Code | Trade |
| --- | --- | --- | --- | --- | --- | --- | --- | --- | --- | --- | --- | --- | --- |
|  | 1 | **Project Milestone** |  | 2012-06-04 | 2014-07-23 |  |  |  |  |  |  |  |  |
| H0000 |  | Start Date | 1d | 2012-06-04 | 2012-06-04 |  | 0d |  |  |  |  |  |  |
| H0010 |  | Finish Date | 1d | 2014-07-23 | 2014-07-23 | HCFWB400001, HCFWB300011, HCFWB20001, HCFWB10001, HCFWGF0001, HCFWF10001, HCFWF20001, HCFWF40001, HCFWF50001, HCFWF60001, HCFWF70001, HCFWF30001, HCEWAFZ5070, HCMEB40000, HCMEB30000, HCMEB20000, HCMEB10000, HCMEGF0000, HCMEF10000, HCMEF20000, HCMEF30000, HCMEF40000, HCMEF50000, HCMEF60000, HCMEF70000, HCMERF000000, HCFWAFAZ010, HCFWAFAZ000, HHAWAFAZ0020, HCMEPSRS030 | 0d |  |  |  |  |  |  |
|  | 2 | **Mobilzation** |  | 2012-06-05 | 2014-06-05 |  |  |  |  |  |  |  |  |
| HMMOAZ030 |  | Prepare site office | 14d | 2012-06-05 | 2012-06-21 | H0000 | 0d |  |  | B0 | MC | P |  |
| HMMOAZ040 |  | Prepare stores and workshops | 14d | 2012-06-05 | 2012-06-21 | H0000 | 37d | 0d |  | B0 | MC | P |  |
| HMMOAZ000 |  | Erect Tower crane # 1 | 12d | 2012-06-07 | 2012-06-21 | H0000, HMMOAZ040 FF | 37d | 7d |  | B0 | MC | P |  |
| HMMOAZ010 |  | Erect Tower crane # 2 | 20d | 2012-07-01 | 2012-07-23 | H0000, HMMOAZ000, HCSWSSZ1050 SS | 30d | 28d |  | B0 | MC | P |  |
| HMMOAZ020 |  | Erect Tower crane # 3 | 19d | 2012-07-28 | 2012-08-22 | H0000, HCSWSSZ3030 FF, HEMSMCI0010 FF, HEMSMCI0020 FF, HCSWSSZ1010 SF+1d | 14d | 12d |  | B0 | MC | P |  |
| HMMOAZ070 |  | Removal of Tower crane # 3 | 14d | 2013-08-07 | 2013-08-26 | HMMOAZ020, HCSW7FZ3080 | 0d |  |  | B0 | MC | P |  |
| HMMOAZ060 |  | Removal of Tower crane # 2 | 14d | 2014-02-03 | 2014-02-18 | HMMOAZ010, HCEWAFZ5060 | 13d | 0d |  | B0 | MC | P |  |
| HMMOAZ050 |  | Removal of Tower crane # 1 | 18d | 2014-05-14 | 2014-06-05 | HMMOAZ000 | 0d |  | as late as possible | B0 | MC | P |  |
|  | 3 | **Engineering** |  | 2012-06-05 | 2013-10-02 |  |  |  |  |  |  |  |  |
|  | 4 | **Required Data** |  | 2012-06-05 | 2012-06-30 |  |  |  |  |  |  |  |  |
| HCERDA000 |  | Receiving IFC drawings from consultant | 21d | 2012-06-05 | 2012-06-30 | H0000 | 24d | 22d |  |  |  |  |  |
| HCERDA10 |  | Receiving load criteria + structural element forces from consultant | 21d | 2012-06-05 | 2012-06-30 | H0000 | 11d | 3d |  |  |  |  |  |
|  | 3 | **Subcontractors** |  | 2012-06-05 | 2012-08-08 |  |  |  |  |  |  |  |  |
|  | 1 | **Nomination** |  | 2012-06-05 | 2012-07-23 |  |  |  |  |  |  |  |  |
| HCESCN010 |  | s/c nomination: Steel structure subcontractor | 10d | 2012-06-05 | 2012-06-16 | H0000 | 0d |  |  |  | SS | E |  |
| HCESCN020 |  | s/c nomination: Aluminum subcontractor | 10d | 2012-06-05 | 2012-06-16 | H0000 | 43d | 0d |  |  | ALU | E |  |
| HCESCN000 |  | s/c nomination: MEP subcontractor | 29d | 2012-06-20 | 2012-07-23 | H0000, HMMOAZ030 FS-2d | 0d |  |  |  | MEP | E |  |
| HCESCN030 |  | s/c nomination: Convying system Subcontractor | 20d | 2012-06-23 | 2012-07-15 | H0000, HMMOAZ030 | 86d | 0d |  |  | MEP | E | MEP |
|  | 2 | **Approval** |  | 2012-06-18 | 2012-08-08 |  |  |  |  |  |  |  |  |
| HCESCA010 |  | s/c approval: Steel structure subcontractor | 14d | 2012-06-18 | 2012-07-03 | HCESCN010 | 0d |  |  |  | SS | E |  |
| HCESCA020 |  | s/c approval: Aluminum subcontractor | 14d | 2012-06-18 | 2012-07-03 | HCESCN020 | 43d | 0d |  |  | ALU | E |  |
| HCESCA030 |  | s/c approval: Conveying system Subcontractor | 14d | 2012-07-16 | 2012-07-31 | HCESCN030 | 86d | 0d |  |  | MEP | E | MEP |
| HCESCA000 |  | s/c approval: MEP subcontractor | 14d | 2012-07-24 | 2012-08-08 | HCESCN000 | 0d |  |  |  | MEP | E |  |

| ID | WBS | Activity | Duration | Start | Finish | Predecessors | Total float | Free float | Responsibility | Phase Code |
| --- | --- | --- | --- | --- | --- | --- | --- | --- | --- | --- |
|  | 1 | **Shopdrawings** |  | 2012-06-05 | 2013-10-02 |  |  |  |  |  |
|  | 1 | **Submission** |  | 2012-06-05 | 2013-09-16 |  |  |  |  |  |
|  | 1 | **Civil** |  | 2012-06-05 | 2012-11-10 |  |  |  |  |  |
| HESDSCI0000 |  | SD submission: Excavation Plans and sections Z1- Z4 | 2d | 2012-06-05 | 2012-06-06 | H0000 | 1d | 0d | MC | E |
| HESDSCI0010 |  | SD submission: Reinforced Concrete Shopdrawings | 125d | 2012-06-07 | 2012-11-10 | HESDSCI0000 | 77d | 0d |  |  |
|  | 2 | **Finishing** |  | 2012-11-07 | 2013-05-05 |  |  |  |  |  |
| HCSDSFW010 |  | SD submission: Floor Finishing Plans & Details | 150d | 2012-11-07 | 2013-05-05 | HESDSSS0000 | 60d | 0d |  |  |
| HCSDSFW020 |  | SD submission: Wall Finishing Plans & Details | 150d | 2012-11-07 | 2013-05-05 | HESDSSS0000 | 7d | 0d |  |  |
| HCSDSFW030 |  | SD submission: Ceiling Finishing Plans & Details | 150d | 2012-11-07 | 2013-05-05 | HESDSSS0000 | 26d | 0d |  |  |
| HCSDSFW040 |  | SD submission: Special Interiors | 150d | 2012-11-07 | 2013-05-05 | HCSDSFW020 SS, HESDSSS0000 | 71d | 0d |  |  |
|  | 4 | **MEP All Works** |  | 2012-08-09 | 2013-09-16 |  |  |  |  |  |
| HCSDSMEP010 |  | SD submission: MEP Plans & Details | 330d | 2012-08-09 | 2013-09-16 | HCESCA000 | 41d | 0d |  |  |
| HCSDSMEP020 |  | SD submission: Spicial Systems Plans & Details with coordination | 330d | 2012-08-09 | 2013-09-16 | HCESCA000 | 41d | 0d |  |  |
|  | 3 | **Steel Strucuture** |  | 2012-07-04 | 2012-11-06 |  |  |  |  |  |
| HESDSSS0000 |  | SD submission: Steel Strucutre shopdrawings | 100d | 2012-07-04 | 2012-11-06 | HCESCA010 | 0d |  | SS | E |
|  | 2 | **Approval** |  | 2012-06-07 | 2013-10-02 |  |  |  |  |  |
|  | 1 | **Civil** |  | 2012-06-07 | 2012-11-27 |  |  |  |  |  |
| HESDACI0000 |  | SD approval: Excavation Plans and sections | 2d | 2012-06-07 | 2012-06-09 | HESDSCI0000 | 1d | 0d | MC | E |
| HESDACI0010 |  | SD approval: Reinforced Concrete Shopdrawings | 125d | 2012-06-25 | 2012-11-27 | HESDSCI0010 SS+14d, HESDSCI0010 FF+14d | 77d | 41d |  |  |
|  | 2 | **Finishing** |  | 2012-11-25 | 2013-05-21 |  |  |  |  |  |
| HCSDAFW010 |  | SD approval: Floor Finishing Plans & Details | 150d | 2012-11-25 | 2013-05-21 | HCSDSFW010 SS+14d, HCSDSFW010 FF+14d | 60d | 50d |  |  |
| HCSDAFW020 |  | SD approval: Wall Finishing Plans & Details | 150d | 2012-11-25 | 2013-05-21 | HCSDSFW020 SS+14d, HCSDSFW020 FF+14d | 49d | 42d |  |  |
| HCSDAFW030 |  | SD approval: Ceiling Finishing Plans & Details | 150d | 2012-11-25 | 2013-05-21 | HCSDSFW030 SS+14d, HCSDSFW030 FF+14d | 26d | 0d |  |  |
| HCSDAFW040 |  | SD approval: Special Interiors | 150d | 2012-11-25 | 2013-05-21 | HCSDSFW040 SS+14d, HCSDSFW040 FF+14d | 71d | 0d |  |  |

| ID | WBS | Activity | Duration | Start | Finish | Predecessors | Total float | Free float | Constraint | Responsibility | Phase Code | Trade |
| --- | --- | --- | --- | --- | --- | --- | --- | --- | --- | --- | --- | --- |
|  | 4 | **MEP All Works** |  | 2012-08-30 | 2013-10-02 |  |  |  |  |  |  |  |
| HCSDAMEP010 |  | SD approval: MEP Plans & Details | 330d | 2012-08-30 | 2013-10-02 | HCSDSMEP010 SS+14d, HCSDSMEP010 FF+14d | 41d | 0d |  |  |  |  |
| HCSDAMEP020 |  | SD approval: Spicial Systems Plans & Details with coordination | 330d | 2012-08-30 | 2013-10-02 | HCSDSMEP020 SS+14d, HCSDSMEP020 FF+14d | 41d | 0d |  |  |  |  |
|  | 3 | **Steel Strucuture** |  | 2012-07-21 | 2012-11-24 |  |  |  |  |  |  |  |
| HESDASS0000 |  | SD approval: Steel Strucutre shopdrawings | 100d | 2012-07-21 | 2012-11-24 | HESDSSS0000 SS+14d, HESDSSS0000 FF+14d | 0d |  |  | SS | E |  |
|  | 2 | **Material Submittals** |  | 2012-06-05 | 2013-04-21 |  |  |  |  |  |  |  |
|  | 1 | **Submission** |  | 2012-06-05 | 2013-04-04 |  |  |  |  |  |  |  |
|  | 1 | **Civil Materials** |  | 2012-06-05 | 2012-07-17 |  |  |  |  |  |  |  |
| HEMSSCI0000 |  | MS submission: Concrete mix design | 7d | 2012-06-05 | 2012-06-12 | H0000 | 2d | 0d |  | MC |  |  |
| HEMSSCI0010 |  | MS submission: Steel Rebar | 4d | 2012-06-05 | 2012-06-09 | HEMSSCI0000 SS | 7d | 0d |  |  |  |  |
| HEMSSCI0020 |  | MS submission: water proofing Material | 4d | 2012-06-05 | 2012-06-09 | H0000 | 3d | 0d |  |  |  |  |
| HEMSSCI0030 |  | MS submission: Wire Mesh | 12d | 2012-06-10 | 2012-06-24 | HEMSSCI0010 | 21d | 0d |  |  |  |  |
| HEMSSCI0040 |  | MS submission: Formwork System | 20d | 2012-06-25 | 2012-07-17 | HEMSSCI0030 | 21d | 0d |  |  |  |  |
|  | 2 | **Finishing Material** |  | 2012-06-05 | 2013-03-13 |  |  |  |  |  |  |  |
| HEMSSFI0560 |  | MS submission: Access flooring system | 14d | 2012-06-05 | 2012-06-21 | H0000 | 411d | 0d |  |  |  |  |
| HEMSSFI0550 |  | MS submission: Wooden doors | 30d | 2012-10-17 | 2012-11-26 | H0000 | 65d | 0d | as late as possible | MC | E | FI |
| HEMSSFI0270 |  | MS submission: Toilet & corian vanity tops | 14d | 2012-11-03 | 2012-11-19 | H0000 FS+120d | 221d | 0d |  | MC | E | FI |
| HEMSSFI0460 |  | MS submission: Glass wall tiles | 12d | 2012-11-07 | 2012-11-21 | H0000 FS+100d, HCSDSFW020 SS | 7d | 0d |  | MC | E | FI |
| HEMSSFI0080 |  | MS submission:Ceramic Tiles | 14d | 2012-11-22 | 2012-12-08 | HEMSSFI0460 | 74d | 0d |  |  |  |  |
| HEMSSFI0150 |  | MS submission: Acoustical tile ceilings | 20d | 2012-12-03 | 2012-12-25 | H0000 FS+145d, HCSDSFW030 SS | 75d | 0d |  | MC | E | FI |
| HEMSSFI0160 |  | MS submission: Gybsum board ceilings | 30d | 2012-12-03 | 2013-01-07 | H0000, HEMSSFI0150 SS | 75d | 0d |  | MC | E | FI |
| HEMSSFI0170 |  | MS submission: Basalt stone flooring | 12d | 2012-12-09 | 2012-12-22 | H0000 FS+150d | 10d | 0d |  | MC | E | FI |
| HEMSSFI0180 |  | MS submission: Quarry tiles flooring | 12d | 2012-12-23 | 2013-01-06 | H0000, HEMSSFI0170 | 10d | 0d |  | MC | E | FI |
| HEMSSFI0190 |  | MS submission: Resilient flooring tiles | 12d | 2013-01-07 | 2013-01-20 | H0000, HEMSSFI0180 | 10d | 0d |  | MC | E | FI |
| HEMSSFI0220 |  | MS submission: Spicial Metal Ceiling | 20d | 2013-01-08 | 2013-01-31 | HEMSSFI0160, H0000 | 75d | 0d |  |  |  |  |
| HEMSSFI0320 |  | MS submission: Metal Works | 14d | 2013-01-14 | 2013-01-30 | H0000 FS+180d | 65d | 0d |  | MC | E | FI |
| HEMSSFI0200 |  | MS submission: Terrazzo flooring | 12d | 2013-01-21 | 2013-02-04 | H0000, HEMSSFI0190, HCSDSFW010 SS | 10d | 0d |  | MC | E | FI |
| HEMSSFI0210 |  | MS submission:Carpet tiles | 28d | 2013-01-21 | 2013-02-23 | H0000, HEMSSFI0200 SS | 10d | 0d |  | MC | E | FI |
| HEMSSFI0070 |  | MS submission:Steel doors and frames | 30d | 2013-02-07 | 2013-03-13 | H0000 FS+200d | 90d | 0d |  | MC | E | FI |

| ID | WBS | Activity | Duration | Start | Finish | Predecessors | Total float | Free float | Responsibility | Phase Code | Trade |
| --- | --- | --- | --- | --- | --- | --- | --- | --- | --- | --- | --- |
|  | 3 | **MEP Materials** |  | 2012-06-20 | 2013-04-04 |  |  |  |  |  |  |
| HEMSSME1230 |  | MS submission: Mech 1st fix items | 52d | 2012-06-20 | 2012-08-23 | HCESCN000 SS | 39d | 0d |  |  |  |
| HEMSSME1240 |  | MS submission: Elec 1st fix items | 52d | 2012-06-20 | 2012-08-23 | HCESCN000 SS | 39d | 0d |  |  |  |
| HEMSSME1310 |  | MS submission: Electrical Boards | 24d | 2012-09-06 | 2012-10-03 | HCESCA000 FS+20d | 46d | 0d | MEP | E | MEP |
| HEMSSME1200 |  | MS submission: Stand by Generator | 30d | 2012-10-04 | 2012-11-12 | HEMSSME1310 | 152d | 0d |  |  |  |
| HEMSSME1210 |  | MS submission: Chillers | 60d | 2012-10-16 | 2012-12-30 | HCESCA000, HCSDAMEP020 SS+40d | 76d | 0d |  |  |  |
| HEMSSME1450 |  | MS submission: Spicial MEP Systems & Equipments | 90d | 2012-10-22 | 2013-02-11 | HCSDAMEP010 SS+45d, HCSDAMEP020 SS+45d | 41d | 0d |  |  |  |
| HEMSSME1130 |  | MS submission: Ducts | 30d | 2012-11-08 | 2012-12-13 | HCESCA000 FS+70d | 15d | 0d | MEP | E | MEP |
| HEMSSME1300 |  | MS submission: Cable Trays | 14d | 2012-11-08 | 2012-11-25 | HCESCA000 FS+70d | 0d |  | MEP | E | MEP |
| HEMSSME1440 |  | MS submission: Wiring | 14d | 2012-12-09 | 2012-12-24 | HCESCA000 FS+95d | 31d | 0d | MEP | E | MEP |
| HEMSSME1050 |  | MS submission: Sprinklers | 14d | 2012-12-15 | 2012-12-30 | HCESCA000 FS+100d | 38d | 0d | MEP | E | MEP |
| HEMSSME1290 |  | MS submission: Cables | 10d | 2012-12-15 | 2012-12-25 | HCESCA000 FS+100d | 6d | 0d | MEP | E | MEP |
| HEMSSME1180 |  | MS submission: Windows Washing Machine | 45d | 2012-12-19 | 2013-02-11 | HCESCA000, HEMSSME1450 SS+45d | 76d | 0d |  |  |  |
| HEMSSME1220 |  | MS submission: Boiler | 30d | 2012-12-31 | 2013-02-05 | HEMSSME1210 | 132d | 0d |  |  |  |
| HEMSSME1160 |  | MS submission: Diffusers | 14d | 2013-01-08 | 2013-01-23 | HCESCA000 FS+120d | 0d |  | MEP | E | MEP |
| HEMSSME1190 |  | MS submission: Parking Control Equipment | 45d | 2013-02-12 | 2013-04-04 | HEMSSME1180 | 76d | 0d |  |  |  |
| HEMSSME1170 |  | MS submission: Grills | 14d | 2013-02-13 | 2013-02-28 | HCESCA000 FS+150d | 15d | 0d | MEP | E | MEP |
|  | 4 | **Steel Structure Materials** |  | 2012-07-04 | 2012-08-13 |  |  |  |  |  |  |
| HEMSSSS0000 |  | MS submission: Structural steel | 35d | 2012-07-04 | 2012-08-13 | HCESCA010 | 8d | 0d | SS | E |  |
| HEMSSSS0010 |  | MS submission: Metal deck and fire proofing | 35d | 2012-07-04 | 2012-08-13 | HCESCA010 | 8d | 0d | SS | E |  |
| HEMSSSS0020 |  | Design Submittal | 21d | 2012-07-04 | 2012-07-28 | HCERDA10, HCESCA010 | 8d | 0d |  |  |  |
|  | 5 | **Aluminum Materials** |  | 2012-07-04 | 2013-01-17 |  |  |  |  |  |  |
| HEMSSAL0010 |  | MS submission: Curtain walls | 53d | 2012-07-04 | 2012-09-08 | HCESCA020 | 43d | 0d | ALU | E | FI |
| HEMSSAL0080 |  | MS submission: Design | 45d | 2012-07-04 | 2012-08-29 | HCESCA020 | 51d | 0d |  |  |  |
| HEMSSAL0090 |  | MS submission: Aluminum Doors | 15d | 2012-07-04 | 2012-07-21 | HCESCA020 | 472d | 0d |  |  |  |
| HEMSSAL0020 |  | MS submission: Handrails & Railling | 30d | 2012-08-04 | 2012-09-11 | HCESCA020 FS+26d | 43d | 0d | ALU | E | FI |
| HEMSSAL0030 |  | MS submission: Sky lights | 60d | 2012-08-04 | 2012-10-16 | HCESCA020 FS+26d | 130d | 0d | ALU | E | FI |
| HEMSSAL0060 |  | MS submission: Glass panels | 80d | 2012-08-14 | 2012-11-25 | HCESCA020 FS+35d | 81d | 0d | ALU | E | FI |
| HEMSSAL0000 |  | MS submission: Aluminum louvers | 80d | 2012-08-25 | 2012-12-01 | HCESCA020 FS+40d | 76d | 0d | ALU | E | FI |
| HEMSSAL0070 |  | MS submission: Storefront tension cable system | 40d | 2012-09-29 | 2012-11-19 | HCESCA020 FS+70d | 46d | 0d | ALU | E | FI |
| HEMSSAL0050 |  | MS submission: Revolving entrance doors | 80d | 2012-10-10 | 2013-01-17 | HCESCA020 FS+80d | 56d | 0d | ALU | E | FI |

| ID | WBS | Activity | Duration | Start | Finish | Predecessors | Total float | Free float | Constraint | Responsibility | Phase Code | Trade |
| --- | --- | --- | --- | --- | --- | --- | --- | --- | --- | --- | --- | --- |
|  | 2 | **Approval** |  | 2012-06-10 | 2013-04-21 |  |  |  |  |  |  |  |
|  | 1 | **Civil Materials** |  | 2012-06-10 | 2012-07-24 |  |  |  |  |  |  |  |
| HEMSMCI0010 |  | MS approval: Steel Rebar | 7d | 2012-06-10 | 2012-06-18 | HEMSSCI0010 | 7d | 5d |  |  |  |  |
| HEMSMCI0020 |  | MS approval: Water proofing Materials | 4d | 2012-06-10 | 2012-06-13 | HEMSSCI0020 | 3d | 1d |  |  |  |  |
| HEMSMCI0000 |  | MS approval: Concrete mix design | 14d | 2012-06-13 | 2012-06-30 | HEMSSCI0000 | 2d | 0d |  | MC | E |  |
| HEMSMCI0030 |  | MS approval: Wire Mesh | 4d | 2012-06-25 | 2012-06-28 | HEMSSCI0030 | 52d | 49d |  |  |  |  |
| HEMSMCI0040 |  | MS approval: Formwork system | 20d | 2012-07-02 | 2012-07-24 | HEMSSCI0040 SS+6d, HEMSSCI0040 FF+6d | 21d | 19d |  |  |  |  |
|  | 2 | **Finishing Material** |  | 2012-06-23 | 2013-04-17 |  |  |  |  |  |  |  |
| HEMSSFI560 |  | MS Approval: Access flooring system | 14d | 2012-06-23 | 2012-07-08 | HEMSSFI0560 | 411d | 0d |  |  |  |  |
| HEMSAFI0550 |  | MS approval: Wooden doors | 30d | 2012-11-07 | 2012-12-12 | HEMSSFI0550 SS+14d, HEMSSFI0550 FF+14d | 65d | 0d | as late as possible | MC | E | FI |
| HEMSAFI0270 |  | MS approval: Toilet & corian vanity tops | 14d | 2012-11-20 | 2012-12-05 | HEMSSFI0270 | 221d | 60d |  | MC | E | FI |
| HEMSAFI0460 |  | MS approval: Glass wall tiles | 14d | 2012-11-22 | 2012-12-08 | HEMSSFI0460 | 7d | 0d |  | MC | E | FI |
| HEMSAFI0080 |  | MS approval: Ceramic Tiles | 14d | 2012-12-09 | 2012-12-24 | HEMSSFI0080 | 74d | 64d |  |  |  |  |
| HEMSAFI0170 |  | MS approval: Basalt stone flooring | 12d | 2012-12-23 | 2013-01-06 | HEMSSFI0170 | 466d |  |  | MC | E | FI |
| HEMSAFI0150 |  | MS approval: Acoustical tile ceilings | 14d | 2012-12-26 | 2013-01-12 | HEMSSFI0150 | 461d |  |  | MC | E | FI |
| HEMSAFI0180 |  | MS approval: Quarry tiles flooring | 14d | 2013-01-07 | 2013-01-22 | HEMSSFI0180 | 452d |  |  | MC | E | FI |
| HEMSAFI0160 |  | MS approval: Gybsum board ceilings | 14d | 2013-01-08 | 2013-01-23 | HEMSSFI0160 | 95d | 69d |  | MC | E | FI |
| HEMSAFI0190 |  | MS approval: Resilient flooring tiles | 14d | 2013-01-21 | 2013-02-06 | HEMSSFI0190 | 440d |  |  | MC | E | FI |
| HEMSAFI0320 |  | MS approval:Metal works | 30d | 2013-01-31 | 2013-03-06 | HEMSSFI0320 | 65d | 0d |  | MC | E | FI |
| HEMSAFI0220 |  | MS approval: Spicial Metal ceiling | 14d | 2013-02-02 | 2013-02-17 | HEMSSFI0220 | 75d | 49d |  |  |  |  |
| HEMSAFI0200 |  | MS approval: Terrazzo flooring | 14d | 2013-02-05 | 2013-02-20 | HEMSSFI0200 | 428d |  |  | MC | E | FI |
| HEMSAFI0210 |  | MS approval: Carpet tiles | 14d | 2013-02-24 | 2013-03-11 | HEMSSFI0210 | 10d | 0d |  | MC | E | FI |
| HEMSAFI0070 |  | MS approval: Steel doors and frames | 30d | 2013-03-14 | 2013-04-17 | HEMSSFI0070 | 90d | 0d |  | MC | E | FI |
|  | 3 | **MEP Materials** |  | 2012-07-07 | 2013-04-21 |  |  |  |  |  |  |  |
| HEMSAME1230 |  | MS approval: Mech 1st fix items | 52d | 2012-07-07 | 2012-09-09 | HEMSSME1230 SS+14d, HEMSSME1230 FF+14d | 39d | 36d |  |  |  |  |
| HEMSAME1240 |  | MS approval: Elec 1st fix items | 52d | 2012-07-07 | 2012-09-09 | HEMSSME1240 SS+14d, HEMSSME1240 FF+14d | 39d | 36d |  |  |  |  |
| HEMSAME1310 |  | MS approval: Electrical Boards | 24d | 2012-09-23 | 2012-10-20 | HEMSSME1310 SS+14d, HEMSSME1310 FF+14d | 46d | 0d |  | MEP | E | MEP |
| HEMSAME1200 |  | MS approval: Stand by Generator | 14d | 2012-11-13 | 2012-11-29 | HEMSSME1200 | 152d | 0d |  |  |  |  |
| HEMSAME1130 |  | MS approval: Ducts | 45d | 2012-11-26 | 2013-01-17 | HEMSSME1130 SS+14d, HEMSSME1130 FF+14d | 15d | 0d |  | MEP | E | MEP |
| HEMSAME1300 |  | MS approval: Cable Trays | 14d | 2012-11-26 | 2012-12-11 | HEMSSME1300 | 0d |  |  | MEP | E | MEP |
| HEMSAME1440 |  | MS approval: Wiring | 14d | 2012-12-25 | 2013-01-10 | HEMSSME1440 | 31d | 0d |  | MEP | E | MEP |
| HEMSAME1290 |  | MS approval: Cables | 14d | 2012-12-26 | 2013-01-12 | HEMSSME1290 | 6d | 0d |  | MEP | E | MEP |
| HEMSAME1050 |  | MS approval: Sprinklers | 14d | 2012-12-31 | 2013-01-16 | HEMSSME1050 | 38d | 0d |  | MEP | E | MEP |
| HEMSAME1210 |  | MS approval: Chillers | 14d | 2012-12-31 | 2013-01-16 | HEMSSME1210 | 76d | 0d |  |  |  |  |
| HEMSAME1160 |  | MS approval: Diffusers | 14d | 2013-01-26 | 2013-02-10 | HEMSSME1160 | 0d |  |  | MEP | E | MEP |
| HEMSSME1460 |  | MS approval: Spicial MEP Systems & Equipments | 20d | 2013-02-05 | 2013-02-27 | HEMSSME1450 SS+14d, HEMSSME1450 FF+14d | 41d | 0d |  |  |  |  |
| HEMSAME1220 |  | MS approval: Boilers | 14d | 2013-02-06 | 2013-02-21 | HEMSSME1220 | 132d | 0d |  |  |  |  |
| HEMSAME1180 |  | MS approval: Windows Washing Machine | 14d | 2013-02-12 | 2013-02-27 | HEMSSME1180 | 121d | 0d |  |  |  |  |
| HEMSAME1170 |  | MS approval: Grills | 14d | 2013-03-02 | 2013-03-17 | HEMSSME1170 | 15d | 0d |  | MEP | E | MEP |
| HEMSAME1190 |  | MS approval: Parking Control Equipment | 14d | 2013-04-06 | 2013-04-21 | HEMSSME1190 | 76d | 0d |  |  |  |  |

| ID | WBS | Activity | Duration | Start | Finish | Predecessors | Total float | Free float | Constraint | Calendar | Responsibility | Phase Code | Trade |
| --- | --- | --- | --- | --- | --- | --- | --- | --- | --- | --- | --- | --- | --- |
|  | 4 | **Steel Structure Materials** |  | 2012-07-29 | 2012-08-27 |  |  |  |  |  |  |  |  |
| HEMSASS0020 |  | Approval: Design | 14d | 2012-07-29 | 2012-08-13 | HEMSSSS0020 | 8d | 0d |  |  |  |  |  |
| HEMSASS0000 |  | MS approval: Structural steel | 14d | 2012-08-13 | 2012-08-27 | HEMSSSS0000, HEMSASS0020 FF | 14.12d | 0d |  | HBTF # 2 - all days | SS | E |  |
| HEMSASS0010 |  | MS approval: Metal deck and fire proofing | 14d | 2012-08-13 | 2012-08-27 | HEMSSSS0010, HEMSASS0020 | 14.12d | 0d |  | HBTF # 2 - all days | SS | E |  |
|  | 5 | **Aluminum Materials** |  | 2012-07-22 | 2013-02-04 |  |  |  |  |  |  |  |  |
| HEMSAAL0090 |  | MS Approvals: Aluminum Doors | 14d | 2012-07-22 | 2012-08-06 | HEMSSAL0090 | 472d | 0d |  |  |  |  |  |
| HEMSAAL0080 |  | MS approval: Design | 14d | 2012-08-30 | 2012-09-15 | HEMSSAL0080 | 51d | 8d |  |  |  |  |  |
| HEMSAAL0010 |  | MS approval: Curtain walls | 14d | 2012-09-09 | 2012-09-24 | HEMSSAL0010, HEMSAAL0080 FF | 43d | 0d |  |  | ALU | E |  |
| HEMSAAL0020 |  | MS approval: Handrails & Railling | 14d | 2012-09-12 | 2012-09-27 | HEMSSAL0020 | 43d | 0d |  |  | ALU | E |  |
| HEMSAAL0030 |  | MS approval: Sky lights | 14d | 2012-10-17 | 2012-11-06 | HEMSSAL0030, HEMSAAL0080 FF | 130d | 0d |  |  | ALU | E |  |
| HEMSAAL0070 |  | MS approval: Storefront tension cable system | 14d | 2012-11-20 | 2012-12-05 | HEMSSAL0070 | 46d | 0d |  |  | ALU | E |  |
| HEMSAAL0060 |  | MS approval: Glass panels | 14d | 2012-11-26 | 2012-12-11 | HEMSSAL0060 | 81d | 0d |  |  | ALU | E |  |
| HEMSAAL0000 |  | MS approval: Aluminum louvers | 14d | 2012-12-02 | 2012-12-17 | HEMSSAL0000 | 76d | 0d |  |  | ALU | E |  |
| HEMSAAL0050 |  | MS approval: Revolving entrance doors | 14d | 2013-01-19 | 2013-02-04 | HEMSSAL0050 | 56d | 0d |  |  | ALU | E |  |
|  | 4 | **Procurement** |  | 2012-07-09 | 2014-02-10 |  |  |  |  |  |  |  |  |
|  | 2 | **Finishing Material** |  | 2012-07-09 | 2013-12-23 |  |  |  |  |  |  |  |  |
| HEPSAFI0560 |  | Access Flooring system | 30d | 2012-07-09 | 2012-08-12 | HEMSSFI560 | 411d | 350d |  |  |  |  |  |
| HEPSAFI0460 |  | Wall tiles & Cladding | 300d | 2012-12-09 | 2013-12-07 | HEMSSFI0460, HEMSAFI0460, HCSDAFW020 FF+120d | 7d | 0d |  |  | MC | P | FI |
| HEPSAFI0550 |  | Wooden Works | 240d | 2012-12-13 | 2013-09-26 | HEMSAFI0550, HCSDAFW040 FF+100d | 65d | 0d | as late as possible |  | MC | P | FI |
| HEPSAFI0270 |  | Toilet Toilet & corian vanity tops | 180d | 2013-02-17 | 2013-09-19 | HEMSAFI0270, HCSDAFW040 FF+100d | 161d | 51d |  |  | MC | P | FI |
| HEPSAFI0320 |  | Metal works | 240d | 2013-03-07 | 2013-12-23 | HEMSAFI0320 | 65d | 0d |  |  | MC | P | FI |
| HEPSAFI0210 |  | Floor Tiles | 230d | 2013-03-12 | 2013-12-16 | HEMSSFI0210, HEMSAFI0210, HEMSAFI0080, HCSDAFW010 FF+120d | 10d | 0d |  |  | MC | P | FI |
| HEPSAFI0070 |  | Steel doors and frames | 120d | 2013-03-31 | 2013-08-22 | HEMSAFI0070 SS+14d, HEMSAFI0070 FF+14d | 90d | 0d |  |  | MC | P | FI |
| HEPSAFI0160 |  | Ceilings Systems | 140d | 2013-04-16 | 2013-10-01 | HEMSSFI0160, HEMSAFI0160, HEMSAFI0220, HCSDAFW030 FF+110d | 26d | 0d |  |  | MC | P | FI |

| ID | WBS | Activity | Duration | Start | Finish | Predecessors | Total float | Free float | Calendar | Responsibility | Phase Code | Trade |
| --- | --- | --- | --- | --- | --- | --- | --- | --- | --- | --- | --- | --- |
|  | 3 | **MEP Materials** |  | 2012-10-09 | 2014-02-10 |  |  |  |  |  |  |  |
| HEPSAME1310 |  | Electrical Boards | 140d | 2012-10-09 | 2013-03-28 | HEMSAME1310 SS+14d | 46d | 0d |  | MEP | P | MEP |
| HEPSAME1200 |  | Stand by Generator | 300d | 2012-12-01 | 2013-11-28 | HEMSSME1200, HEMSAME1200 | 152d | 95.5d |  |  |  |  |
| HEPSAME1300 |  | CableTrays | 240d | 2012-12-12 | 2013-09-25 | HEMSSME1300, HEMSAME1300 | 0d |  |  | MEP | P | MEP |
| HEPSAME1130 |  | Ducts & pipes | 160d | 2013-01-03 | 2013-07-11 | HEMSAME1130 SS+32d | 15d | 0d |  | MEP | P | MEP |
| HEPSAME1440 |  | Wiring | 90d | 2013-01-12 | 2013-04-27 | HEMSAME1440 | 31d | 1d |  | MEP | P | MEP |
| HEPSAME1290 |  | Cables | 220d | 2013-01-13 | 2013-10-02 | HEMSSME1290, HEMSAME1290 | 6d |  |  | MEP | P | MEP |
| HEPSAME1050 |  | Sprinklers | 240d | 2013-01-17 | 2013-11-04 | HEMSAME1050 | 38d | 0d |  | MEP | P | MEP |
| HEPSAME1210 |  | Chillers | 300d | 2013-01-17 | 2014-01-18 | HEMSAME1210 | 76d | 55.5d |  |  |  |  |
| HEPSSME1470 |  | Spicial MEP Systems & Equipments | 210d | 2013-02-05 | 2013-10-13 | HEMSSME1460 SS | 41d | 0d |  |  |  |  |
| HEPSAME1160 |  | Diffusers | 240d | 2013-02-11 | 2013-11-28 | HEMSSME1160, HEMSAME1160 | 0d |  |  | MEP | P | MEP |
| HEPSAME1220 |  | Boiler | 220d | 2013-02-23 | 2013-11-17 | HEMSAME1220 | 132d | 105.5d |  |  |  |  |
| HEPSAME1180 |  | Windows Washing Machine | 240d | 2013-02-28 | 2013-12-16 | HEMSAME1180 | 121d | 0d |  |  |  |  |
| HEPSAME1170 |  | Grills | 195d | 2013-03-18 | 2013-11-11 | HEMSSME1170, HEMSAME1170 | 15d |  |  | MEP | P | MEP |
| HEPSAME1190 |  | Parking Control Equipment | 240d | 2013-04-22 | 2014-02-10 | HEMSAME1190 | 76d | 0d |  |  |  |  |
|  | 4 | **Steel Structure Materials** |  | 2012-08-27 | 2013-06-13 |  |  |  |  |  |  |  |
| HEPSS00000 |  | Material Procurement | 150d | 2012-08-27 | 2013-01-24 | HEMSASS0000, HEMSASS0010 | 14.12d | 14d | HBTF # 2 - all days | SS | P |  |
| HEPSS00010 |  | Fabrication & Painting | 150d | 2012-11-24 | 2013-04-23 | HEPSS00000 SS+45d, HEPSS00000 FF+75d, HESDASS0000 | 0.12d | 0d | HBTF # 2 - all days | SS | P |  |
| HEPSS00020 |  | Delivery / Shipment | 150d | 2013-01-14 | 2013-06-13 | HEPSS00010 SS+51d, HEPSS00010 FF+30d | 0.12d |  | HBTF # 2 - all days | SS | P |  |
|  | 5 | **Aluminum Materials** |  | 2012-08-07 | 2014-02-04 |  |  |  |  |  |  |  |
| HEPSAAL0080 |  | Aluminum Doors | 60d | 2012-08-07 | 2012-10-20 | HEMSAAL0090 | 472d | 0d |  |  |  |  |
| HEPSAAL0010 |  | Curtain walls | 300d | 2012-09-25 | 2013-09-23 | HEMSSAL0010, HEMSAAL0010 | 43d | 0d |  | ALU | P |  |
| HEPSAAL0020 |  | Handrails & Railling | 300d | 2012-09-29 | 2013-09-26 | HEMSSAL0020, HEMSAAL0020 | 43d | 0d |  | ALU | P |  |
| HEPSAAL0030 |  | Sky lights | 300d | 2012-11-07 | 2013-11-06 | HEMSSAL0030, HEMSAAL0030 | 130d | 74d |  | ALU | P |  |
| HEPSAAL0070 |  | Storefront tension cable system | 240d | 2012-12-06 | 2013-09-19 | HEMSSAL0070, HEMSAAL0070 | 46d | 3d |  | ALU | P |  |
| HEPSAAL0060 |  | Glass panels | 200d | 2012-12-12 | 2013-08-06 | HEMSSAL0060, HEMSAAL0060 | 81d | 38d |  | ALU | P |  |
| HEPSAAL0000 |  | Aluminum louvers | 200d | 2012-12-18 | 2013-08-15 | HEMSSAL0000, HEMSAAL0000 | 76d | 33d |  | ALU | P |  |
| HEPSAAL0050 |  | Revolving entrance doors | 300d | 2013-02-05 | 2014-02-04 | HEMSSAL0050, HEMSAAL0050 | 56d | 0d |  | ALU | P |  |

| ID | WBS | Activity | Duration | Start | Finish | Predecessors | Total float | Free float | Resources | Cost | Bill No. | Division No. | Responsibility | Phase Code | Trade |
| --- | --- | --- | --- | --- | --- | --- | --- | --- | --- | --- | --- | --- | --- | --- | --- |
|  | 6 | **Conveying system** |  | 2012-08-01 | 2013-08-21 |  |  |  |  |  |  |  |  |  |  |
| HEPSCVS0010 |  | Manufacturing & Importing Materials | 300d | 2012-08-01 | 2013-07-31 | HCESCA030 | 86d | 0d |  |  | B5 | 14 | MEP | P | MEP |
| HEPSCVS0020 |  | Elecrical Cables & System | 15d | 2013-08-01 | 2013-08-21 | HEPSCVS0010 | 86d | 0d |  |  | B5 | 14 | ALU | P |  |
| HEPSCVS0040 |  | Accessories & Finishings | 15d | 2013-08-01 | 2013-08-21 | HEPSCVS0020 SS | 197d | 111d |  |  | B5 | 14 | MEP | P | MEP |
|  | 5 | **Construction** |  | 2012-06-05 | 2014-07-23 |  |  |  |  |  |  |  |  |  |  |
|  | 1 | **Structural Works** |  | 2012-06-05 | 2013-05-06 |  |  |  |  |  |  |  |  |  |  |
|  | SS | **unders SOG works** |  | 2012-06-05 | 2012-10-15 |  |  |  |  |  |  |  |  |  |  |
|  | 1 | **Zone # 1** |  | 2012-06-05 | 2012-09-02 |  |  |  |  |  |  |  |  |  |  |
| HCSWSSZ1000 |  | SS Z1 :Excavation Works - P1 | 13d | 2012-06-05 | 2012-06-20 | H0000 | 2d | 0d |  |  | B1 | 31 | MC | C |  |
| HCSWSSZ1005 |  | SS Z1 :Excavation Works - P2 | 4d | 2012-07-30 | 2012-08-02 | HCSWSSZ1000, HCSWSSZ4000 FS+5d | 2d | 0d |  |  |  |  |  |  |  |
|  | 1 | **Foundations - Part 1** |  | 2012-06-10 | 2012-07-26 |  |  |  |  |  |  |  |  |  |  |
| HCSWSSZ1010 |  | SS Z1 :Pour blinding under membrane | 11d | 2012-06-10 | 2012-06-23 | HCSWSSZ1000 SS+4d | 2d | 0d |  |  | B1 | 03 | MC | C |  |
| HCSWSSZ1020 |  | SS Z1 :Construct block works (formwork) | 10d | 2012-06-14 | 2012-06-26 | HCSWSSZ1010 SS+4d | 2d | 0d |  |  | B1 | 07 | MC | C |  |
| HCSWSSZ1030 |  | SS Z1 :Apply water Proofing and protection (inside) | 11d | 2012-06-16 | 2012-06-28 | HCSWSSZ1020 SS+1d, HCSWSSZ1020 FF+1d, HEMSMCI0020 | 2d | 0d |  |  | B1 | 03 | MC | C |  |
| HCSWSSZ1040 |  | SS Z1 :Formwork and rebar for foundations | 26d | 2012-06-25 | 2012-07-24 | HCSWSSZ1030 SS+7d, HCSWSSZ1030 FF+18d, HEMSMCI0010 | 2d | 0d |  |  | B1 | 03 | MC | C |  |
| HCSWSSZ1050 |  | SS Z1 :Cast concrete for foundations | 22d | 2012-07-01 | 2012-07-25 | HCSWSSZ1040 SS+5d, HEMSMCI0000, HCSWSSZ1040 FF+1d | 2d | 0d | Mixer [64 h]; Concrete Pump [8 h] | 384 | B1 | 03 | MC | C |  |
| HCSWSSZ1060 |  | SS Z1 :De-shutter formwork | 12d | 2012-07-14 | 2012-07-26 | HCSWSSZ1050 SS+1d, HCSWSSZ1050 FF+1d | 17d | 0d |  |  | B1 | 03 | MC | C |  |
|  | 2 | **Foundations - Part 2 (Left over areas)** |  | 2012-08-04 | 2012-08-26 |  |  |  |  |  |  |  |  |  |  |
| HCSWSSZ1380 |  | SS Z1 :Pour blinding under membrane | 4d | 2012-08-04 | 2012-08-07 | HCSWSSZ1005 | 3d | 0d |  |  | B1 | 03 | MC | C |  |
| HCSWSSZ1390 |  | SS Z1 :Construct block works (formwork) | 4d | 2012-08-08 | 2012-08-12 | HCSWSSZ1380 | 3d | 0d |  |  | B1 | 07 | MC | C |  |
| HCSWSSZ1400 |  | SS Z1 :Apply water Proofing and protection (inside) | 3d | 2012-08-13 | 2012-08-15 | HCSWSSZ1390 | 3d | 0d |  |  | B1 | 03 | MC | C |  |
| HCSWSSZ1410 |  | SS Z1 :Formwork and rebar for foundations | 3d | 2012-08-16 | 2012-08-23 | HCSWSSZ1400 | 3d | 0d |  |  | B1 | 03 | MC | C |  |
| HCSWSSZ1420 |  | SS Z1 :Cast concrete for foundations | 1d | 2012-08-25 | 2012-08-25 | HCSWSSZ1410 | 3d | 0d | Mixer [64 h]; Concrete Pump [8 h] | 384 | B1 | 03 | MC | C |  |
| HCSWSSZ1430 |  | SS Z1 :De-shutter formwork | 1d | 2012-08-26 | 2012-08-26 | HCSWSSZ1420 SS+1d, HCSWSSZ1420 FF+1d | 3d | 0d |  |  | B1 | 03 | MC | C |  |

| ID | WBS | Activity | Duration | Start | Finish | Predecessors | Total float | Free float | Bill No. | Division No. | Responsibility | Phase Code |
| --- | --- | --- | --- | --- | --- | --- | --- | --- | --- | --- | --- | --- |
|  | 4 | **SOG works** |  | 2012-07-18 | 2012-09-02 |  |  |  |  |  |  |  |
| HCSWSSZ1220 |  | SS Z1 :Fill imported base course around Foundations P1 | 12d | 2012-07-18 | 2012-07-31 | HCSWSSZ1060 FF+4d | 17d | 14d | B1 | 31 | MC | C |
| HCSWSSZ1225 |  | SS Z1 :Fill imported base course around Foundations P2 & under SOG | 4d | 2012-08-22 | 2012-08-26 | HCSWSSZ1220, HCSWSSZ1430 FF | 3d | 0d |  |  |  |  |
| HCSWSSZ1230 |  | SS Z1 :Lay polythene sheets under SOG | 1d | 2012-08-29 | 2012-08-29 | HCSWSSZ1220 FF+1d, HCSWSSZ1220 SS+1d, HCSWSSZ1225 FF+3d | 3d | 0d | B1 | 07 | MC | C |
| HCSWSSZ1240 |  | SS Z1 :Formworks and Erect steel for SOG | 2d | 2012-08-30 | 2012-09-01 | HCSWSSZ1230, HEMSMCI0030, HEMSAME1230 SS+7d, HEMSAME1240 SS+7d | 3d | 0d | B1 | 03 | MC | C |
| HCSWSSZ1250 |  | SS Z1 :Cast Concrete for SOG | 2d | 2012-09-01 | 2012-09-02 | HCSWSSZ1240 FF+1d, HCSWSSZ1240 SS+1d | 3d | 1d | B1 | 03 | MC | C |
|  | 2 | **Zone # 2** |  | 2012-06-21 | 2012-08-27 |  |  |  |  |  |  |  |
| HCSWSSZ2000 |  | SS Z2 :Excavation Works - P1 | 8d | 2012-06-21 | 2012-06-30 | HCSWSSZ1000 | 2d | 0d | B1 | 31 | MC | C |
| HCSWSSZ2005 |  | SS Z2 :Excavation Works - P2 | 4d | 2012-07-22 | 2012-07-25 | HCSWSSZ2000, HCSWSSZ4000 FF+2d | 9d | 0d |  |  |  |  |
|  | 1 | **Foundations - Part 1** |  | 2012-06-27 | 2012-07-24 |  |  |  |  |  |  |  |
| HCSWSSZ2010 |  | SS Z2 :Pour blinding under membrane | 6d | 2012-06-27 | 2012-07-03 | HCSWSSZ2000 SS+5d | 33.62d | 0d | B1 | 03 | MC | C |
| HCSWSSZ2020 |  | SS Z2 :Construct block works (formwork) | 11d | 2012-06-30 | 2012-07-11 | HCSWSSZ2010 SS+2d, HCSWSSZ2010 FF+5d | 33.62d | 0d | B1 | 07 | MC | C |
| HCSWSSZ2030 |  | SS Z2 :Apply water Proofing and protection (inside) | 10d | 2012-07-02 | 2012-07-12 | HCSWSSZ2020 SS+2d, HCSWSSZ2020 FF+1d | 33.62d | 0d | B1 | 03 | MC | C |
| HCSWSSZ2040 |  | SS Z2 :Formwork and rebar for foundations | 14d | 2012-07-05 | 2012-07-21 | HCSWSSZ2030 SS+3d, HCSWSSZ2030 FF+6d | 33.62d | 0d | B1 | 03 | MC | C |
| HCSWSSZ2050 |  | SS Z2 :Cast concrete for foundations | 9d | 2012-07-12 | 2012-07-22 | HCSWSSZ2040 SS+4d, HCSWSSZ2040 FF+1d | 33.62d | 0d | B1 | 03 | MC | C |
| HCSWSSZ2060 |  | SS Z2 :De-shutter formwork | 10d | 2012-07-14 | 2012-07-24 | HCSWSSZ2050 SS+1d, HCSWSSZ2050 FF+1d | 33.62d | 0d | B1 | 03 | MC | C |
|  | 2 | **Foundations - Part 2 (Left over areas)** |  | 2012-07-26 | 2012-08-16 |  |  |  |  |  |  |  |
| HCSWSSZ2440 |  | SS Z2 :Pour blinding under membrane | 1d | 2012-07-26 | 2012-07-26 | HCSWSSZ2005 | 21.62d | 0d | B1 | 03 | MC | C |
| HCSWSSZ2450 |  | SS Z2 :Construct block works (formwork) | 7d | 2012-07-28 | 2012-08-04 | HCSWSSZ2440 | 21.62d | 0d | B1 | 07 | MC | C |
| HCSWSSZ2460 |  | SS Z2 :Apply water Proofing and protection (inside) | 4d | 2012-08-05 | 2012-08-08 | HCSWSSZ2450 | 21.62d | 0d | B1 | 03 | MC | C |
| HCSWSSZ2470 |  | SS Z2 :Formwork and rebar for foundations | 5d | 2012-08-09 | 2012-08-14 | HCSWSSZ2460 | 21.62d | 0d | B1 | 03 | MC | C |
| HCSWSSZ2480 |  | SS Z2 :Cast concrete for foundations | 1d | 2012-08-15 | 2012-08-15 | HCSWSSZ2470 | 21.62d | 0d | B1 | 03 | MC | C |
| HCSWSSZ2490 |  | SS Z2 :De-shutter formwork | 1d | 2012-08-16 | 2012-08-16 | HCSWSSZ2480 SS+1d, HCSWSSZ2480 FF+1d | 21.62d | 0d | B1 | 03 | MC | C |
|  | 4 | **SOG works** |  | 2012-07-22 | 2012-08-27 |  |  |  |  |  |  |  |
| HCSWSSZ2220 |  | SS Z2 :Fill imported base course around Foundations P1 | 8d | 2012-07-22 | 2012-07-30 | HCSWSSZ2060 FF+5d | 33.62d | 12d | B1 | 31 | MC | C |
| HCSWSSZ2225 |  | SS Z2 :Fill imported base course around Foundations P2 & under SOG | 4d | 2012-08-14 | 2012-08-22 | HCSWSSZ2220, HCSWSSZ2490 FF+1d | 21.62d | 0d |  |  |  |  |
| HCSWSSZ2230 |  | SS Z2 :Lay polythene sheets under SOG | 1d | 2012-08-23 | 2012-08-23 | HCSWSSZ2220 SS+1d, HCSWSSZ2220 FF+1d, HCSWSSZ2225 | 21.62d | 0d | B1 | 07 | MC | C |
| HCSWSSZ2240 |  | SS Z2 :Formworks and Erect steel for SOG | 2d | 2012-08-25 | 2012-08-26 | HCSWSSZ2230 | 21.62d | 0d | B1 | 03 | MC | C |
| HCSWSSZ2250 |  | SS Z2 :Cast Concrete for SOG | 2d | 2012-08-26 | 2012-08-27 | HCSWSSZ2240 SS+1d, HCSWSSZ2240 FF+1d | 21.62d | 0d | B1 | 03 | MC | C |

| ID | WBS | Activity | Duration | Start | Finish | Predecessors | Total float | Free float | Bill No. | Division No. | Responsibility | Phase Code |
| --- | --- | --- | --- | --- | --- | --- | --- | --- | --- | --- | --- | --- |
|  | 3 | **Zone # 3** |  | 2012-07-01 | 2012-09-10 |  |  |  |  |  |  |  |
| HCSWSSZ3000 |  | SS Z3 :Excavation Works - P1 | 13d | 2012-07-01 | 2012-07-15 | HCSWSSZ2000 | 2d | 0d | B1 | 31 | MC | C |
| HCSWSSZ3005 |  | SS Z3 :Excavation Works - P2 | 6d | 2012-08-04 | 2012-08-09 | HCSWSSZ3000, HCSWSSZ2005, HCSWSSZ1005 | 2d | 0d |  |  |  |  |
|  | 1 | **Foundations - Part 1** |  | 2012-07-05 | 2012-08-30 |  |  |  |  |  |  |  |
| HCSWSSZ3010 |  | SS Z3 :Pour blinding under membrane - P1 | 15d | 2012-07-05 | 2012-07-22 | HCSWSSZ3000 SS+4d | 4d | 2d | B1 | 03 | MC | C |
| HCSWSSZ3020 |  | SS Z3 :Construct block works (formwork) | 29d | 2012-07-15 | 2012-08-16 | HCSWSSZ3010 SS+4d, HCSWSSZ3010 FF+20d, HCSWSSZ3015 FF+3d | 2d | 0d | B1 | 07 | MC | C |
| HCSWSSZ3030 |  | SS Z3 :Apply water Proofing and protection (inside) | 28d | 2012-07-17 | 2012-08-22 | HCSWSSZ3020 SS+2d, HCSWSSZ3020 FF+1d | 2d | 0d | B1 | 03 | MC | C |
| HCSWSSZ3040 |  | SS Z3 :Formwork and rebar for foundations | 27d | 2012-07-21 | 2012-08-25 | HCSWSSZ3030 SS+2d, HCSWSSZ3030 FF+2d | 2d | 0d | B1 | 03 | MC | C |
| HCSWSSZ3050 |  | SS Z3 :Cast concrete for foundations | 27d | 2012-07-25 | 2012-08-29 | HCSWSSZ3040 SS+4d, HCSWSSZ3040 FF+1d | 2d | 0d | B1 | 03 | MC | C |
| HCSWSSZ3060 |  | SS Z3 :De-shutter formwork | 27d | 2012-07-26 | 2012-08-30 | HCSWSSZ3050 SS+1d, HCSWSSZ3050 FF+1d | 2d | 0d | B1 | 03 | MC | C |
| HCSWSSZ3015 |  | SS Z3 :Pour blinding under membrane - P2 | 6d | 2012-08-07 | 2012-08-13 | HCSWSSZ3005 SS+3d | 2d | 0d |  |  |  |  |
|  | 4 | **SOG works** |  | 2012-08-26 | 2012-09-10 |  |  |  |  |  |  |  |
| HCSWSSZ3220 |  | SS Z3 :Fill imported base course around Foundations | 7d | 2012-08-26 | 2012-09-02 | HCSWSSZ3060 FF+2d | 2d | 0d | B1 | 31 | MC | C |
| HCSWSSZ3225 |  | SS Z3 :Fill imported base course under SOG | 3d | 2012-09-03 | 2012-09-05 | HCSWSSZ3220 | 2d | 0d |  |  |  |  |
| HCSWSSZ3230 |  | SS Z3 :Lay polythene sheets under SOG | 1d | 2012-09-06 | 2012-09-06 | HCSWSSZ3220 FF+1d, HCSWSSZ3220 SS+1d, HCSWSSZ3225 | 2d | 0d | B1 | 07 | MC | C |
| HCSWSSZ3240 |  | SS Z3 :Formworks and Erect steel for SOG | 2d | 2012-09-08 | 2012-09-09 | HCSWSSZ3230 SS+1d, HCSWSSZ3230 FF+1d | 2d | 0d | B1 | 03 | MC | C |
| HCSWSSZ3250 |  | SS Z3 :Cast Concrete for SOG | 2d | 2012-09-09 | 2012-09-10 | HCSWSSZ3240 SS+1d, HCSWSSZ3240 FF+1d | 2d | 0d | B1 | 03 | MC | C |
|  | 4 | **Zone # 4** |  | 2012-07-16 | 2012-09-20 |  |  |  |  |  |  |  |
| HCSWSSZ4000 |  | SS Z4 :Excavation Works - P1 | 7d | 2012-07-16 | 2012-07-23 | HCSWSSZ3000 | 2d | 0d | B1 | 31 | MC | C |
| HCSWSSZ4005 |  | SS Z4 :Excavation Works - P2 | 6d | 2012-08-11 | 2012-08-16 | HCSWSSZ4000, HCSWSSZ3005 | 17.75d | 0d |  |  |  |  |
|  | 1 | **Foundations - Part 1** |  | 2012-07-22 | 2012-09-06 |  |  |  |  |  |  |  |
| HCSWSSZ4010 |  | SS Z4 :Pour blinding under membrane | 12d | 2012-07-22 | 2012-08-04 | HCSWSSZ4000 SS+5d | 18.75d | 0d | B1 | 03 | MC | C |
| HCSWSSZ4020 |  | SS Z4 :Construct block works (formwork) | 10d | 2012-07-26 | 2012-08-06 | HCSWSSZ4010 SS+4d, HCSWSSZ4010 FF+1d | 18.75d | 0d | B1 | 07 | MC | C |
| HCSWSSZ4030 |  | SS Z4 :Apply water Proofing and protection (inside) | 11d | 2012-07-29 | 2012-08-09 | HCSWSSZ4020 SS+2d, HCSWSSZ4020 FF+3d | 18.75d | 6d | B1 | 03 | MC | C |
| HCSWSSZ4040 |  | SS Z4 :Formwork and rebar for foundations | 12d | 2012-08-22 | 2012-09-04 | HCSWSSZ4030, HCSWSSZ3020 | 12.75d | 0d |  |  |  |  |
| HCSWSSZ4050 |  | SS Z4 :Cast concrete for foundations | 11d | 2012-08-25 | 2012-09-05 | HCSWSSZ4040 SS+1d, HCSWSSZ4040 FF+1d | 12.75d | 0d | B1 | 03 | MC | C |
| HCSWSSZ4060 |  | SS Z4 :De-shutter formwork | 10d | 2012-08-27 | 2012-09-06 | HCSWSSZ4050 SS+1d, HCSWSSZ4050 FF+1d | 12.75d | 0d | B1 | 03 | MC | C |

| ID | WBS | Activity | Duration | Start | Finish | Predecessors | Total float | Free float | Bill No. | Division No. | Responsibility | Phase Code |
| --- | --- | --- | --- | --- | --- | --- | --- | --- | --- | --- | --- | --- |
|  | 2 | **Foundations - Part 2 (Left over areas)** |  | 2012-08-14 | 2012-09-05 |  |  |  |  |  |  |  |
| HCSWSSZ4500 |  | SS Z4 :Pour blinding under membrane | 4d | 2012-08-14 | 2012-08-22 | HCSWSSZ4005 SS+3d | 17.75d | 0d | B1 | 03 | MC | C |
| HCSWSSZ4510 |  | SS Z4 :Construct block works (formwork) | 6d | 2012-08-23 | 2012-08-29 | HCSWSSZ4500 SS+4d, HCSWSSZ4500 FF+1d | 17.75d | 0d | B1 | 07 | MC | C |
| HCSWSSZ4520 |  | SS Z4 :Apply water Proofing and protection (inside) | 7d | 2012-08-26 | 2012-09-02 | HCSWSSZ4510 SS+2d, HCSWSSZ4510 FF+3d | 17.75d | 0d | B1 | 03 | MC | C |
| HCSWSSZ4550 |  | SS Z4 :Formwork and rebar for foundations | 7d | 2012-08-27 | 2012-09-03 | HCSWSSZ4520 SS+1d, HCSWSSZ4520 FF+1d | 17.75d | 0d |  |  |  |  |
| HCSWSSZ4530 |  | SS Z4 :Cast concrete for foundations | 7d | 2012-08-28 | 2012-09-04 | HCSWSSZ4550 SS+1d, HCSWSSZ4550 FF+1d | 17.75d | 0d | B1 | 03 | MC | C |
| HCSWSSZ4540 |  | SS Z4 :De-shutter formwork | 7d | 2012-08-29 | 2012-09-05 | HCSWSSZ4530 SS+1d, HCSWSSZ4530 FF+1d | 17.75d | 5d | B1 | 03 | MC | C |
|  | 4 | **SOG works** |  | 2012-09-03 | 2012-09-20 |  |  |  |  |  |  |  |
| HCSWSSZ4220 |  | SS Z4 :Fill imported base course around Foundations P1 | 6d | 2012-09-03 | 2012-09-09 | HCSWSSZ4060 FF+2d | 12.75d | 0d | B1 | 31 | MC | C |
| HCSWSSZ4225 |  | SS Z4 :Fill imported base course around Foundations P2 & under SOG | 4d | 2012-09-10 | 2012-09-13 | HCSWSSZ4220, HCSWSSZ4540 FF+2d | 12.75d | 0d |  |  |  |  |
| HCSWSSZ4230 |  | SS Z4 :Lay polythene sheets under SOG | 1d | 2012-09-15 | 2012-09-15 | HCSWSSZ4220 SS+1d, HCSWSSZ4220 FF+1d, HCSWSSZ4225 | 12.75d | 0d | B1 | 07 | MC | C |
| HCSWSSZ4240 |  | SS Z4 :Formworks and Erect steel for SOG | 4d | 2012-09-16 | 2012-09-19 | HCSWSSZ4230 SS+1d, HCSWSSZ4230 FF+1d | 12.75d | 0d | B1 | 03 | MC | C |
| HCSWSSZ4250 |  | SS Z4 :Cast Concrete for SOG | 4d | 2012-09-17 | 2012-09-20 | HCSWSSZ4240 SS+1d, HCSWSSZ4240 FF+1d | 12.75d | 0d | B1 | 03 | MC | C |
|  | 5 | **Zone # 5** |  | 2012-06-21 | 2012-09-25 |  |  |  |  |  |  |  |
| HCSWSSZ5000 |  | SS Z5 :Excavation Works | 43d | 2012-06-21 | 2012-08-09 | HESDACI0000 FS+9d | 1d | 0d | B1 | 31 | MC | C |
|  | 1 | **Foundations** |  | 2012-07-10 | 2012-09-13 |  |  |  |  |  |  |  |
| HCSWSSZ5010 |  | SS Z5 :Pour blinding under membrane | 34d | 2012-07-10 | 2012-08-22 | HCSWSSZ5000 SS+16d | 1d | 0d | B1 | 03 | MC | C |
| HCSWSSZ5020 |  | SS Z5 :Construct block works (formwork) | 34d | 2012-07-16 | 2012-08-28 | HCSWSSZ5010 SS+5d, HCSWSSZ5010 FF+1d | 1d | 0d | B1 | 07 | MC | C |
| HCSWSSZ5030 |  | SS Z5 :Apply water Proofing and protection (inside) | 34d | 2012-07-19 | 2012-09-01 | HCSWSSZ5020 SS+3d, HCSWSSZ5020 FF+2d | 1d | 0d | B1 | 03 | MC | C |
| HCSWSSZ5040 |  | SS Z5 :Formwork and rebar for foundations | 34d | 2012-07-26 | 2012-09-08 | HCSWSSZ5030 SS+6d, HCSWSSZ5030 FF+2d | 1d | 0d | B1 | 03 | MC | C |
| HCSWSSZ5050 |  | SS Z5 :Cast concrete for foundations | 30d | 2012-08-01 | 2012-09-09 | HCSWSSZ5040 SS+3d, HCSWSSZ5040 FF+1d | 1d | 0d | B1 | 03 | MC | C |
| HCSWSSZ5060 |  | SS Z5 :De-shutter formwork | 33d | 2012-08-02 | 2012-09-13 | HCSWSSZ5050 SS+1d, HCSWSSZ5050 FF+1d | 1d | 0d | B1 | 03 | MC | C |
|  | 4 | **SOG works** |  | 2012-09-11 | 2012-09-25 |  |  |  |  |  |  |  |
| HCSWSSZ5220 |  | SS Z5 :Fill imported base course around Foundations | 5d | 2012-09-11 | 2012-09-16 | HCSWSSZ5060 FF+2d | 1d | 0d | B1 | 31 | MC | C |
| HCSWSSZ5225 |  | SS Z5 :Fill imported base course under SOG | 3d | 2012-09-17 | 2012-09-19 | HCSWSSZ5220 | 1d | 0d |  |  |  |  |
| HCSWSSZ5230 |  | SS Z5 :Lay polythene sheets under SOG | 1d | 2012-09-20 | 2012-09-20 | HCSWSSZ5220 FF+1d, HCSWSSZ5220 SS+1d, HCSWSSZ5225 | 1d | 0d | B1 | 07 | MC | C |
| HCSWSSZ5240 |  | SS Z5 :Formworks and Erect steel for SOG | 3d | 2012-09-22 | 2012-09-24 | HCSWSSZ5230 | 1d | 0d | B1 | 03 | MC | C |
| HCSWSSZ5250 |  | SS Z5 :Cast Concrete for SOG | 3d | 2012-09-23 | 2012-09-25 | HCSWSSZ5240 SS+1d, HCSWSSZ5240 FF+1d | 1d | 0d | B1 | 03 | MC | C |

| ID | WBS | Activity | Duration | Start | Finish | Predecessors | Total float | Free float | Resources | Bill No. | Division No. | Responsibility | Phase Code |
| --- | --- | --- | --- | --- | --- | --- | --- | --- | --- | --- | --- | --- | --- |
|  | 6 | **Zone # 6** |  | 2012-08-11 | 2012-10-15 |  |  |  |  |  |  |  |  |
| HCSWSSZ6000 |  | SS Z6 :Excavation Works & remove of the access ramps | 16d | 2012-08-11 | 2012-09-02 | HCSWSSZ5000 | 2d | 0d |  | B1 | 31 | MC | C |
|  | 1 | **Foundations** |  | 2012-08-26 | 2012-10-06 |  |  |  |  |  |  |  |  |
| HCSWSSZ6010 |  | SS Z6 :Pour blinding under membrane | 18d | 2012-08-26 | 2012-09-15 | HCSWSSZ6000 SS+9d | 2d | 0d |  | B1 | 03 | MC | C |
| HCSWSSZ6020 |  | SS Z6 :Construct block works (formwork) | 18d | 2012-08-29 | 2012-09-18 | HCSWSSZ6010 SS+3d, HCSWSSZ6010 FF+3d | 2d | 0d |  | B1 | 07 | MC | C |
| HCSWSSZ6030 |  | SS Z6 :Apply water Proofing and protection (inside) | 18d | 2012-09-02 | 2012-09-22 | HCSWSSZ6020 SS+3d, HCSWSSZ6020 FF+3d | 2d | 0d |  | B1 | 03 | MC | C |
| HCSWSSZ6040 |  | SS Z6 :Formwork and rebar for foundations | 18d | 2012-09-06 | 2012-09-26 | HCSWSSZ6030 SS+4d, HCSWSSZ5040 FF, HCSWSSZ6030 FF+4d | 2d | 0d |  | B1 | 03 | MC | C |
| HCSWSSZ6050 |  | SS Z6 :Cast concrete for foundations | 20d | 2012-09-12 | 2012-10-04 | HCSWSSZ6040 SS+5d, HCSWSSZ6040 FF+5d | 2d | 0d |  | B1 | 03 | MC | C |
| HCSWSSZ6060 |  | SS Z6 :De-shutter formwork | 20d | 2012-09-13 | 2012-10-06 | HCSWSSZ6050 SS+1d, HCSWSSZ6050 FF+1d | 2d | 0d |  | B1 | 03 | MC | C |
|  | 4 | **SOG works** |  | 2012-10-04 | 2012-10-15 |  |  |  |  |  |  |  |  |
| HCSWSSZ6220 |  | SS Z6 :Fill imported base course around Foundations | 4d | 2012-10-04 | 2012-10-08 | HCSWSSZ6060 FF+2d | 2d | 0d |  | B1 | 31 | MC | C |
| HCSWSSZ6230 |  | SS Z6 :Lay polythene sheets under SOG | 1d | 2012-10-09 | 2012-10-09 | HCSWSSZ6220 FF+1d, HCSWSSZ6220 SS+1d | 3d | 0d |  | B1 | 07 | MC | C |
| HCSWSSZ6325 |  | SS Z6 :Fill imported base course under SOG | 4d | 2012-10-09 | 2012-10-13 | HCSWSSZ6220 | 2d | 0d |  |  |  |  |  |
| HCSWSSZ6240 |  | SS Z6 :Formworks and Erect steel for SOG | 3d | 2012-10-10 | 2012-10-13 | HCSWSSZ6230 | 3d | 0d |  | B1 | 03 | MC | C |
| HCSWSSZ6250 |  | SS Z6 :Cast Concrete for SOG | 2d | 2012-10-14 | 2012-10-15 | HCSWSSZ6240 SS+1d, HCSWSSZ6240 FF+1d, HCSWSSZ6325 | 2d | 0d |  | B1 | 03 | MC | C |
|  | B4 | **Basement 4 floor** |  | 2012-07-23 | 2012-12-10 |  |  |  |  |  |  |  |  |
|  | 1 | **Zone # 1** |  | 2012-07-26 | 2012-09-30 |  |  |  |  |  |  |  |  |
|  | 1 | **Retaining Walls** |  | 2012-07-26 | 2012-08-28 |  |  |  |  |  |  |  |  |
| HCSWB4Z1010 |  | B4 Z1 :Formwork retaining walls shutters - 1st side | 8d | 2012-07-26 | 2012-08-04 | HCSWSSZ1050, HCERDA000, HEMSMCI0040 SS+2d | 2d | 0d | Retaining Walls shutter [315] | B1 | 03 | MC | C |
| HCSWB4Z1020 |  | B4 Z1 :Fix steel rebar for reatining walls | 8d | 2012-07-28 | 2012-08-05 | HCSWB4Z1010 SS+1d, HCSWB4Z1010 FF+1d | 18d | 0d |  | B1 | 03 | MC | C |
| HCSWB4Z1030 |  | B4 Z1 :Fix MEP first fix in walls | 8d | 2012-07-28 | 2012-08-05 | HCSWB4Z1020 SS, HCSWB4Z1020 FF | 18d | 0d |  | B1 | 03 | MC | C |
| HCSWB4Z1040 |  | B4 Z1 :Close shutter for retaining walls | 8d | 2012-07-29 | 2012-08-06 | HCSWB4Z1030 SS+1d, HCSWB4Z1030 FF+1d | 18d | 0d | Retaining Walls shutter [315] | B1 | 03 | MC | C |
| HCSWB4Z1050 |  | B4 Z1 :Cast concrete for retaining walls | 8d | 2012-07-30 | 2012-08-07 | HCSWB4Z1040 SS+1d, HCSWB4Z1040 FF+1d | 18d | 0d |  | B1 | 03 | MC | C |
| HCSWB4Z1060 |  | B4 Z1 :De-shutter retaining walls | 8d | 2012-07-31 | 2012-08-08 | HCSWB4Z1050 SS+1d, HCSWB4Z1050 FF+1d | 18d | 0d |  | B1 | 03 | MC | C |
| HCSWB4Z1070 |  | B4 Z1 :Apply water proofing membrane behind Basement Walls | 15d | 2012-08-05 | 2012-08-26 | HCSWB4Z1060 SS+4d, HCSWB4Z1060 FF+4d | 74d | 0d |  | B1 | 07 | MC | C |
| HCSWB4Z1080 |  | B4 Z1 :Apply Protection for Basement Walls | 15d | 2012-08-07 | 2012-08-28 | HCSWB4Z1070 SS+2d, HCSWB4Z1070 FF+2d | 74d | 16d |  | B1 | 07 | MC | C |

| ID | WBS | Activity | Duration | Start | Finish | Predecessors | Total float | Free float | Calendar | Bill No. | Division No. | Responsibility | Phase Code |
| --- | --- | --- | --- | --- | --- | --- | --- | --- | --- | --- | --- | --- | --- |
|  | 2 | **Core and stair Walls** |  | 2012-08-01 | 2012-09-01 |  |  |  |  |  |  |  |  |
| HCSWB4Z1090 |  | B4 Z1 :Formwork core wall shutters - 1st side | 10d | 2012-08-01 | 2012-08-12 | HCSWB4Z1010 SS+5d, HEMSMCI0040 SS+2d | 2d | 0d |  | B1 | 03 | MC | C |
| HCSWB4Z1100 |  | B4 Z1 :Fix steel rebar for core wall | 6d | 2012-08-13 | 2012-08-23 | HCSWB4Z1090 | 2d | 0d |  | B1 | 03 | MC | C |
| HCSWB4Z1110 |  | B4 Z1 :Fix MEP first fix in core wall | 1d | 2012-08-25 | 2012-08-25 | HCSWB4Z1100 | 2d | 0d |  | B1 | 03 | MC | C |
| HCSWB4Z1120 |  | B4 Z1 :Close shutter for core wall | 3d | 2012-08-26 | 2012-08-28 | HCSWB4Z1110 | 2d | 0d |  | B1 | 03 | MC | C |
| HCSWB4Z1130 |  | B4 Z1 :Cast concrete for core wall | 1d | 2012-08-29 | 2012-08-29 | HCSWB4Z1120 | 2d | 0d |  | B1 | 03 | MC | C |
| HCSWB4Z1140 |  | B4 Z1 :De-shutter core wall formwork | 2d | 2012-08-30 | 2012-09-01 | HCSWB4Z1130 | 2d | 0d |  | B1 | 03 | MC | C |
|  | 3 | **Columns - 1** |  | 2012-07-26 | 2012-08-09 |  |  |  |  |  |  |  |  |
| HCSWB4Z1150 |  | B4 Z1 :Fix Steel Rebar for columns | 10d | 2012-07-26 | 2012-08-06 | HCSWB4Z1010 SS, HEMSMCI0040 SS+2d | 21d | 0d |  | B1 | 03 | MC | C |
| HCSWB4Z1160 |  | B4 Z1 :Erect columns formwork | 10d | 2012-07-28 | 2012-08-07 | HCSWB4Z1150 SS+1d, HCSWB4Z1150 FF+1d | 21d | 0d |  | B1 | 03 | MC | C |
| HCSWB4Z1170 |  | B4 Z1 :Cast concrete for columns | 10d | 2012-07-29 | 2012-08-08 | HCSWB4Z1160 SS+1d, HCSWB4Z1160 FF+1d | 21d | 0d |  | B1 | 03 | MC | C |
| HCSWB4Z1180 |  | B4 Z1 :De-shutter columns formwork | 10d | 2012-07-30 | 2012-08-09 | HCSWB4Z1170 SS+1d, HCSWB4Z1170 FF+1d | 21d | 19d |  | B1 | 03 | MC | C |
|  | 5 | **Columns - Left over Areas** |  | 2012-08-26 | 2012-08-29 |  |  |  |  |  |  |  |  |
| HCSWB4Z1340 |  | B4 Z1 :Fix Steel Rebar for columns | 1d | 2012-08-26 | 2012-08-26 | HCSWSSZ1420 | 9d | 0d |  | B1 | 03 | MC | C |
| HCSWB4Z1350 |  | B4 Z1 :Erect columns formwork | 1d | 2012-08-27 | 2012-08-27 | HCSWB4Z1340 SS+1d, HCSWB4Z1340 FF+1d | 9d | 0d |  | B1 | 03 | MC | C |
| HCSWB4Z1360 |  | B4 Z1 :Cast concrete for columns | 1d | 2012-08-28 | 2012-08-28 | HCSWB4Z1350 SS+1d, HCSWB4Z1350 FF+1d | 9d | 0d |  | B1 | 03 | MC | C |
| HCSWB4Z1370 |  | B4 Z1 :De-shutter columns formwork | 1d | 2012-08-29 | 2012-08-29 | HCSWB4Z1360 SS+1d, HCSWB4Z1360 FF+1d | 9d | 7d |  | B1 | 03 | MC | C |
|  | 4 | **Covering Slab** |  | 2012-08-30 | 2012-09-30 |  |  |  |  |  |  |  |  |
| HCSWB4Z1190 |  | B4 Z1 :Erect slab formwork and proping | 8d | 2012-08-30 | 2012-09-08 | HCSWB4Z1180 FF+2d, HCSWB4Z1140 FF+6d, HCSWB4Z1060 FF+6d, HMMOAZ000, HMMOAZ010, HMMOAZ020 FF+2d, HEMSMCI0040, HCSWB4Z1370 FF+1d, HCSWSSZ1250 FF+4d | 2d | 0d |  | B1 | 03 | MC | C |
| HCSWB4Z1200 |  | B4 Z1 :Fix steel rebar for slab | 3d | 2012-09-09 | 2012-09-11 | HCSWB4Z1190 | 2d | 0d |  | B1 | 03 | MC | C |
| HCSWB4Z1210 |  | B4 Z1 :Fix MEP first Fix for slab | 2d | 2012-09-12 | 2012-09-13 | HCSWB4Z1200 | 2d | 0d |  | B1 | 03 | MC | C |
| HCSWB4Z1220 |  | B4 Z1 :Fix side shutters and casting guides for slab | 2d | 2012-09-13 | 2012-09-15 | HCSWB4Z1210 FF+1d | 2d | 0d |  | B1 | 03 | MC | C |
| HCSWB4Z1230 |  | B4 Z1 :Cast concrete for slab | 1d | 2012-09-16 | 2012-09-16 | HCSWB4Z1220, HCSWSSZ1250 FF+4d | 2d | 0d |  | B1 | 03 | MC | C |
| HCSWB4Z1240 |  | B4 Z1 :Cure and De-shutter slab formwork | 14d | 2012-09-16 | 2012-09-30 | HCSWB4Z1230 | 2d | 0d | HBTF # 2 - all days | B1 | 03 | MC | C |

| ID | WBS | Activity | Duration | Start | Finish | Predecessors | Total float | Free float | Calendar | Resources | Bill No. | Division No. | Responsibility | Phase Code |
| --- | --- | --- | --- | --- | --- | --- | --- | --- | --- | --- | --- | --- | --- | --- |
|  | 2 | **Zone # 2** |  | 2012-07-23 | 2012-09-25 |  |  |  |  |  |  |  |  |  |
|  | 1 | **Retaining Walls** |  | 2012-07-23 | 2012-08-12 |  |  |  |  |  |  |  |  |  |
| HCSWB4Z2010 |  | B4 Z2 :Formwork retaining walls shutters - 1st side | 8d | 2012-07-23 | 2012-07-31 | HCSWSSZ2050 | 36.62d | 0d |  | Retaining Walls shutter [241] | B1 | 03 | MC | C |
| HCSWB4Z2020 |  | B4 Z2 :Fix steel rebar for reatining walls | 8d | 2012-07-23 | 2012-07-31 | HCSWB4Z2010 SS, HCSWB4Z2010 FF | 36.62d | 0d |  |  | B1 | 03 | MC | C |
| HCSWB4Z2030 |  | B4 Z2 :Fix MEP first fix in walls | 8d | 2012-07-24 | 2012-08-01 | HCSWB4Z2020 SS+1d, HCSWB4Z2020 FF+1d | 36.62d | 0d |  |  | B1 | 03 | MC | C |
| HCSWB4Z2040 |  | B4 Z2 :Close shutter for retaining walls | 8d | 2012-07-25 | 2012-08-02 | HCSWB4Z2030 SS+1d, HCSWB4Z2030 FF+1d | 36.62d | 0d |  | Retaining Walls shutter [241] | B1 | 03 | MC | C |
| HCSWB4Z2050 |  | B4 Z2 :Cast concrete for retaining walls | 8d | 2012-07-26 | 2012-08-04 | HCSWB4Z2040 SS+1d, HCSWB4Z2040 FF+1d | 36.62d | 0d |  |  | B1 | 03 | MC | C |
| HCSWB4Z2060 |  | B4 Z2 :De-shutter retaining walls | 8d | 2012-07-28 | 2012-08-05 | HCSWB4Z2050 SS+1d, HCSWB4Z2050 FF+1d | 36.62d | 0d |  |  | B1 | 03 | MC | C |
| HCSWB4Z2070 |  | B4 Z2 :Apply water proofing membrane behind Basement Walls | 8d | 2012-08-01 | 2012-08-09 | HCSWB4Z2060 SS+4d, HCSWB4Z2060 FF+4d | 84d | 0d |  |  | B1 | 07 | MC | C |
| HCSWB4Z2080 |  | B4 Z2 :Apply Protection for Basement Walls | 8d | 2012-08-04 | 2012-08-12 | HCSWB4Z2070 SS+2d, HCSWB4Z2070 FF+2d | 84d | 22d |  |  | B1 | 07 | MC | C |
|  | 3 | **Columns - 1** |  | 2012-07-23 | 2012-08-04 |  |  |  |  |  |  |  |  |  |
| HCSWB4Z2150 |  | B4 Z2 :Fix Steel Rebar for columns | 8d | 2012-07-23 | 2012-07-31 | HCSWB4Z2010 SS | 41.62d | 0d |  |  | B1 | 03 | MC | C |
| HCSWB4Z2160 |  | B4 Z2 :Erect columns formwork | 8d | 2012-07-24 | 2012-08-01 | HCSWB4Z2150 SS+1d, HCSWB4Z2150 FF+1d | 41.62d | 0d |  |  | B1 | 03 | MC | C |
| HCSWB4Z2170 |  | B4 Z2 :Cast concrete for columns | 8d | 2012-07-25 | 2012-08-02 | HCSWB4Z2160 SS+1d, HCSWB4Z2160 FF+1d | 41.62d | 0d |  |  | B1 | 03 | MC | C |
| HCSWB4Z2180 |  | B4 Z2 :De-shutter columns formwork | 8d | 2012-07-26 | 2012-08-04 | HCSWB4Z2170 SS+1d, HCSWB4Z2170 FF+1d | 41.62d | 20d |  |  | B1 | 03 | MC | C |
|  | 2 | **Columns - Left Over Area** |  | 2012-08-16 | 2012-08-25 |  |  |  |  |  |  |  |  |  |
| HCSWB4Z2380 |  | B4 Z2 :Fix Steel Rebar for columns | 1d | 2012-08-16 | 2012-08-16 | HCSWSSZ2480 | 28.62d | 0d |  |  | B1 | 03 | MC | C |
| HCSWB4Z2390 |  | B4 Z2 :Erect columns formwork | 1d | 2012-08-22 | 2012-08-22 | HCSWB4Z2380 SS+1d, HCSWB4Z2380 FF+1d | 28.62d | 0d |  |  | B1 | 03 | MC | C |
| HCSWB4Z2400 |  | B4 Z2 :Cast concrete for columns | 1d | 2012-08-23 | 2012-08-23 | HCSWB4Z2390 SS+1d, HCSWB4Z2390 FF+1d | 28.62d | 0d |  |  | B1 | 03 | MC | C |
| HCSWB4Z2410 |  | B4 Z2 :De-shutter columns formwork | 1d | 2012-08-25 | 2012-08-25 | HCSWB4Z2400 SS+1d, HCSWB4Z2400 FF+1d | 28.62d | 7d |  |  | B1 | 03 | MC | C |
|  | 4 | **Covering Slab including stair case** |  | 2012-08-28 | 2012-09-25 |  |  |  |  |  |  |  |  |  |
| HCSWB4Z2190 |  | B4 Z2 :Erect slab formwork and proping | 6d | 2012-08-28 | 2012-09-03 | HCSWB4Z2180 FF+2d, HCSWB4Z2060 FF+6d, HCSWB4Z2410 FF+1d, HCSWSSZ2250 | 21.62d | 0d |  |  | B1 | 03 | MC | C |
| HCSWB4Z2200 |  | B4 Z2 :Fix steel rebar for slab | 3d | 2012-09-04 | 2012-09-06 | HCSWB4Z2190 | 21.62d | 0d |  |  | B1 | 03 | MC | C |
| HCSWB4Z2210 |  | B4 Z2 :Fix MEP first Fix for slab | 2d | 2012-09-08 | 2012-09-09 | HCSWB4Z2200 | 21.62d | 0d |  |  | B1 | 03 | MC | C |
| HCSWB4Z2220 |  | B4 Z2 :Fix side shutters and casting guides for slab | 2d | 2012-09-09 | 2012-09-10 | HCSWB4Z2210 FF+1d | 21.62d | 0d |  |  | B1 | 03 | MC | C |
| HCSWB4Z2230 |  | B4 Z2 :Cast concrete for slab | 1d | 2012-09-11 | 2012-09-11 | HCSWB4Z2220, HCSWSSZ2250 FF+4d | 21.62d | 0d |  |  | B1 | 03 | MC | C |
| HCSWB4Z2240 |  | B4 Z2 :Cure and De-shutter slab formwork | 14d | 2012-09-11 | 2012-09-25 | HCSWB4Z2230 | 25.62d | 0.12d | HBTF # 2 - all days |  | B1 | 03 | MC | C |

| ID | WBS | Activity | Duration | Start | Finish | Predecessors | Total float | Free float | Calendar | Resources | Bill No. | Division No. | Responsibility | Phase Code |
| --- | --- | --- | --- | --- | --- | --- | --- | --- | --- | --- | --- | --- | --- | --- |
|  | 3 | **Zone # 3** |  | 2012-08-26 | 2012-10-10 |  |  |  |  |  |  |  |  |  |
|  | 1 | **Retaining Walls** |  | 2012-08-26 | 2012-09-10 |  |  |  |  |  |  |  |  |  |
| HCSWB4Z3010 |  | B4 Z3 :Formwork retaining walls shutters - 1st side | 5d | 2012-08-26 | 2012-08-30 | HCSWSSZ3050 FF+1d | 3d | 0d |  | Retaining Walls shutter [150] | B1 | 03 | MC | C |
| HCSWB4Z3020 |  | B4 Z3 :Fix steel rebar for reatining walls | 5d | 2012-08-26 | 2012-08-30 | HCSWB4Z3010 SS, HCSWB4Z3010 FF | 9d | 0d |  |  | B1 | 03 | MC | C |
| HCSWB4Z3030 |  | B4 Z3 :Fix MEP first fix in walls | 5d | 2012-08-27 | 2012-09-01 | HCSWB4Z3020 SS+1d, HCSWB4Z3020 FF+1d | 9d | 0d |  |  | B1 | 03 | MC | C |
| HCSWB4Z3040 |  | B4 Z3 :Close shutter for retaining walls | 5d | 2012-08-28 | 2012-09-02 | HCSWB4Z3030 SS+1d, HCSWB4Z3030 FF+1d | 9d | 0d |  | Retaining Walls shutter [150] | B1 | 03 | MC | C |
| HCSWB4Z3050 |  | B4 Z3 :Cast concrete for retaining walls | 5d | 2012-08-29 | 2012-09-03 | HCSWB4Z3040 SS+1d, HCSWB4Z3040 FF+1d | 9d | 0d |  |  | B1 | 03 | MC | C |
| HCSWB4Z3060 |  | B4 Z3 :De-shutter retaining walls | 5d | 2012-08-30 | 2012-09-04 | HCSWB4Z3050 SS+1d, HCSWB4Z3050 FF+1d | 9d | 0d |  |  | B1 | 03 | MC | C |
| HCSWB4Z3070 |  | B4 Z3 :Apply water proofing membrane behind Basement Walls | 5d | 2012-09-03 | 2012-09-08 | HCSWB4Z3060 SS+3d, HCSWB4Z3060 FF+3d | 130d | 0d |  |  | B1 | 07 | MC | C |
| HCSWB4Z3080 |  | B4 Z3 :Apply Protection for Basement Walls | 5d | 2012-09-05 | 2012-09-10 | HCSWB4Z3070 SS+2d, HCSWB4Z3070 FF+2d | 130d | 14d |  |  | B1 | 07 | MC | C |
|  | 2 | **Core and stair Walls** |  | 2012-08-26 | 2012-09-10 |  |  |  |  |  |  |  |  |  |
| HCSWB4Z3090 |  | B4 Z3 :Formwork core wall shutters - 1st side | 5d | 2012-08-26 | 2012-08-30 | HEMSMCI0010, HCSWB4Z3010 SS | 3d | 0d |  |  | B1 | 03 | MC | C |
| HCSWB4Z3100 |  | B4 Z3 :Fix steel rebar for core wall | 3d | 2012-09-01 | 2012-09-03 | HCSWB4Z3090 | 3d | 0d |  |  | B1 | 03 | MC | C |
| HCSWB4Z3110 |  | B4 Z3 :Fix MEP first fix in core wall | 1d | 2012-09-04 | 2012-09-04 | HCSWB4Z3100 | 3d | 0d |  |  | B1 | 03 | MC | C |
| HCSWB4Z3120 |  | B4 Z3 :Close shutter for core wall | 2d | 2012-09-05 | 2012-09-06 | HCSWB4Z3110 | 3d | 0d |  |  | B1 | 03 | MC | C |
| HCSWB4Z3130 |  | B4 Z3 :Cast concrete for core wall | 1d | 2012-09-08 | 2012-09-08 | HCSWB4Z3120 | 3d | 0d |  |  | B1 | 03 | MC | C |
| HCSWB4Z3140 |  | B4 Z3 :De-shutter core wall formwork | 2d | 2012-09-09 | 2012-09-10 | HCSWB4Z3130 | 3d | 1d |  |  | B1 | 03 | MC | C |
|  | 3 | **Columns** |  | 2012-08-26 | 2012-09-01 |  |  |  |  |  |  |  |  |  |
| HCSWB4Z3150 |  | B4 Z3 :Fix Steel Rebar for columns | 3d | 2012-08-26 | 2012-08-28 | HCSWB4Z3010 SS | 11d | 0d |  |  | B1 | 03 | MC | C |
| HCSWB4Z3160 |  | B4 Z3 :Erect columns formwork | 3d | 2012-08-27 | 2012-08-29 | HCSWB4Z3150 SS+1d, HCSWB4Z3150 FF+1d | 11d | 0d |  |  | B1 | 03 | MC | C |
| HCSWB4Z3170 |  | B4 Z3 :Cast concrete for columns | 3d | 2012-08-28 | 2012-08-30 | HCSWB4Z3160 SS+1d, HCSWB4Z3160 FF+1d | 11d | 0d |  |  | B1 | 03 | MC | C |
| HCSWB4Z3180 |  | B4 Z3 :De-shutter columns formwork | 3d | 2012-08-29 | 2012-09-01 | HCSWB4Z3170 SS+1d, HCSWB4Z3170 FF+1d | 11d | 9d |  |  | B1 | 03 | MC | C |
|  | 4 | **Covering Slab** |  | 2012-09-11 | 2012-10-10 |  |  |  |  |  |  |  |  |  |
| HCSWB4Z3190 |  | B4 Z3 :Erect slab formwork and proping | 7d | 2012-09-11 | 2012-09-18 | HCSWB4Z3180 FF+6d, HCSWB4Z3140 FF+6d, HCSWB4Z3060 FF+5d, HCSWB4Z1190, HCSWSSZ3250 | 2d | 0d |  |  | B1 | 03 | MC | C |
| HCSWB4Z3200 |  | B4 Z3 :Fix steel rebar for slab | 3d | 2012-09-19 | 2012-09-22 | HCSWB4Z3190 | 2d | 0d |  |  | B1 | 03 | MC | C |
| HCSWB4Z3210 |  | B4 Z3 :Fix MEP first Fix for slab | 2d | 2012-09-23 | 2012-09-24 | HCSWB4Z3200 | 2d | 0d |  |  | B1 | 03 | MC | C |
| HCSWB4Z3220 |  | B4 Z3 :Fix side shutters and casting guides for slab | 2d | 2012-09-24 | 2012-09-25 | HCSWB4Z3210 FF+1d | 2d | 0d |  |  | B1 | 03 | MC | C |
| HCSWB4Z3230 |  | B4 Z3 :Cast concrete for slab | 1d | 2012-09-26 | 2012-09-26 | HCSWB4Z3220, HCSWSSZ3250 FF+5d | 2d | 0d |  |  | B1 | 03 | MC | C |
| HCSWB4Z3240 |  | B4 Z3 :Cure and De-shutter slab formwork | 14d | 2012-09-26 | 2012-10-10 | HCSWB4Z3230 | 3d | 0d | HBTF # 2 - all days |  | B1 | 03 | MC | C |

| ID | WBS | Activity | Duration | Start | Finish | Predecessors | Total float | Free float | Calendar | Resources | Bill No. | Division No. | Responsibility | Phase Code |
| --- | --- | --- | --- | --- | --- | --- | --- | --- | --- | --- | --- | --- | --- | --- |
|  | 4 | **Zone # 4** |  | 2012-09-05 | 2012-10-22 |  |  |  |  |  |  |  |  |  |
|  | 1 | **Retaining Walls** |  | 2012-09-06 | 2012-09-22 |  |  |  |  |  |  |  |  |  |
| HCSWB4Z4010 |  | B4 Z4 :Formwork retaining walls shutters - 1st side | 5d | 2012-09-06 | 2012-09-11 | HCSWSSZ4050 | 15.75d | 0d |  | Retaining Walls shutter [150] | B1 | 03 | MC | C |
| HCSWB4Z4020 |  | B4 Z4 :Fix steel rebar for reatining walls | 5d | 2012-09-06 | 2012-09-11 | HCSWB4Z4010 SS, HCSWB4Z4010 FF | 17.75d | 0d |  |  | B1 | 03 | MC | C |
| HCSWB4Z4030 |  | B4 Z4 :Fix MEP first fix in walls | 5d | 2012-09-08 | 2012-09-12 | HCSWB4Z4020 SS+1d, HCSWB4Z4020 FF+1d | 17.75d | 0d |  |  | B1 | 03 | MC | C |
| HCSWB4Z4040 |  | B4 Z4 :Close shutter for retaining walls | 5d | 2012-09-09 | 2012-09-13 | HCSWB4Z4030 SS+1d, HCSWB4Z4030 FF+1d | 17.75d | 0d |  | Retaining Walls shutter [150] | B1 | 03 | MC | C |
| HCSWB4Z4050 |  | B4 Z4 :Cast concrete for retaining walls | 5d | 2012-09-10 | 2012-09-15 | HCSWB4Z4040 SS+1d, HCSWB4Z4040 FF+1d | 17.75d | 0d |  |  | B1 | 03 | MC | C |
| HCSWB4Z4060 |  | B4 Z4 :De-shutter retaining walls | 5d | 2012-09-11 | 2012-09-16 | HCSWB4Z4050 SS+1d, HCSWB4Z4050 FF+1d | 17.75d | 0d |  |  | B1 | 03 | MC | C |
| HCSWB4Z4070 |  | B4 Z4 :Apply water proofing membrane behind Basement Walls | 5d | 2012-09-15 | 2012-09-19 | HCSWB4Z4060 SS+3d, HCSWB4Z4060 FF+3d | 118d | 0d |  |  | B1 | 07 | MC | C |
| HCSWB4Z4080 |  | B4 Z4 :Apply Protection for Basement Walls | 5d | 2012-09-17 | 2012-09-22 | HCSWB4Z4070 SS+2d, HCSWB4Z4070 FF+2d | 118d | 14d |  |  | B1 | 07 | MC | C |
|  | 3 | **Columns - 1** |  | 2012-09-06 | 2012-09-18 |  |  |  |  |  |  |  |  |  |
| HCSWB4Z4150 |  | B4 Z4 :Fix Steel Rebar for columns | 8d | 2012-09-06 | 2012-09-15 | HCSWB4Z4010 SS | 15.75d | 0d |  |  | B1 | 03 | MC | C |
| HCSWB4Z4160 |  | B4 Z4 :Erect columns formwork | 8d | 2012-09-08 | 2012-09-16 | HCSWB4Z4150 SS+1d, HCSWB4Z4150 FF+1d | 15.75d | 0d |  |  | B1 | 03 | MC | C |
| HCSWB4Z4170 |  | B4 Z4 :Cast concrete for columns | 8d | 2012-09-09 | 2012-09-17 | HCSWB4Z4160 SS+1d, HCSWB4Z4160 FF+1d | 15.75d | 0d |  |  | B1 | 03 | MC | C |
| HCSWB4Z4180 |  | B4 Z4 :De-shutter columns formwork | 8d | 2012-09-10 | 2012-09-18 | HCSWB4Z4170 SS+1d, HCSWB4Z4170 FF+1d | 15.75d | 3d |  |  | B1 | 03 | MC | C |
|  | 2 | **Columns - Left Over Area** |  | 2012-09-05 | 2012-09-09 |  |  |  |  |  |  |  |  |  |
| HCSWB4Z4420 |  | B4 Z4 :Fix Steel Rebar for columns | 1d | 2012-09-05 | 2012-09-05 | HCSWSSZ4530 | 27.75d | 0d |  |  | B1 | 03 | MC | C |
| HCSWB4Z4430 |  | B4 Z4 :Erect columns formwork | 1d | 2012-09-06 | 2012-09-06 | HCSWB4Z4420 SS+1d, HCSWB4Z4420 FF+1d | 27.75d | 0d |  |  | B1 | 03 | MC | C |
| HCSWB4Z4440 |  | B4 Z4 :Cast concrete for columns | 1d | 2012-09-08 | 2012-09-08 | HCSWB4Z4430 SS+1d, HCSWB4Z4430 FF+1d | 27.75d | 0d |  |  | B1 | 03 | MC | C |
| HCSWB4Z4450 |  | B4 Z4 :De-shutter columns formwork | 1d | 2012-09-09 | 2012-09-09 | HCSWB4Z4440 SS+1d, HCSWB4Z4440 FF+1d | 27.75d | 15d |  |  | B1 | 03 | MC | C |
|  | 4 | **Covering Slab** |  | 2012-09-22 | 2012-10-22 |  |  |  |  |  |  |  |  |  |
| HCSWB4Z4190 |  | B4 Z4 :Erect slab formwork and proping | 6d | 2012-09-22 | 2012-09-27 | HCSWB4Z4180 FF+5d, HCSWB4Z4060 FF+5d, HCSWB4Z4450 FF+1d, HCSWSSZ4250 | 12.75d | 0d |  |  | B1 | 03 | MC | C |
| HCSWB4Z4200 |  | B4 Z4 :Fix steel rebar for slab | 3d | 2012-10-01 | 2012-10-03 | HCSWB4Z4190 FF+5d | 12.75d | 0d |  |  | B1 | 03 | MC | C |
| HCSWB4Z4210 |  | B4 Z4 :Fix MEP first Fix for slab | 2d | 2012-10-04 | 2012-10-06 | HCSWB4Z4200 | 12.75d | 0d |  |  | B1 | 03 | MC | C |
| HCSWB4Z4220 |  | B4 Z4 :Fix side shutters and casting guides for slab | 2d | 2012-10-06 | 2012-10-07 | HCSWB4Z4210 FF+1d | 12.75d | 0d |  |  | B1 | 03 | MC | C |
| HCSWB4Z4230 |  | B4 Z4 :Cast concrete for slab | 1d | 2012-10-08 | 2012-10-08 | HCSWB4Z4220, HCSWSSZ4250 | 12.75d | 0d |  |  | B1 | 03 | MC | C |
| HCSWB4Z4240 |  | B4 Z4 :Cure and De-shutter slab formwork | 14d | 2012-10-08 | 2012-10-22 | HCSWB4Z4230 | 14.75d | 0.12d | HBTF # 2 - all days |  | B1 | 03 | MC | C |

| ID | WBS | Activity | Duration | Start | Finish | Predecessors | Total float | Free float | Calendar | Resources | Bill No. | Division No. | Responsibility | Phase Code |
| --- | --- | --- | --- | --- | --- | --- | --- | --- | --- | --- | --- | --- | --- | --- |
|  | 5 | **Zone # 5** |  | 2012-09-10 | 2012-10-27 |  |  |  |  |  |  |  |  |  |
|  | 1 | **Retaining Walls** |  | 2012-09-10 | 2012-10-01 |  |  |  |  |  |  |  |  |  |
| HCSWB4Z5010 |  | B4 Z5 :Formwork retaining walls shutters - 1st side | 8d | 2012-09-10 | 2012-09-18 | HCSWSSZ5050, HCSWSSZ5030, HCSWSSZ4030, HCSWSSZ3030, HCSWSSZ2000 | 1d | 0d |  | Retaining Walls shutter [315] | B1 | 03 | MC | C |
| HCSWB4Z5020 |  | B4 Z5 :Fix steel rebar for reatining walls | 8d | 2012-09-10 | 2012-09-18 | HCSWB4Z5010 SS, HCSWB4Z5010 FF | 6d | 0d |  |  | B1 | 03 | MC | C |
| HCSWB4Z5030 |  | B4 Z5 :Fix MEP first fix in walls | 8d | 2012-09-11 | 2012-09-19 | HCSWB4Z5020 SS+1d, HCSWB4Z5020 FF+1d | 6d | 0d |  |  | B1 | 03 | MC | C |
| HCSWB4Z5040 |  | B4 Z5 :Close shutter for retaining walls | 8d | 2012-09-12 | 2012-09-20 | HCSWB4Z5030 SS+1d, HCSWB4Z5030 FF+1d | 6d | 0d |  | Retaining Walls shutter [315] | B1 | 03 | MC | C |
| HCSWB4Z5050 |  | B4 Z5 :Cast concrete for retaining walls | 8d | 2012-09-13 | 2012-09-22 | HCSWB4Z5040 SS+1d, HCSWB4Z5040 FF+1d | 6d | 0d |  |  | B1 | 03 | MC | C |
| HCSWB4Z5060 |  | B4 Z5 :De-shutter retaining walls | 8d | 2012-09-15 | 2012-09-23 | HCSWB4Z5050 SS+1d, HCSWB4Z5050 FF+1d | 6d | 0d |  |  | B1 | 03 | MC | C |
| HCSWB4Z5070 |  | B4 Z5 :Apply water proofing membrane behind Basement Walls | 8d | 2012-09-20 | 2012-09-29 | HCSWB4Z5060 SS+5d, HCSWB4Z5060 FF+5d | 53d | 0d |  |  | B1 | 07 | MC | C |
| HCSWB4Z5080 |  | B4 Z5 :Apply Protection for Basement Walls | 8d | 2012-09-23 | 2012-10-01 | HCSWB4Z5070 SS+2d, HCSWB4Z5070 FF+2d | 53d | 10d |  |  | B1 | 07 | MC | C |
|  | 2 | **Core Walls** |  | 2012-09-10 | 2012-09-29 |  |  |  |  |  |  |  |  |  |
| HCSWB4Z5090 |  | B4 Z5 :Formwork core wall shutters - 1st side | 6d | 2012-09-10 | 2012-09-16 | HCSWB4Z5010 SS | 1d | 0d |  |  | B1 | 03 | MC | C |
| HCSWB4Z5100 |  | B4 Z5 :Fix steel rebar for core wall | 4d | 2012-09-17 | 2012-09-20 | HCSWB4Z5090 | 1d | 0d |  |  | B1 | 03 | MC | C |
| HCSWB4Z5110 |  | B4 Z5 :Fix MEP first fix in core wall | 1d | 2012-09-22 | 2012-09-22 | HCSWB4Z5100 | 1d | 0d |  |  | B1 | 03 | MC | C |
| HCSWB4Z5120 |  | B4 Z5 :Close shutter for core wall | 3d | 2012-09-23 | 2012-09-25 | HCSWB4Z5110 | 1d | 0d |  |  | B1 | 03 | MC | C |
| HCSWB4Z5130 |  | B4 Z5 :Cast concrete for core wall | 1d | 2012-09-26 | 2012-09-26 | HCSWB4Z5120 | 1d | 0d |  |  | B1 | 03 | MC | C |
| HCSWB4Z5140 |  | B4 Z5 :De-shutter core wall formwork | 2d | 2012-09-27 | 2012-09-29 | HCSWB4Z5130 | 1d | 0d |  |  | B1 | 03 | MC | C |
|  | 3 | **Columns** |  | 2012-09-10 | 2012-09-16 |  |  |  |  |  |  |  |  |  |
| HCSWB4Z5150 |  | B4 Z5 :Fix Steel Rebar for columns | 3d | 2012-09-10 | 2012-09-12 | HCSWB4Z5010 SS | 12d | 0d |  |  | B1 | 03 | MC | C |
| HCSWB4Z5160 |  | B4 Z5 :Erect columns formwork | 3d | 2012-09-11 | 2012-09-13 | HCSWB4Z5150 SS+1d, HCSWB4Z5150 FF+1d | 12d | 0d |  |  | B1 | 03 | MC | C |
| HCSWB4Z5170 |  | B4 Z5 :Cast concrete for columns | 3d | 2012-09-12 | 2012-09-15 | HCSWB4Z5160 SS+1d, HCSWB4Z5160 FF+1d | 12d | 0d |  |  | B1 | 03 | MC | C |
| HCSWB4Z5180 |  | B4 Z5 :De-shutter columns formwork | 3d | 2012-09-13 | 2012-09-16 | HCSWB4Z5170 SS+1d, HCSWB4Z5170 FF+1d | 12d | 11d |  |  | B1 | 03 | MC | C |
|  | 4 | **Covering Slab** |  | 2012-09-26 | 2012-10-27 |  |  |  |  |  |  |  |  |  |
| HCSWB4Z5190 |  | B4 Z5 :Erect slab formwork and proping | 8d | 2012-09-26 | 2012-10-04 | HCSWB4Z5180 FF+5d, HCSWB4Z5060 FF+5d, HCSWB4Z1240 FF+4d, HCSWB4Z5140 FF+5d, HCSWSSZ5250 | 1d | 0d |  |  | B1 | 03 | MC | C |
| HCSWB4Z5200 |  | B4 Z5 :Fix steel rebar for slab | 3d | 2012-10-06 | 2012-10-08 | HCSWB4Z5190 | 1d | 0d |  |  | B1 | 03 | MC | C |
| HCSWB4Z5210 |  | B4 Z5 :Fix MEP first Fix for slab | 2d | 2012-10-09 | 2012-10-10 | HCSWB4Z5200 | 1d | 0d |  |  | B1 | 03 | MC | C |
| HCSWB4Z5220 |  | B4 Z5 :Fix side shutters and casting guides for slab | 2d | 2012-10-10 | 2012-10-11 | HCSWB4Z5210 FF+1d | 1d | 0d |  |  | B1 | 03 | MC | C |
| HCSWB4Z5230 |  | B4 Z5 :Cast concrete for slab | 1d | 2012-10-13 | 2012-10-13 | HCSWB4Z5220, HCSWSSZ5250 | 1d | 0d |  |  | B1 | 03 | MC | C |
| HCSWB4Z5240 |  | B4 Z5 :Cure and De-shutter slab formwork | 14d | 2012-10-13 | 2012-10-27 | HCSWB4Z5230 | 1d | 0d | HBTF # 2 - all days |  | B1 | 03 | MC | C |

| ID | WBS | Activity | Duration | Start | Finish | Predecessors | Total float | Free float | Calendar | Resources | Bill No. | Division No. | Responsibility | Phase Code |
| --- | --- | --- | --- | --- | --- | --- | --- | --- | --- | --- | --- | --- | --- | --- |
|  | 6 | **Zone # 6** |  | 2012-10-06 | 2012-11-27 |  |  |  |  |  |  |  |  |  |
|  | 1 | **Retaining Walls** |  | 2012-10-06 | 2012-10-31 |  |  |  |  |  |  |  |  |  |
| HCSWB4Z6010 |  | B4 Z6 :Formwork retaining walls shutters - 1st side | 8d | 2012-10-06 | 2012-10-14 | HCSWSSZ6050 | 7d | 0d |  | Retaining Walls shutter [241] | B1 | 03 | MC | C |
| HCSWB4Z6020 |  | B4 Z6 :Fix steel rebar for reatining walls | 8d | 2012-10-06 | 2012-10-14 | HCSWB4Z6010 SS, HCSWB4Z6010 FF | 7d | 0d |  |  | B1 | 03 | MC | C |
| HCSWB4Z6030 |  | B4 Z6 :Fix MEP first fix in walls | 8d | 2012-10-07 | 2012-10-15 | HCSWB4Z6020 SS+1d, HCSWB4Z6020 FF+1d | 7d | 0d |  |  | B1 | 03 | MC | C |
| HCSWB4Z6040 |  | B4 Z6 :Close shutter for retaining walls | 8d | 2012-10-08 | 2012-10-16 | HCSWB4Z6030 SS+1d, HCSWB4Z6030 FF+1d | 7d | 0d |  | Retaining Walls shutter [241] | B1 | 03 | MC | C |
| HCSWB4Z6050 |  | B4 Z6 :Cast concrete for retaining walls | 8d | 2012-10-09 | 2012-10-17 | HCSWB4Z6040 SS+1d, HCSWB4Z6040 FF+1d | 7d | 0d |  |  | B1 | 03 | MC | C |
| HCSWB4Z6060 |  | B4 Z6 :De-shutter retaining walls | 8d | 2012-10-10 | 2012-10-18 | HCSWB4Z6050 SS+1d, HCSWB4Z6050 FF+1d | 7d | 0d |  |  | B1 | 03 | MC | C |
| HCSWB4Z6070 |  | B4 Z6 :Apply water proofing membrane behind Basement Walls | 8d | 2012-10-16 | 2012-10-24 | HCSWB4Z6060 SS+5d, HCSWB4Z6060 FF+5d | 31d | 0d |  |  | B1 | 07 | MC | C |
| HCSWB4Z6080 |  | B4 Z6 :Apply Protection for Basement Walls | 8d | 2012-10-18 | 2012-10-31 | HCSWB4Z6070 SS+2d, HCSWB4Z6070 FF+2d | 31d | 6d |  |  | B1 | 07 | MC | C |
|  | 2 | **Ramp Walls** |  | 2012-10-11 | 2012-10-18 |  |  |  |  |  |  |  |  |  |
| HCSWB4Z6340 |  | B4 Z6 :Formwork Ramp walls shutters - 1st side | 3d | 2012-10-11 | 2012-10-14 | HCSWB4Z6170 | 7d | 0d |  | Retaining Walls shutter [241] | B1 | 03 | MC | C |
| HCSWB4Z6350 |  | B4 Z6 :Fix steel rebar for Ramp walls | 3d | 2012-10-11 | 2012-10-14 | HCSWB4Z6340 SS, HCSWB4Z6340 FF | 7d | 0d |  |  | B1 | 03 | MC | C |
| HCSWB4Z6370 |  | B4 Z6 :Close shutter for Ramp walls | 3d | 2012-10-14 | 2012-10-16 | HCSWB4Z6350 SS+2d, HCSWB4Z6350 FF+2d | 7d | 0d |  | Retaining Walls shutter [241] | B1 | 03 | MC | C |
| HCSWB4Z6380 |  | B4 Z6 :Cast concrete for Ramp walls | 3d | 2012-10-15 | 2012-10-17 | HCSWB4Z6370 SS+1d, HCSWB4Z6370 FF+1d | 7d | 0d |  |  | B1 | 03 | MC | C |
| HCSWB4Z6390 |  | B4 Z6 :De-shutter Ramp walls | 3d | 2012-10-16 | 2012-10-18 | HCSWB4Z6380 SS+1d, HCSWB4Z6380 FF+1d | 7d | 5d |  |  | B1 | 03 | MC | C |
|  | 3 | **Columns** |  | 2012-10-06 | 2012-10-11 |  |  |  |  |  |  |  |  |  |
| HCSWB4Z6150 |  | B4 Z6 :Fix Steel Rebar for columns | 3d | 2012-10-06 | 2012-10-08 | HCSWB4Z6010 SS | 7d | 0d |  |  | B1 | 03 | MC | C |
| HCSWB4Z6160 |  | B4 Z6 :Erect columns formwork | 3d | 2012-10-07 | 2012-10-09 | HCSWB4Z6150 SS+1d, HCSWB4Z6150 FF+1d | 7d | 0d |  |  | B1 | 03 | MC | C |
| HCSWB4Z6170 |  | B4 Z6 :Cast concrete for columns | 3d | 2012-10-08 | 2012-10-10 | HCSWB4Z6160 SS+1d, HCSWB4Z6160 FF+1d | 7d | 0d |  |  | B1 | 03 | MC | C |
| HCSWB4Z6180 |  | B4 Z6 :De-shutter columns formwork | 3d | 2012-10-09 | 2012-10-11 | HCSWB4Z6170 SS+1d, HCSWB4Z6170 FF+1d | 14d | 12d |  |  | B1 | 03 | MC | C |
|  | 4 | **Covering and Ramp Slab** |  | 2012-10-16 | 2012-11-27 |  |  |  |  |  |  |  |  |  |
| HCSWB4Z6190 |  | B4 Z6 :Erect slab formwork and proping | 14d | 2012-10-16 | 2012-11-05 | HCSWB4Z6180 FF+5d, HCSWB4Z6060 FF+6d, HCSWB4Z2240 FF+4d, HCSWB4Z6390 FF+6d, HCSWSSZ6250 | 2d | 0d |  |  | B1 | 03 | MC | C |
| HCSWB4Z6200 |  | B4 Z6 :Fix steel rebar for slab | 3d | 2012-11-06 | 2012-11-08 | HCSWB4Z6190 | 2d | 0d |  |  | B1 | 03 | MC | C |
| HCSWB4Z6210 |  | B4 Z6 :Fix MEP first Fix for slab | 2d | 2012-11-10 | 2012-11-11 | HCSWB4Z6200 | 2d | 0d |  |  | B1 | 03 | MC | C |
| HCSWB4Z6220 |  | B4 Z6 :Fix side shutters and casting guides for slab | 2d | 2012-11-11 | 2012-11-12 | HCSWB4Z6210 FF+1d | 2d | 0d |  |  | B1 | 03 | MC | C |
| HCSWB4Z6230 |  | B4 Z6 :Cast concrete for slab | 1d | 2012-11-13 | 2012-11-13 | HCSWB4Z6220, HCSWSSZ6250 FF+3d | 2d | 0d |  |  | B1 | 03 | MC | C |
| HCSWB4Z6240 |  | B4 Z6 :Cure and De-shutter slab formwork | 14d | 2012-11-13 | 2012-11-27 | HCSWB4Z6230 | 4d | 0d | HBTF # 2 - all days |  | B1 | 03 | MC | C |

| ID | WBS | Activity | Duration | Start | Finish | Predecessors | Total float | Free float |
| --- | --- | --- | --- | --- | --- | --- | --- | --- |
|  | 7 | **De-tensioning** |  | 2012-09-12 | 2012-12-10 |  |  |  |
|  | 1 | **Zone # 1** |  | 2012-09-17 | 2012-10-24 |  |  |  |
| HCSWB4Z1250 |  | B4 Z1 :Backfill behind basement walls up to anchor level | 20d | 2012-09-17 | 2012-10-09 | HCSWB4Z1080, HCSWB4Z1230 | 58d | 0d |
| HCSWB4Z1260 |  | B4 Z1 :De-tensioning | 3d | 2012-10-10 | 2012-10-13 | HCSWB4Z1250, HCSWB4Z1230 | 58d | 0d |
| HCSWB4Z1270 |  | B4 Z1 :Backfill behind basement walls up slab level | 10d | 2012-10-14 | 2012-10-24 | HCSWB4Z1260 | 58d | 0d |
|  | 2 | **Zone # 2** |  | 2012-09-12 | 2012-10-20 |  |  |  |
| HCSWB4Z2090 |  | B4 Z2 :Backfill behind basement walls up to anchor level | 20d | 2012-09-12 | 2012-10-04 | HCSWB4Z2080, HCSWB4Z2230 | 62d | 0d |
| HCSWB4Z2100 |  | B4 Z2 :De-tensioning | 3d | 2012-10-06 | 2012-10-08 | HCSWB4Z2090, HCSWB4Z2230 | 62d | 0d |
| HCSWB4Z2110 |  | B4 Z2 :Backfill behind basement walls up slab level | 10d | 2012-10-09 | 2012-10-20 | HCSWB4Z2100 | 62d | 11d |
|  | 3 | **Zone # 3** |  | 2012-09-27 | 2012-10-17 |  |  |  |
| HCSWB4Z3250 |  | B4 Z3 :Backfill behind basement walls up to anchor level | 12d | 2012-09-27 | 2012-10-10 | HCSWB4Z3080, HCSWB4Z3230 | 116d | 0d |
| HCSWB4Z3260 |  | B4 Z3 :De-tensioning | 2d | 2012-10-11 | 2012-10-13 | HCSWB4Z3250, HCSWB4Z3230 | 116d | 0d |
| HCSWB4Z3270 |  | B4 Z3 :Backfill behind basement walls up slab level | 4d | 2012-10-14 | 2012-10-17 | HCSWB4Z3260 | 116d | 15d |
|  | 4 | **Zone # 4** |  | 2012-10-09 | 2012-11-03 |  |  |  |
| HCSWB4Z4090 |  | B4 Z4 :Backfill behind basement walls up to anchor level | 12d | 2012-10-09 | 2012-10-22 | HCSWB4Z4080, HCSWB4Z4230 | 104d | 0d |
| HCSWB4Z4100 |  | B4 Z4 :De-tensioning | 2d | 2012-10-23 | 2012-10-24 | HCSWB4Z4090, HCSWB4Z4230 | 104d | 0d |
| HCSWB4Z4110 |  | B4 Z4 :Backfill behind basement walls up slab level | 4d | 2012-10-30 | 2012-11-03 | HCSWB4Z4100 | 104d | 32d |
|  | 5 | **Zone # 5** |  | 2012-10-14 | 2012-11-12 |  |  |  |
| HCSWB4Z5250 |  | B4 Z5 :Backfill behind basement walls up to anchor level | 14d | 2012-10-14 | 2012-11-03 | HCSWB4Z5080, HCSWB4Z5230 | 85d | 0d |
| HCSWB4Z5260 |  | B4 Z5 :De-tensioning | 2d | 2012-11-04 | 2012-11-05 | HCSWB4Z5250, HCSWB4Z5230 | 85d | 0d |
| HCSWB4Z5270 |  | B4 Z5 :Backfill behind basement walls up slab level | 6d | 2012-11-06 | 2012-11-12 | HCSWB4Z5260 | 85d | 9d |
|  | 6 | **Zone # 6** |  | 2012-11-14 | 2012-12-10 |  |  |  |
| HCSWB4Z6090 |  | B4 Z6 :Backfill behind basement walls up to anchor level | 14d | 2012-11-14 | 2012-12-01 | HCSWB4Z6080, HCSWB4Z6230 | 72d | 0d |
| HCSWB4Z6100 |  | B4 Z6 :De-tensioning | 2d | 2012-12-02 | 2012-12-03 | HCSWB4Z6090, HCSWB4Z6230 | 72d | 0d |
| HCSWB4Z6110 |  | B4 Z6 :Backfill behind basement walls up slab level | 6d | 2012-12-04 | 2012-12-10 | HCSWB4Z6100 | 72d | 3d |

| ID | WBS | Activity | Duration | Start | Finish | Predecessors | Total float | Free float | Calendar | Resources | Bill No. | Division No. | Responsibility | Phase Code |
| --- | --- | --- | --- | --- | --- | --- | --- | --- | --- | --- | --- | --- | --- | --- |
|  | B3 | **Basement 3 floor** |  | 2012-09-03 | 2013-01-09 |  |  |  |  |  |  |  |  |  |
|  | 1 | **Zone # 1** |  | 2012-09-17 | 2012-11-05 |  |  |  |  |  |  |  |  |  |
|  | 1 | **Retaining Walls** |  | 2012-09-17 | 2012-10-08 |  |  |  |  |  |  |  |  |  |
| HCSWB3Z1010 |  | B3 Z1 :Formwork retaining walls shutters - 1st side | 8d | 2012-09-17 | 2012-09-25 | HCSWB4Z1230 | 9d | 0d |  | Retaining Walls shutter [315] | B1 | 03 | MC | C |
| HCSWB3Z1020 |  | B3 Z1 :Fix steel rebar for reatining walls | 8d | 2012-09-17 | 2012-09-25 | HCSWB3Z1010 SS, HCSWB3Z1010 FF | 9d | 0d |  |  | B1 | 03 | MC | C |
| HCSWB3Z1030 |  | B3 Z1 :Fix MEP first fix in walls | 8d | 2012-09-18 | 2012-09-26 | HCSWB3Z1020 SS+1d, HCSWB3Z1020 FF+1d | 9d | 0d |  |  | B1 | 03 | MC | C |
| HCSWB3Z1040 |  | B3 Z1 :Close shutter for retaining walls | 8d | 2012-09-19 | 2012-09-27 | HCSWB3Z1030 SS+1d, HCSWB3Z1030 FF+1d | 9d | 0d |  | Retaining Walls shutter [315] | B1 | 03 | MC | C |
| HCSWB3Z1050 |  | B3 Z1 :Cast concrete for retaining walls | 8d | 2012-09-20 | 2012-09-29 | HCSWB3Z1040 SS+1d, HCSWB3Z1040 FF+1d | 9d | 0d |  |  | B1 | 03 | MC | C |
| HCSWB3Z1060 |  | B3 Z1 :De-shutter retaining walls | 8d | 2012-09-22 | 2012-09-30 | HCSWB3Z1050 SS+1d, HCSWB3Z1050 FF+1d | 9d | 0d |  |  | B1 | 03 | MC | C |
| HCSWB3Z1070 |  | B3 Z1 :Apply water proofing membrane behind Basement Walls | 8d | 2012-09-27 | 2012-10-06 | HCSWB3Z1060 SS+5d, HCSWB3Z1060 FF+5d, HCSWB4Z1080 | 72d | 0d |  |  | B1 | 07 | MC | C |
| HCSWB3Z1080 |  | B3 Z1 :Apply Protection for Basement Walls | 8d | 2012-09-30 | 2012-10-08 | HCSWB3Z1070 SS+2d, HCSWB3Z1070 FF+2d | 72d | 14d |  |  | B1 | 07 | MC | C |
|  | 2 | **Core and stair Walls** |  | 2012-09-17 | 2012-10-06 |  |  |  |  |  |  |  |  |  |
| HCSWB3Z1090 |  | B3 Z1 :Formwork core wall shutters - 1st side | 6d | 2012-09-17 | 2012-09-23 | HCSWB4Z1230 | 4d | 0d |  |  | B1 | 03 | MC | C |
| HCSWB3Z1100 |  | B3 Z1 :Fix steel rebar for core wall | 4d | 2012-09-24 | 2012-09-27 | HCSWB3Z1090 | 4d | 0d |  |  | B1 | 03 | MC | C |
| HCSWB3Z1110 |  | B3 Z1 :Fix MEP first fix in core wall | 1d | 2012-09-29 | 2012-09-29 | HCSWB3Z1100 | 4d | 0d |  |  | B1 | 03 | MC | C |
| HCSWB3Z1120 |  | B3 Z1 :Close shutter for core wall | 3d | 2012-09-30 | 2012-10-02 | HCSWB3Z1110 | 4d | 0d |  |  | B1 | 03 | MC | C |
| HCSWB3Z1130 |  | B3 Z1 :Cast concrete for core wall | 1d | 2012-10-03 | 2012-10-03 | HCSWB3Z1120 | 4d | 0d |  |  | B1 | 03 | MC | C |
| HCSWB3Z1140 |  | B3 Z1 :De-shutter core wall formwork | 2d | 2012-10-04 | 2012-10-06 | HCSWB3Z1130 | 4d | 1d |  |  | B1 | 03 | MC | C |
|  | 3 | **Columns** |  | 2012-09-17 | 2012-09-23 |  |  |  |  |  |  |  |  |  |
| HCSWB3Z1150 |  | B3 Z1 :Fix Steel Rebar for columns | 3d | 2012-09-17 | 2012-09-19 | HCSWB4Z1230 | 15d | 0d |  |  | B1 | 03 | MC | C |
| HCSWB3Z1160 |  | B3 Z1 :Erect columns formwork | 3d | 2012-09-18 | 2012-09-20 | HCSWB3Z1150 SS+1d, HCSWB3Z1150 FF+1d | 15d | 0d |  |  | B1 | 03 | MC | C |
| HCSWB3Z1170 |  | B3 Z1 :Cast concrete for columns | 3d | 2012-09-19 | 2012-09-22 | HCSWB3Z1160 SS+1d, HCSWB3Z1160 FF+1d | 15d | 0d |  |  | B1 | 03 | MC | C |
| HCSWB3Z1180 |  | B3 Z1 :De-shutter columns formwork | 3d | 2012-09-20 | 2012-09-23 | HCSWB3Z1170 SS+1d, HCSWB3Z1170 FF+1d | 15d | 12d |  |  | B1 | 03 | MC | C |
|  | 4 | **Covering Slab** |  | 2012-10-06 | 2012-11-05 |  |  |  |  |  |  |  |  |  |
| HCSWB3Z1190 |  | B3 Z1 :Erect slab formwork and proping | 8d | 2012-10-06 | 2012-10-14 | HCSWB3Z1180 FF+6d, HCSWB3Z1140 FF+6d, HCSWB3Z1060 FF+6d, HCSWB4Z3240 FF+4d | 3d | 0d |  |  | B1 | 03 | MC | C |
| HCSWB3Z1200 |  | B3 Z1 :Fix steel rebar for slab | 3d | 2012-10-15 | 2012-10-17 | HCSWB3Z1190 | 3d | 0d |  |  | B1 | 03 | MC | C |
| HCSWB3Z1210 |  | B3 Z1 :Fix MEP first Fix for slab | 2d | 2012-10-18 | 2012-10-20 | HCSWB3Z1200 | 3d | 0d |  |  | B1 | 03 | MC | C |
| HCSWB3Z1220 |  | B3 Z1 :Fix side shutters and casting guides for slab | 2d | 2012-10-20 | 2012-10-21 | HCSWB3Z1210 FF+1d | 3d | 0d |  |  | B1 | 03 | MC | C |
| HCSWB3Z1230 |  | B3 Z1 :Cast concrete for slab | 1d | 2012-10-22 | 2012-10-22 | HCSWB3Z1220 | 3d | 0d |  |  | B1 | 03 | MC | C |
| HCSWB3Z1240 |  | B3 Z1 :Cure and De-shutter slab formwork | 14d | 2012-10-22 | 2012-11-05 | HCSWB3Z1230 | 8d | 0.12d | HBTF # 2 - all days |  | B1 | 03 | MC | C |

| ID | WBS | Activity | Duration | Start | Finish | Predecessors | Planned start | Planned finish | Total float | Free float | Calendar | Resources | Bill No. | Division No. | Responsibility | Phase Code |
| --- | --- | --- | --- | --- | --- | --- | --- | --- | --- | --- | --- | --- | --- | --- | --- | --- |
|  | 2 | **Zone # 2** |  | 2012-09-12 | 2012-11-20 |  |  |  |  |  |  |  |  |  |  |  |
|  | 1 | **Retaining Walls** |  | 2012-09-12 | 2012-10-03 |  |  |  |  |  |  |  |  |  |  |  |
| HCSWB3Z2010 |  | B3 Z2 :Formwork retaining walls shutters - 1st side | 8d | 2012-09-12 | 2012-09-20 | HCSWB4Z2230 |  |  | 28.75d | 0d |  | Retaining Walls shutter [241] | B1 | 03 | MC | C |
| HCSWB3Z2020 |  | B3 Z2 :Fix steel rebar for reatining walls | 8d | 2012-09-12 | 2012-09-20 | HCSWB3Z2010 SS, HCSWB3Z2010 FF |  |  | 28.75d | 0d |  |  | B1 | 03 | MC | C |
| HCSWB3Z2030 |  | B3 Z2 :Fix MEP first fix in walls | 8d | 2012-09-13 | 2012-09-22 | HCSWB3Z2020 SS+1d, HCSWB3Z2020 FF+1d |  |  | 28.75d | 0d |  |  | B1 | 03 | MC | C |
| HCSWB3Z2040 |  | B3 Z2 :Close shutter for retaining walls | 8d | 2012-09-15 | 2012-09-23 | HCSWB3Z2030 SS+1d, HCSWB3Z2030 FF+1d |  |  | 28.75d | 0d |  | Retaining Walls shutter [241] | B1 | 03 | MC | C |
| HCSWB3Z2050 |  | B3 Z2 :Cast concrete for retaining walls | 8d | 2012-09-16 | 2012-09-24 | HCSWB3Z2040 SS+1d, HCSWB3Z2040 FF+1d |  |  | 28.75d | 0d |  |  | B1 | 03 | MC | C |
| HCSWB3Z2060 |  | B3 Z2 :De-shutter retaining walls | 8d | 2012-09-17 | 2012-09-25 | HCSWB3Z2050 SS+1d, HCSWB3Z2050 FF+1d |  |  | 28.75d | 0d |  |  | B1 | 03 | MC | C |
| HCSWB3Z2070 |  | B3 Z2 :Apply water proofing membrane behind Basement Walls | 8d | 2012-09-23 | 2012-10-01 | HCSWB3Z2060 SS+5d, HCSWB3Z2060 FF+5d, HCSWB4Z2080 |  |  | 76d | 0d |  |  | B1 | 07 | MC | C |
| HCSWB3Z2080 |  | B3 Z2 :Apply Protection for Basement Walls | 8d | 2012-09-25 | 2012-10-03 | HCSWB3Z2070 SS+2d, HCSWB3Z2070 FF+2d |  |  | 76d | 25d |  |  | B1 | 07 | MC | C |
|  | 3 | **Columns** |  | 2012-09-12 | 2012-09-18 |  |  |  |  |  |  |  |  |  |  |  |
| HCSWB3Z2150 |  | B3 Z2 :Fix Steel Rebar for columns | 3d | 2012-09-12 | 2012-09-15 | HCSWB4Z2230 |  |  | 34.75d | 0d |  |  | B1 | 03 | MC | C |
| HCSWB3Z2160 |  | B3 Z2 :Erect columns formwork | 3d | 2012-09-13 | 2012-09-16 | HCSWB3Z2150 SS+1d, HCSWB3Z2150 FF+1d |  |  | 34.75d | 0d |  |  | B1 | 03 | MC | C |
| HCSWB3Z2170 |  | B3 Z2 :Cast concrete for columns | 3d | 2012-09-15 | 2012-09-17 | HCSWB3Z2160 SS+1d, HCSWB3Z2160 FF+1d |  |  | 34.75d | 0d |  |  | B1 | 03 | MC | C |
| HCSWB3Z2180 |  | B3 Z2 :De-shutter columns formwork | 3d | 2012-09-16 | 2012-09-18 | HCSWB3Z2170 SS+1d, HCSWB3Z2170 FF+1d |  |  | 34.75d | 25d |  |  | B1 | 03 | MC | C |
|  | 4 | **Covering Slab including stair case** |  | 2012-10-18 | 2012-11-20 |  |  |  |  |  |  |  |  |  |  |  |
| HCSWB3Z2190 |  | B3 Z2 :Erect slab formwork and proping | 6d | 2012-10-18 | 2012-10-30 | HCSWB3Z2180 FF+6d, HCSWB3Z2060 FF+6d, HCSWB4Z4240 FF+4d | 2012-10-18 | 2012-10-24 | 9.75d | 0d |  |  | B1 | 03 | MC | C |
| HCSWB3Z2200 |  | B3 Z2 :Fix steel rebar for slab | 3d | 2012-10-30 | 2012-11-01 | HCSWB3Z2190 |  |  | 9.75d | 0d |  |  | B1 | 03 | MC | C |
| HCSWB3Z2210 |  | B3 Z2 :Fix MEP first Fix for slab | 2d | 2012-11-03 | 2012-11-04 | HCSWB3Z2200 |  |  | 9.75d | 0d |  |  | B1 | 03 | MC | C |
| HCSWB3Z2220 |  | B3 Z2 :Fix side shutters and casting guides for slab | 2d | 2012-11-04 | 2012-11-05 | HCSWB3Z2210 FF+1d |  |  | 9.75d | 0d |  |  | B1 | 03 | MC | C |
| HCSWB3Z2230 |  | B3 Z2 :Cast concrete for slab | 1d | 2012-11-06 | 2012-11-06 | HCSWB3Z2220 |  |  | 9.75d | 0d |  |  | B1 | 03 | MC | C |
| HCSWB3Z2240 |  | B3 Z2 :Cure and De-shutter slab formwork | 14d | 2012-11-06 | 2012-11-20 | HCSWB3Z2230 |  |  | 12.75d | 0.12d | HBTF # 2 - all days |  | B1 | 03 | MC | C |
|  | 3 | **Zone # 3** |  | 2012-09-27 | 2012-11-22 |  |  |  |  |  |  |  |  |  |  |  |
|  | 1 | **Retaining Walls** |  | 2012-09-27 | 2012-10-13 |  |  |  |  |  |  |  |  |  |  |  |
| HCSWB3Z3010 |  | B3 Z3 :Formwork retaining walls shutters - 1st side | 5d | 2012-09-27 | 2012-10-02 | HCSWB4Z3230 |  |  | 12d | 0d |  | Retaining Walls shutter [150] | B1 | 03 | MC | C |
| HCSWB3Z3020 |  | B3 Z3 :Fix steel rebar for reatining walls | 5d | 2012-09-27 | 2012-10-02 | HCSWB3Z3010 SS, HCSWB3Z3010 FF |  |  | 12d | 0d |  |  | B1 | 03 | MC | C |
| HCSWB3Z3030 |  | B3 Z3 :Fix MEP first fix in walls | 5d | 2012-09-29 | 2012-10-03 | HCSWB3Z3020 SS+1d, HCSWB3Z3020 FF+1d |  |  | 12d | 0d |  |  | B1 | 03 | MC | C |
| HCSWB3Z3040 |  | B3 Z3 :Close shutter for retaining walls | 5d | 2012-09-30 | 2012-10-04 | HCSWB3Z3030 SS+1d, HCSWB3Z3030 FF+1d |  |  | 12d | 0d |  | Retaining Walls shutter [150] | B1 | 03 | MC | C |
| HCSWB3Z3050 |  | B3 Z3 :Cast concrete for retaining walls | 5d | 2012-10-01 | 2012-10-06 | HCSWB3Z3040 SS+1d, HCSWB3Z3040 FF+1d |  |  | 12d | 0d |  |  | B1 | 03 | MC | C |
| HCSWB3Z3060 |  | B3 Z3 :De-shutter retaining walls | 5d | 2012-10-02 | 2012-10-07 | HCSWB3Z3050 SS+1d, HCSWB3Z3050 FF+1d |  |  | 12d | 0d |  |  | B1 | 03 | MC | C |
| HCSWB3Z3070 |  | B3 Z3 :Apply water proofing membrane behind Basement Walls | 5d | 2012-10-06 | 2012-10-10 | HCSWB3Z3060 SS+3d, HCSWB3Z3060 FF+3d, HCSWB4Z3080 |  |  | 120d | 0d |  |  | B1 | 07 | MC | C |
| HCSWB3Z3080 |  | B3 Z3 :Apply Protection for Basement Walls | 5d | 2012-10-08 | 2012-10-13 | HCSWB3Z3070 SS+2d, HCSWB3Z3070 FF+2d |  |  | 120d | 19d |  |  | B1 | 07 | MC | C |

| ID | WBS | Activity | Duration | Start | Finish | Predecessors | Total float | Free float | Calendar | Resources | Bill No. | Division No. | Responsibility | Phase Code |
| --- | --- | --- | --- | --- | --- | --- | --- | --- | --- | --- | --- | --- | --- | --- |
|  | 2 | **Core and stair Walls** |  | 2012-09-27 | 2012-10-16 |  |  |  |  |  |  |  |  |  |
| HCSWB3Z3090 |  | B3 Z3 :Formwork core wall shutters - 1st side | 6d | 2012-09-27 | 2012-10-03 | HCSWB4Z3230 | 4d | 0d |  |  | B1 | 03 | MC | C |
| HCSWB3Z3100 |  | B3 Z3 :Fix steel rebar for core wall | 4d | 2012-10-04 | 2012-10-08 | HCSWB3Z3090 | 4d | 0d |  |  | B1 | 03 | MC | C |
| HCSWB3Z3110 |  | B3 Z3 :Fix MEP first fix in core wall | 1d | 2012-10-09 | 2012-10-09 | HCSWB3Z3100 | 4d | 0d |  |  | B1 | 03 | MC | C |
| HCSWB3Z3120 |  | B3 Z3 :Close shutter for core wall | 3d | 2012-10-10 | 2012-10-13 | HCSWB3Z3110 | 4d | 0d |  |  | B1 | 03 | MC | C |
| HCSWB3Z3130 |  | B3 Z3 :Cast concrete for core wall | 1d | 2012-10-14 | 2012-10-14 | HCSWB3Z3120 | 4d | 0d |  |  | B1 | 03 | MC | C |
| HCSWB3Z3140 |  | B3 Z3 :De-shutter core wall formwork | 2d | 2012-10-15 | 2012-10-16 | HCSWB3Z3130 | 4d | 3d |  |  | B1 | 03 | MC | C |
|  | 3 | **Columns** |  | 2012-09-27 | 2012-10-03 |  |  |  |  |  |  |  |  |  |
| HCSWB3Z3150 |  | B3 Z3 :Fix Steel Rebar for columns | 3d | 2012-09-27 | 2012-09-30 | HCSWB4Z3230 | 15d | 0d |  |  | B1 | 03 | MC | C |
| HCSWB3Z3160 |  | B3 Z3 :Erect columns formwork | 3d | 2012-09-29 | 2012-10-01 | HCSWB3Z3150 SS+1d, HCSWB3Z3150 FF+1d | 15d | 0d |  |  | B1 | 03 | MC | C |
| HCSWB3Z3170 |  | B3 Z3 :Cast concrete for columns | 3d | 2012-09-30 | 2012-10-02 | HCSWB3Z3160 SS+1d, HCSWB3Z3160 FF+1d | 15d | 0d |  |  | B1 | 03 | MC | C |
| HCSWB3Z3180 |  | B3 Z3 :De-shutter columns formwork | 3d | 2012-10-01 | 2012-10-03 | HCSWB3Z3170 SS+1d, HCSWB3Z3170 FF+1d | 15d | 14d |  |  | B1 | 03 | MC | C |
|  | 4 | **Covering Slab** |  | 2012-10-18 | 2012-11-22 |  |  |  |  |  |  |  |  |  |
| HCSWB3Z3190 |  | B3 Z3 :Erect slab formwork and proping | 8d | 2012-10-18 | 2012-10-31 | HCSWB3Z3180 FF+6d, HCSWB3Z3140 FF+6d, HCSWB3Z3060 FF+6d, HCSWB4Z5240 FF+4d | 1d | 0d |  |  | B1 | 03 | MC | C |
| HCSWB3Z3200 |  | B3 Z3 :Fix steel rebar for slab | 3d | 2012-11-01 | 2012-11-04 | HCSWB3Z3190 | 1d | 0d |  |  | B1 | 03 | MC | C |
| HCSWB3Z3210 |  | B3 Z3 :Fix MEP first Fix for slab | 2d | 2012-11-05 | 2012-11-06 | HCSWB3Z3200 | 1d | 0d |  |  | B1 | 03 | MC | C |
| HCSWB3Z3220 |  | B3 Z3 :Fix side shutters and casting guides for slab | 2d | 2012-11-06 | 2012-11-07 | HCSWB3Z3210 FF+1d | 1d | 0d |  |  | B1 | 03 | MC | C |
| HCSWB3Z3230 |  | B3 Z3 :Cast concrete for slab | 1d | 2012-11-08 | 2012-11-08 | HCSWB3Z3220 | 1d | 0d |  |  | B1 | 03 | MC | C |
| HCSWB3Z3240 |  | B3 Z3 :Cure and De-shutter slab formwork | 14d | 2012-11-08 | 2012-11-22 | HCSWB3Z3230 | 2d | 0d | HBTF # 2 - all days |  | B1 | 03 | MC | C |
|  | 4 | **Zone # 4** |  | 2012-10-09 | 2012-12-25 |  |  |  |  |  |  |  |  |  |
|  | 1 | **Retaining Walls** |  | 2012-10-09 | 2012-10-24 |  |  |  |  |  |  |  |  |  |
| HCSWB3Z4010 |  | B3 Z4 :Formwork retaining walls shutters - 1st side | 5d | 2012-10-09 | 2012-10-14 | HCSWB4Z4230 | 30d | 0d |  | Retaining Walls shutter [150] | B1 | 03 | MC | C |
| HCSWB3Z4020 |  | B3 Z4 :Fix steel rebar for reatining walls | 5d | 2012-10-09 | 2012-10-14 | HCSWB3Z4010 SS, HCSWB3Z4010 FF | 30d | 0d |  |  | B1 | 03 | MC | C |
| HCSWB3Z4030 |  | B3 Z4 :Fix MEP first fix in walls | 5d | 2012-10-10 | 2012-10-15 | HCSWB3Z4020 SS+1d, HCSWB3Z4020 FF+1d | 30d | 0d |  |  | B1 | 03 | MC | C |
| HCSWB3Z4040 |  | B3 Z4 :Close shutter for retaining walls | 5d | 2012-10-11 | 2012-10-16 | HCSWB3Z4030 SS+1d, HCSWB3Z4030 FF+1d | 30d | 0d |  | Retaining Walls shutter [150] | B1 | 03 | MC | C |
| HCSWB3Z4050 |  | B3 Z4 :Cast concrete for retaining walls | 5d | 2012-10-13 | 2012-10-17 | HCSWB3Z4040 SS+1d, HCSWB3Z4040 FF+1d | 30d | 0d |  |  | B1 | 03 | MC | C |
| HCSWB3Z4060 |  | B3 Z4 :De-shutter retaining walls | 5d | 2012-10-14 | 2012-10-18 | HCSWB3Z4050 SS+1d, HCSWB3Z4050 FF+1d | 30d | 0d |  |  | B1 | 03 | MC | C |
| HCSWB3Z4070 |  | B3 Z4 :Apply water proofing membrane behind Basement Walls | 5d | 2012-10-17 | 2012-10-22 | HCSWB3Z4060 SS+3d, HCSWB3Z4060 FF+3d, HCSWB4Z4080 | 108d | 0d |  |  | B1 | 07 | MC | C |
| HCSWB3Z4080 |  | B3 Z4 :Apply Protection for Basement Walls | 5d | 2012-10-20 | 2012-10-24 | HCSWB3Z4070 SS+2d, HCSWB3Z4070 FF+2d | 108d | 36d |  |  | B1 | 07 | MC | C |

| ID | WBS | Activity | Duration | Start | Finish | Predecessors | Total float | Free float | Calendar | Resources | Bill No. | Division No. | Responsibility | Phase Code |
| --- | --- | --- | --- | --- | --- | --- | --- | --- | --- | --- | --- | --- | --- | --- |
|  | 3 | **Columns** |  | 2012-10-09 | 2012-10-15 |  |  |  |  |  |  |  |  |  |
| HCSWB3Z4150 |  | B3 Z4 :Fix Steel Rebar for columns | 3d | 2012-10-09 | 2012-10-11 | HCSWB4Z4230 | 33d | 0d |  |  | B1 | 03 | MC | C |
| HCSWB3Z4160 |  | B3 Z4 :Erect columns formwork | 3d | 2012-10-10 | 2012-10-13 | HCSWB3Z4150 SS+1d, HCSWB3Z4150 FF+1d | 33d | 0d |  |  | B1 | 03 | MC | C |
| HCSWB3Z4170 |  | B3 Z4 :Cast concrete for columns | 3d | 2012-10-11 | 2012-10-14 | HCSWB3Z4160 SS+1d, HCSWB3Z4160 FF+1d | 33d | 0d |  |  | B1 | 03 | MC | C |
| HCSWB3Z4180 |  | B3 Z4 :De-shutter columns formwork | 3d | 2012-10-13 | 2012-10-15 | HCSWB3Z4170 SS+1d, HCSWB3Z4170 FF+1d | 33d | 29d |  |  | B1 | 03 | MC | C |
|  | 4 | **Covering Slab** |  | 2012-11-25 | 2012-12-25 |  |  |  |  |  |  |  |  |  |
| HCSWB3Z4190 |  | B3 Z4 :Erect slab formwork and proping | 6d | 2012-11-25 | 2012-12-01 | HCSWB3Z4180 FF+6d, HCSWB3Z4060 FF+6d, HCSWB4Z6240 FF+4d | 4d | 0d |  |  | B1 | 03 | MC | C |
| HCSWB3Z4200 |  | B3 Z4 :Fix steel rebar for slab | 3d | 2012-12-04 | 2012-12-06 | HCSWB3Z4190 FF+5d | 4d | 0d |  |  | B1 | 03 | MC | C |
| HCSWB3Z4210 |  | B3 Z4 :Fix MEP first Fix for slab | 2d | 2012-12-08 | 2012-12-09 | HCSWB3Z4200 | 4d | 0d |  |  | B1 | 03 | MC | C |
| HCSWB3Z4220 |  | B3 Z4 :Fix side shutters and casting guides for slab | 2d | 2012-12-09 | 2012-12-10 | HCSWB3Z4210 FF+1d | 4d | 0d |  |  | B1 | 03 | MC | C |
| HCSWB3Z4230 |  | B3 Z4 :Cast concrete for slab | 1d | 2012-12-11 | 2012-12-11 | HCSWB3Z4220 | 4d | 0d |  |  | B1 | 03 | MC | C |
| HCSWB3Z4240 |  | B3 Z4 :Cure and De-shutter slab formwork | 14d | 2012-12-11 | 2012-12-25 | HCSWB3Z4230 | 5d | 0d | HBTF # 2 - all days |  | B1 | 03 | MC | C |
|  | 5 | **Zone # 5** |  | 2012-10-14 | 2012-12-08 |  |  |  |  |  |  |  |  |  |
|  | 1 | **Retaining Walls** |  | 2012-10-14 | 2012-11-08 |  |  |  |  |  |  |  |  |  |
| HCSWB3Z5010 |  | B3 Z5 :Formwork retaining walls shutters - 1st side | 8d | 2012-10-14 | 2012-10-22 | HCSWB4Z5230 | 8d | 0d |  | Retaining Walls shutter [365] | B1 | 03 | MC | C |
| HCSWB3Z5020 |  | B3 Z5 :Fix steel rebar for reatining walls | 8d | 2012-10-14 | 2012-10-22 | HCSWB3Z5010 SS, HCSWB3Z5010 FF | 8d | 0d |  |  | B1 | 03 | MC | C |
| HCSWB3Z5030 |  | B3 Z5 :Fix MEP first fix in walls | 8d | 2012-10-15 | 2012-10-23 | HCSWB3Z5020 SS+1d, HCSWB3Z5020 FF+1d | 8d | 0d |  |  | B1 | 03 | MC | C |
| HCSWB3Z5040 |  | B3 Z5 :Close shutter for retaining walls | 8d | 2012-10-16 | 2012-10-24 | HCSWB3Z5030 SS+1d, HCSWB3Z5030 FF+1d | 8d | 0d |  | Retaining Walls shutter [365] | B1 | 03 | MC | C |
| HCSWB3Z5050 |  | B3 Z5 :Cast concrete for retaining walls | 8d | 2012-10-17 | 2012-10-30 | HCSWB3Z5040 SS+1d, HCSWB3Z5040 FF+1d | 8d | 0d |  |  | B1 | 03 | MC | C |
| HCSWB3Z5060 |  | B3 Z5 :De-shutter retaining walls | 8d | 2012-10-18 | 2012-10-31 | HCSWB3Z5050 SS+1d, HCSWB3Z5050 FF+1d | 8d | 0d |  |  | B1 | 03 | MC | C |
| HCSWB3Z5070 |  | B3 Z5 :Apply water proofing membrane behind Basement Walls | 8d | 2012-10-24 | 2012-11-06 | HCSWB3Z5060 SS+5d, HCSWB3Z5060 FF+5d, HCSWB4Z5080 | 88d | 0d |  |  | B1 | 07 | MC | C |
| HCSWB3Z5080 |  | B3 Z5 :Apply Protection for Basement Walls | 8d | 2012-10-31 | 2012-11-08 | HCSWB3Z5070 SS+2d, HCSWB3Z5070 FF+2d | 88d | 12d |  |  | B1 | 07 | MC | C |
|  | 2 | **Core Walls** |  | 2012-10-14 | 2012-11-06 |  |  |  |  |  |  |  |  |  |
| HCSWB3Z5090 |  | B3 Z5 :Formwork core wall shutters - 1st side | 6d | 2012-10-14 | 2012-10-20 | HCSWB4Z5230 | 3d | 0d |  |  | B1 | 03 | MC | C |
| HCSWB3Z5100 |  | B3 Z5 :Fix steel rebar for core wall | 4d | 2012-10-21 | 2012-10-24 | HCSWB3Z5090 | 3d | 0d |  |  | B1 | 03 | MC | C |
| HCSWB3Z5110 |  | B3 Z5 :Fix MEP first fix in core wall | 1d | 2012-10-30 | 2012-10-30 | HCSWB3Z5100 | 3d | 0d |  |  | B1 | 03 | MC | C |
| HCSWB3Z5120 |  | B3 Z5 :Close shutter for core wall | 3d | 2012-10-31 | 2012-11-03 | HCSWB3Z5110 | 3d | 0d |  |  | B1 | 03 | MC | C |
| HCSWB3Z5130 |  | B3 Z5 :Cast concrete for core wall | 1d | 2012-11-04 | 2012-11-04 | HCSWB3Z5120 | 3d | 0d |  |  | B1 | 03 | MC | C |
| HCSWB3Z5140 |  | B3 Z5 :De-shutter core wall formwork | 2d | 2012-11-05 | 2012-11-06 | HCSWB3Z5130 | 3d | 0d |  |  | B1 | 03 | MC | C |

| ID | WBS | Activity | Duration | Start | Finish | Predecessors | Total float | Free float | Calendar | Resources | Bill No. | Division No. | Responsibility | Phase Code |
| --- | --- | --- | --- | --- | --- | --- | --- | --- | --- | --- | --- | --- | --- | --- |
|  | 3 | **Columns** |  | 2012-10-14 | 2012-10-20 |  |  |  |  |  |  |  |  |  |
| HCSWB3Z5150 |  | B3 Z5 :Fix Steel Rebar for columns | 3d | 2012-10-14 | 2012-10-16 | HCSWB4Z5230 | 14d | 0d |  |  | B1 | 03 | MC | C |
| HCSWB3Z5160 |  | B3 Z5 :Erect columns formwork | 3d | 2012-10-15 | 2012-10-17 | HCSWB3Z5150 SS+1d, HCSWB3Z5150 FF+1d | 14d | 0d |  |  | B1 | 03 | MC | C |
| HCSWB3Z5170 |  | B3 Z5 :Cast concrete for columns | 3d | 2012-10-16 | 2012-10-18 | HCSWB3Z5160 SS+1d, HCSWB3Z5160 FF+1d | 14d | 0d |  |  | B1 | 03 | MC | C |
| HCSWB3Z5180 |  | B3 Z5 :De-shutter columns formwork | 3d | 2012-10-17 | 2012-10-20 | HCSWB3Z5170 SS+1d, HCSWB3Z5170 FF+1d | 14d | 11d |  |  | B1 | 03 | MC | C |
|  | 4 | **Covering and ramp (-3 to -2) Slab** |  | 2012-10-23 | 2012-12-08 |  |  |  |  |  |  |  |  |  |
| HCSWB3Z5190 |  | B3 Z5 :Erect slab formwork and proping | 14d | 2012-10-23 | 2012-11-12 | HCSWB3Z5180 FF+5d, HCSWB3Z5140 FF+5d, HCSWB3Z5060 FF+5d, HCSWB3Z1240 FF+4d | 3d | 0d |  |  | B1 | 03 | MC | C |
| HCSWB3Z5200 |  | B3 Z5 :Fix steel rebar for slab | 3d | 2012-11-17 | 2012-11-19 | HCSWB3Z5190 FF+5d | 3d | 0d |  |  | B1 | 03 | MC | C |
| HCSWB3Z5210 |  | B3 Z5 :Fix MEP first Fix for slab | 2d | 2012-11-20 | 2012-11-21 | HCSWB3Z5200 | 3d | 0d |  |  | B1 | 03 | MC | C |
| HCSWB3Z5220 |  | B3 Z5 :Fix side shutters and casting guides for slab | 2d | 2012-11-21 | 2012-11-22 | HCSWB3Z5210 FF+1d | 3d | 0d |  |  | B1 | 03 | MC | C |
| HCSWB3Z5230 |  | B3 Z5 :Cast concrete for slab | 1d | 2012-11-24 | 2012-11-24 | HCSWB3Z5220 | 3d | 0d |  |  | B1 | 03 | MC | C |
| HCSWB3Z5240 |  | B3 Z5 :Cure and De-shutter slab formwork | 14d | 2012-11-24 | 2012-12-08 | HCSWB3Z5230 | 4d | 0d | HBTF # 2 - all days |  | B1 | 03 | MC | C |
|  | 6 | **Zone # 6** |  | 2012-11-14 | 2012-12-27 |  |  |  |  |  |  |  |  |  |
|  | 1 | **Retaining Walls** |  | 2012-11-14 | 2012-12-05 |  |  |  |  |  |  |  |  |  |
| HCSWB3Z6010 |  | B3 Z6 :Formwork retaining walls shutters - 1st side | 8d | 2012-11-14 | 2012-11-24 | HCSWB4Z6230 | 16d | 0d |  | Retaining Walls shutter [281] | B1 | 03 | MC | C |
| HCSWB3Z6020 |  | B3 Z6 :Fix steel rebar for reatining walls | 8d | 2012-11-14 | 2012-11-24 | HCSWB3Z6010 SS, HCSWB3Z6010 FF | 16d | 0d |  |  | B1 | 03 | MC | C |
| HCSWB3Z6030 |  | B3 Z6 :Fix MEP first fix in walls | 8d | 2012-11-17 | 2012-11-25 | HCSWB3Z6020 SS+1d, HCSWB3Z6020 FF+1d | 16d | 0d |  |  | B1 | 03 | MC | C |
| HCSWB3Z6040 |  | B3 Z6 :Close shutter for retaining walls | 8d | 2012-11-18 | 2012-11-26 | HCSWB3Z6030 SS+1d, HCSWB3Z6030 FF+1d | 16d | 0d |  | Retaining Walls shutter [281] | B1 | 03 | MC | C |
| HCSWB3Z6050 |  | B3 Z6 :Cast concrete for retaining walls | 8d | 2012-11-19 | 2012-11-27 | HCSWB3Z6040 SS+1d, HCSWB3Z6040 FF+1d | 16d | 0d |  |  | B1 | 03 | MC | C |
| HCSWB3Z6060 |  | B3 Z6 :De-shutter retaining walls | 8d | 2012-11-20 | 2012-11-28 | HCSWB3Z6050 SS+1d, HCSWB3Z6050 FF+1d | 16d | 0d |  |  | B1 | 03 | MC | C |
| HCSWB3Z6070 |  | B3 Z6 :Apply water proofing membrane behind Basement Walls | 8d | 2012-11-26 | 2012-12-04 | HCSWB3Z6060 SS+5d, HCSWB3Z6060 FF+5d, HCSWB4Z6080 | 31d | 0d |  |  | B1 | 07 | MC | C |
| HCSWB3Z6080 |  | B3 Z6 :Apply Protection for Basement Walls | 8d | 2012-11-27 | 2012-12-05 | HCSWB3Z6070 SS+1d, HCSWB3Z6070 FF+1d | 31d | 7d |  |  | B1 | 07 | MC | C |
|  | 3 | **Columns** |  | 2012-11-14 | 2012-11-21 |  |  |  |  |  |  |  |  |  |
| HCSWB3Z6150 |  | B3 Z6 :Fix Steel Rebar for columns | 3d | 2012-11-14 | 2012-11-18 | HCSWB4Z6230 | 22d | 0d |  |  | B1 | 03 | MC | C |
| HCSWB3Z6160 |  | B3 Z6 :Erect columns formwork | 3d | 2012-11-17 | 2012-11-19 | HCSWB3Z6150 SS+1d, HCSWB3Z6150 FF+1d | 22d | 0d |  |  | B1 | 03 | MC | C |
| HCSWB3Z6170 |  | B3 Z6 :Cast concrete for columns | 3d | 2012-11-18 | 2012-11-20 | HCSWB3Z6160 SS+1d, HCSWB3Z6160 FF+1d | 22d | 0d |  |  | B1 | 03 | MC | C |
| HCSWB3Z6180 |  | B3 Z6 :De-shutter columns formwork | 3d | 2012-11-19 | 2012-11-21 | HCSWB3Z6170 SS+1d, HCSWB3Z6170 FF+1d | 22d | 6d |  |  | B1 | 03 | MC | C |

| ID | WBS | Activity | Duration | Start | Finish | Predecessors | Total float | Free float | Constraint | Calendar | Resources | Bill No. | Division No. | Responsibility | Phase Code |
| --- | --- | --- | --- | --- | --- | --- | --- | --- | --- | --- | --- | --- | --- | --- | --- |
|  | 4 | **Covering Slab** |  | 2012-11-29 | 2012-12-27 |  |  |  |  |  |  |  |  |  |  |
| HCSWB3Z6190 |  | B3 Z6 :Erect slab formwork and proping | 6d | 2012-11-29 | 2012-12-05 | HCSWB3Z6180 FF+6d, HCSWB3Z6060 FF+6d, HCSWB3Z2240 FF+4d, HCSWSSZ6340 | 16d | 0d |  |  |  | B1 | 03 | MC | C |
| HCSWB3Z6200 |  | B3 Z6 :Fix steel rebar for slab | 3d | 2012-12-06 | 2012-12-09 | HCSWB3Z6190 | 16d | 0d |  |  |  | B1 | 03 | MC | C |
| HCSWB3Z6210 |  | B3 Z6 :Fix MEP first Fix for slab | 2d | 2012-12-10 | 2012-12-11 | HCSWB3Z6200 | 16d | 0d |  |  |  | B1 | 03 | MC | C |
| HCSWB3Z6220 |  | B3 Z6 :Fix side shutters and casting guides for slab | 2d | 2012-12-11 | 2012-12-12 | HCSWB3Z6210 FF+1d | 16d | 0d |  |  |  | B1 | 03 | MC | C |
| HCSWB3Z6230 |  | B3 Z6 :Cast concrete for slab | 1d | 2012-12-13 | 2012-12-13 | HCSWB3Z6220 | 16d | 0d |  |  |  | B1 | 03 | MC | C |
| HCSWB3Z6240 |  | B3 Z6 :Cure and De-shutter slab formwork | 14d | 2012-12-13 | 2012-12-27 | HCSWB3Z6230 | 35d | 0d |  | HBTF # 2 - all days |  | B1 | 03 | MC | C |
|  | 7 | **Extended SOG (axes 16-18 and A-H)** |  | 2012-09-03 | 2012-11-27 |  |  |  |  |  |  |  |  |  |  |
| HCSWSSZ6255 |  | SS Z6 :Cut and Fill (Cyclopean) | 14d | 2012-09-03 | 2012-09-18 | H0000 | 25d | 0d | as late as possible |  |  |  |  |  |  |
|  | 1 | **Strip Footing** |  | 2012-09-19 | 2012-10-16 |  |  |  |  |  |  |  |  |  |  |
| HCSWSSZ6260 |  | SS Z6 :Pour blinding under membrane | 14d | 2012-09-19 | 2012-10-04 | HCSWSSZ6050 FF, HCSWSSZ6255 | 25d | 0d |  |  |  | B1 | 03 | MC | C |
| HCSWSSZ6270 |  | SS Z6 :Construct block works (formwork) | 14d | 2012-09-20 | 2012-10-06 | HCSWSSZ6260 SS+1d, HCSWSSZ6260 FF+1d | 25d | 0d |  |  |  | B1 | 07 | MC | C |
| HCSWSSZ6280 |  | SS Z6 :Apply water Proofing and protection (inside) | 14d | 2012-09-22 | 2012-10-07 | HCSWSSZ6270 SS+1d, HCSWSSZ6270 FF+1d | 25d | 0d |  |  |  | B1 | 03 | MC | C |
| HCSWSSZ6290 |  | SS Z6 :Formwork and rebar for foundations | 14d | 2012-09-24 | 2012-10-09 | HCSWSSZ6280 SS+2d, HCSWSSZ6280 FF+2d | 25d | 0d |  |  |  | B1 | 03 | MC | C |
| HCSWSSZ6300 |  | SS Z6 :Cast concrete for foundations | 14d | 2012-09-30 | 2012-10-15 | HCSWSSZ6290 SS+5d, HCSWSSZ6290 FF+5d | 25d | 0d |  |  |  | B1 | 03 | MC | C |
| HCSWSSZ6310 |  | SS Z6 :De-shutter formwork | 14d | 2012-10-01 | 2012-10-16 | HCSWSSZ6300 SS+1d, HCSWSSZ6300 FF+1d | 43d | 18d |  |  |  | B1 | 03 | MC | C |
|  | 2 | **Retaining Wall** |  | 2012-10-16 | 2012-11-11 |  |  |  |  |  |  |  |  |  |  |
| HCSWB3Z6250 |  | B3 Z6 :Formwork retaining walls shutters - 1st side | 8d | 2012-10-16 | 2012-10-24 | HCSWSSZ6300 | 25d | 0d |  |  | Retaining Walls shutter [300] | B1 | 03 | MC | C |
| HCSWB3Z6260 |  | B3 Z6 :Fix steel rebar for reatining walls | 8d | 2012-10-16 | 2012-10-24 | HCSWB3Z6250 SS, HCSWB3Z6250 FF | 25d | 0d |  |  |  | B1 | 03 | MC | C |
| HCSWB3Z6270 |  | B3 Z6 :Fix MEP first fix in walls | 8d | 2012-10-17 | 2012-10-30 | HCSWB3Z6260 SS+1d, HCSWB3Z6260 FF+1d | 25d | 0d |  |  |  | B1 | 03 | MC | C |
| HCSWB3Z6280 |  | B3 Z6 :Close shutter for retaining walls | 8d | 2012-10-18 | 2012-10-31 | HCSWB3Z6270 SS+1d, HCSWB3Z6270 FF+1d | 25d | 0d |  |  | Retaining Walls shutter [300] | B1 | 03 | MC | C |
| HCSWB3Z6290 |  | B3 Z6 :Cast concrete for retaining walls | 8d | 2012-10-20 | 2012-11-01 | HCSWB3Z6280 SS+1d, HCSWB3Z6280 FF+1d | 25d | 0d |  |  |  | B1 | 03 | MC | C |
| HCSWB3Z6300 |  | B3 Z6 :De-shutter retaining walls | 8d | 2012-10-21 | 2012-11-03 | HCSWB3Z6290 SS+1d, HCSWB3Z6290 FF+1d | 25d | 0d |  |  |  | B1 | 03 | MC | C |
| HCSWB3Z6310 |  | B3 Z6 :Apply water proofing membrane behind Basement Walls | 8d | 2012-10-31 | 2012-11-08 | HCSWB3Z6300 SS+5d, HCSWB3Z6300 FF+5d | 25d | 0d |  |  |  | B1 | 07 | MC | C |
| HCSWB3Z6320 |  | B3 Z6 :Apply Protection for Basement Walls | 8d | 2012-11-03 | 2012-11-11 | HCSWB3Z6310 SS+2d, HCSWB3Z6310 FF+2d | 25d | 0d |  |  |  | B1 | 07 | MC | C |

| ID | WBS | Activity | Duration | Start | Finish | Predecessors | Total float | Free float | Bill No. | Division No. | Responsibility | Phase Code |
| --- | --- | --- | --- | --- | --- | --- | --- | --- | --- | --- | --- | --- |
|  | 3 | **SOG** |  | 2012-11-08 | 2012-11-27 |  |  |  |  |  |  |  |
| HCSWSSZ6340 |  | SS Z6 :Fill imported base course around Foundations & under SOG | 8d | 2012-11-08 | 2012-11-18 | HCSWB3Z6320 FF+5d, HCSWB4Z6080, HCSWB4Z5080, HCSWSSZ6310 FF+5d | 25d | 0d | B1 | 31 | MC | C |
| HCSWSSZ6350 |  | SS Z6 :Lay polythene sheets under SOG | 1d | 2012-11-19 | 2012-11-19 | HCSWSSZ6340 | 38.25d | 0d | B1 | 07 | MC | C |
| HCSWSSZ6360 |  | SS Z6 :Formwork and Erect steel for SOG | 6d | 2012-11-20 | 2012-11-26 | HCSWSSZ6350 | 38.25d | 0d | B1 | 03 | MC | C |
| HCSWSSZ6370 |  | SS Z6 :Cast Concrete for SOG | 1d | 2012-11-27 | 2012-11-27 | HCSWSSZ6360 | 38.25d | 0d | B1 | 03 | MC | C |
|  | 8 | **De-tensioning** |  | 2012-10-30 | 2013-01-09 |  |  |  |  |  |  |  |
|  | 1 | **Zone # 1** |  | 2012-10-30 | 2012-12-08 |  |  |  |  |  |  |  |
| HCSWB3Z1250 |  | B3 Z1 :Backfill behind basement walls up to anchor level | 20d | 2012-10-30 | 2012-11-22 | HCSWB4Z1270, HCSWB3Z1230, HCSWB3Z1080 | 58d | 0d |  |  |  |  |
| HCSWB3Z1260 |  | B3 Z1 :De-tensioning | 3d | 2012-11-24 | 2012-11-26 | HCSWB3Z1250, HCSWB3Z1230 | 58d | 0d |  |  |  |  |
| HCSWB3Z1270 |  | B3 Z1 :Backfill behind basement walls up slab level | 10d | 2012-11-27 | 2012-12-08 | HCSWB3Z1260 | 58d | 0d |  |  |  |  |
|  | 2 | **Zone # 2** |  | 2012-11-07 | 2012-12-16 |  |  |  |  |  |  |  |
| HCSWB3Z2090 |  | B3 Z2 :Backfill behind basement walls up to anchor level | 20d | 2012-11-07 | 2012-12-01 | HCSWB4Z2110, HCSWB3Z2230, HCSWB3Z2080 | 51d | 0d |  |  |  |  |
| HCSWB3Z2100 |  | B3 Z2 :De-tensioning | 3d | 2012-12-02 | 2012-12-04 | HCSWB3Z2090, HCSWB3Z2230 | 51d | 0d |  |  |  |  |
| HCSWB3Z2110 |  | B3 Z2 :Backfill behind basement walls up slab level | 10d | 2012-12-05 | 2012-12-16 | HCSWB3Z2100 | 51d | 18d |  |  |  |  |
|  | 3 | **Zone # 3** |  | 2012-11-10 | 2012-12-01 |  |  |  |  |  |  |  |
| HCSWB3Z3250 |  | B3 Z3 :Backfill behind basement walls up to anchor level | 12d | 2012-11-10 | 2012-11-24 | HCSWB4Z3270, HCSWB3Z3230, HCSWB3Z3080 | 101d | 0d |  |  |  |  |
| HCSWB3Z3260 |  | B3 Z3 :De-tensioning | 2d | 2012-11-25 | 2012-11-26 | HCSWB3Z3250, HCSWB3Z3230 | 101d | 0d |  |  |  |  |
| HCSWB3Z3270 |  | B3 Z3 :Backfill behind basement walls up slab level | 4d | 2012-11-27 | 2012-12-01 | HCSWB3Z3260 | 101d | 0d |  |  |  |  |
|  | 4 | **Zone # 4** |  | 2012-12-12 | 2013-01-02 |  |  |  |  |  |  |  |
| HCSWB3Z4090 |  | B3 Z4 :Backfill behind basement walls up to anchor level | 12d | 2012-12-12 | 2012-12-25 | HCSWB4Z4110, HCSWB3Z4230, HCSWB3Z4080 | 72d | 0d |  |  |  |  |
| HCSWB3Z4100 |  | B3 Z4 :De-tensioning | 2d | 2012-12-26 | 2012-12-27 | HCSWB3Z4090, HCSWB3Z4230 | 72d | 0d |  |  |  |  |
| HCSWB3Z4110 |  | B3 Z4 :Backfill behind basement walls up slab level | 4d | 2012-12-29 | 2013-01-02 | HCSWB3Z4100 | 72d | 6d |  |  |  |  |
|  | 5 | **Zone # 5** |  | 2012-11-25 | 2012-12-31 |  |  |  |  |  |  |  |
| HCSWB3Z5250 |  | B3 Z5 :Backfill behind basement walls up to anchor level | 14d | 2012-11-25 | 2012-12-10 | HCSWB4Z5270, HCSWB3Z5230, HCSWB3Z5080 | 76d | 0d |  |  |  |  |
| HCSWB3Z5260 |  | B3 Z5 :De-tensioning | 2d | 2012-12-11 | 2012-12-12 | HCSWB3Z5250, HCSWB3Z5230 | 76d | 0d |  |  |  |  |
| HCSWB3Z5270 |  | B3 Z5 :Backfill behind basement walls up slab level | 16d | 2012-12-13 | 2012-12-31 | HCSWB3Z5260 | 76d | 0d |  |  |  |  |

| ID | WBS | Activity | Duration | Start | Finish | Predecessors | Total float | Free float | Resources | Bill No. | Division No. | Responsibility | Phase Code |
| --- | --- | --- | --- | --- | --- | --- | --- | --- | --- | --- | --- | --- | --- |
|  | 6 | **Zone # 6** |  | 2012-12-15 | 2013-01-09 |  |  |  |  |  |  |  |  |
| HCSWB3Z6090 |  | B3 Z6 :Backfill behind basement walls up to anchor level | 14d | 2012-12-15 | 2012-12-30 | HCSWB4Z6110, HCSWB3Z6230, HCSWB3Z6080, HCSWB3Z6320 | 69d | 0d |  |  |  |  |  |
| HCSWB3Z6100 |  | B3 Z6 :De-tensioning | 2d | 2012-12-31 | 2013-01-02 | HCSWB3Z6090, HCSWB3Z6230 | 69d | 0d |  |  |  |  |  |
| HCSWB3Z6110 |  | B3 Z6 :Backfill behind basement walls up slab level | 6d | 2013-01-03 | 2013-01-09 | HCSWB3Z6100 | 69d | 52d |  |  |  |  |  |
|  | B2 | **Basement 2 floor** |  | 2012-10-23 | 2013-04-07 |  |  |  |  |  |  |  |  |
|  | 1 | **Zone # 1** |  | 2012-10-23 | 2012-12-18 |  |  |  |  |  |  |  |  |
|  | 1 | **Retaining Walls** |  | 2012-10-23 | 2012-11-19 |  |  |  |  |  |  |  |  |
| HCSWB2Z1010 |  | B2 Z1 :Formwork retaining walls shutters - 1st side | 8d | 2012-10-23 | 2012-11-05 | HCSWB3Z1230 | 9d | 0d | Retaining Walls shutter [420] | B1 | 03 | MC | C |
| HCSWB2Z1020 |  | B2 Z1 :Fix steel rebar for reatining walls | 8d | 2012-10-23 | 2012-11-05 | HCSWB2Z1010 SS, HCSWB2Z1010 FF | 9d | 0d |  | B1 | 03 | MC | C |
| HCSWB2Z1030 |  | B2 Z1 :Fix MEP first fix in walls | 8d | 2012-10-24 | 2012-11-06 | HCSWB2Z1020 SS+1d, HCSWB2Z1020 FF+1d | 9d | 0d |  | B1 | 03 | MC | C |
| HCSWB2Z1040 |  | B2 Z1 :Close shutter for retaining walls | 8d | 2012-10-30 | 2012-11-07 | HCSWB2Z1030 SS+1d, HCSWB2Z1030 FF+1d | 9d | 0d | Retaining Walls shutter [420] | B1 | 03 | MC | C |
| HCSWB2Z1050 |  | B2 Z1 :Cast concrete for retaining walls | 8d | 2012-10-31 | 2012-11-08 | HCSWB2Z1040 SS+1d, HCSWB2Z1040 FF+1d | 9d | 0d |  | B1 | 03 | MC | C |
| HCSWB2Z1060 |  | B2 Z1 :De-shutter retaining walls | 8d | 2012-11-01 | 2012-11-10 | HCSWB2Z1050 SS+1d, HCSWB2Z1050 FF+1d | 9d | 0d |  | B1 | 03 | MC | C |
| HCSWB2Z1070 |  | B2 Z1 :Apply water proofing membrane behind Basement Walls | 8d | 2012-11-07 | 2012-11-17 | HCSWB2Z1060 SS+5d, HCSWB2Z1060 FF+5d, HCSWB3Z1080 | 74d | 0d |  | B1 | 07 | MC | C |
| HCSWB2Z1080 |  | B2 Z1 :Apply Protection for Basement Walls | 8d | 2012-11-10 | 2012-11-19 | HCSWB2Z1070 SS+2d, HCSWB2Z1070 FF+2d | 74d | 16d |  | B1 | 07 | MC | C |
|  | 2 | **Core and stair Walls** |  | 2012-10-23 | 2012-11-17 |  |  |  |  |  |  |  |  |
| HCSWB2Z1090 |  | B2 Z1 :Formwork core wall shutters - 1st side | 6d | 2012-10-23 | 2012-11-03 | HCSWB3Z1230 | 4d | 0d |  | B1 | 03 | MC | C |
| HCSWB2Z1100 |  | B2 Z1 :Fix steel rebar for core wall | 4d | 2012-11-04 | 2012-11-07 | HCSWB2Z1090 | 4d | 0d |  | B1 | 03 | MC | C |
| HCSWB2Z1110 |  | B2 Z1 :Fix MEP first fix in core wall | 1d | 2012-11-08 | 2012-11-08 | HCSWB2Z1100 | 4d | 0d |  | B1 | 03 | MC | C |
| HCSWB2Z1120 |  | B2 Z1 :Close shutter for core wall | 3d | 2012-11-10 | 2012-11-12 | HCSWB2Z1110 | 4d | 0d |  | B1 | 03 | MC | C |
| HCSWB2Z1130 |  | B2 Z1 :Cast concrete for core wall | 1d | 2012-11-13 | 2012-11-13 | HCSWB2Z1120 | 4d | 0d |  | B1 | 03 | MC | C |
| HCSWB2Z1140 |  | B2 Z1 :De-shutter core wall formwork | 2d | 2012-11-14 | 2012-11-17 | HCSWB2Z1130 | 4d | 2d |  | B1 | 03 | MC | C |
|  | 3 | **Columns** |  | 2012-10-23 | 2012-11-03 |  |  |  |  |  |  |  |  |
| HCSWB2Z1150 |  | B2 Z1 :Fix Steel Rebar for columns | 3d | 2012-10-23 | 2012-10-30 | HCSWB3Z1230 | 15d | 0d |  | B1 | 03 | MC | C |
| HCSWB2Z1160 |  | B2 Z1 :Erect columns formwork | 3d | 2012-10-24 | 2012-10-31 | HCSWB2Z1150 SS+1d, HCSWB2Z1150 FF+1d | 15d | 0d |  | B1 | 03 | MC | C |
| HCSWB2Z1170 |  | B2 Z1 :Cast concrete for columns | 3d | 2012-10-30 | 2012-11-01 | HCSWB2Z1160 SS+1d, HCSWB2Z1160 FF+1d | 15d | 0d |  | B1 | 03 | MC | C |
| HCSWB2Z1180 |  | B2 Z1 :De-shutter columns formwork | 3d | 2012-10-31 | 2012-11-03 | HCSWB2Z1170 SS+1d, HCSWB2Z1170 FF+1d | 15d | 13d |  | B1 | 03 | MC | C |

| ID | WBS | Activity | Duration | Start | Finish | Predecessors | Total float | Free float | Calendar | Resources | Bill No. | Division No. | Responsibility | Phase Code |
| --- | --- | --- | --- | --- | --- | --- | --- | --- | --- | --- | --- | --- | --- | --- |
|  | 4 | **Covering Slab** |  | 2012-11-18 | 2012-12-18 |  |  |  |  |  |  |  |  |  |
| HCSWB2Z1190 |  | B2 Z1 :Erect slab formwork and proping | 8d | 2012-11-18 | 2012-11-26 | HCSWB2Z1180 FF+6d, HCSWB2Z1140 FF+6d, HCSWB2Z1060 FF+6d, HCSWB3Z3240 FF+4d | 2d | 0d |  |  | B1 | 03 | MC | C |
| HCSWB2Z1200 |  | B2 Z1 :Fix steel rebar for slab | 3d | 2012-11-27 | 2012-11-29 | HCSWB2Z1190 | 2d | 0d |  |  | B1 | 03 | MC | C |
| HCSWB2Z1210 |  | B2 Z1 :Fix MEP first Fix for slab | 2d | 2012-12-01 | 2012-12-02 | HCSWB2Z1200 | 2d | 0d |  |  | B1 | 03 | MC | C |
| HCSWB2Z1220 |  | B2 Z1 :Fix side shutters and casting guides for slab | 2d | 2012-12-02 | 2012-12-03 | HCSWB2Z1210 FF+1d | 2d | 0d |  |  | B1 | 03 | MC | C |
| HCSWB2Z1230 |  | B2 Z1 :Cast concrete for slab | 1d | 2012-12-04 | 2012-12-04 | HCSWB2Z1220 | 2d | 0d |  |  | B1 | 03 | MC | C |
| HCSWB2Z1240 |  | B2 Z1 :Cure and De-shutter slab formwork | 14d | 2012-12-04 | 2012-12-18 | HCSWB2Z1230 | 2d | 0d | HBTF # 2 - all days |  | B1 | 03 | MC | C |
|  | 2 | **Zone # 2** |  | 2012-11-07 | 2013-01-21 |  |  |  |  |  |  |  |  |  |
|  | 1 | **Retaining Walls** |  | 2012-11-07 | 2012-11-29 |  |  |  |  |  |  |  |  |  |
| HCSWB2Z2010 |  | B2 Z2 :Formwork retaining walls shutters - 1st side | 8d | 2012-11-07 | 2012-11-17 | HCSWB3Z2230 | 30d | 0d |  | Retaining Walls shutter [321] | B1 | 03 | MC | C |
| HCSWB2Z2020 |  | B2 Z2 :Fix steel rebar for reatining walls | 8d | 2012-11-07 | 2012-11-17 | HCSWB2Z2010 SS, HCSWB2Z2010 FF | 30d | 0d |  |  | B1 | 03 | MC | C |
| HCSWB2Z2030 |  | B2 Z2 :Fix MEP first fix in walls | 8d | 2012-11-08 | 2012-11-18 | HCSWB2Z2020 SS+1d, HCSWB2Z2020 FF+1d | 30d | 0d |  |  | B1 | 03 | MC | C |
| HCSWB2Z2040 |  | B2 Z2 :Close shutter for retaining walls | 8d | 2012-11-10 | 2012-11-19 | HCSWB2Z2030 SS+1d, HCSWB2Z2030 FF+1d | 30d | 0d |  | Retaining Walls shutter [321] | B1 | 03 | MC | C |
| HCSWB2Z2050 |  | B2 Z2 :Cast concrete for retaining walls | 8d | 2012-11-11 | 2012-11-20 | HCSWB2Z2040 SS+1d, HCSWB2Z2040 FF+1d | 30d | 0d |  |  | B1 | 03 | MC | C |
| HCSWB2Z2060 |  | B2 Z2 :De-shutter retaining walls | 8d | 2012-11-12 | 2012-11-21 | HCSWB2Z2050 SS+1d, HCSWB2Z2050 FF+1d | 30d | 0d |  |  | B1 | 03 | MC | C |
| HCSWB2Z2070 |  | B2 Z2 :Apply water proofing membrane behind Basement Walls | 8d | 2012-11-19 | 2012-11-27 | HCSWB2Z2060 SS+5d, HCSWB2Z2060 FF+5d, HCSWB3Z2080 | 65d | 0d |  |  | B1 | 07 | MC | C |
| HCSWB2Z2080 |  | B2 Z2 :Apply Protection for Basement Walls | 8d | 2012-11-21 | 2012-11-29 | HCSWB2Z2070 SS+2d, HCSWB2Z2070 FF+2d | 65d | 32d |  |  | B1 | 07 | MC | C |
|  | 3 | **Columns** |  | 2012-11-07 | 2012-11-13 |  |  |  |  |  |  |  |  |  |
| HCSWB2Z2150 |  | B2 Z2 :Fix Steel Rebar for columns | 3d | 2012-11-07 | 2012-11-10 | HCSWB3Z2230 | 36d | 0d |  |  | B1 | 03 | MC | C |
| HCSWB2Z2160 |  | B2 Z2 :Erect columns formwork | 3d | 2012-11-08 | 2012-11-11 | HCSWB2Z2150 SS+1d, HCSWB2Z2150 FF+1d | 36d | 0d |  |  | B1 | 03 | MC | C |
| HCSWB2Z2170 |  | B2 Z2 :Cast concrete for columns | 3d | 2012-11-10 | 2012-11-12 | HCSWB2Z2160 SS+1d, HCSWB2Z2160 FF+1d | 36d | 0d |  |  | B1 | 03 | MC | C |
| HCSWB2Z2180 |  | B2 Z2 :De-shutter columns formwork | 3d | 2012-11-11 | 2012-11-13 | HCSWB2Z2170 SS+1d, HCSWB2Z2170 FF+1d | 36d | 32d |  |  | B1 | 03 | MC | C |
|  | 4 | **Covering Slab including stair case** |  | 2012-12-23 | 2013-01-21 |  |  |  |  |  |  |  |  |  |
| HCSWB2Z2190 |  | B2 Z2 :Erect slab formwork and proping | 6d | 2012-12-23 | 2012-12-29 | HCSWB2Z2180 FF+6d, HCSWB2Z2060 FF+6d, HCSWB3Z4240 FF+4d | 4d | 0d |  |  | B1 | 03 | MC | C |
| HCSWB2Z2200 |  | B2 Z2 :Fix steel rebar for slab | 3d | 2012-12-30 | 2013-01-02 | HCSWB2Z2190 | 4d | 0d |  |  | B1 | 03 | MC | C |
| HCSWB2Z2210 |  | B2 Z2 :Fix MEP first Fix for slab | 2d | 2013-01-03 | 2013-01-05 | HCSWB2Z2200 | 4d | 0d |  |  | B1 | 03 | MC | C |
| HCSWB2Z2220 |  | B2 Z2 :Fix side shutters and casting guides for slab | 2d | 2013-01-05 | 2013-01-06 | HCSWB2Z2210 FF+1d | 4d | 0d |  |  | B1 | 03 | MC | C |
| HCSWB2Z2230 |  | B2 Z2 :Cast concrete for slab | 1d | 2013-01-07 | 2013-01-07 | HCSWB2Z2220 | 4d | 0d |  |  | B1 | 03 | MC | C |
| HCSWB2Z2240 |  | B2 Z2 :Cure and De-shutter slab formwork | 14d | 2013-01-07 | 2013-01-21 | HCSWB2Z2230 | 5.12d | 0.12d | HBTF # 2 - all days |  | B1 | 03 | MC | C |

| ID | WBS | Activity | Duration | Start | Finish | Predecessors | Total float | Free float | Calendar | Resources | Bill No. | Division No. | Responsibility | Phase Code |
| --- | --- | --- | --- | --- | --- | --- | --- | --- | --- | --- | --- | --- | --- | --- |
|  | 3 | **Zone # 3** |  | 2012-11-10 | 2013-01-03 |  |  |  |  |  |  |  |  |  |
|  | 1 | **Retaining Walls** |  | 2012-11-10 | 2012-11-26 |  |  |  |  |  |  |  |  |  |
| HCSWB2Z3010 |  | B2 Z3 :Formwork retaining walls shutters - 1st side | 5d | 2012-11-10 | 2012-11-14 | HCSWB3Z3230 | 16d | 0d |  | Retaining Walls shutter [200] | B1 | 03 | MC | C |
| HCSWB2Z3020 |  | B2 Z3 :Fix steel rebar for reatining walls | 5d | 2012-11-10 | 2012-11-14 | HCSWB2Z3010 SS, HCSWB2Z3010 FF | 16d | 0d |  |  | B1 | 03 | MC | C |
| HCSWB2Z3030 |  | B2 Z3 :Fix MEP first fix in walls | 5d | 2012-11-11 | 2012-11-17 | HCSWB2Z3020 SS+1d, HCSWB2Z3020 FF+1d | 16d | 0d |  |  | B1 | 03 | MC | C |
| HCSWB2Z3040 |  | B2 Z3 :Close shutter for retaining walls | 5d | 2012-11-12 | 2012-11-18 | HCSWB2Z3030 SS+1d, HCSWB2Z3030 FF+1d | 16d | 0d |  | Retaining Walls shutter [200] | B1 | 03 | MC | C |
| HCSWB2Z3050 |  | B2 Z3 :Cast concrete for retaining walls | 5d | 2012-11-13 | 2012-11-19 | HCSWB2Z3040 SS+1d, HCSWB2Z3040 FF+1d | 16d | 0d |  |  | B1 | 03 | MC | C |
| HCSWB2Z3060 |  | B2 Z3 :De-shutter retaining walls | 5d | 2012-11-14 | 2012-11-20 | HCSWB2Z3050 SS+1d, HCSWB2Z3050 FF+1d | 16d | 0d |  |  | B1 | 03 | MC | C |
| HCSWB2Z3070 |  | B2 Z3 :Apply water proofing membrane behind Basement Walls | 5d | 2012-11-19 | 2012-11-24 | HCSWB2Z3060 SS+3d, HCSWB2Z3060 FF+3d, HCSWB3Z3080 | 105d | 0d |  |  | B1 | 07 | MC | C |
| HCSWB2Z3080 |  | B2 Z3 :Apply Protection for Basement Walls | 5d | 2012-11-21 | 2012-11-26 | HCSWB2Z3070 SS+2d, HCSWB2Z3070 FF+2d | 105d | 4d |  |  | B1 | 07 | MC | C |
|  | 2 | **Core and stair Walls** |  | 2012-11-10 | 2012-11-29 |  |  |  |  |  |  |  |  |  |
| HCSWB2Z3090 |  | B2 Z3 :Formwork core wall shutters - 1st side | 6d | 2012-11-10 | 2012-11-17 | HCSWB3Z3230 | 8d | 0d |  |  | B1 | 03 | MC | C |
| HCSWB2Z3100 |  | B2 Z3 :Fix steel rebar for core wall | 4d | 2012-11-18 | 2012-11-21 | HCSWB2Z3090 | 8d | 0d |  |  | B1 | 03 | MC | C |
| HCSWB2Z3110 |  | B2 Z3 :Fix MEP first fix in core wall | 1d | 2012-11-22 | 2012-11-22 | HCSWB2Z3100 | 8d | 0d |  |  | B1 | 03 | MC | C |
| HCSWB2Z3120 |  | B2 Z3 :Close shutter for core wall | 3d | 2012-11-24 | 2012-11-26 | HCSWB2Z3110 | 8d | 0d |  |  | B1 | 03 | MC | C |
| HCSWB2Z3130 |  | B2 Z3 :Cast concrete for core wall | 1d | 2012-11-27 | 2012-11-27 | HCSWB2Z3120 | 8d | 0d |  |  | B1 | 03 | MC | C |
| HCSWB2Z3140 |  | B2 Z3 :De-shutter core wall formwork | 2d | 2012-11-28 | 2012-11-29 | HCSWB2Z3130 | 8d | 5d |  |  | B1 | 03 | MC | C |
|  | 3 | **Columns** |  | 2012-11-10 | 2012-11-17 |  |  |  |  |  |  |  |  |  |
| HCSWB2Z3150 |  | B2 Z3 :Fix Steel Rebar for columns | 3d | 2012-11-10 | 2012-11-12 | HCSWB3Z3230 | 19d | 0d |  |  | B1 | 03 | MC | C |
| HCSWB2Z3160 |  | B2 Z3 :Erect columns formwork | 3d | 2012-11-11 | 2012-11-13 | HCSWB2Z3150 SS+1d, HCSWB2Z3150 FF+1d | 19d | 0d |  |  | B1 | 03 | MC | C |
| HCSWB2Z3170 |  | B2 Z3 :Cast concrete for columns | 3d | 2012-11-12 | 2012-11-14 | HCSWB2Z3160 SS+1d, HCSWB2Z3160 FF+1d | 19d | 0d |  |  | B1 | 03 | MC | C |
| HCSWB2Z3180 |  | B2 Z3 :De-shutter columns formwork | 3d | 2012-11-13 | 2012-11-17 | HCSWB2Z3170 SS+1d, HCSWB2Z3170 FF+1d | 19d | 16d |  |  | B1 | 03 | MC | C |
|  | 4 | **Covering Slab** |  | 2012-12-04 | 2013-01-03 |  |  |  |  |  |  |  |  |  |
| HCSWB2Z3190 |  | B2 Z3 :Erect slab formwork and proping | 8d | 2012-12-04 | 2012-12-12 | HCSWB2Z3180 FF+6d, HCSWB2Z3140 FF+6d, HCSWB2Z3060 FF+6d, HCSWB3Z5240 FF+4d | 3d | 0d |  |  | B1 | 03 | MC | C |
| HCSWB2Z3200 |  | B2 Z3 :Fix steel rebar for slab | 3d | 2012-12-13 | 2012-12-16 | HCSWB2Z3190 | 3d | 0d |  |  | B1 | 03 | MC | C |
| HCSWB2Z3210 |  | B2 Z3 :Fix MEP first Fix for slab | 2d | 2012-12-17 | 2012-12-18 | HCSWB2Z3200 | 3d | 0d |  |  | B1 | 03 | MC | C |
| HCSWB2Z3220 |  | B2 Z3 :Fix side shutters and casting guides for slab | 2d | 2012-12-18 | 2012-12-19 | HCSWB2Z3210 FF+1d | 3d | 0d |  |  | B1 | 03 | MC | C |
| HCSWB2Z3230 |  | B2 Z3 :Cast concrete for slab | 1d | 2012-12-20 | 2012-12-20 | HCSWB2Z3220 | 3d | 0d |  |  | B1 | 03 | MC | C |
| HCSWB2Z3240 |  | B2 Z3 :Cure and De-shutter slab formwork | 14d | 2012-12-20 | 2013-01-03 | HCSWB2Z3230 | 47d | 0d | HBTF # 2 - all days |  | B1 | 03 | MC | C |

| ID | WBS | Activity | Duration | Start | Finish | Predecessors | Total float | Free float | Calendar | Resources | Bill No. | Division No. | Responsibility | Phase Code |
| --- | --- | --- | --- | --- | --- | --- | --- | --- | --- | --- | --- | --- | --- | --- |
|  | 4 | **Zone # 4** |  | 2012-12-12 | 2013-01-23 |  |  |  |  |  |  |  |  |  |
|  | 1 | **Retaining Walls** |  | 2012-12-12 | 2012-12-27 |  |  |  |  |  |  |  |  |  |
| HCSWB2Z4010 |  | B2 Z4 :Formwork retaining walls shutters - 1st side | 5d | 2012-12-12 | 2012-12-17 | HCSWB3Z4230 | 30d | 0d |  | Retaining Walls shutter [200] | B1 | 03 | MC | C |
| HCSWB2Z4020 |  | B2 Z4 :Fix steel rebar for reatining walls | 5d | 2012-12-12 | 2012-12-17 | HCSWB2Z4010 SS, HCSWB2Z4010 FF | 30d | 0d |  |  | B1 | 03 | MC | C |
| HCSWB2Z4030 |  | B2 Z4 :Fix MEP first fix in walls | 5d | 2012-12-13 | 2012-12-18 | HCSWB2Z4020 SS+1d, HCSWB2Z4020 FF+1d | 30d | 0d |  |  | B1 | 03 | MC | C |
| HCSWB2Z4040 |  | B2 Z4 :Close shutter for retaining walls | 5d | 2012-12-15 | 2012-12-19 | HCSWB2Z4030 SS+1d, HCSWB2Z4030 FF+1d | 30d | 0d |  | Retaining Walls shutter [200] | B1 | 03 | MC | C |
| HCSWB2Z4050 |  | B2 Z4 :Cast concrete for retaining walls | 5d | 2012-12-16 | 2012-12-20 | HCSWB2Z4040 SS+1d, HCSWB2Z4040 FF+1d | 30d | 0d |  |  | B1 | 03 | MC | C |
| HCSWB2Z4060 |  | B2 Z4 :De-shutter retaining walls | 5d | 2012-12-17 | 2012-12-22 | HCSWB2Z4050 SS+1d, HCSWB2Z4050 FF+1d | 30d | 0d |  |  | B1 | 03 | MC | C |
| HCSWB2Z4070 |  | B2 Z4 :Apply water proofing membrane behind Basement Walls | 5d | 2012-12-20 | 2012-12-25 | HCSWB2Z4060 SS+3d, HCSWB2Z4060 FF+3d, HCSWB3Z4080 | 76d | 0d |  |  | B1 | 07 | MC | C |
| HCSWB2Z4080 |  | B2 Z4 :Apply Protection for Basement Walls | 5d | 2012-12-23 | 2012-12-27 | HCSWB2Z4070 SS+2d, HCSWB2Z4070 FF+2d | 76d | 10d |  |  | B1 | 07 | MC | C |
|  | 3 | **Columns** |  | 2012-12-12 | 2012-12-18 |  |  |  |  |  |  |  |  |  |
| HCSWB2Z4150 |  | B2 Z4 :Fix Steel Rebar for columns | 3d | 2012-12-12 | 2012-12-15 | HCSWB3Z4230 | 33d | 0d |  |  | B1 | 03 | MC | C |
| HCSWB2Z4160 |  | B2 Z4 :Erect columns formwork | 3d | 2012-12-13 | 2012-12-16 | HCSWB2Z4150 SS+1d, HCSWB2Z4150 FF+1d | 33d | 0d |  |  | B1 | 03 | MC | C |
| HCSWB2Z4170 |  | B2 Z4 :Cast concrete for columns | 3d | 2012-12-15 | 2012-12-17 | HCSWB2Z4160 SS+1d, HCSWB2Z4160 FF+1d | 33d | 0d |  |  | B1 | 03 | MC | C |
| HCSWB2Z4180 |  | B2 Z4 :De-shutter columns formwork | 3d | 2012-12-16 | 2012-12-18 | HCSWB2Z4170 SS+1d, HCSWB2Z4170 FF+1d | 33d | 5d |  |  | B1 | 03 | MC | C |
|  | 4 | **Covering Slab** |  | 2012-12-25 | 2013-01-23 |  |  |  |  |  |  |  |  |  |
| HCSWB2Z4190 |  | B2 Z4 :Erect slab formwork and proping | 6d | 2012-12-25 | 2012-12-31 | HCSWB2Z4180 FF+6d, HCSWB2Z4060 FF+6d, HCSWB3Z6240 FF+4d | 28d | 0d |  |  | B1 | 03 | MC | C |
| HCSWB2Z4200 |  | B2 Z4 :Fix steel rebar for slab | 3d | 2013-01-02 | 2013-01-05 | HCSWB2Z4190 | 28d | 0d |  |  | B1 | 03 | MC | C |
| HCSWB2Z4210 |  | B2 Z4 :Fix MEP first Fix for slab | 2d | 2013-01-06 | 2013-01-07 | HCSWB2Z4200 | 28d | 0d |  |  | B1 | 03 | MC | C |
| HCSWB2Z4220 |  | B2 Z4 :Fix side shutters and casting guides for slab | 2d | 2013-01-07 | 2013-01-08 | HCSWB2Z4210 FF+1d | 28d | 0d |  |  | B1 | 03 | MC | C |
| HCSWB2Z4230 |  | B2 Z4 :Cast concrete for slab | 1d | 2013-01-09 | 2013-01-09 | HCSWB2Z4220 | 28d | 0d |  |  | B1 | 03 | MC | C |
| HCSWB2Z4240 |  | B2 Z4 :Cure and De-shutter slab formwork | 14d | 2013-01-09 | 2013-01-23 | HCSWB2Z4230 | 34d | 2d | HBTF # 2 - all days |  | B1 | 03 | MC | C |
|  | 5 | **Zone # 5** |  | 2012-11-25 | 2013-01-13 |  |  |  |  |  |  |  |  |  |
|  | 1 | **Retaining Walls** |  | 2012-11-25 | 2012-12-16 |  |  |  |  |  |  |  |  |  |
| HCSWB2Z5010 |  | B2 Z5 :Formwork retaining walls shutters - 1st side | 8d | 2012-11-25 | 2012-12-03 | HCSWB3Z5230 | 8d | 0d |  | Retaining Walls shutter [484] | B1 | 03 | MC | C |
| HCSWB2Z5020 |  | B2 Z5 :Fix steel rebar for reatining walls | 8d | 2012-11-25 | 2012-12-03 | HCSWB2Z5010 SS, HCSWB2Z5010 FF | 8d | 0d |  |  | B1 | 03 | MC | C |
| HCSWB2Z5030 |  | B2 Z5 :Fix MEP first fix in walls | 8d | 2012-11-26 | 2012-12-04 | HCSWB2Z5020 SS+1d, HCSWB2Z5020 FF+1d | 8d | 0d |  |  | B1 | 03 | MC | C |
| HCSWB2Z5040 |  | B2 Z5 :Close shutter for retaining walls | 8d | 2012-11-27 | 2012-12-05 | HCSWB2Z5030 SS+1d, HCSWB2Z5030 FF+1d | 8d | 0d |  | Retaining Walls shutter [484] | B1 | 03 | MC | C |
| HCSWB2Z5050 |  | B2 Z5 :Cast concrete for retaining walls | 8d | 2012-11-28 | 2012-12-06 | HCSWB2Z5040 SS+1d, HCSWB2Z5040 FF+1d | 8d | 0d |  |  | B1 | 03 | MC | C |
| HCSWB2Z5060 |  | B2 Z5 :De-shutter retaining walls | 8d | 2012-11-29 | 2012-12-08 | HCSWB2Z5050 SS+1d, HCSWB2Z5050 FF+1d | 8d | 0d |  |  | B1 | 03 | MC | C |
| HCSWB2Z5070 |  | B2 Z5 :Apply water proofing membrane behind Basement Walls | 8d | 2012-12-05 | 2012-12-13 | HCSWB2Z5060 SS+5d, HCSWB2Z5060 FF+5d, HCSWB3Z5080 | 89d | 0d |  |  | B1 | 07 | MC | C |
| HCSWB2Z5080 |  | B2 Z5 :Apply Protection for Basement Walls | 8d | 2012-12-08 | 2012-12-16 | HCSWB2Z5070 SS+2d, HCSWB2Z5070 FF+2d | 89d | 13d |  |  | B1 | 07 | MC | C |

| ID | WBS | Activity | Duration | Start | Finish | Predecessors | Total float | Free float | Calendar | Resources | Bill No. | Division No. | Responsibility | Phase Code |
| --- | --- | --- | --- | --- | --- | --- | --- | --- | --- | --- | --- | --- | --- | --- |
|  | 2 | **Core Walls** |  | 2012-11-25 | 2012-12-13 |  |  |  |  |  |  |  |  |  |
| HCSWB2Z5090 |  | B2 Z5 :Formwork core wall shutters - 1st side | 6d | 2012-11-25 | 2012-12-01 | HCSWB3Z5230 | 3d | 0d |  |  | B1 | 03 | MC | C |
| HCSWB2Z5100 |  | B2 Z5 :Fix steel rebar for core wall | 4d | 2012-12-02 | 2012-12-05 | HCSWB2Z5090 | 3d | 0d |  |  | B1 | 03 | MC | C |
| HCSWB2Z5110 |  | B2 Z5 :Fix MEP first fix in core wall | 1d | 2012-12-06 | 2012-12-06 | HCSWB2Z5100 | 3d | 0d |  |  | B1 | 03 | MC | C |
| HCSWB2Z5120 |  | B2 Z5 :Close shutter for core wall | 3d | 2012-12-08 | 2012-12-10 | HCSWB2Z5110 | 3d | 0d |  |  | B1 | 03 | MC | C |
| HCSWB2Z5130 |  | B2 Z5 :Cast concrete for core wall | 1d | 2012-12-11 | 2012-12-11 | HCSWB2Z5120 | 3d | 0d |  |  | B1 | 03 | MC | C |
| HCSWB2Z5140 |  | B2 Z5 :De-shutter core wall formwork | 2d | 2012-12-12 | 2012-12-13 | HCSWB2Z5130 | 3d | 1d |  |  | B1 | 03 | MC | C |
|  | 3 | **Columns** |  | 2012-11-25 | 2012-12-01 |  |  |  |  |  |  |  |  |  |
| HCSWB2Z5150 |  | B2 Z5 :Fix Steel Rebar for columns | 3d | 2012-11-25 | 2012-11-27 | HCSWB3Z5230 | 14d | 0d |  |  | B1 | 03 | MC | C |
| HCSWB2Z5160 |  | B2 Z5 :Erect columns formwork | 3d | 2012-11-26 | 2012-11-28 | HCSWB2Z5150 SS+1d, HCSWB2Z5150 FF+1d | 14d | 0d |  |  | B1 | 03 | MC | C |
| HCSWB2Z5170 |  | B2 Z5 :Cast concrete for columns | 3d | 2012-11-27 | 2012-11-29 | HCSWB2Z5160 SS+1d, HCSWB2Z5160 FF+1d | 14d | 0d |  |  | B1 | 03 | MC | C |
| HCSWB2Z5180 |  | B2 Z5 :De-shutter columns formwork | 3d | 2012-11-28 | 2012-12-01 | HCSWB2Z5170 SS+1d, HCSWB2Z5170 FF+1d | 14d | 12d |  |  | B1 | 03 | MC | C |
|  | 4 | **Covering Slab** |  | 2012-12-13 | 2013-01-13 |  |  |  |  |  |  |  |  |  |
| HCSWB2Z5190 |  | B2 Z5 :Erect slab formwork and proping | 8d | 2012-12-13 | 2012-12-22 | HCSWB2Z5180 FF+6d, HCSWB2Z5140 FF+6d, HCSWB2Z5060 FF+6d, HCSWB2Z1240 FF+4d | 2d | 0d |  |  | B1 | 03 | MC | C |
| HCSWB2Z5200 |  | B2 Z5 :Fix steel rebar for slab | 3d | 2012-12-23 | 2012-12-25 | HCSWB2Z5190 | 2d | 0d |  |  | B1 | 03 | MC | C |
| HCSWB2Z5210 |  | B2 Z5 :Fix MEP first Fix for slab | 2d | 2012-12-26 | 2012-12-27 | HCSWB2Z5200 | 2d | 0d |  |  | B1 | 03 | MC | C |
| HCSWB2Z5220 |  | B2 Z5 :Fix side shutters and casting guides for slab | 2d | 2012-12-27 | 2012-12-29 | HCSWB2Z5210 FF+1d | 2d | 0d |  |  | B1 | 03 | MC | C |
| HCSWB2Z5230 |  | B2 Z5 :Cast concrete for slab | 1d | 2012-12-30 | 2012-12-30 | HCSWB2Z5220 | 2d | 0d |  |  | B1 | 03 | MC | C |
| HCSWB2Z5240 |  | B2 Z5 :Cure and De-shutter slab formwork | 14d | 2012-12-30 | 2013-01-13 | HCSWB2Z5230 | 3d | 0d | HBTF # 2 - all days |  | B1 | 03 | MC | C |
|  | 6 | **Zone # 6** |  | 2012-12-15 | 2013-02-16 |  |  |  |  |  |  |  |  |  |
|  | 1 | **Retaining Walls** |  | 2012-12-15 | 2013-01-05 |  |  |  |  |  |  |  |  |  |
| HCSWB2Z6010 |  | B2 Z6 :Formwork retaining walls shutters - 1st side | 8d | 2012-12-15 | 2012-12-23 | HCSWB3Z6230 | 16d | 0d |  | Retaining Walls shutter [375] | B1 | 03 | MC | C |
| HCSWB2Z6020 |  | B2 Z6 :Fix steel rebar for reatining walls | 8d | 2012-12-15 | 2012-12-23 | HCSWB2Z6010 SS, HCSWB2Z6010 FF | 16d | 0d |  |  | B1 | 03 | MC | C |
| HCSWB2Z6030 |  | B2 Z6 :Fix MEP first fix in walls | 8d | 2012-12-15 | 2012-12-23 | HCSWB2Z6020 SS, HCSWB2Z6020 FF | 16d | 0d |  |  | B1 | 03 | MC | C |
| HCSWB2Z6040 |  | B2 Z6 :Close shutter for retaining walls | 8d | 2012-12-16 | 2012-12-24 | HCSWB2Z6030 SS+1d, HCSWB2Z6030 FF+1d | 16d | 0d |  | Retaining Walls shutter [375] | B1 | 03 | MC | C |
| HCSWB2Z6050 |  | B2 Z6 :Cast concrete for retaining walls | 8d | 2012-12-17 | 2012-12-25 | HCSWB2Z6040 SS+1d, HCSWB2Z6040 FF+1d | 16d | 0d |  |  | B1 | 03 | MC | C |
| HCSWB2Z6060 |  | B2 Z6 :De-shutter retaining walls | 8d | 2012-12-18 | 2012-12-26 | HCSWB2Z6050 SS+1d, HCSWB2Z6050 FF+1d | 16d | 0d |  |  | B1 | 03 | MC | C |
| HCSWB2Z6070 |  | B2 Z6 :Apply water proofing membrane behind Basement Walls | 8d | 2012-12-24 | 2013-01-02 | HCSWB2Z6060 SS+5d, HCSWB2Z6060 FF+5d, HCSWB3Z6080 | 16d | 0d |  |  | B1 | 07 | MC | C |
| HCSWB2Z6080 |  | B2 Z6 :Apply Protection for Basement Walls | 8d | 2012-12-26 | 2013-01-05 | HCSWB2Z6070 SS+2d, HCSWB2Z6070 FF+2d | 16d | 0d |  |  | B1 | 07 | MC | C |

| ID | WBS | Activity | Duration | Start | Finish | Predecessors | Planned start | Planned finish | Total float | Free float | Constraint | Calendar | Resources | Bill No. | Division No. | Responsibility | Phase Code |
| --- | --- | --- | --- | --- | --- | --- | --- | --- | --- | --- | --- | --- | --- | --- | --- | --- | --- |
|  | 3 | **Columns** |  | 2012-12-15 | 2012-12-20 |  |  |  |  |  |  |  |  |  |  |  |  |
| HCSWB2Z6150 |  | B2 Z6 :Fix Steel Rebar for columns | 3d | 2012-12-15 | 2012-12-17 | HCSWB3Z6230 |  |  | 51d | 0d |  |  |  | B1 | 03 | MC | C |
| HCSWB2Z6160 |  | B2 Z6 :Erect columns formwork | 3d | 2012-12-16 | 2012-12-18 | HCSWB2Z6150 SS+1d, HCSWB2Z6150 FF+1d |  |  | 51d | 0d |  |  |  | B1 | 03 | MC | C |
| HCSWB2Z6170 |  | B2 Z6 :Cast concrete for columns | 3d | 2012-12-17 | 2012-12-19 | HCSWB2Z6160 SS+1d, HCSWB2Z6160 FF+1d |  |  | 51d | 0d |  |  |  | B1 | 03 | MC | C |
| HCSWB2Z6180 |  | B2 Z6 :De-shutter columns formwork | 3d | 2012-12-18 | 2012-12-20 | HCSWB2Z6170 SS+1d, HCSWB2Z6170 FF+1d |  |  | 51d | 22d |  |  |  | B1 | 03 | MC | C |
|  | 4 | **Covering Slab** |  | 2013-01-17 | 2013-02-16 |  |  |  |  |  |  |  |  |  |  |  |  |
| HCSWB2Z6190 |  | B2 Z6 :Erect slab formwork and proping | 6d | 2013-01-17 | 2013-01-26 | HCSWB2Z6180 FF+6d, HCSWB2Z6060 FF+6d, HCSWB2Z2240 FF+4d | 2013-01-17 | 2013-01-23 | 29d | 0d |  |  |  | B1 | 03 | MC | C |
| HCSWB2Z6200 |  | B2 Z6 :Fix steel rebar for slab | 3d | 2013-01-26 | 2013-01-28 | HCSWB2Z6190 |  |  | 29d | 0d |  |  |  | B1 | 03 | MC | C |
| HCSWB2Z6210 |  | B2 Z6 :Fix MEP first Fix for slab | 2d | 2013-01-29 | 2013-01-30 | HCSWB2Z6200 |  |  | 29d | 0d |  |  |  | B1 | 03 | MC | C |
| HCSWB2Z6220 |  | B2 Z6 :Fix side shutters and casting guides for slab | 2d | 2013-01-30 | 2013-01-31 | HCSWB2Z6210 FF+1d |  |  | 29d | 0d |  |  |  | B1 | 03 | MC | C |
| HCSWB2Z6230 |  | B2 Z6 :Cast concrete for slab | 1d | 2013-02-02 | 2013-02-02 | HCSWB2Z6220 |  |  | 29d | 0d |  |  |  | B1 | 03 | MC | C |
| HCSWB2Z6240 |  | B2 Z6 :Cure and De-shutter slab formwork | 14d | 2013-02-02 | 2013-02-16 | HCSWB2Z6230 |  |  | 52d | 0d |  | HBTF # 2 - all days |  | B1 | 03 | MC | C |
|  | 8 | **Extended SOG (axes 18-19 / A - Ca)** |  | 2013-01-06 | 2013-03-12 |  |  |  |  |  |  |  |  |  |  |  |  |
| HCSWSSZ6480 |  | SS Z6 :Cut and Fill (Cyclopean) | 14d | 2013-01-06 | 2013-01-21 | HCSWB2Z6080 |  |  | 16d | 0d | as late as possible |  |  |  |  |  |  |
|  | 1 | **Strip Footing** |  | 2013-01-22 | 2013-02-19 |  |  |  |  |  |  |  |  |  |  |  |  |
| HCSWSSZ6380 |  | SS Z6E :Pour blinding under membrane | 14d | 2013-01-22 | 2013-02-07 | HCSWSSZ6480 |  |  | 16d | 0d |  |  |  | B1 | 03 | MC | C |
| HCSWSSZ6390 |  | SS Z6E :Construct block works (formwork) | 14d | 2013-01-23 | 2013-02-09 | HCSWSSZ6380 SS+1d, HCSWSSZ6380 FF+1d |  |  | 16d | 0d |  |  |  | B1 | 07 | MC | C |
| HCSWSSZ6400 |  | SS Z6E :Apply water Proofing and protection (inside) | 14d | 2013-01-26 | 2013-02-10 | HCSWSSZ6390 SS+1d, HCSWSSZ6390 FF+1d |  |  | 16d | 0d |  |  |  | B1 | 03 | MC | C |
| HCSWSSZ6410 |  | SS Z6E :Formwork and rebar for foundations | 14d | 2013-01-28 | 2013-02-12 | HCSWSSZ6400 SS+2d, HCSWSSZ6400 FF+2d |  |  | 16d | 0d |  |  |  | B1 | 03 | MC | C |
| HCSWSSZ6420 |  | SS Z6E :Cast concrete for foundations | 14d | 2013-02-03 | 2013-02-18 | HCSWSSZ6410 SS+5d, HCSWSSZ6410 FF+5d |  |  | 16d | 0d |  |  |  | B1 | 03 | MC | C |
| HCSWSSZ6430 |  | SS Z6E :De-shutter formwork | 14d | 2013-02-04 | 2013-02-19 | HCSWSSZ6420 SS+1d, HCSWSSZ6420 FF+1d |  |  | 16d | 0d |  |  |  | B1 | 03 | MC | C |
|  | 2 | **Retaining Wall** |  | 2013-02-19 | 2013-03-12 |  |  |  |  |  |  |  |  |  |  |  |  |
| HCSWB2Z6400 |  | B2 Z6 :B2 Z6E :Formwork retaining walls shutters - 1st side | 8d | 2013-02-19 | 2013-02-27 | HCSWSSZ6420 |  |  | 17d | 0d |  |  | Retaining Walls shutter [300] | B1 | 03 | MC | C |
| HCSWB2Z6410 |  | B2 Z6 :B2 Z6E :Fix steel rebar for reatining walls | 8d | 2013-02-19 | 2013-02-27 | HCSWB2Z6400 SS, HCSWB2Z6400 FF |  |  | 17d | 0d |  |  |  | B1 | 03 | MC | C |
| HCSWB2Z6420 |  | B2 Z6 :B2 Z6E :Fix MEP first fix in walls | 8d | 2013-02-20 | 2013-02-28 | HCSWB2Z6410 SS+1d, HCSWB2Z6410 FF+1d |  |  | 17d | 0d |  |  |  | B1 | 03 | MC | C |
| HCSWB2Z6430 |  | B2 Z6 :B2 Z6E :Close shutter for retaining walls | 8d | 2013-02-21 | 2013-03-02 | HCSWB2Z6420 SS+1d, HCSWB2Z6420 FF+1d |  |  | 17d | 0d |  |  | Retaining Walls shutter [300] | B1 | 03 | MC | C |
| HCSWB2Z6440 |  | B2 Z6 :B2 Z6E :Cast concrete for retaining walls | 8d | 2013-02-23 | 2013-03-03 | HCSWB2Z6430 SS+1d, HCSWB2Z6430 FF+1d |  |  | 17d | 0d |  |  |  | B1 | 03 | MC | C |
| HCSWB2Z6450 |  | B2 Z6 :B2 Z6E :De-shutter retaining walls | 8d | 2013-02-24 | 2013-03-04 | HCSWB2Z6440 SS+1d, HCSWB2Z6440 FF+1d |  |  | 17d | 0d |  |  |  | B1 | 03 | MC | C |
| HCSWB2Z6460 |  | B2 Z6 :B2 Z6E :Apply water proofing membrane behind Basement Walls | 8d | 2013-03-02 | 2013-03-10 | HCSWB2Z6450 SS+5d, HCSWB2Z6450 FF+5d |  |  | 17d | 0d |  |  |  | B1 | 07 | MC | C |
| HCSWB2Z6470 |  | B2 Z6 :B2 Z6E :Apply Protection for Basement Walls | 8d | 2013-03-04 | 2013-03-12 | HCSWB2Z6460 SS+2d, HCSWB2Z6460 FF+2d |  |  | 17d | 0d |  |  |  | B1 | 07 | MC | C |

| ID | WBS | Activity | Duration | Start | Finish | Predecessors | Total float | Free float | Bill No. | Division No. | Responsibility | Phase Code |
| --- | --- | --- | --- | --- | --- | --- | --- | --- | --- | --- | --- | --- |
|  | 3 | **SOG** |  | 2013-02-21 | 2013-03-04 |  |  |  |  |  |  |  |
| HCSWSSZ6440 |  | SS Z6E :Fill imported base course around Foundations & under SOG | 4d | 2013-02-21 | 2013-02-25 | HCSWSSZ6430 FF+5d | 16d | 0d | B1 | 31 | MC | C |
| HCSWSSZ6450 |  | SS Z6E :Lay polythene sheets under SOG | 1d | 2013-02-26 | 2013-02-26 | HCSWSSZ6440 | 16d | 0d | B1 | 07 | MC | C |
| HCSWSSZ6460 |  | SS Z6E :Formwork and Erect steel for SOG | 4d | 2013-02-27 | 2013-03-03 | HCSWSSZ6450 | 16d | 0d | B1 | 03 | MC | C |
| HCSWSSZ6470 |  | SS Z6E :Cast Concrete for SOG | 1d | 2013-03-04 | 2013-03-04 | HCSWSSZ6460 | 16d | 0d | B1 | 03 | MC | C |
|  | 7 | **De-tensioning** |  | 2012-12-02 | 2013-04-07 |  |  |  |  |  |  |  |
|  | 1 | **Zone # 1** |  | 2012-12-09 | 2013-01-20 |  |  |  |  |  |  |  |
| HCSWB2Z1250 |  | B2 Z1 :Backfill behind basement walls up to anchor level | 15d | 2012-12-09 | 2012-12-25 | HCSWB3Z1270, HCSWB2Z1230, HCSWB2Z1080 | 58d | 0d |  |  |  |  |
| HCSWB2Z1260 |  | B2 Z1 :De-tensioning | 3d | 2012-12-26 | 2012-12-29 | HCSWB2Z1250, HCSWB2Z1230 | 58d | 0d |  |  |  |  |
| HCSWB2Z1270 |  | B2 Z1 :Backfill behind basement walls up next anchor level | 8d | 2012-12-30 | 2013-01-08 | HCSWB2Z1260 | 58d | 0d |  |  |  |  |
| HCSWB2Z1280 |  | B2 Z1 :De-tensioning | 3d | 2013-01-09 | 2013-01-12 | HCSWB2Z1270 | 58d | 0d |  |  |  |  |
| HCSWB2Z1290 |  | B2 Z1 :Backfill behind basement walls up slab level | 7d | 2013-01-13 | 2013-01-20 | HCSWB2Z1280 | 58d | 0d |  |  |  |  |
|  | 2 | **Zone # 2** |  | 2013-01-08 | 2013-02-19 |  |  |  |  |  |  |  |
| HCSWB2Z2090 |  | B2 Z2 :Backfill behind basement walls up to anchor level | 15d | 2013-01-08 | 2013-01-26 | HCSWB3Z2110, HCSWB2Z2230, HCSWB2Z2080 | 33d | 0d |  |  |  |  |
| HCSWB2Z2100 |  | B2 Z2 :De-tensioning | 3d | 2013-01-27 | 2013-01-29 | HCSWB2Z2090, HCSWB2Z2230 | 33d | 0d |  |  |  |  |
| HCSWB2Z2110 |  | B2 Z2 :Backfill behind basement walls up to next anchor level | 8d | 2013-01-30 | 2013-02-07 | HCSWB2Z2100 | 33d | 0d |  |  |  |  |
| HCSWB2Z2120 |  | B2 Z2 :De-tensioning | 3d | 2013-02-09 | 2013-02-11 | HCSWB2Z2110, HCSWB2Z2110 FF | 33d | 0d |  |  |  |  |
| HCSWB2Z2130 |  | B2 Z2 :Backfill behind basement walls up slab level | 7d | 2013-02-12 | 2013-02-19 | HCSWB2Z2120, HCSWB2Z2120 FF | 33d | 0d |  |  |  |  |
|  | 3 | **Zone # 3** |  | 2012-12-02 | 2013-01-03 |  |  |  |  |  |  |  |
| HCSWB2Z3250 |  | B2 Z3 :Backfill behind basement walls up to anchor level | 8d | 2012-12-02 | 2012-12-10 | HCSWB3Z3270, HCSWB2Z3080 | 101d | 9d |  |  |  |  |
| HCSWB2Z3260 |  | B2 Z3 :De-tensioning | 2d | 2012-12-22 | 2012-12-23 | HCSWB2Z3250, HCSWB2Z3230 | 92d | 0d |  |  |  |  |
| HCSWB2Z3270 |  | B2 Z3 :Backfill behind basement walls up to next anchor level | 4d | 2012-12-24 | 2012-12-27 | HCSWB2Z3260 | 92d | 0d |  |  |  |  |
| HCSWB2Z3280 |  | B2 Z3 :De-tensioning | 1d | 2012-12-29 | 2012-12-29 | HCSWB2Z3270 | 92d | 0d |  |  |  |  |
| HCSWB2Z3290 |  | B2 Z3 :Backfill behind basement walls up slab level | 4d | 2012-12-30 | 2013-01-03 | HCSWB2Z3280 | 92d | 19d |  |  |  |  |

| ID | WBS | Activity | Duration | Start | Finish | Predecessors | Total float | Free float | Resources | Bill No. | Division No. | Responsibility | Phase Code |
| --- | --- | --- | --- | --- | --- | --- | --- | --- | --- | --- | --- | --- | --- |
|  | 4 | **Zone # 4** |  | 2013-01-10 | 2013-02-03 |  |  |  |  |  |  |  |  |
| HCSWB2Z4090 |  | B2 Z4 :Backfill behind basement walls up to anchor level | 8d | 2013-01-10 | 2013-01-19 | HCSWB3Z4110, HCSWB2Z4230, HCSWB2Z4080 | 66d | 0d |  |  |  |  |  |
| HCSWB2Z4100 |  | B2 Z4 :De-tensioning | 2d | 2013-01-20 | 2013-01-21 | HCSWB2Z4090, HCSWB2Z4230 | 66d | 0d |  |  |  |  |  |
| HCSWB2Z4110 |  | B2 Z4 :Backfill behind basement walls up to next anchor level | 4d | 2013-01-22 | 2013-01-27 | HCSWB2Z4100 | 66d | 0d |  |  |  |  |  |
| HCSWB2Z4120 |  | B2 Z4 :De-tensioning | 2d | 2013-01-28 | 2013-01-29 | HCSWB2Z4110 | 66d | 0d |  |  |  |  |  |
| HCSWB2Z4130 |  | B2 Z4 :Backfill behind basement walls up slab level | 4d | 2013-01-30 | 2013-02-03 | HCSWB2Z4120 | 66d | 22d |  |  |  |  |  |
|  | 5 | **Zone # 5** |  | 2013-01-02 | 2013-01-28 |  |  |  |  |  |  |  |  |
| HCSWB2Z5250 |  | B2 Z5 :Backfill behind basement walls up to anchor level | 14d | 2013-01-02 | 2013-01-17 | HCSWB3Z5270, HCSWB2Z5230, HCSWB2Z5080, HCSWB2Z5080 FF | 76d | 0d |  |  |  |  |  |
| HCSWB2Z5260 |  | B2 Z5 :De-tensioning | 2d | 2013-01-19 | 2013-01-20 | HCSWB2Z5250, HCSWB2Z5230 | 76d | 0d |  |  |  |  |  |
| HCSWB2Z5270 |  | B2 Z5 :Backfill behind basement walls up slab level | 6d | 2013-01-21 | 2013-01-28 | HCSWB2Z5260 | 76d | 11d |  |  |  |  |  |
|  | 6 | **Zone # 6** |  | 2013-03-13 | 2013-04-07 |  |  |  |  |  |  |  |  |
| HCSWB2Z6090 |  | B2 Z6 :Backfill behind basement walls up to anchor level | 14d | 2013-03-13 | 2013-03-28 | HCSWB3Z6110, HCSWB2Z6230, HCSWB2Z6080, HCSWB2Z6470 | 17d | 0d |  |  |  |  |  |
| HCSWB2Z6100 |  | B2 Z6 :De-tensioning | 2d | 2013-03-30 | 2013-03-31 | HCSWB2Z6090, HCSWB2Z6230 | 17d | 0d |  |  |  |  |  |
| HCSWB2Z6110 |  | B2 Z6 :Backfill behind basement walls up slab level | 6d | 2013-04-01 | 2013-04-07 | HCSWB2Z6100 | 17d | 0d |  |  |  |  |  |
|  | B1 | **Basement 1 floor** |  | 2012-12-05 | 2013-05-06 |  |  |  |  |  |  |  |  |
|  | 1 | **Zone # 1** |  | 2012-12-05 | 2013-01-29 |  |  |  |  |  |  |  |  |
|  | 1 | **Retaining Walls** |  | 2012-12-05 | 2012-12-26 |  |  |  |  |  |  |  |  |
| HCSWB1Z1010 |  | B1 Z1 :Formwork retaining walls shutters - 1st side | 8d | 2012-12-05 | 2012-12-13 | HCSWB2Z1230 | 50d | 0d | Retaining Walls shutter [573] | B1 | 03 | MC | C |
| HCSWB1Z1020 |  | B1 Z1 :Fix steel rebar for reatining walls | 8d | 2012-12-05 | 2012-12-13 | HCSWB1Z1010 SS, HCSWB1Z1010 FF | 50d | 0d |  | B1 | 03 | MC | C |
| HCSWB1Z1030 |  | B1 Z1 :Fix MEP first fix in walls | 8d | 2012-12-06 | 2012-12-15 | HCSWB1Z1020 SS+1d, HCSWB1Z1020 FF+1d | 50d | 0d |  | B1 | 03 | MC | C |
| HCSWB1Z1040 |  | B1 Z1 :Close shutter for retaining walls | 8d | 2012-12-08 | 2012-12-16 | HCSWB1Z1030 SS+1d, HCSWB1Z1030 FF+1d | 50d | 0d | Retaining Walls shutter [573] | B1 | 03 | MC | C |
| HCSWB1Z1050 |  | B1 Z1 :Cast concrete for retaining walls | 8d | 2012-12-09 | 2012-12-17 | HCSWB1Z1040 SS+1d, HCSWB1Z1040 FF+1d | 50d | 0d |  | B1 | 03 | MC | C |
| HCSWB1Z1060 |  | B1 Z1 :De-shutter retaining walls | 8d | 2012-12-10 | 2012-12-18 | HCSWB1Z1050 SS+1d, HCSWB1Z1050 FF+1d | 50d | 0d |  | B1 | 03 | MC | C |
| HCSWB1Z1070 |  | B1 Z1 :Apply water proofing membrane behind Basement Walls | 8d | 2012-12-16 | 2012-12-24 | HCSWB1Z1060 SS+5d, HCSWB1Z1060 FF+5d, HCSWB2Z1080 | 78d | 0d |  | B1 | 07 | MC | C |
| HCSWB1Z1080 |  | B1 Z1 :Apply Protection for Basement Walls | 8d | 2012-12-18 | 2012-12-26 | HCSWB1Z1070 SS+2d, HCSWB1Z1070 FF+2d | 78d | 20d |  | B1 | 07 | MC | C |

| ID | WBS | Activity | Duration | Start | Finish | Predecessors | Total float | Free float | Calendar | Resources | Bill No. | Division No. | Responsibility | Phase Code |
| --- | --- | --- | --- | --- | --- | --- | --- | --- | --- | --- | --- | --- | --- | --- |
|  | 2 | **Core and stair Walls** |  | 2012-12-05 | 2012-12-24 |  |  |  |  |  |  |  |  |  |
| HCSWB1Z1090 |  | B1 Z1 :Formwork core wall shutters - 1st side | 6d | 2012-12-05 | 2012-12-11 | HCSWB2Z1230 | 45d | 0d |  |  | B1 | 03 | MC | C |
| HCSWB1Z1100 |  | B1 Z1 :Fix steel rebar for core wall | 4d | 2012-12-12 | 2012-12-16 | HCSWB1Z1090 | 45d | 0d |  |  | B1 | 03 | MC | C |
| HCSWB1Z1110 |  | B1 Z1 :Fix MEP first fix in core wall | 1d | 2012-12-17 | 2012-12-17 | HCSWB1Z1100 | 45d | 0d |  |  | B1 | 03 | MC | C |
| HCSWB1Z1120 |  | B1 Z1 :Close shutter for core wall | 3d | 2012-12-18 | 2012-12-20 | HCSWB1Z1110 | 45d | 0d |  |  | B1 | 03 | MC | C |
| HCSWB1Z1130 |  | B1 Z1 :Cast concrete for core wall | 1d | 2012-12-22 | 2012-12-22 | HCSWB1Z1120 | 45d | 0d |  |  | B1 | 03 | MC | C |
| HCSWB1Z1140 |  | B1 Z1 :De-shutter core wall formwork | 2d | 2012-12-23 | 2012-12-24 | HCSWB1Z1130 | 45d | 6d |  |  | B1 | 03 | MC | C |
|  | 3 | **Columns** |  | 2012-12-05 | 2012-12-11 |  |  |  |  |  |  |  |  |  |
| HCSWB1Z1150 |  | B1 Z1 :Fix Steel Rebar for columns | 3d | 2012-12-05 | 2012-12-08 | HCSWB2Z1230 | 56d | 0d |  |  | B1 | 03 | MC | C |
| HCSWB1Z1160 |  | B1 Z1 :Erect columns formwork | 3d | 2012-12-06 | 2012-12-09 | HCSWB1Z1150 SS+1d, HCSWB1Z1150 FF+1d | 56d | 0d |  |  | B1 | 03 | MC | C |
| HCSWB1Z1170 |  | B1 Z1 :Cast concrete for columns | 3d | 2012-12-08 | 2012-12-10 | HCSWB1Z1160 SS+1d, HCSWB1Z1160 FF+1d | 56d | 0d |  |  | B1 | 03 | MC | C |
| HCSWB1Z1180 |  | B1 Z1 :De-shutter columns formwork | 3d | 2012-12-09 | 2012-12-11 | HCSWB1Z1170 SS+1d, HCSWB1Z1170 FF+1d | 56d | 17d |  |  | B1 | 03 | MC | C |
|  | 4 | **Covering Slab** |  | 2012-12-29 | 2013-01-29 |  |  |  |  |  |  |  |  |  |
| HCSWB1Z1190 |  | B1 Z1 :Erect slab formwork and proping | 8d | 2012-12-29 | 2013-01-07 | HCSWB1Z1180 FF+5d, HCSWB1Z1140 FF+5d, HCSWB1Z1060 FF+5d, HCSWB2Z3240 FF+4d | 39d | 0d |  |  | B1 | 03 | MC | C |
| HCSWB1Z1200 |  | B1 Z1 :Fix steel rebar for slab | 3d | 2013-01-08 | 2013-01-10 | HCSWB1Z1190 | 39d | 0d |  |  | B1 | 03 | MC | C |
| HCSWB1Z1210 |  | B1 Z1 :Fix MEP first Fix for slab | 2d | 2013-01-12 | 2013-01-13 | HCSWB1Z1200 | 39d | 0d |  |  | B1 | 03 | MC | C |
| HCSWB1Z1220 |  | B1 Z1 :Fix side shutters and casting guides for slab | 2d | 2013-01-13 | 2013-01-14 | HCSWB1Z1210 FF+1d | 39d | 0d |  |  | B1 | 03 | MC | C |
| HCSWB1Z1230 |  | B1 Z1 :Cast concrete for slab | 1d | 2013-01-15 | 2013-01-15 | HCSWB1Z1220 | 39d | 0d |  |  | B1 | 03 | MC | C |
| HCSWB1Z1240 |  | B1 Z1 :Cure and De-shutter slab formwork | 14d | 2013-01-15 | 2013-01-29 | HCSWB1Z1230 | 47.12d | 0d | HBTF # 2 - all days |  | B1 | 03 | MC | C |
|  | 2 | **Zone # 2** |  | 2013-01-08 | 2013-02-20 |  |  |  |  |  |  |  |  |  |
|  | 1 | **Retaining Walls** |  | 2013-01-08 | 2013-01-30 |  |  |  |  |  |  |  |  |  |
| HCSWB1Z2010 |  | B1 Z2 :Formwork retaining walls shutters - 1st side | 8d | 2013-01-08 | 2013-01-16 | HCSWB2Z2230 | 27d | 0d |  | Retaining Walls shutter [438] | B1 | 03 | MC | C |
| HCSWB1Z2020 |  | B1 Z2 :Fix steel rebar for reatining walls | 8d | 2013-01-08 | 2013-01-16 | HCSWB1Z2010 SS, HCSWB1Z2010 FF | 27d | 0d |  |  | B1 | 03 | MC | C |
| HCSWB1Z2030 |  | B1 Z2 :Fix MEP first fix in walls | 8d | 2013-01-09 | 2013-01-17 | HCSWB1Z2020 SS+1d, HCSWB1Z2020 FF+1d | 27d | 0d |  |  | B1 | 03 | MC | C |
| HCSWB1Z2040 |  | B1 Z2 :Close shutter for retaining walls | 8d | 2013-01-10 | 2013-01-19 | HCSWB1Z2030 SS+1d, HCSWB1Z2030 FF+1d | 27d | 0d |  | Retaining Walls shutter [438] | B1 | 03 | MC | C |
| HCSWB1Z2050 |  | B1 Z2 :Cast concrete for retaining walls | 8d | 2013-01-12 | 2013-01-20 | HCSWB1Z2040 SS+1d, HCSWB1Z2040 FF+1d | 27d | 0d |  |  | B1 | 03 | MC | C |
| HCSWB1Z2060 |  | B1 Z2 :De-shutter retaining walls | 8d | 2013-01-13 | 2013-01-21 | HCSWB1Z2050 SS+1d, HCSWB1Z2050 FF+1d | 27d | 0d |  |  | B1 | 03 | MC | C |
| HCSWB1Z2070 |  | B1 Z2 :Apply water proofing membrane behind Basement Walls | 8d | 2013-01-19 | 2013-01-28 | HCSWB1Z2060 SS+5d, HCSWB1Z2060 FF+5d, HCSWB2Z2080 | 50d | 0d |  |  | B1 | 07 | MC | C |
| HCSWB1Z2080 |  | B1 Z2 :Apply Protection for Basement Walls | 8d | 2013-01-21 | 2013-01-30 | HCSWB1Z2070 SS+2d, HCSWB1Z2070 FF+2d | 50d | 17d |  |  | B1 | 07 | MC | C |

| ID | WBS | Activity | Duration | Start | Finish | Predecessors | Total float | Free float | Calendar | Resources | Bill No. | Division No. | Responsibility | Phase Code |
| --- | --- | --- | --- | --- | --- | --- | --- | --- | --- | --- | --- | --- | --- | --- |
|  | 3 | **Columns** |  | 2013-01-08 | 2013-01-14 |  |  |  |  |  |  |  |  |  |
| HCSWB1Z2150 |  | B1 Z2 :Fix Steel Rebar for columns | 3d | 2013-01-08 | 2013-01-10 | HCSWB2Z2230 | 33d | 0d |  |  | B1 | 03 | MC | C |
| HCSWB1Z2160 |  | B1 Z2 :Erect columns formwork | 3d | 2013-01-09 | 2013-01-12 | HCSWB1Z2150 SS+1d, HCSWB1Z2150 FF+1d | 33d | 0d |  |  | B1 | 03 | MC | C |
| HCSWB1Z2170 |  | B1 Z2 :Cast concrete for columns | 3d | 2013-01-10 | 2013-01-13 | HCSWB1Z2160 SS+1d, HCSWB1Z2160 FF+1d | 33d | 0d |  |  | B1 | 03 | MC | C |
| HCSWB1Z2180 |  | B1 Z2 :De-shutter columns formwork | 3d | 2013-01-12 | 2013-01-14 | HCSWB1Z2170 SS+1d, HCSWB1Z2170 FF+1d | 33d | 6d |  |  | B1 | 03 | MC | C |
|  | 4 | **Covering Slab including stair case** |  | 2013-01-22 | 2013-02-20 |  |  |  |  |  |  |  |  |  |
| HCSWB1Z2190 |  | B1 Z2 :Erect slab formwork and proping | 6d | 2013-01-22 | 2013-01-29 | HCSWB1Z2180 FF+6d, HCSWB1Z2060 FF+6d, HCSWB2Z4240 FF+4d | 27d | 0d |  |  | B1 | 03 | MC | C |
| HCSWB1Z2200 |  | B1 Z2 :Fix steel rebar for slab | 3d | 2013-01-30 | 2013-02-02 | HCSWB1Z2190 | 27d | 0d |  |  | B1 | 03 | MC | C |
| HCSWB1Z2210 |  | B1 Z2 :Fix MEP first Fix for slab | 2d | 2013-02-03 | 2013-02-04 | HCSWB1Z2200 | 27d | 0d |  |  | B1 | 03 | MC | C |
| HCSWB1Z2220 |  | B1 Z2 :Fix side shutters and casting guides for slab | 2d | 2013-02-04 | 2013-02-05 | HCSWB1Z2210 FF+1d | 27d | 0d |  |  | B1 | 03 | MC | C |
| HCSWB1Z2230 |  | B1 Z2 :Cast concrete for slab | 1d | 2013-02-06 | 2013-02-06 | HCSWB1Z2220 | 27d | 0d |  |  | B1 | 03 | MC | C |
| HCSWB1Z2240 |  | B1 Z2 :Cure and De-shutter slab formwork | 14d | 2013-02-06 | 2013-02-20 | HCSWB1Z2230 | 32d | 0.12d | HBTF # 2 - all days |  | B1 | 03 | MC | C |
|  | 3 | **Zone # 3** |  | 2012-12-22 | 2013-02-10 |  |  |  |  |  |  |  |  |  |
|  | 1 | **Retaining Walls** |  | 2012-12-22 | 2013-01-07 |  |  |  |  |  |  |  |  |  |
| HCSWB1Z3010 |  | B1 Z3 :Formwork retaining walls shutters - 1st side | 5d | 2012-12-22 | 2012-12-26 | HCSWB2Z3230 | 11d | 0d |  | Retaining Walls shutter [270] | B1 | 03 | MC | C |
| HCSWB1Z3020 |  | B1 Z3 :Fix steel rebar for reatining walls | 5d | 2012-12-22 | 2012-12-26 | HCSWB1Z3010 SS, HCSWB1Z3010 FF | 11d | 0d |  |  | B1 | 03 | MC | C |
| HCSWB1Z3030 |  | B1 Z3 :Fix MEP first fix in walls | 5d | 2012-12-23 | 2012-12-27 | HCSWB1Z3020 SS+1d, HCSWB1Z3020 FF+1d | 11d | 0d |  |  | B1 | 03 | MC | C |
| HCSWB1Z3040 |  | B1 Z3 :Close shutter for retaining walls | 5d | 2012-12-24 | 2012-12-29 | HCSWB1Z3030 SS+1d, HCSWB1Z3030 FF+1d | 11d | 0d |  | Retaining Walls shutter [270] | B1 | 03 | MC | C |
| HCSWB1Z3050 |  | B1 Z3 :Cast concrete for retaining walls | 5d | 2012-12-25 | 2012-12-30 | HCSWB1Z3040 SS+1d, HCSWB1Z3040 FF+1d | 11d | 0d |  |  | B1 | 03 | MC | C |
| HCSWB1Z3060 |  | B1 Z3 :De-shutter retaining walls | 5d | 2012-12-26 | 2012-12-31 | HCSWB1Z3050 SS+1d, HCSWB1Z3050 FF+1d | 11d | 0d |  |  | B1 | 03 | MC | C |
| HCSWB1Z3070 |  | B1 Z3 :Apply water proofing membrane behind Basement Walls | 5d | 2012-12-30 | 2013-01-05 | HCSWB1Z3060 SS+3d, HCSWB1Z3060 FF+3d, HCSWB2Z3080 | 88d | 0d |  |  | B1 | 07 | MC | C |
| HCSWB1Z3080 |  | B1 Z3 :Apply Protection for Basement Walls | 5d | 2013-01-02 | 2013-01-07 | HCSWB1Z3070 SS+2d, HCSWB1Z3070 FF+2d | 88d | 16d |  |  | B1 | 07 | MC | C |
|  | 2 | **Core and stair Walls** |  | 2012-12-22 | 2013-01-10 |  |  |  |  |  |  |  |  |  |
| HCSWB1Z3090 |  | B1 Z3 :Formwork core wall shutters - 1st side | 6d | 2012-12-22 | 2012-12-27 | HCSWB2Z3230 | 3d | 0d |  |  | B1 | 03 | MC | C |
| HCSWB1Z3100 |  | B1 Z3 :Fix steel rebar for core wall | 4d | 2012-12-29 | 2013-01-02 | HCSWB1Z3090 | 3d | 0d |  |  | B1 | 03 | MC | C |
| HCSWB1Z3110 |  | B1 Z3 :Fix MEP first fix in core wall | 1d | 2013-01-03 | 2013-01-03 | HCSWB1Z3100 | 3d | 0d |  |  | B1 | 03 | MC | C |
| HCSWB1Z3120 |  | B1 Z3 :Close shutter for core wall | 3d | 2013-01-05 | 2013-01-07 | HCSWB1Z3110 | 3d | 0d |  |  | B1 | 03 | MC | C |
| HCSWB1Z3130 |  | B1 Z3 :Cast concrete for core wall | 1d | 2013-01-08 | 2013-01-08 | HCSWB1Z3120 | 3d | 0d |  |  | B1 | 03 | MC | C |
| HCSWB1Z3140 |  | B1 Z3 :De-shutter core wall formwork | 2d | 2013-01-09 | 2013-01-10 | HCSWB1Z3130 | 3d | 1d |  |  | B1 | 03 | MC | C |

| ID | WBS | Activity | Duration | Start | Finish | Predecessors | Total float | Free float | Calendar | Resources | Bill No. | Division No. | Responsibility | Phase Code |
| --- | --- | --- | --- | --- | --- | --- | --- | --- | --- | --- | --- | --- | --- | --- |
|  | 3 | **Columns** |  | 2012-12-22 | 2012-12-27 |  |  |  |  |  |  |  |  |  |
| HCSWB1Z3150 |  | B1 Z3 :Fix Steel Rebar for columns | 3d | 2012-12-22 | 2012-12-24 | HCSWB2Z3230 | 14d | 0d |  |  | B1 | 03 | MC | C |
| HCSWB1Z3160 |  | B1 Z3 :Erect columns formwork | 3d | 2012-12-23 | 2012-12-25 | HCSWB1Z3150 SS+1d, HCSWB1Z3150 FF+1d | 14d | 0d |  |  | B1 | 03 | MC | C |
| HCSWB1Z3170 |  | B1 Z3 :Cast concrete for columns | 3d | 2012-12-24 | 2012-12-26 | HCSWB1Z3160 SS+1d, HCSWB1Z3160 FF+1d | 14d | 0d |  |  | B1 | 03 | MC | C |
| HCSWB1Z3180 |  | B1 Z3 :De-shutter columns formwork | 3d | 2012-12-25 | 2012-12-27 | HCSWB1Z3170 SS+1d, HCSWB1Z3170 FF+1d | 14d | 12d |  |  | B1 | 03 | MC | C |
|  | 4 | **Covering Slab** |  | 2013-01-10 | 2013-02-10 |  |  |  |  |  |  |  |  |  |
| HCSWB1Z3190 |  | B1 Z3 :Erect slab formwork and proping | 7d | 2013-01-10 | 2013-01-17 | HCSWB1Z3180 FF+5d, HCSWB1Z3140 FF+5d, HCSWB1Z3060 FF+5d, HCSWB2Z5240 FF+4d | 2d | 0d |  |  | B1 | 03 | MC | C |
| HCSWB1Z3200 |  | B1 Z3 :Fix steel rebar for slab | 3d | 2013-01-19 | 2013-01-21 | HCSWB1Z3190 | 2d | 0d |  |  | B1 | 03 | MC | C |
| HCSWB1Z3210 |  | B1 Z3 :Fix MEP first Fix for slab | 2d | 2013-01-22 | 2013-01-23 | HCSWB1Z3200 | 2d | 0d |  |  | B1 | 03 | MC | C |
| HCSWB1Z3220 |  | B1 Z3 :Fix side shutters and casting guides for slab | 2d | 2013-01-23 | 2013-01-26 | HCSWB1Z3210 FF+1d | 2d | 0d |  |  | B1 | 03 | MC | C |
| HCSWB1Z3230 |  | B1 Z3 :Cast concrete for slab | 1d | 2013-01-27 | 2013-01-27 | HCSWB1Z3220 | 2d | 0d |  |  | B1 | 03 | MC | C |
| HCSWB1Z3240 |  | B1 Z3 :Cure and De-shutter slab formwork | 14d | 2013-01-27 | 2013-02-10 | HCSWB1Z3230 | 110.12d | 10.12d | HBTF # 2 - all days |  | B1 | 03 | MC | C |
|  | 4 | **Zone # 4** |  | 2013-01-10 | 2013-03-14 |  |  |  |  |  |  |  |  |  |
|  | 1 | **Retaining Walls** |  | 2013-01-10 | 2013-01-27 |  |  |  |  |  |  |  |  |  |
| HCSWB1Z4010 |  | B1 Z4 :Formwork retaining walls shutters - 1st side | 5d | 2013-01-10 | 2013-01-15 | HCSWB2Z4230 | 64d | 0d |  | Retaining Walls shutter [270] | B1 | 03 | MC | C |
| HCSWB1Z4020 |  | B1 Z4 :Fix steel rebar for reatining walls | 5d | 2013-01-10 | 2013-01-15 | HCSWB1Z4010 SS, HCSWB1Z4010 FF | 64d | 0d |  |  | B1 | 03 | MC | C |
| HCSWB1Z4030 |  | B1 Z4 :Fix MEP first fix in walls | 5d | 2013-01-12 | 2013-01-16 | HCSWB1Z4020 SS+1d, HCSWB1Z4020 FF+1d | 64d | 0d |  |  | B1 | 03 | MC | C |
| HCSWB1Z4040 |  | B1 Z4 :Close shutter for retaining walls | 5d | 2013-01-13 | 2013-01-17 | HCSWB1Z4030 SS+1d, HCSWB1Z4030 FF+1d | 64d | 0d |  | Retaining Walls shutter [270] | B1 | 03 | MC | C |
| HCSWB1Z4050 |  | B1 Z4 :Cast concrete for retaining walls | 5d | 2013-01-14 | 2013-01-19 | HCSWB1Z4040 SS+1d, HCSWB1Z4040 FF+1d | 64d | 0d |  |  | B1 | 03 | MC | C |
| HCSWB1Z4060 |  | B1 Z4 :De-shutter retaining walls | 5d | 2013-01-15 | 2013-01-20 | HCSWB1Z4050 SS+1d, HCSWB1Z4050 FF+1d | 64d | 0d |  |  | B1 | 03 | MC | C |
| HCSWB1Z4070 |  | B1 Z4 :Apply water proofing membrane behind Basement Walls | 5d | 2013-01-19 | 2013-01-23 | HCSWB1Z4060 SS+3d, HCSWB1Z4060 FF+3d, HCSWB2Z4080 | 72d | 0d |  |  | B1 | 07 | MC | C |
| HCSWB1Z4080 |  | B1 Z4 :Apply Protection for Basement Walls | 5d | 2013-01-21 | 2013-01-27 | HCSWB1Z4070 SS+2d, HCSWB1Z4070 FF+2d | 72d | 28d |  |  | B1 | 07 | MC | C |
|  | 3 | **Columns** |  | 2013-01-10 | 2013-01-16 |  |  |  |  |  |  |  |  |  |
| HCSWB1Z4150 |  | B1 Z4 :Fix Steel Rebar for columns | 3d | 2013-01-10 | 2013-01-13 | HCSWB2Z4230 | 67d | 0d |  |  | B1 | 03 | MC | C |
| HCSWB1Z4160 |  | B1 Z4 :Erect columns formwork | 3d | 2013-01-12 | 2013-01-14 | HCSWB1Z4150 SS+1d, HCSWB1Z4150 FF+1d | 67d | 0d |  |  | B1 | 03 | MC | C |
| HCSWB1Z4170 |  | B1 Z4 :Cast concrete for columns | 3d | 2013-01-13 | 2013-01-15 | HCSWB1Z4160 SS+1d, HCSWB1Z4160 FF+1d | 67d | 0d |  |  | B1 | 03 | MC | C |
| HCSWB1Z4180 |  | B1 Z4 :De-shutter columns formwork | 3d | 2013-01-14 | 2013-01-16 | HCSWB1Z4170 SS+1d, HCSWB1Z4170 FF+1d | 67d | 23d |  |  | B1 | 03 | MC | C |

| ID | WBS | Activity | Duration | Start | Finish | Predecessors | Total float | Free float | Calendar | Resources | Bill No. | Division No. | Responsibility | Phase Code |
| --- | --- | --- | --- | --- | --- | --- | --- | --- | --- | --- | --- | --- | --- | --- |
|  | 4 | **Covering Slab** |  | 2013-02-14 | 2013-03-14 |  |  |  |  |  |  |  |  |  |
| HCSWB1Z4190 |  | B1 Z4 :Erect slab formwork and proping | 6d | 2013-02-14 | 2013-02-20 | HCSWB1Z4180 FF+6d, HCSWB1Z4060 FF+6d, HCSWB2Z6240 FF+4d | 44d | 0d |  |  | B1 | 03 | MC | C |
| HCSWB1Z4200 |  | B1 Z4 :Fix steel rebar for slab | 3d | 2013-02-21 | 2013-02-24 | HCSWB1Z4190 | 44d | 0d |  |  | B1 | 03 | MC | C |
| HCSWB1Z4210 |  | B1 Z4 :Fix MEP first Fix for slab | 2d | 2013-02-25 | 2013-02-26 | HCSWB1Z4200 | 44d | 0d |  |  | B1 | 03 | MC | C |
| HCSWB1Z4220 |  | B1 Z4 :Fix side shutters and casting guides for slab | 2d | 2013-02-26 | 2013-02-27 | HCSWB1Z4210 FF+1d | 44d | 0d |  |  | B1 | 03 | MC | C |
| HCSWB1Z4230 |  | B1 Z4 :Cast concrete for slab | 1d | 2013-02-28 | 2013-02-28 | HCSWB1Z4220 | 44d | 0d |  |  | B1 | 03 | MC | C |
| HCSWB1Z4240 |  | B1 Z4 :Cure and De-shutter slab formwork | 14d | 2013-02-28 | 2013-03-14 | HCSWB1Z4230 | 153.38d | 1.12d | HBTF # 2 - all days |  | B1 | 03 | MC | C |
|  | 5 | **Zone # 5** |  | 2012-12-31 | 2013-02-24 |  |  |  |  |  |  |  |  |  |
|  | 1 | **Retaining Walls** |  | 2012-12-31 | 2013-01-22 |  |  |  |  |  |  |  |  |  |
| HCSWB1Z5010 |  | B1 Z5 :Formwork retaining walls shutters - 1st side | 8d | 2012-12-31 | 2013-01-09 | HCSWB2Z5230 | 75d | 0d |  | Retaining Walls shutter [660] | B1 | 03 | MC | C |
| HCSWB1Z5020 |  | B1 Z5 :Fix steel rebar for reatining walls | 8d | 2012-12-31 | 2013-01-09 | HCSWB1Z5010 SS, HCSWB1Z5010 FF | 75d | 0d |  |  | B1 | 03 | MC | C |
| HCSWB1Z5030 |  | B1 Z5 :Fix MEP first fix in walls | 8d | 2013-01-02 | 2013-01-10 | HCSWB1Z5020 SS+1d, HCSWB1Z5020 FF+1d | 75d | 0d |  |  | B1 | 03 | MC | C |
| HCSWB1Z5040 |  | B1 Z5 :Close shutter for retaining walls | 8d | 2013-01-03 | 2013-01-12 | HCSWB1Z5030 SS+1d, HCSWB1Z5030 FF+1d | 75d | 0d |  | Retaining Walls shutter [660] | B1 | 03 | MC | C |
| HCSWB1Z5050 |  | B1 Z5 :Cast concrete for retaining walls | 8d | 2013-01-05 | 2013-01-13 | HCSWB1Z5040 SS+1d, HCSWB1Z5040 FF+1d | 75d | 0d |  |  | B1 | 03 | MC | C |
| HCSWB1Z5060 |  | B1 Z5 :De-shutter retaining walls | 8d | 2013-01-06 | 2013-01-14 | HCSWB1Z5050 SS+1d, HCSWB1Z5050 FF+1d | 75d | 0d |  |  | B1 | 03 | MC | C |
| HCSWB1Z5070 |  | B1 Z5 :Apply water proofing membrane behind Basement Walls | 8d | 2013-01-12 | 2013-01-20 | HCSWB1Z5060 SS+5d, HCSWB1Z5060 FF+5d, HCSWB2Z5080 | 80d | 0d |  |  | B1 | 07 | MC | C |
| HCSWB1Z5080 |  | B1 Z5 :Apply Protection for Basement Walls | 8d | 2013-01-14 | 2013-01-22 | HCSWB1Z5070 SS+2d, HCSWB1Z5070 FF+2d | 80d | 15d |  |  | B1 | 07 | MC | C |
|  | 2 | **Core Walls** |  | 2012-12-31 | 2013-01-20 |  |  |  |  |  |  |  |  |  |
| HCSWB1Z5090 |  | B1 Z5 :Formwork core wall shutters - 1st side | 6d | 2012-12-31 | 2013-01-07 | HCSWB2Z5230 | 70d | 0d |  |  | B1 | 03 | MC | C |
| HCSWB1Z5100 |  | B1 Z5 :Fix steel rebar for core wall | 4d | 2013-01-08 | 2013-01-12 | HCSWB1Z5090 | 70d | 0d |  |  | B1 | 03 | MC | C |
| HCSWB1Z5110 |  | B1 Z5 :Fix MEP first fix in core wall | 1d | 2013-01-13 | 2013-01-13 | HCSWB1Z5100 | 70d | 0d |  |  | B1 | 03 | MC | C |
| HCSWB1Z5120 |  | B1 Z5 :Close shutter for core wall | 3d | 2013-01-14 | 2013-01-16 | HCSWB1Z5110 | 70d | 0d |  |  | B1 | 03 | MC | C |
| HCSWB1Z5130 |  | B1 Z5 :Cast concrete for core wall | 1d | 2013-01-17 | 2013-01-17 | HCSWB1Z5120 | 70d | 0d |  |  | B1 | 03 | MC | C |
| HCSWB1Z5140 |  | B1 Z5 :De-shutter core wall formwork | 2d | 2013-01-19 | 2013-01-20 | HCSWB1Z5130 | 70d | 5d |  |  | B1 | 03 | MC | C |

| ID | WBS | Activity | Duration | Start | Finish | Predecessors | Total float | Free float | Calendar | Resources | Bill No. | Division No. | Responsibility | Phase Code |
| --- | --- | --- | --- | --- | --- | --- | --- | --- | --- | --- | --- | --- | --- | --- |
|  | 3 | **Columns** |  | 2012-12-31 | 2013-01-07 |  |  |  |  |  |  |  |  |  |
| HCSWB1Z5150 |  | B1 Z5 :Fix Steel Rebar for columns | 3d | 2012-12-31 | 2013-01-03 | HCSWB2Z5230 | 80d | 0d |  |  | B1 | 03 | MC | C |
| HCSWB1Z5160 |  | B1 Z5 :Erect columns formwork | 3d | 2013-01-02 | 2013-01-05 | HCSWB1Z5150 SS+1d, HCSWB1Z5150 FF+1d | 80d | 0d |  |  | B1 | 03 | MC | C |
| HCSWB1Z5170 |  | B1 Z5 :Cast concrete for columns | 3d | 2013-01-03 | 2013-01-06 | HCSWB1Z5160 SS+1d, HCSWB1Z5160 FF+1d | 80d | 0d |  |  | B1 | 03 | MC | C |
| HCSWB1Z5180 |  | B1 Z5 :De-shutter columns formwork | 3d | 2013-01-05 | 2013-01-07 | HCSWB1Z5170 SS+1d, HCSWB1Z5170 FF+1d | 80d | 15d |  |  | B1 | 03 | MC | C |
|  | 4 | **Covering Slab** |  | 2013-01-27 | 2013-02-24 |  |  |  |  |  |  |  |  |  |
| HCSWB1Z5190 |  | B1 Z5 :Erect slab formwork and proping | 6d | 2013-01-27 | 2013-02-02 | HCSWB1Z5180 FF+6d, HCSWB1Z5140 FF+5d, HCSWB1Z5060 FF+5d, HCSWB1Z1240 FF+4d | 65d | 0d |  |  | B1 | 03 | MC | C |
| HCSWB1Z5200 |  | B1 Z5 :Fix steel rebar for slab | 3d | 2013-02-03 | 2013-02-05 | HCSWB1Z5190 | 65d | 0d |  |  | B1 | 03 | MC | C |
| HCSWB1Z5210 |  | B1 Z5 :Fix MEP first Fix for slab | 2d | 2013-02-06 | 2013-02-07 | HCSWB1Z5200 | 65d | 0d |  |  | B1 | 03 | MC | C |
| HCSWB1Z5220 |  | B1 Z5 :Fix side shutters and casting guides for slab | 2d | 2013-02-07 | 2013-02-09 | HCSWB1Z5210 FF+1d | 65d | 0d |  |  | B1 | 03 | MC | C |
| HCSWB1Z5230 |  | B1 Z5 :Cast concrete for slab | 1d | 2013-02-10 | 2013-02-10 | HCSWB1Z5220 | 65d | 0d |  |  | B1 | 03 | MC | C |
| HCSWB1Z5240 |  | B1 Z5 :Cure and De-shutter slab formwork | 14d | 2013-02-10 | 2013-02-24 | HCSWB1Z5230 | 210.12d | 0.12d | HBTF # 2 - all days |  | B1 | 03 | MC | C |
|  | 6 | **Zone # 6** |  | 2013-02-03 | 2013-04-01 |  |  |  |  |  |  |  |  |  |
|  | 1 | **Retaining Walls** |  | 2013-02-03 | 2013-02-24 |  |  |  |  |  |  |  |  |  |
| HCSWB1Z6010 |  | B1 Z6 :B1 Z6 :Formwork retaining walls shutters - 1st side | 8d | 2013-02-03 | 2013-02-11 | HCSWB2Z6230 | 29d | 0d |  | Retaining Walls shutter [510] | B1 | 03 | MC | C |
| HCSWB1Z6020 |  | B1 Z6 :B1 Z6 :Fix steel rebar for reatining walls | 8d | 2013-02-03 | 2013-02-11 | HCSWB1Z6010 SS, HCSWB1Z6010 FF | 29d | 0d |  |  | B1 | 03 | MC | C |
| HCSWB1Z6030 |  | B1 Z6 :B1 Z6 :Fix MEP first fix in walls | 8d | 2013-02-04 | 2013-02-12 | HCSWB1Z6020 SS+1d, HCSWB1Z6020 FF+1d | 29d | 0d |  |  | B1 | 03 | MC | C |
| HCSWB1Z6040 |  | B1 Z6 :B1 Z6 :Close shutter for retaining walls | 8d | 2013-02-05 | 2013-02-13 | HCSWB1Z6030 SS+1d, HCSWB1Z6030 FF+1d | 29d | 0d |  | Retaining Walls shutter [510] | B1 | 03 | MC | C |
| HCSWB1Z6050 |  | B1 Z6 :B1 Z6 :Cast concrete for retaining walls | 8d | 2013-02-06 | 2013-02-14 | HCSWB1Z6040 SS+1d, HCSWB1Z6040 FF+1d | 29d | 0d |  |  | B1 | 03 | MC | C |
| HCSWB1Z6060 |  | B1 Z6 :B1 Z6 :De-shutter retaining walls | 8d | 2013-02-07 | 2013-02-16 | HCSWB1Z6050 SS+1d, HCSWB1Z6050 FF+1d | 29d | 0d |  |  | B1 | 03 | MC | C |
| HCSWB1Z6070 |  | B1 Z6 :B1 Z6 :Apply water proofing membrane behind Basement Walls | 8d | 2013-02-13 | 2013-02-21 | HCSWB1Z6060 SS+5d, HCSWB1Z6060 FF+5d, HCSWB2Z6080 | 53d | 0d |  |  | B1 | 07 | MC | C |
| HCSWB1Z6080 |  | B1 Z6 :B1 Z6 :Apply Protection for Basement Walls | 8d | 2013-02-16 | 2013-02-24 | HCSWB1Z6070 SS+2d, HCSWB1Z6070 FF+2d | 53d | 36d |  |  | B1 | 07 | MC | C |
|  | 3 | **Columns** |  | 2013-02-03 | 2013-02-09 |  |  |  |  |  |  |  |  |  |
| HCSWB1Z6150 |  | B1 Z6 :B1 Z6 :Fix Steel Rebar for columns | 3d | 2013-02-03 | 2013-02-05 | HCSWB2Z6230 | 35d | 0d |  |  | B1 | 03 | MC | C |
| HCSWB1Z6160 |  | B1 Z6 :B1 Z6 :Erect columns formwork | 3d | 2013-02-04 | 2013-02-06 | HCSWB1Z6150 SS+1d, HCSWB1Z6150 FF+1d | 35d | 0d |  |  | B1 | 03 | MC | C |
| HCSWB1Z6170 |  | B1 Z6 :B1 Z6 :Cast concrete for columns | 3d | 2013-02-05 | 2013-02-07 | HCSWB1Z6160 SS+1d, HCSWB1Z6160 FF+1d | 35d | 0d |  |  | B1 | 03 | MC | C |
| HCSWB1Z6180 |  | B1 Z6 :B1 Z6 :De-shutter columns formwork | 3d | 2013-02-06 | 2013-02-09 | HCSWB1Z6170 SS+1d, HCSWB1Z6170 FF+1d | 35d | 19d |  |  | B1 | 03 | MC | C |

| ID | WBS | Activity | Duration | Start | Finish | Predecessors | Total float | Free float | Calendar | Bill No. | Division No. | Responsibility | Phase Code |
| --- | --- | --- | --- | --- | --- | --- | --- | --- | --- | --- | --- | --- | --- |
|  | 4 | **Covering Slab** |  | 2013-02-27 | 2013-04-01 |  |  |  |  |  |  |  |  |
| HCSWB1Z6190 |  | B1 Z6 :B1 Z6 :Erect slab formwork and proping | 10d | 2013-02-27 | 2013-03-10 | HCSWB1Z6180 FF+6d, HCSWB1Z6060 FF+6d, HCSWB1Z2240 FF+4d, HCSWB2Z6450 FF+4d, HCSWSSZ6470 FF+5d | 16d | 0d |  | B1 | 03 | MC | C |
| HCSWB1Z6200 |  | B1 Z6 :B1 Z6 :Fix steel rebar for slab | 3d | 2013-03-11 | 2013-03-13 | HCSWB1Z6190 | 16d | 0d |  | B1 | 03 | MC | C |
| HCSWB1Z6210 |  | B1 Z6 :B1 Z6 :Fix MEP first Fix for slab | 2d | 2013-03-14 | 2013-03-16 | HCSWB1Z6200 | 16d | 0d |  | B1 | 03 | MC | C |
| HCSWB1Z6220 |  | B1 Z6 :B1 Z6 :Fix side shutters and casting guides for slab | 2d | 2013-03-16 | 2013-03-17 | HCSWB1Z6210 FF+1d | 16d | 0d |  | B1 | 03 | MC | C |
| HCSWB1Z6230 |  | B1 Z6 :B1 Z6 :Cast concrete for slab | 1d | 2013-03-18 | 2013-03-18 | HCSWB1Z6220 | 16d | 0d |  | B1 | 03 | MC | C |
| HCSWB1Z6240 |  | B1 Z6 :B1 Z6 :Cure and De-shutter slab formwork | 14d | 2013-03-18 | 2013-04-01 | HCSWB1Z6230 | 159.38d | 0.12d | HBTF # 2 - all days | B1 | 03 | MC | C |
|  | 8 | **De-tensioning** |  | 2013-01-21 | 2013-05-06 |  |  |  |  |  |  |  |  |
|  | 1 | **Zone # 1** |  | 2013-01-21 | 2013-03-07 |  |  |  |  |  |  |  |  |
| HCSWB1Z1250 |  | B1 Z1 :Backfill behind basement walls up to anchor level | 8d | 2013-01-21 | 2013-01-30 | HCSWB2Z1290, HCSWB1Z1230, HCSWB1Z1080 | 58d | 0d |  |  |  |  |  |
| HCSWB1Z1260 |  | B1 Z1 :De-tensioning | 3d | 2013-01-31 | 2013-02-03 | HCSWB1Z1250, HCSWB1Z1230 | 58d | 0d |  |  |  |  |  |
| HCSWB1Z1270 |  | B1 Z1 :Backfill behind basement walls up next anchor level | 7d | 2013-02-04 | 2013-02-11 | HCSWB1Z1260 | 58d | 0d |  |  |  |  |  |
| HCSWB1Z1280 |  | B1 Z1 :De-tensioning | 3d | 2013-02-12 | 2013-02-14 | HCSWB1Z1270 | 58d | 0d |  |  |  |  |  |
| HCSWB1Z1290 |  | B1 Z1 :Backfill behind basement walls up next anchor level | 8d | 2013-02-16 | 2013-02-24 | HCSWB1Z1280 | 58d | 0d |  |  |  |  |  |
| HCSWB1Z1300 |  | B1 Z1 :De-tensioning | 3d | 2013-02-25 | 2013-02-27 | HCSWB1Z1290 | 58d | 0d |  |  |  |  |  |
| HCSWB1Z1310 |  | B1 Z1 :Backfill behind basement walls up slab level | 7d | 2013-02-28 | 2013-03-07 | HCSWB1Z1300 | 58d | 40d |  |  |  |  |  |
|  | 2 | **Zone # 2** |  | 2013-02-20 | 2013-04-06 |  |  |  |  |  |  |  |  |
| HCSWB1Z2090 |  | B1 Z2 :Backfill behind basement walls up to anchor level | 8d | 2013-02-20 | 2013-02-28 | HCSWB2Z2130, HCSWB1Z2230, HCSWB1Z2080 | 33d | 0d |  |  |  |  |  |
| HCSWB1Z2100 |  | B1 Z2 :De-tensioning | 3d | 2013-03-02 | 2013-03-04 | HCSWB1Z2090, HCSWB1Z2230 | 33d | 0d |  |  |  |  |  |
| HCSWB1Z2110 |  | B1 Z2 :Backfill behind basement walls up to next anchor level | 7d | 2013-03-05 | 2013-03-12 | HCSWB1Z2100 | 33d | 0d |  |  |  |  |  |
| HCSWB1Z2120 |  | B1 Z2 :De-tensioning | 3d | 2013-03-13 | 2013-03-16 | HCSWB1Z2110 | 33d | 0d |  |  |  |  |  |
| HCSWB1Z2130 |  | B1 Z2 :Backfill behind basement walls up to next anchor level | 8d | 2013-03-17 | 2013-03-25 | HCSWB1Z2120 | 33d | 0d |  |  |  |  |  |
| HCSWB1Z2140 |  | B1 Z2 :De-tensioning | 3d | 2013-03-26 | 2013-03-28 | HCSWB1Z2130 | 33d | 0d |  |  |  |  |  |
| HCSWB1Z2250 |  | B1 Z2 :Backfill behind basement walls up slab level | 7d | 2013-03-30 | 2013-04-06 | HCSWB1Z2140 | 33d | 23d |  |  |  |  |  |

| ID | WBS | Activity | Duration | Start | Finish | Predecessors | Total float | Free float |
| --- | --- | --- | --- | --- | --- | --- | --- | --- |
|  | 3 | **Zone # 3** |  | 2013-01-28 | 2013-02-18 |  |  |  |
| HCSWB1Z3250 |  | B1 Z3 :Backfill behind basement walls up to anchor level | 8d | 2013-01-28 | 2013-02-05 | HCSWB2Z3290, HCSWB1Z3230, HCSWB1Z3080 | 73d | 0d |
| HCSWB1Z3260 |  | B1 Z3 :De-tensioning | 2d | 2013-02-06 | 2013-02-07 | HCSWB1Z3250, HCSWB1Z3230 | 73d | 0d |
| HCSWB1Z3270 |  | B1 Z3 :Backfill behind basement walls up to next anchor level | 4d | 2013-02-09 | 2013-02-12 | HCSWB1Z3260 | 73d | 0d |
| HCSWB1Z3280 |  | B1 Z3 :De-tensioning | 1d | 2013-02-13 | 2013-02-13 | HCSWB1Z3270 | 73d | 0d |
| HCSWB1Z3290 |  | B1 Z3 :Backfill behind basement walls up slab level | 4d | 2013-02-14 | 2013-02-18 | HCSWB1Z3280 | 73d | 63d |
|  | 4 | **Zone # 4** |  | 2013-03-02 | 2013-03-24 |  |  |  |
| HCSWB1Z4090 |  | B1 Z4 :Backfill behind basement walls up to anchor level | 8d | 2013-03-02 | 2013-03-10 | HCSWB2Z4130, HCSWB1Z4230, HCSWB1Z3080, HCSWB1Z4080 | 44d | 0d |
| HCSWB1Z4100 |  | B1 Z4 :De-tensioning | 2d | 2013-03-11 | 2013-03-12 | HCSWB1Z4090, HCSWB1Z4230 | 44d | 0d |
| HCSWB1Z4110 |  | B1 Z4 :Backfill behind basement walls up to next anchor level | 4d | 2013-03-13 | 2013-03-17 | HCSWB1Z4100 | 44d | 0d |
| HCSWB1Z4120 |  | B1 Z4 :De-tensioning | 2d | 2013-03-18 | 2013-03-19 | HCSWB1Z4110 | 44d | 0d |
| HCSWB1Z4130 |  | B1 Z4 :Backfill behind basement walls up slab level | 4d | 2013-03-20 | 2013-03-24 | HCSWB1Z4120 | 44d | 34d |
|  | 5 | **Zone # 5** |  | 2013-02-11 | 2013-03-10 |  |  |  |
| HCSWB1Z5250 |  | B1 Z5 :Backfill behind basement walls up to anchor level | 8d | 2013-02-11 | 2013-02-19 | HCSWB2Z5270, HCSWB1Z5230, HCSWB1Z5080 | 65d | 0d |
| HCSWB1Z5260 |  | B1 Z5 :De-tensioning | 2d | 2013-02-20 | 2013-02-21 | HCSWB1Z5250, HCSWB1Z5230 | 65d | 0d |
| HCSWB1Z5270 |  | B1 Z5 :Backfill behind basement walls up to next anchor level | 6d | 2013-02-23 | 2013-02-28 | HCSWB1Z5260 | 65d | 0d |
| HCSWB1Z5280 |  | B1 Z5 :De-tensioning | 2d | 2013-03-02 | 2013-03-03 | HCSWB1Z5270 | 65d | 0d |
| HCSWB1Z5290 |  | B1 Z5 :Backfill behind basement walls up slab level | 6d | 2013-03-04 | 2013-03-10 | HCSWB1Z5280 | 65d | 48d |
|  | 6 | **Zone # 6** |  | 2013-04-08 | 2013-05-06 |  |  |  |
| HCSWB1Z6090 |  | B1 Z6 :Backfill behind basement walls up to anchor level | 8d | 2013-04-08 | 2013-04-16 | HCSWB2Z6110, HCSWB1Z6230, HCSWB1Z6080 | 17d | 0d |
| HCSWB1Z6100 |  | B1 Z6 :De-tensioning | 2d | 2013-04-17 | 2013-04-18 | HCSWB1Z6090, HCSWB1Z6230 | 17d | 0d |
| HCSWB1Z6110 |  | B1 Z6 :Backfill behind basement walls up to next anchor level | 6d | 2013-04-20 | 2013-04-25 | HCSWB1Z6100 | 17d | 0d |
| HCSWB1Z6120 |  | B1 Z6 :De-tensioning | 2d | 2013-04-27 | 2013-04-28 | HCSWB1Z6110 | 17d | 0d |
| HCSWB1Z6130 |  | B1 Z6 :Backfill behind basement walls up slab level | 6d | 2013-04-29 | 2013-05-06 | HCSWB1Z6120 | 17d | 0d |

| ID | WBS | Activity | Duration | Start | Finish | Predecessors | Total float | Free float | Constraint | Bill No. | Division No. | Responsibility | Phase Code |
| --- | --- | --- | --- | --- | --- | --- | --- | --- | --- | --- | --- | --- | --- |
|  | RA | **Ramp (axes 11 - 3)** |  | 2012-12-22 | 2013-02-03 |  |  |  |  |  |  |  |  |
| HCSWB1RA000 |  | Erect ramb's slab formwork and proping | 12d | 2012-12-22 | 2013-01-05 | HCSWB2Z3230 | 36d | 0d |  |  |  |  |  |
| HCSWB1RA010 |  | Fix steel rebar for ramp | 12d | 2012-12-27 | 2013-01-10 | HCSWB1RA000 SS+5d, HCSWB1RA000 FF+2d | 36d | 0d |  |  |  |  |  |
| HCSWB1RA020 |  | Fix MEP first Fix for Ramp | 2d | 2013-01-12 | 2013-01-13 | HCSWB1RA010 | 36d | 0d |  |  |  |  |  |
| HCSWB1RA030 |  | Fix side shutters and casting guides for Ramp | 2d | 2013-01-14 | 2013-01-15 | HCSWB1RA020 | 36d | 0d |  |  |  |  |  |
| HCSWB1RA040 |  | Cast concrete for Ramp | 1d | 2013-01-16 | 2013-01-16 | HCSWB1RA030, HESDACI0010 | 36d | 0d |  |  |  |  |  |
| HCSWB1RA050 |  | Cure and De-shutter Ramp formwork | 14d | 2013-01-17 | 2013-02-03 | HCSWB1RA040 | 36d | 0d |  |  |  |  |  |
|  | 2 | **Steel Structural Works** |  | 2013-01-28 | 2013-09-24 |  |  |  |  |  |  |  |  |
|  | 0 | **Ground Floor** |  | 2013-01-28 | 2013-06-23 |  |  |  |  |  |  |  |  |
|  | 1 | **Structural Steel Zone # 1** |  | 2013-01-29 | 2013-02-19 |  |  |  |  |  |  |  |  |
|  | 2 | **Steel Structure Works** |  | 2013-01-29 | 2013-02-19 |  |  |  |  |  |  |  |  |
| HCSWGFZ1070 |  | GF Z1 :Installation of steel columns and beams | 4d | 2013-01-29 | 2013-02-02 | HEPSS00020 SS+14d, HCSWB4Z1230, HCSWB4Z2230 | 0d |  |  | B1 | 05 | SS | C |
| HCSWGFZ1080 |  | GF Z1 :Steel Deck | 2d | 2013-02-10 | 2013-02-11 | HCSWGFZ1070 SS+10d | 0d |  |  | B1 | 05 | SS | C |
| HCSWGFZ1090 |  | GF Z1 :Casting concrete for slab topping | 1d | 2013-02-12 | 2013-02-12 | HEPSS00020 SS+14d, HCSWGFZ1080 | 0d |  |  | B1 | 03 | MC | C |
| HCSWGFZ1100 |  | GF Z1 :Fire Proofing | 6d | 2013-02-13 | 2013-02-19 | HCSWGFZ1090 | 154d | 8d |  |  |  |  |  |
|  | 2 | **Structural Steel Zone # 2** |  | 2013-01-28 | 2013-04-25 |  |  |  |  |  |  |  |  |
|  | 1 | **Core Walls** |  | 2013-01-28 | 2013-02-19 |  |  |  |  |  |  |  |  |
| HCSWGFZ2000 |  | GF Z2 :Formwork core wall shutters - 1st side | 8d | 2013-01-28 | 2013-02-05 | HCSWB1Z3230 | 2d | 0d | as late as possible | B1 | 03 | MC | C |
| HCSWGFZ2010 |  | GF Z2 :Fix steel rebar for core wall | 4d | 2013-02-06 | 2013-02-10 | HCSWGFZ2000 | 2d | 0d | as late as possible | B1 | 03 | MC | C |
| HCSWGFZ2020 |  | GF Z2 :Fix MEP first fix in core wall | 1d | 2013-02-12 | 2013-02-12 | HCSWGFZ2010 | 2d | 0d | as late as possible | B1 | 03 | MC | C |
| HCSWGFZ2030 |  | GF Z2 :Close shutter for core wall | 4d | 2013-02-13 | 2013-02-17 | HCSWGFZ2020, HCSWGFZ2060 | 2d | 0d | as late as possible | B1 | 03 | MC | C |
| HCSWGFZ2040 |  | GF Z2 :Cast concrete for core wall | 1d | 2013-02-18 | 2013-02-18 | HCSWGFZ2030 | 2d | 0d | as late as possible | B1 | 03 | MC | C |
| HCSWGFZ2050 |  | GF Z2 :De-shutter core wall formwork | 1d | 2013-02-19 | 2013-02-19 | HCSWGFZ2040 | 2d | 0d | as late as possible | B1 | 03 | MC | C |
|  | 2 | **Steel Structure Works** |  | 2013-02-11 | 2013-04-25 |  |  |  |  |  |  |  |  |
| HCSWGFZ2060 |  | GF Z2 :Provision & Installation of steel embedded plates | 2d | 2013-02-11 | 2013-02-12 | HCSWGFZ2010 | 2d | 0d | as late as possible | B1 | 05 | SS | C |
| HCSWGFZ2070 |  | GF Z2 :Installation of steel columns and beams | 3d | 2013-04-13 | 2013-04-15 | HCSWGFZ2050, HCSWGFZ2060, HCSW7FZ1090, HEPSS00020 SS, HCSWFFZ2050 | 0d |  |  | B1 | 05 | SS | C |
| HCSWGFZ2080 |  | GF Z2 :Steel Deck | 2d | 2013-04-16 | 2013-04-17 | HCSWGFZ2070 | 0d |  |  | B1 | 05 | SS | C |
| HCSWGFZ2090 |  | GF Z2 :Casting concrete for slab topping | 1d | 2013-04-18 | 2013-04-18 | HCSWGFZ2080 | 0d |  |  | B1 | 03 | MC | C |
| HCSWGFZ2100 |  | GF Z2 :Fire Proofing | 6d | 2013-04-20 | 2013-04-25 | HCSWGFZ2090 | 93d | 0d |  |  |  |  |  |

| ID | WBS | Activity | Duration | Start | Finish | Predecessors | Total float | Free float | Constraint | Bill No. | Division No. | Responsibility | Phase Code |
| --- | --- | --- | --- | --- | --- | --- | --- | --- | --- | --- | --- | --- | --- |
|  | 3 | **Structural Steel Zone # 3** |  | 2013-03-19 | 2013-06-23 |  |  |  |  |  |  |  |  |
|  | 1 | **Core Walls** |  | 2013-03-19 | 2013-04-01 |  |  |  |  |  |  |  |  |
| HCSWGFZ3000 |  | GF Z3 :Formwork core wall shutters - 1st side | 5d | 2013-03-19 | 2013-03-24 | HCSWB1Z6230 | 16d | 0d |  | B1 | 03 | MC | C |
| HCSWGFZ3010 |  | GF Z3 :Fix steel rebar for core wall | 2d | 2013-03-25 | 2013-03-26 | HCSWGFZ3000 | 16d | 0d |  | B1 | 03 | MC | C |
| HCSWGFZ3020 |  | GF Z3 :Fix MEP first fix in core wall | 1d | 2013-03-27 | 2013-03-27 | HCSWGFZ3010 | 16d | 0d |  | B1 | 03 | MC | C |
| HCSWGFZ3030 |  | GF Z3 :Close shutter for core wall | 2d | 2013-03-28 | 2013-03-30 | HCSWGFZ3020, HCSWGFZ3060 | 16d | 0d |  | B1 | 03 | MC | C |
| HCSWGFZ3040 |  | GF Z3 :Cast concrete for core wall | 1d | 2013-03-31 | 2013-03-31 | HCSWGFZ3030 | 16d | 0d |  | B1 | 03 | MC | C |
| HCSWGFZ3050 |  | GF Z3 :De-shutter core wall formwork | 1d | 2013-04-01 | 2013-04-01 | HCSWGFZ3040 | 16d | 0d |  | B1 | 03 | MC | C |
|  | 2 | **Steel Structure Works** |  | 2013-03-27 | 2013-06-23 |  |  |  |  |  |  |  |  |
| HCSWGFZ3060 |  | GF Z3 :Provision & Installation of steel embedded plates | 1d | 2013-03-27 | 2013-03-27 | HCSWGFZ3010 | 16d | 0d | as late as possible | B1 | 05 | SS | C |
| HCSWGFZ3070 |  | GF Z3 :Installation of steel columns and beams | 4d | 2013-06-08 | 2013-06-11 | HCSWGFZ3060, HCSW7FZ2090, HCSWFFZ3050 | 0d |  |  | B1 | 05 | SS | C |
| HCSWGFZ3080 |  | GF Z3 :Steel Deck | 3d | 2013-06-12 | 2013-06-15 | HCSWGFZ3070 | 0d |  |  | B1 | 05 | SS | C |
| HCSSGFZ3090 |  | GF Z3 :Casting concrete for slab topping | 1d | 2013-06-16 | 2013-06-16 | HCSWGFZ3080 | 0d |  |  | B1 | 03 | MC | C |
| HCSSGFZ3100 |  | GF Z3 :Fire Proofing | 6d | 2013-06-17 | 2013-06-23 | HCSSGFZ3090 | 45d | 0d |  |  |  |  |  |
|  | 1 | **First Floor** |  | 2013-02-13 | 2013-06-30 |  |  |  |  |  |  |  |  |
|  | 1 | **Structural Steel Zone # 1** |  | 2013-02-13 | 2013-03-07 |  |  |  |  |  |  |  |  |
|  | 2 | **Steel Structure Works** |  | 2013-02-13 | 2013-03-07 |  |  |  |  |  |  |  |  |
| HCSWFFZ1070 |  | FF Z1 :Installation of steel columns and beams | 3d | 2013-02-13 | 2013-02-16 | HEPSS00020 SS+14d, HCSWGFZ1090 | 0d |  |  | B1 | 05 | SS | C |
| HCSWFFZ1080 |  | FF Z1 :Steel Deck | 3d | 2013-02-25 | 2013-02-27 | HCSWFFZ1070 SS+10d | 0d |  |  | B1 | 05 | SS | C |
| HCSWFFZ1090 |  | FF Z1 :Casting concrete for slab topping | 1d | 2013-02-28 | 2013-02-28 | HCSWFFZ1080 | 0d |  |  | B1 | 03 | MC | C |
| HCSWFFZ1100 |  | FF Z1 :Fire Proofing | 6d | 2013-03-02 | 2013-03-07 | HCSWFFZ1090, HCSWGFZ1100 | 146d | 0d |  |  |  |  |  |
|  | 2 | **Structural Steel Zone # 2** |  | 2013-02-20 | 2013-05-04 |  |  |  |  |  |  |  |  |
|  | 1 | **Core Walls** |  | 2013-02-20 | 2013-03-05 |  |  |  |  |  |  |  |  |
| HCSWFFZ2000 |  | Formwork core wall shutters - 1st side | 5d | 2013-02-20 | 2013-02-25 | HCSWGFZ2050 | 2d | 0d |  | B1 | 03 | MC | C |
| HCSWFFZ2010 |  | Fix steel rebar for core wall | 2d | 2013-02-26 | 2013-02-27 | HCSWFFZ2000 | 2d | 0d |  | B1 | 03 | MC | C |
| HCSWFFZ2020 |  | Fix MEP first fix in core wall | 1d | 2013-02-28 | 2013-02-28 | HCSWFFZ2010 | 2d | 0d |  | B1 | 03 | MC | C |
| HCSWFFZ2030 |  | Close shutter for core wall | 2d | 2013-03-02 | 2013-03-03 | HCSWFFZ2020, HCSWFFZ2060 | 2d | 0d |  | B1 | 03 | MC | C |
| HCSWFFZ2040 |  | Cast concrete for core wall | 1d | 2013-03-04 | 2013-03-04 | HCSWFFZ2030 | 2d | 0d |  | B1 | 03 | MC | C |
| HCSWFFZ2050 |  | De-shutter core wall formwork | 1d | 2013-03-05 | 2013-03-05 | HCSWFFZ2040 | 32d |  |  | B1 | 03 | MC | C |

| ID | WBS | Activity | Duration | Start | Finish | Predecessors | Total float | Free float | Bill No. | Division No. | Responsibility | Phase Code |
| --- | --- | --- | --- | --- | --- | --- | --- | --- | --- | --- | --- | --- |
|  | 2 | **Steel Structure Works** |  | 2013-02-28 | 2013-05-04 |  |  |  |  |  |  |  |
| HCSWFFZ2060 |  | Provision & Installation of steel embedded plates | 1d | 2013-02-28 | 2013-02-28 | HCSWFFZ2010 | 2d | 0d | B1 | 05 | SS | C |
| HCSWFFZ2070 |  | Installation of steel columns and beams | 3d | 2013-04-20 | 2013-04-22 | HCSWFFZ2060, HCSW7FZ1080, HCSW2FZ2050, HCSWGFZ2090 | 0d |  | B1 | 05 | SS | C |
| HCSWFFZ2080 |  | Steel Deck | 2d | 2013-04-23 | 2013-04-24 | HCSWFFZ2070 | 0d |  | B1 | 05 | SS | C |
| HCSWFFZ2090 |  | Casting concrete for slab topping | 1d | 2013-04-25 | 2013-04-25 | HCSWFFZ2080 | 0d |  | B1 | 03 | MC | C |
| HCSWFFZ2100 |  | Fire Proofing | 6d | 2013-04-27 | 2013-05-04 | HCSWFFZ2090, HCSWGFZ2100 | 93d | 0d |  |  |  |  |
|  | 3 | **Structural Steel Zone # 3** |  | 2013-04-02 | 2013-06-30 |  |  |  |  |  |  |  |
|  | 1 | **Core Walls** |  | 2013-04-02 | 2013-04-15 |  |  |  |  |  |  |  |
| HCSWFFZ3000 |  | Formwork core wall shutters - 1st side | 5d | 2013-04-02 | 2013-04-07 | HCSWGFZ3050 | 16d | 0d | B1 | 03 | MC | C |
| HCSWFFZ3010 |  | Fix steel rebar for core wall | 2d | 2013-04-08 | 2013-04-09 | HCSWFFZ3000 | 16d | 0d | B1 | 03 | MC | C |
| HCSWFFZ3020 |  | Fix MEP first fix in core wall | 1d | 2013-04-10 | 2013-04-10 | HCSWFFZ3010 | 16d | 0d | B1 | 03 | MC | C |
| HCSWFFZ3030 |  | Close shutter for core wall | 2d | 2013-04-11 | 2013-04-13 | HCSWFFZ3020, HCSWFFZ3060 | 16d | 0d | B1 | 03 | MC | C |
| HCSWFFZ3040 |  | Cast concrete for core wall | 1d | 2013-04-14 | 2013-04-14 | HCSWFFZ3030 | 16d | 0d | B1 | 03 | MC | C |
| HCSWFFZ3050 |  | De-shutter core wall formwork | 1d | 2013-04-15 | 2013-04-15 | HCSWFFZ3040 | 43d |  | B1 | 03 | MC | C |
|  | 2 | **Steel Structure Works** |  | 2013-04-10 | 2013-06-30 |  |  |  |  |  |  |  |
| HCSWFFZ3060 |  | Provision & Installation of steel embedded plates | 1d | 2013-04-10 | 2013-04-10 | HCSWFFZ3010 | 16d | 0d | B1 | 05 | SS | C |
| HCSWFFZ3070 |  | Installation of steel columns and beams | 4d | 2013-06-06 | 2013-06-10 | HCSWFFZ3060, HCSW7FZ2080, HCSW2FZ3050 | 0d |  | B1 | 05 | SS | C |
| HCSWFFZ3080 |  | Steel Deck | 3d | 2013-06-11 | 2013-06-13 | HCSWFFZ3070 | 0d |  | B1 | 05 | SS | C |
| HCSWFFZ3090 |  | Casting concrete for slab topping | 1d | 2013-06-15 | 2013-06-15 | HCSWFFZ3080 | 0d |  | B1 | 03 | MC | C |
| HCSWFFZ3100 |  | Fire Proofing | 6d | 2013-06-24 | 2013-06-30 | HCSWFFZ3090, HCSSGFZ3100 | 45d | 0d |  |  |  |  |
|  | 2 | **Second Floor** |  | 2013-03-02 | 2013-07-07 |  |  |  |  |  |  |  |
|  | 1 | **Structural Steel Zone # 1** |  | 2013-03-02 | 2013-03-09 |  |  |  |  |  |  |  |
|  | 2 | **Steel Structure Works** |  | 2013-03-02 | 2013-03-09 |  |  |  |  |  |  |  |
| HCSW2FZ1070 |  | Installation of steel columns and beams | 3d | 2013-03-02 | 2013-03-04 | HCSWFFZ1090 | 0d |  | B1 | 05 | SS | C |
| HCSW2FZ1080 |  | Steel Deck | 2d | 2013-03-05 | 2013-03-06 | HCSW2FZ1070 | 0d |  | B1 | 05 | SS | C |
| HCSW2FZ1090 |  | Casting concrete for slab topping | 1d | 2013-03-07 | 2013-03-07 | HCSW2FZ1080 | 0d |  | B1 | 03 | MC | C |
| HCSW2FZ1100 |  | Fire Proofing | 1d | 2013-03-09 | 2013-03-09 | HCSWFFZ1100 | 146d | 5d |  |  |  |  |

| ID | WBS | Activity | Duration | Start | Finish | Predecessors | Total float | Free float | Bill No. | Division No. | Responsibility | Phase Code |
| --- | --- | --- | --- | --- | --- | --- | --- | --- | --- | --- | --- | --- |
|  | 2 | **Structural Steel Zone # 2** |  | 2013-03-05 | 2013-05-11 |  |  |  |  |  |  |  |
|  | 1 | **Core Walls** |  | 2013-03-05 | 2013-03-18 |  |  |  |  |  |  |  |
| HCSW2FZ2000 |  | Formwork core wall shutters - 1st side | 5d | 2013-03-05 | 2013-03-10 | HCSWFFZ2040 | 2d | 0d | B1 | 03 | MC | C |
| HCSW2FZ2010 |  | Fix steel rebar for core wall | 2d | 2013-03-11 | 2013-03-12 | HCSW2FZ2000 | 2d | 0d | B1 | 03 | MC | C |
| HCSW2FZ2020 |  | Fix MEP first fix in core wall | 1d | 2013-03-13 | 2013-03-13 | HCSW2FZ2010 | 2d | 0d | B1 | 03 | MC | C |
| HCSW2FZ2030 |  | Close shutter for core wall | 2d | 2013-03-14 | 2013-03-16 | HCSW2FZ2020, HCSW2FZ2060 | 2d | 0d | B1 | 03 | MC | C |
| HCSW2FZ2040 |  | Cast concrete for core wall | 1d | 2013-03-17 | 2013-03-17 | HCSW2FZ2030 | 2d | 0d | B1 | 03 | MC | C |
| HCSW2FZ2050 |  | De-shutter core wall formwork | 1d | 2013-03-18 | 2013-03-18 | HCSW2FZ2040 | 27d |  | B1 | 03 | MC | C |
|  | 2 | **Steel Structure Works** |  | 2013-03-13 | 2013-05-11 |  |  |  |  |  |  |  |
| HCSW2FZ2060 |  | Provision & Installation of steel embedded plates | 1d | 2013-03-13 | 2013-03-13 | HCSW2FZ2010 | 2d | 0d | B1 | 05 | SS | C |
| HCSW2FZ2070 |  | Installation of steel columns and beams | 3d | 2013-04-27 | 2013-04-29 | HCSW2FZ2060, HCSWFFZ2090, HCSW3FZ2050 | 0d |  | B1 | 05 | SS | C |
| HCSW2FZ2080 |  | Steel Deck | 2d | 2013-04-30 | 2013-05-02 | HCSW2FZ2070 | 0d |  | B1 | 05 | SS | C |
| HCSW2FZ2090 |  | Casting concrete for slab topping | 1d | 2013-05-04 | 2013-05-04 | HCSW2FZ2080 | 0d |  | B1 | 03 | MC | C |
| HCSW2FZ2100 |  | Fire Proofing | 6d | 2013-05-05 | 2013-05-11 | HCSW2FZ2090, HCSWFFZ2100 | 93d | 0d |  |  |  |  |
|  | 3 | **Structural Steel Zone # 3** |  | 2013-04-15 | 2013-07-07 |  |  |  |  |  |  |  |
|  | 1 | **Core Walls** |  | 2013-04-15 | 2013-04-28 |  |  |  |  |  |  |  |
| HCSW2FZ3000 |  | Formwork core wall shutters - 1st side | 5d | 2013-04-15 | 2013-04-20 | HCSWFFZ3040 | 16d | 0d | B1 | 03 | MC | C |
| HCSW2FZ3010 |  | Fix steel rebar for core wall | 2d | 2013-04-21 | 2013-04-22 | HCSW2FZ3000 | 16d | 0d | B1 | 03 | MC | C |
| HCSW2FZ3020 |  | Fix MEP first fix in core wall | 1d | 2013-04-23 | 2013-04-23 | HCSW2FZ3010 | 16d | 0d | B1 | 03 | MC | C |
| HCSW2FZ3030 |  | Close shutter for core wall | 2d | 2013-04-24 | 2013-04-25 | HCSW2FZ3020, HCSW2FZ3060 | 16d | 0d | B1 | 03 | MC | C |
| HCSW2FZ3040 |  | Cast concrete for core wall | 1d | 2013-04-27 | 2013-04-27 | HCSW2FZ3030 | 16d | 0d | B1 | 03 | MC | C |
| HCSW2FZ3050 |  | De-shutter core wall formwork | 1d | 2013-04-28 | 2013-04-28 | HCSW2FZ3040 | 31d |  | B1 | 03 | MC | C |
|  | 2 | **Steel Structure Works** |  | 2013-04-23 | 2013-07-07 |  |  |  |  |  |  |  |
| HCSW2FZ3060 |  | Provision & Installation of steel embedded plates | 1d | 2013-04-23 | 2013-04-23 | HCSW2FZ3010 | 16d | 0d | B1 | 05 | SS | C |
| HCSW2FZ3070 |  | Installation of steel columns and beams | 4d | 2013-06-16 | 2013-06-19 | HCSW2FZ3060, HCSWFFZ3090, HCSW3FZ3050 | 0d |  | B1 | 05 | SS | C |
| HCSW2FZ3080 |  | Steel Deck | 3d | 2013-06-20 | 2013-06-23 | HCSW2FZ3070 | 0d |  | B1 | 05 | SS | C |
| HCSW2FZ3090 |  | Casting concrete for slab topping | 1d | 2013-06-24 | 2013-06-24 | HCSW2FZ3080 | 0d |  | B1 | 03 | MC | C |
| HCSW2FZ3100 |  | Fire Proofing | 6d | 2013-07-01 | 2013-07-07 | HCSW2FZ3090, HCSWFFZ3100 | 45d | 0d |  |  |  |  |

| ID | WBS | Activity | Duration | Start | Finish | Predecessors | Total float | Free float | Bill No. | Division No. | Responsibility | Phase Code |
| --- | --- | --- | --- | --- | --- | --- | --- | --- | --- | --- | --- | --- |
|  | 3 | **Third Floor** |  | 2013-03-09 | 2013-07-14 |  |  |  |  |  |  |  |
|  | 1 | **Structural Steel Zone # 1** |  | 2013-03-09 | 2013-03-21 |  |  |  |  |  |  |  |
|  | 2 | **Steel Structure Works** |  | 2013-03-09 | 2013-03-21 |  |  |  |  |  |  |  |
| HCSW3FZ1070 |  | Installation of steel columns and beams | 3d | 2013-03-09 | 2013-03-11 | HCSW2FZ1090 | 0d |  | B1 | 05 | SS | C |
| HCSW3FZ1080 |  | Steel Deck | 2d | 2013-03-12 | 2013-03-13 | HCSW3FZ1070 | 0d |  | B1 | 05 | SS | C |
| HCSW3FZ1090 |  | Casting concrete for slab topping | 1d | 2013-03-14 | 2013-03-14 | HCSW3FZ1080 | 0d |  | B1 | 03 | MC | C |
| HCSW3FZ1100 |  | Fire Proofing | 6d | 2013-03-16 | 2013-03-21 | HCSW3FZ1090, HCSW2FZ1100 | 141d | 0d |  |  |  |  |
|  | 2 | **Structural Steel Zone # 2** |  | 2013-03-18 | 2013-05-18 |  |  |  |  |  |  |  |
|  | 1 | **Core Walls** |  | 2013-03-18 | 2013-03-31 |  |  |  |  |  |  |  |
| HCSW3FZ2000 |  | Formwork core wall shutters - 1st side | 5d | 2013-03-18 | 2013-03-23 | HCSW2FZ2040 | 2d | 0d | B1 | 03 | MC | C |
| HCSW3FZ2010 |  | Fix steel rebar for core wall | 2d | 2013-03-24 | 2013-03-25 | HCSW3FZ2000 | 2d | 0d | B1 | 03 | MC | C |
| HCSW3FZ2020 |  | Fix MEP first fix in core wall | 1d | 2013-03-26 | 2013-03-26 | HCSW3FZ2010 | 2d | 0d | B1 | 03 | MC | C |
| HCSW3FZ2030 |  | Close shutter for core wall | 2d | 2013-03-27 | 2013-03-28 | HCSW3FZ2020, HCSW3FZ2060 | 2d | 0d | B1 | 03 | MC | C |
| HCSW3FZ2040 |  | Cast concrete for core wall | 1d | 2013-03-30 | 2013-03-30 | HCSW3FZ2030 | 2d | 0d | B1 | 03 | MC | C |
| HCSW3FZ2050 |  | De-shutter core wall formwork | 1d | 2013-03-31 | 2013-03-31 | HCSW3FZ2040 | 22d |  | B1 | 03 | MC | C |
|  | 2 | **Steel Structure Works** |  | 2013-03-26 | 2013-05-18 |  |  |  |  |  |  |  |
| HCSW3FZ2060 |  | Provision & Installation of steel embedded plates | 1d | 2013-03-26 | 2013-03-26 | HCSW3FZ2010 | 2d | 0d | B1 | 05 | SS | C |
| HCSW3FZ2070 |  | Installation of steel columns and beams | 3d | 2013-05-05 | 2013-05-07 | HCSW3FZ2060, HCSW2FZ2090, HCSW4FZ2050 | 0d |  | B1 | 05 | SS | C |
| HCSW3FZ2080 |  | Steel Deck | 2d | 2013-05-08 | 2013-05-09 | HCSW3FZ2070 | 0d |  | B1 | 05 | SS | C |
| HCSW3FZ2090 |  | Casting concrete for slab topping | 1d | 2013-05-11 | 2013-05-11 | HCSW3FZ2080 | 0d |  | B1 | 03 | MC | C |
| HCSW3FZ2100 |  | Fire Proofing | 6d | 2013-05-12 | 2013-05-18 | HCSW3FZ2090, HCSW2FZ2100 | 93d | 0d |  |  |  |  |
|  | 3 | **Structural Steel Zone # 3** |  | 2013-04-28 | 2013-07-14 |  |  |  |  |  |  |  |
|  | 1 | **Core Walls** |  | 2013-04-28 | 2013-05-12 |  |  |  |  |  |  |  |
| HCSW3FZ3000 |  | Formwork core wall shutters - 1st side | 5d | 2013-04-28 | 2013-05-04 | HCSW2FZ3040 | 16d | 0d | B1 | 03 | MC | C |
| HCSW3FZ3010 |  | Fix steel rebar for core wall | 2d | 2013-05-05 | 2013-05-06 | HCSW3FZ3000 | 16d | 0d | B1 | 03 | MC | C |
| HCSW3FZ3020 |  | Fix MEP first fix in core wall | 1d | 2013-05-07 | 2013-05-07 | HCSW3FZ3010 | 16d | 0d | B1 | 03 | MC | C |
| HCSW3FZ3030 |  | Close shutter for core wall | 2d | 2013-05-08 | 2013-05-09 | HCSW3FZ3020, HCSW3FZ3060 | 16d | 0d | B1 | 03 | MC | C |
| HCSW3FZ3040 |  | Cast concrete for core wall | 1d | 2013-05-11 | 2013-05-11 | HCSW3FZ3030 | 16d | 0d | B1 | 03 | MC | C |
| HCSW3FZ3050 |  | De-shutter core wall formwork | 1d | 2013-05-12 | 2013-05-12 | HCSW3FZ3040 | 28d |  | B1 | 03 | MC | C |

| ID | WBS | Activity | Duration | Start | Finish | Predecessors | Total float | Free float | Bill No. | Division No. | Responsibility | Phase Code |
| --- | --- | --- | --- | --- | --- | --- | --- | --- | --- | --- | --- | --- |
|  | 2 | **Steel Structure Works** |  | 2013-05-07 | 2013-07-14 |  |  |  |  |  |  |  |
| HCSW3FZ3060 |  | Provision & Installation of steel embedded plates | 1d | 2013-05-07 | 2013-05-07 | HCSW3FZ3010 | 16d | 0d | B1 | 05 | SS | C |
| HCSW3FZ3070 |  | Installation of steel columns and beams | 4d | 2013-06-25 | 2013-06-29 | HCSW3FZ3060, HCSW2FZ3090, HCSW4FZ3050 | 0d |  | B1 | 05 | SS | C |
| HCSW3FZ3080 |  | Steel Deck | 3d | 2013-06-30 | 2013-07-02 | HCSW3FZ3070 | 0d |  | B1 | 05 | SS | C |
| HCSW3FZ3090 |  | Casting concrete for slab topping | 1d | 2013-07-03 | 2013-07-03 | HCSW3FZ3080 | 0d |  | B1 | 03 | MC | C |
| HCSW3FZ3100 |  | Fire Proofing | 6d | 2013-07-08 | 2013-07-14 | HCSW3FZ3090, HCSW2FZ3100 | 45d | 0d |  |  |  |  |
|  | 4 | **Forth Floor** |  | 2013-03-16 | 2013-08-27 |  |  |  |  |  |  |  |
|  | 1 | **Structural Steel Zone # 1** |  | 2013-03-16 | 2013-03-28 |  |  |  |  |  |  |  |
|  | 2 | **Steel Structure Works** |  | 2013-03-16 | 2013-03-28 |  |  |  |  |  |  |  |
| HCSW4FZ1070 |  | Installation of steel columns and beams | 3d | 2013-03-16 | 2013-03-18 | HCSW3FZ1090 | 0d |  | B1 | 05 | SS | C |
| HCSW4FZ1080 |  | Steel Deck | 2d | 2013-03-19 | 2013-03-20 | HCSW4FZ1070 | 0d |  | B1 | 05 | SS | C |
| HCSW4FZ1090 |  | Casting concrete for slab topping | 1d | 2013-03-21 | 2013-03-21 | HCSW4FZ1080 | 0d |  | B1 | 03 | MC | C |
| HCSW4FZ1100 |  | Fire Proofing | 6d | 2013-03-23 | 2013-03-28 | HCSW4FZ1090, HCSW3FZ1100 | 141d | 0d |  |  |  |  |
|  | 2 | **Structural Steel Zone # 2** |  | 2013-03-31 | 2013-05-26 |  |  |  |  |  |  |  |
|  | 1 | **Core Walls** |  | 2013-03-31 | 2013-04-13 |  |  |  |  |  |  |  |
| HCSW4FZ2000 |  | Formwork core wall shutters - 1st side | 5d | 2013-03-31 | 2013-04-04 | HCSW3FZ2040 | 2d | 0d | B1 | 03 | MC | C |
| HCSW4FZ2010 |  | Fix steel rebar for core wall | 2d | 2013-04-06 | 2013-04-07 | HCSW4FZ2000 | 2d | 0d | B1 | 03 | MC | C |
| HCSW4FZ2020 |  | Fix MEP first fix in core wall | 1d | 2013-04-08 | 2013-04-08 | HCSW4FZ2010 | 2d | 0d | B1 | 03 | MC | C |
| HCSW4FZ2030 |  | Close shutter for core wall | 2d | 2013-04-09 | 2013-04-10 | HCSW4FZ2020, HCSW4FZ2060 | 2d | 0d | B1 | 03 | MC | C |
| HCSW4FZ2040 |  | Cast concrete for core wall | 1d | 2013-04-11 | 2013-04-11 | HCSW4FZ2030 | 2d | 0d | B1 | 03 | MC | C |
| HCSW4FZ2050 |  | De-shutter core wall formwork | 1d | 2013-04-13 | 2013-04-13 | HCSW4FZ2040 | 17d |  | B1 | 03 | MC | C |
|  | 2 | **Steel Structure Works** |  | 2013-04-08 | 2013-05-26 |  |  |  |  |  |  |  |
| HCSW4FZ2060 |  | Provision & Installation of steel embedded plates | 1d | 2013-04-08 | 2013-04-08 | HCSW4FZ2010 | 2d | 0d | B1 | 05 | SS | C |
| HCSW4FZ2070 |  | Installation of steel columns and beams | 3d | 2013-05-12 | 2013-05-14 | HCSW4FZ2060, HCSW3FZ2090, HCSW5FZ2050 | 0d |  | B1 | 05 | SS | C |
| HCSW4FZ2080 |  | Steel Deck | 2d | 2013-05-15 | 2013-05-16 | HCSW4FZ2070 | 0d |  | B1 | 05 | SS | C |
| HCSW4FZ2090 |  | Casting concrete for slab topping | 1d | 2013-05-18 | 2013-05-18 | HCSW4FZ2080 | 0d |  | B1 | 03 | MC | C |
| HCSW4FZ2100 |  | Fire Proofing | 6d | 2013-05-19 | 2013-05-26 | HCSW4FZ2090, HCSW3FZ2100 | 93d | 0d |  |  |  |  |

| ID | WBS | Activity | Duration | Start | Finish | Predecessors | Total float | Free float | Constraint | Bill No. | Division No. | Responsibility | Phase Code |
| --- | --- | --- | --- | --- | --- | --- | --- | --- | --- | --- | --- | --- | --- |
|  | 3 | **Structural Steel Zone # 3** |  | 2013-05-12 | 2013-07-21 |  |  |  |  |  |  |  |  |
|  | 1 | **Core Walls** |  | 2013-05-12 | 2013-05-26 |  |  |  |  |  |  |  |  |
| HCSW4FZ3000 |  | Formwork core wall shutters - 1st side | 5d | 2013-05-12 | 2013-05-16 | HCSW3FZ3040 | 16d | 0d |  | B1 | 03 | MC | C |
| HCSW4FZ3010 |  | Fix steel rebar for core wall | 2d | 2013-05-18 | 2013-05-19 | HCSW4FZ3000 | 16d | 0d |  | B1 | 03 | MC | C |
| HCSW4FZ3020 |  | Fix MEP first fix in core wall | 1d | 2013-05-20 | 2013-05-20 | HCSW4FZ3010 | 16d | 0d |  | B1 | 03 | MC | C |
| HCSW4FZ3030 |  | Close shutter for core wall | 2d | 2013-05-21 | 2013-05-22 | HCSW4FZ3020, HCSW4FZ3060 | 16d | 0d |  | B1 | 03 | MC | C |
| HCSW4FZ3040 |  | Cast concrete for core wall | 1d | 2013-05-23 | 2013-05-23 | HCSW4FZ3030 | 16d | 0d |  | B1 | 03 | MC | C |
| HCSW4FZ3050 |  | De-shutter core wall formwork | 1d | 2013-05-26 | 2013-05-26 | HCSW4FZ3040 | 25d |  |  | B1 | 03 | MC | C |
|  | 2 | **Steel Structure Works** |  | 2013-05-20 | 2013-07-21 |  |  |  |  |  |  |  |  |
| HCSW4FZ3060 |  | Provision & Installation of steel embedded plates | 1d | 2013-05-20 | 2013-05-20 | HCSW4FZ3010 | 16d | 0d |  | B1 | 05 | SS | C |
| HCSW4FZ3070 |  | Installation of steel columns and beams | 4d | 2013-07-04 | 2013-07-08 | HCSW4FZ3060, HCSW3FZ3090, HCSW5FZ3050 | 0d |  |  | B1 | 05 | SS | C |
| HCSW4FZ3080 |  | Steel Deck | 3d | 2013-07-09 | 2013-07-11 | HCSW4FZ3070 | 0d |  |  | B1 | 05 | SS | C |
| HCSW4FZ3090 |  | Casting concrete for slab topping | 1d | 2013-07-13 | 2013-07-13 | HCSW4FZ3080 | 0d |  |  | B1 | 03 | MC | C |
| HCSW4FZ3100 |  | Fire Proofing | 6d | 2013-07-15 | 2013-07-21 | HCSW4FZ3090, HCSW3FZ3100 | 45d | 1d |  |  |  |  |  |
|  | 4 | **Structural Steel Zone # 4** |  | 2013-05-05 | 2013-08-27 |  |  |  |  |  |  |  |  |
| HCSW4FZ4000 |  | Scafolding under steel structure | 80d | 2013-05-05 | 2013-08-06 | HCSWB1Z4230, HCSWB1Z4130, HCSWB1Z3290, HCSWB1Z2250, HCSWB1Z1310 | 10d | 0d | as late as possible |  |  |  |  |
|  | 2 | **Steel Structure Works** |  | 2013-08-07 | 2013-08-27 |  |  |  |  |  |  |  |  |
| HCSW4FZ4070 |  | Installation of steel columns and beams | 4d | 2013-08-07 | 2013-08-14 | HCSWB1Z4230, HCSW7FZ3080, HCSW4FZ4000, HEPSS00020 | 10d | 0d |  | B1 | 05 | SS | C |
| HCSW4FZ4080 |  | Steel Deck | 4d | 2013-08-15 | 2013-08-19 | HCSW4FZ4070 | 10d | 0d |  | B1 | 05 | SS | C |
| HCSW4FZ4090 |  | Casting concrete for slab topping | 1d | 2013-08-20 | 2013-08-20 | HCSW4FZ4080 | 10d | 0d |  | B1 | 03 | MC | C |
| HCSW4FZ4100 |  | Fire Proofing | 6d | 2013-08-21 | 2013-08-27 | HCSW4FZ4090 | 16d | 3d |  |  |  |  |  |
|  | 5 | **Structural Steel Zone # 5** |  | 2013-05-07 | 2013-08-26 |  |  |  |  |  |  |  |  |
| HCSW4FZ6000 |  | Scafolding under steel structure | 80d | 2013-05-07 | 2013-08-12 | HCSWB1Z6230, HCSWB1Z5290, HCSWB1Z6130, HCSWB1Z4130, HCSWB1Z3290, HCSWB1Z2250, HCSWB1Z1310 | 17d | 0d | as late as possible |  |  |  |  |
|  | 2 | **Steel Structure Works** |  | 2013-08-13 | 2013-08-26 |  |  |  |  |  |  |  |  |
| HCSW4FZ5070 |  | Installation of steel columns and beams | 3d | 2013-08-13 | 2013-08-15 | HCSWB1Z6230, HCSW7FZ3080, HCSW4FZ6000, HEPSS00020 | 17d | 0d |  | B1 | 05 | SS | C |
| HCSW4FZ5080 |  | Steel Deck | 2d | 2013-08-17 | 2013-08-18 | HCSW4FZ5070 | 17d | 0d |  | B1 | 05 | SS | C |
| HCSW4FZ5090 |  | Casting concrete for slab topping | 1d | 2013-08-19 | 2013-08-19 | HCSW4FZ5080 | 17d | 0d |  | B1 | 03 | MC | C |
| HCSW4FZ5100 |  | Fire Proofing | 6d | 2013-08-20 | 2013-08-26 | HCSW4FZ5090 | 17d | 0d |  |  |  |  |  |

| ID | WBS | Activity | Duration | Start | Finish | Predecessors | Total float | Free float | Bill No. | Division No. | Responsibility | Phase Code |
| --- | --- | --- | --- | --- | --- | --- | --- | --- | --- | --- | --- | --- |
|  | 5 | **Fifth Floor** |  | 2013-03-23 | 2013-09-07 |  |  |  |  |  |  |  |
|  | 1 | **Structural Steel Zone # 1** |  | 2013-03-23 | 2013-04-04 |  |  |  |  |  |  |  |
|  | 2 | **Steel Structure Works** |  | 2013-03-23 | 2013-04-04 |  |  |  |  |  |  |  |
| HCSW5FZ1070 |  | Installation of steel columns and beams | 3d | 2013-03-23 | 2013-03-25 | HCSW4FZ1090 | 0d |  | B1 | 05 | SS | C |
| HCSW5FZ1080 |  | Steel Deck | 2d | 2013-03-26 | 2013-03-27 | HCSW5FZ1070 | 0d |  | B1 | 05 | SS | C |
| HCSW5FZ1090 |  | Casting concrete for slab topping | 1d | 2013-03-28 | 2013-03-28 | HCSW5FZ1080 | 0d |  | B1 | 03 | MC | C |
| HCSW5FZ1100 |  | Fire Proofing | 6d | 2013-03-30 | 2013-04-04 | HCSW5FZ1090, HCSW4FZ1100 | 141d | 0d |  |  |  |  |
|  | 2 | **Structural Steel Zone # 2** |  | 2013-04-13 | 2013-06-02 |  |  |  |  |  |  |  |
|  | 1 | **Core Walls** |  | 2013-04-13 | 2013-04-25 |  |  |  |  |  |  |  |
| HCSW5FZ2000 |  | Formwork core wall shutters - 1st side | 5d | 2013-04-13 | 2013-04-17 | HCSW4FZ2040 | 2d | 0d | B1 | 03 | MC | C |
| HCSW5FZ2010 |  | Fix steel rebar for core wall | 2d | 2013-04-18 | 2013-04-20 | HCSW5FZ2000 | 2d | 0d | B1 | 03 | MC | C |
| HCSW5FZ2020 |  | Fix MEP first fix in core wall | 1d | 2013-04-21 | 2013-04-21 | HCSW5FZ2010 | 2d | 0d | B1 | 03 | MC | C |
| HCSW5FZ2030 |  | Close shutter for core wall | 2d | 2013-04-22 | 2013-04-23 | HCSW5FZ2020, HCSW5FZ2060 | 2d | 0d | B1 | 03 | MC | C |
| HCSW5FZ2040 |  | Cast concrete for core wall | 1d | 2013-04-24 | 2013-04-24 | HCSW5FZ2030 | 2d | 0d | B1 | 03 | MC | C |
| HCSW5FZ2050 |  | De-shutter core wall formwork | 1d | 2013-04-25 | 2013-04-25 | HCSW5FZ2040 | 12d |  | B1 | 03 | MC | C |
|  | 2 | **Steel Structure Works** |  | 2013-04-21 | 2013-06-02 |  |  |  |  |  |  |  |
| HCSW5FZ2060 |  | Provision & Installation of steel embedded plates | 1d | 2013-04-21 | 2013-04-21 | HCSW5FZ2010 | 2d | 0d | B1 | 05 | SS | C |
| HCSW5FZ2070 |  | Installation of steel columns and beams | 3d | 2013-05-19 | 2013-05-21 | HCSW5FZ2060, HCSW4FZ2090 | 0d |  | B1 | 05 | SS | C |
| HCSW5FZ2080 |  | Steel Deck | 2d | 2013-05-22 | 2013-05-23 | HCSW5FZ2070 | 0d |  | B1 | 05 | SS | C |
| HCSW5FZ2090 |  | Casting concrete for slab topping | 1d | 2013-05-26 | 2013-05-26 | HCSW5FZ2080 | 0d |  | B1 | 03 | MC | C |
| HCSW5FZ2100 |  | Fire Proofing | 6d | 2013-05-27 | 2013-06-02 | HCSW5FZ2090, HCSW4FZ2100 | 93d | 0d |  |  |  |  |
|  | 3 | **Structural Steel Zone # 3** |  | 2013-05-26 | 2013-07-29 |  |  |  |  |  |  |  |
|  | 1 | **Core Walls** |  | 2013-05-26 | 2013-06-08 |  |  |  |  |  |  |  |
| HCSW5FZ3000 |  | Formwork core wall shutters - 1st side | 5d | 2013-05-26 | 2013-05-30 | HCSW4FZ3040 | 16d | 0d | B1 | 03 | MC | C |
| HCSW5FZ3010 |  | Fix steel rebar for core wall | 2d | 2013-06-01 | 2013-06-02 | HCSW5FZ3000 | 16d | 0d | B1 | 03 | MC | C |
| HCSW5FZ3020 |  | Fix MEP first fix in core wall | 1d | 2013-06-03 | 2013-06-03 | HCSW5FZ3010 | 16d | 0d | B1 | 03 | MC | C |
| HCSW5FZ3030 |  | Close shutter for core wall | 2d | 2013-06-04 | 2013-06-05 | HCSW5FZ3020, HCSW5FZ3060 | 16d | 0d | B1 | 03 | MC | C |
| HCSW5FZ3040 |  | Cast concrete for core wall | 1d | 2013-06-06 | 2013-06-06 | HCSW5FZ3030 | 16d | 0d | B1 | 03 | MC | C |
| HCSW5FZ3050 |  | De-shutter core wall formwork | 1d | 2013-06-08 | 2013-06-08 | HCSW5FZ3040 | 22d |  | B1 | 03 | MC | C |

| ID | WBS | Activity | Duration | Start | Finish | Predecessors | Total float | Free float | Bill No. | Division No. | Responsibility | Phase Code |
| --- | --- | --- | --- | --- | --- | --- | --- | --- | --- | --- | --- | --- |
|  | 2 | **Steel Structure Works** |  | 2013-06-03 | 2013-07-29 |  |  |  |  |  |  |  |
| HCSW5FZ3060 |  | Provision & Installation of steel embedded plates | 1d | 2013-06-03 | 2013-06-03 | HCSW5FZ3010 | 16d | 0d | B1 | 05 | SS | C |
| HCSW5FZ3070 |  | Installation of steel columns and beams | 4d | 2013-07-14 | 2013-07-17 | HCSW5FZ3060, HCSW4FZ3090, HCSW6FZ3050 | 0d |  | B1 | 05 | SS | C |
| HCSW5FZ3080 |  | Steel Deck | 3d | 2013-07-18 | 2013-07-21 | HCSW5FZ3070 | 0d |  | B1 | 05 | SS | C |
| HCSW5FZ3090 |  | Casting concrete for slab topping | 1d | 2013-07-22 | 2013-07-22 | HCSW5FZ3080 | 0d |  | B1 | 03 | MC | C |
| HCSW5FZ3100 |  | Fire Proofing | 6d | 2013-07-23 | 2013-07-29 | HCSW5FZ3090, HCSW4FZ3100 | 44d | 2d |  |  |  |  |
|  | 4 | **Structural Steel Zone # 4** |  | 2013-08-21 | 2013-09-07 |  |  |  |  |  |  |  |
|  | 2 | **Steel Structure Works** |  | 2013-08-21 | 2013-09-07 |  |  |  |  |  |  |  |
| HCSW5FZ4070 |  | Installation of steel columns and beams | 4d | 2013-08-21 | 2013-08-25 | HCSW4FZ4090 | 10d | 0d | B1 | 05 | SS | C |
| HCSW5FZ4080 |  | Steel Deck | 4d | 2013-08-26 | 2013-08-29 | HCSW5FZ4070 | 10d | 0d | B1 | 05 | SS | C |
| HCSW5FZ4090 |  | Casting concrete for slab topping | 1d | 2013-08-31 | 2013-08-31 | HCSW5FZ4080 | 10d | 0d | B1 | 03 | MC | C |
| HCSW5FZ4100 |  | Fire Proofing | 6d | 2013-09-01 | 2013-09-07 | HCSW5FZ4090, HCSW4FZ4100 | 13d | 3d |  |  |  |  |
|  | 5 | **Structural Steel Zone # 5** |  | 2013-08-20 | 2013-09-02 |  |  |  |  |  |  |  |
|  | 2 | **Steel Structure Works** |  | 2013-08-20 | 2013-09-02 |  |  |  |  |  |  |  |
| HCSW5FZ5070 |  | Installation of steel columns and beams | 3d | 2013-08-20 | 2013-08-22 | HCSW4FZ5090 | 17d | 0d | B1 | 05 | SS | C |
| HCSW5FZ5080 |  | Steel Deck | 2d | 2013-08-24 | 2013-08-25 | HCSW5FZ5070 | 17d | 0d | B1 | 05 | SS | C |
| HCSW5FZ5090 |  | Casting concrete for slab topping | 1d | 2013-08-26 | 2013-08-26 | HCSW5FZ5080 | 17d | 0d | B1 | 03 | MC | C |
| HCSW5FZ5100 |  | Fire Proofing | 6d | 2013-08-27 | 2013-09-02 | HCSW5FZ5090, HCSW4FZ5100 | 17d | 0d |  |  |  |  |
|  | 6 | **Sixth Floor** |  | 2013-03-30 | 2013-09-17 |  |  |  |  |  |  |  |
|  | 1 | **Structural Steel Zone # 1** |  | 2013-03-30 | 2013-04-11 |  |  |  |  |  |  |  |
|  | 2 | **Steel Structure Works** |  | 2013-03-30 | 2013-04-11 |  |  |  |  |  |  |  |
| HCSW6FZ1070 |  | Installation of steel columns and beams | 3d | 2013-03-30 | 2013-04-01 | HCSW5FZ1090 | 0d |  | B1 | 05 | SS | C |
| HCSW6FZ1080 |  | Steel Deck | 2d | 2013-04-02 | 2013-04-03 | HCSW6FZ1070 | 0d |  | B1 | 05 | SS | C |
| HCSW6FZ1090 |  | Casting concrete for slab topping | 1d | 2013-04-04 | 2013-04-04 | HCSW6FZ1080 | 0d |  | B1 | 03 | MC | C |
| HCSW6FZ1100 |  | Fire Proofing | 6d | 2013-04-06 | 2013-04-11 | HCSW6FZ1090, HCSW5FZ1100 | 141d | 0d |  |  |  |  |

| ID | WBS | Activity | Duration | Start | Finish | Predecessors | Total float | Free float | Bill No. | Division No. | Responsibility | Phase Code |
| --- | --- | --- | --- | --- | --- | --- | --- | --- | --- | --- | --- | --- |
|  | 2 | **Structural Steel Zone # 2** |  | 2013-04-25 | 2013-06-09 |  |  |  |  |  |  |  |
|  | 1 | **Core Walls** |  | 2013-04-25 | 2013-05-09 |  |  |  |  |  |  |  |
| HCSW6FZ2000 |  | Formwork core wall shutters - 1st side | 5d | 2013-04-25 | 2013-04-30 | HCSW5FZ2040 | 2d | 0d | B1 | 03 | MC | C |
| HCSW6FZ2010 |  | Fix steel rebar for core wall | 2d | 2013-05-02 | 2013-05-04 | HCSW6FZ2000 | 2d | 0d | B1 | 03 | MC | C |
| HCSW6FZ2020 |  | Fix MEP first fix in core wall | 1d | 2013-05-05 | 2013-05-05 | HCSW6FZ2010 | 2d | 0d | B1 | 03 | MC | C |
| HCSW6FZ2030 |  | Close shutter for core wall | 2d | 2013-05-06 | 2013-05-07 | HCSW6FZ2020, HCSW6FZ2060 | 2d | 0d | B1 | 03 | MC | C |
| HCSW6FZ2040 |  | Cast concrete for core wall | 1d | 2013-05-08 | 2013-05-08 | HCSW6FZ2030 | 2d | 0d | B1 | 03 | MC | C |
| HCSW6FZ2050 |  | De-shutter core wall formwork | 1d | 2013-05-09 | 2013-05-09 | HCSW6FZ2040 | 13d |  | B1 | 03 | MC | C |
|  | 2 | **Steel Structure Works** |  | 2013-05-05 | 2013-06-09 |  |  |  |  |  |  |  |
| HCSW6FZ2060 |  | Provision & Installation of steel embedded plates | 1d | 2013-05-05 | 2013-05-05 | HCSW6FZ2010 | 2d | 0d | B1 | 05 | SS | C |
| HCSW6FZ2070 |  | Installation of steel columns and beams | 3d | 2013-05-27 | 2013-05-29 | HCSW6FZ2050, HCSW6FZ2060, HCSW5FZ2090, HCSW7FZ2050 | 0d |  | B1 | 05 | SS | C |
| HCSW6FZ2080 |  | Steel Deck | 2d | 2013-05-30 | 2013-06-01 | HCSW6FZ2070 | 0d |  | B1 | 05 | SS | C |
| HCSW6FZ2090 |  | Casting concrete for slab topping | 1d | 2013-06-02 | 2013-06-02 | HCSW6FZ2080 | 0d |  | B1 | 03 | MC | C |
| HCSW6FZ2100 |  | Fire Proofing | 6d | 2013-06-03 | 2013-06-09 | HCSW6FZ2090, HCSW5FZ2100 | 93d | 0d |  |  |  |  |
|  | 3 | **Structural Steel Zone # 3** |  | 2013-06-08 | 2013-08-07 |  |  |  |  |  |  |  |
|  | 1 | **Core Walls** |  | 2013-06-08 | 2013-06-20 |  |  |  |  |  |  |  |
| HCSW6FZ3000 |  | Formwork core wall shutters - 1st side | 5d | 2013-06-08 | 2013-06-12 | HCSW5FZ3040 | 16d | 0d | B1 | 03 | MC | C |
| HCSW6FZ3010 |  | Fix steel rebar for core wall | 2d | 2013-06-13 | 2013-06-15 | HCSW6FZ3000 | 16d | 0d | B1 | 03 | MC | C |
| HCSW6FZ3020 |  | Fix MEP first fix in core wall | 1d | 2013-06-16 | 2013-06-16 | HCSW6FZ3010 | 16d | 0d | B1 | 03 | MC | C |
| HCSW6FZ3030 |  | Close shutter for core wall | 2d | 2013-06-17 | 2013-06-18 | HCSW6FZ3020, HCSW6FZ3060 | 16d | 0d | B1 | 03 | MC | C |
| HCSW6FZ3040 |  | Cast concrete for core wall | 1d | 2013-06-19 | 2013-06-19 | HCSW6FZ3030 | 16d | 0d | B1 | 03 | MC | C |
| HCSW6FZ3050 |  | De-shutter core wall formwork | 1d | 2013-06-20 | 2013-06-20 | HCSW6FZ3040 | 19d |  | B1 | 03 | MC | C |
|  | 2 | **Steel Structure Works** |  | 2013-06-16 | 2013-08-07 |  |  |  |  |  |  |  |
| HCSW6FZ3060 |  | Provision & Installation of steel embedded plates | 1d | 2013-06-16 | 2013-06-16 | HCSW6FZ3010 | 16d | 0d | B1 | 05 | SS | C |
| HCSW6FZ3070 |  | Installation of steel columns and beams | 4d | 2013-07-23 | 2013-07-27 | HCSW6FZ3060, HCSW5FZ3090, HCSW7FZ3050 | 0d |  | B1 | 05 | SS | C |
| HCSW6FZ3080 |  | Steel Deck | 3d | 2013-07-28 | 2013-07-30 | HCSW6FZ3070 | 0d |  | B1 | 05 | SS | C |
| HCSW6FZ3090 |  | Casting concrete for slab topping | 1d | 2013-07-31 | 2013-07-31 | HCSW6FZ3080 | 0d |  | B1 | 03 | MC | C |
| HCSW6FZ3100 |  | Fire Proofing | 6d | 2013-08-01 | 2013-08-07 | HCSW6FZ3090, HCSW5FZ3100 | 42d | 0d |  |  |  |  |

| ID | WBS | Activity | Duration | Start | Finish | Predecessors | Total float | Free float | Bill No. | Division No. | Responsibility | Phase Code |
| --- | --- | --- | --- | --- | --- | --- | --- | --- | --- | --- | --- | --- |
|  | 4 | **Structural Steel Zone # 4** |  | 2013-09-01 | 2013-09-17 |  |  |  |  |  |  |  |
|  | 2 | **Steel Structure Works** |  | 2013-09-01 | 2013-09-17 |  |  |  |  |  |  |  |
| HCSW6FZ4070 |  | Installation of steel columns and beams | 4d | 2013-09-01 | 2013-09-04 | HCSW5FZ4090 | 10d | 0d | B1 | 05 | SS | C |
| HCSW6FZ4080 |  | Steel Deck | 4d | 2013-09-05 | 2013-09-09 | HCSW6FZ4070 | 10d | 0d | B1 | 05 | SS | C |
| HCSW6FZ4090 |  | Casting concrete for slab topping | 1d | 2013-09-10 | 2013-09-10 | HCSW6FZ4080 | 10d | 0d | B1 | 03 | MC | C |
| HCSW6FZ4100 |  | Fire Proofing | 6d | 2013-09-11 | 2013-09-17 | HCSW6FZ4090, HCSW5FZ4100 | 10d | 0d |  |  |  |  |
|  | 5 | **Structural Steel Zone # 5** |  | 2013-08-27 | 2013-09-09 |  |  |  |  |  |  |  |
|  | 2 | **Steel Structure Works** |  | 2013-08-27 | 2013-09-09 |  |  |  |  |  |  |  |
| HCSW6FZ5070 |  | Installation of steel columns and beams | 3d | 2013-08-27 | 2013-08-29 | HCSW5FZ5090 | 17d | 0d | B1 | 05 | SS | C |
| HCSW6FZ5080 |  | Steel Deck | 2d | 2013-08-31 | 2013-09-01 | HCSW6FZ5070 | 17d | 0d | B1 | 05 | SS | C |
| HCSW6FZ5090 |  | Casting concrete for slab topping | 1d | 2013-09-02 | 2013-09-02 | HCSW6FZ5080 | 17d | 0d | B1 | 03 | MC | C |
| HCSW6FZ5100 |  | Fire Proofing | 6d | 2013-09-03 | 2013-09-09 | HCSW6FZ5090, HCSW5FZ5100 | 17d | 0d |  |  |  |  |
|  | 7 | **Seventh Floor** |  | 2013-04-06 | 2013-09-24 |  |  |  |  |  |  |  |
|  | 1 | **Structural Steel Zone # 1** |  | 2013-04-06 | 2013-04-18 |  |  |  |  |  |  |  |
|  | 2 | **Steel Structure Works** |  | 2013-04-06 | 2013-04-18 |  |  |  |  |  |  |  |
| HCSW7FZ1070 |  | Installation of steel columns and beams | 3d | 2013-04-06 | 2013-04-08 | HCSW6FZ1090 | 0d |  | B1 | 05 | SS | C |
| HCSW7FZ1080 |  | Steel Deck | 2d | 2013-04-09 | 2013-04-10 | HCSW7FZ1070 | 0d |  | B1 | 05 | SS | C |
| HCSW7FZ1090 |  | Casting concrete for slab topping | 1d | 2013-04-11 | 2013-04-11 | HCSW7FZ1080 | 0d |  | B1 | 03 | MC | C |
| HCSW7FZ1100 |  | Fire Proofing | 6d | 2013-04-13 | 2013-04-18 | HCSW7FZ1090, HCSW6FZ1100 | 141d | 131d |  |  |  |  |
|  | 2 | **Structural Steel Zone # 2** |  | 2013-05-09 | 2013-06-16 |  |  |  |  |  |  |  |
|  | 1 | **Core Walls** |  | 2013-05-09 | 2013-05-22 |  |  |  |  |  |  |  |
| HCSW7FZ2000 |  | Formwork core wall shutters - 1st side | 5d | 2013-05-09 | 2013-05-14 | HCSW6FZ2040 | 2d | 0d | B1 | 03 | MC | C |
| HCSW7FZ2010 |  | Fix steel rebar for core wall | 2d | 2013-05-15 | 2013-05-16 | HCSW7FZ2000 | 2d | 0d | B1 | 03 | MC | C |
| HCSW7FZ2020 |  | Fix MEP first fix in core wall | 1d | 2013-05-18 | 2013-05-18 | HCSW7FZ2010 | 2d | 0d | B1 | 03 | MC | C |
| HCSW7FZ2030 |  | Close shutter for core wall | 2d | 2013-05-19 | 2013-05-20 | HCSW7FZ2020, HCSW7FZ2060 | 2d | 0d | B1 | 03 | MC | C |
| HCSW7FZ2040 |  | Cast concrete for core wall | 1d | 2013-05-21 | 2013-05-21 | HCSW7FZ2030 | 2d | 0d | B1 | 03 | MC | C |
| HCSW7FZ2050 |  | De-shutter core wall formwork | 1d | 2013-05-22 | 2013-05-22 | HCSW7FZ2040 | 2d |  | B1 | 03 | MC | C |

| ID | WBS | Activity | Duration | Start | Finish | Predecessors | Total float | Free float | Bill No. | Division No. | Responsibility | Phase Code |
| --- | --- | --- | --- | --- | --- | --- | --- | --- | --- | --- | --- | --- |
|  | 2 | **Steel Structure Works** |  | 2013-05-18 | 2013-06-16 |  |  |  |  |  |  |  |
| HCSW7FZ2060 |  | Provision & Installation of steel embedded plates | 1d | 2013-05-18 | 2013-05-18 | HCSW7FZ2010 | 2d | 0d | B1 | 05 | SS | C |
| HCSW7FZ2070 |  | Installation of steel columns and beams | 2d | 2013-06-03 | 2013-06-04 | HCSW7FZ2050, HCSW7FZ2060, HCSW6FZ2090 | 0d |  | B1 | 05 | SS | C |
| HCSW7FZ2080 |  | Steel Deck | 1d | 2013-06-05 | 2013-06-05 | HCSW7FZ2070 | 0d |  | B1 | 05 | SS | C |
| HCSW7FZ2090 |  | Casting concrete for slab topping | 1d | 2013-06-06 | 2013-06-06 | HCSW7FZ2080 | 0d |  | B1 | 03 | MC | C |
| HCSW7FZ2100 |  | Fire Proofing | 6d | 2013-06-10 | 2013-06-16 | HCSW7FZ2090, HCSW6FZ2100 | 93d | 83d |  |  |  |  |
|  | 3 | **Structural Steel Zone # 3** |  | 2013-06-20 | 2013-08-18 |  |  |  |  |  |  |  |
|  | 1 | **Core Walls** |  | 2013-06-20 | 2013-07-03 |  |  |  |  |  |  |  |
| HCSW7FZ3000 |  | Formwork core wall shutters - 1st side | 5d | 2013-06-20 | 2013-06-25 | HCSW6FZ3040 | 16d | 0d | B1 | 03 | MC | C |
| HCSW7FZ3010 |  | Fix steel rebar for core wall | 2d | 2013-06-26 | 2013-06-27 | HCSW7FZ3000 | 16d | 0d | B1 | 03 | MC | C |
| HCSW7FZ3020 |  | Fix MEP first fix in core wall | 1d | 2013-06-29 | 2013-06-29 | HCSW7FZ3010 | 16d | 0d | B1 | 03 | MC | C |
| HCSW7FZ3030 |  | Close shutter for core wall | 2d | 2013-06-30 | 2013-07-01 | HCSW7FZ3020, HCSW7FZ3060 | 16d | 0d | B1 | 03 | MC | C |
| HCSW7FZ3040 |  | Cast concrete for core wall | 1d | 2013-07-02 | 2013-07-02 | HCSW7FZ3030 | 16d | 0d | B1 | 03 | MC | C |
| HCSW7FZ3050 |  | De-shutter core wall formwork | 1d | 2013-07-03 | 2013-07-03 | HCSW7FZ3040 | 16d |  | B1 | 03 | MC | C |
|  | 2 | **Steel Structure Works** |  | 2013-06-29 | 2013-08-18 |  |  |  |  |  |  |  |
| HCSW7FZ3060 |  | Provision & Installation of steel embedded plates | 1d | 2013-06-29 | 2013-06-29 | HCSW7FZ3010 | 16d | 0d | B1 | 05 | SS | C |
| HCSW7FZ3070 |  | Installation of steel columns and beams | 3d | 2013-08-01 | 2013-08-04 | HCSW7FZ3060, HCSW6FZ3090 | 0d |  | B1 | 05 | SS | C |
| HCSW7FZ3080 |  | Steel Deck | 2d | 2013-08-05 | 2013-08-06 | HCSW7FZ3070 | 0d |  | B1 | 05 | SS | C |
| HCSW7FZ3090 |  | Casting concrete for slab topping | 1d | 2013-08-07 | 2013-08-07 | HCSW7FZ3080 | 42d | 0d | B1 | 03 | MC | C |
| HCSW7FZ3100 |  | Fire Proofing | 6d | 2013-08-12 | 2013-08-18 | HCSW7FZ3090, HCSW6FZ3100 | 42d | 32d |  |  |  |  |
|  | 4 | **Structural Steel Zone # 4** |  | 2013-09-11 | 2013-09-24 |  |  |  |  |  |  |  |
|  | 2 | **Steel Structure Works** |  | 2013-09-11 | 2013-09-24 |  |  |  |  |  |  |  |
| HCSW7FZ4070 |  | Installation of steel columns and beams | 3d | 2013-09-11 | 2013-09-14 | HCSW6FZ4090 | 10d | 0d | B1 | 05 | SS | C |
| HCSW7FZ4080 |  | Steel Deck | 2d | 2013-09-15 | 2013-09-16 | HCSW7FZ4070 | 10d | 0d | B1 | 05 | SS | C |
| HCSW7FZ4090 |  | Casting concrete for slab topping | 1d | 2013-09-17 | 2013-09-17 | HCSW7FZ4080 | 10d | 0d | B1 | 03 | MC | C |
| HCSW7FZ4100 |  | Fire Proofing | 6d | 2013-09-18 | 2013-09-24 | HCSW7FZ4090, HCSW6FZ4100 | 10d | 0d |  |  |  |  |

| ID | WBS | Activity | Type | Duration | Start | Finish | Predecessors | Total float | Free float | Bill No. | Division No. | Responsibility | Phase Code | Trade |
| --- | --- | --- | --- | --- | --- | --- | --- | --- | --- | --- | --- | --- | --- | --- |
|  | 5 | **Structural Steel Zone # 5** |  |  | 2013-09-03 | 2013-09-16 |  |  |  |  |  |  |  |  |
|  | 2 | **Steel Structure Works** |  |  | 2013-09-03 | 2013-09-16 |  |  |  |  |  |  |  |  |
| HCSW7FZ5070 |  | Installation of steel columns and beams |  | 3d | 2013-09-03 | 2013-09-05 | HCSW6FZ5090 | 17d | 0d | B1 | 05 | SS | C |  |
| HCSW7FZ5080 |  | Steel Deck |  | 2d | 2013-09-07 | 2013-09-08 | HCSW7FZ5070 | 17d | 0d | B1 | 05 | SS | C |  |
| HCSW7FZ5090 |  | Casting concrete for slab topping |  | 1d | 2013-09-09 | 2013-09-09 | HCSW7FZ5080 | 17d | 0d | B1 | 03 | MC | C |  |
| HCSW7FZ5100 |  | Fire Proofing |  | 6d | 2013-09-10 | 2013-09-16 | HCSW7FZ5090, HCSW6FZ5100 | 17d | 7d |  |  |  |  |  |
|  | 3 | **Finishing Works** |  |  | 2012-09-26 | 2014-06-04 |  |  |  |  |  |  |  |  |
|  | BF | **Basement Floors** |  |  | 2012-09-26 | 2014-05-22 |  |  |  |  |  |  |  |  |
|  | B4 | **Basement 4 - Park** |  |  | 2012-09-26 | 2014-02-12 |  |  |  |  |  |  |  |  |
| HCFWB400000 |  | Start Finishing Works B4 | milestone | 0d | 2012-10-01 | 2012-10-01 | HCSWSSZ1250, HCSWB4Z1240 | 27.5d | 10d | B2 |  | MC | C | FI |
| HCFWB400001 |  | End Finishing Works B4 | milestone | 0d | 2014-01-21 | 2014-01-21 | HCFWB4Z1006, HCFWB4Z1012, HCFWB4Z1017, HCFWB4Z1023, HCFWB4Z1018, HCFWB4Z1022, HCFWB4Z2006, HCFWB4Z2012, HCFWB4Z2018, HCFWB4Z2022, HCFWB4Z3006, HCFWB4Z3008, HCFWB4Z3014, HCFWB4Z4022, HCFWB4Z5006, HCFWB4Z5011, HCFWB4Z5022, HCFWB4Z6006, HCFWB4Z6012, HCFWB4Z6017, HCFWB4Z6021, HCFWB4Z3025, HCFWB4Z4006, HCFWB4Z4012, HCFWB4Z4017, HCFWB4Z4018, HCMEB4Z1240, HCMEB4Z2245, HCMEB4Z3250, HCMEB4Z4255, HCMEB4Z5260, HCMEB4Z6265 | 113d |  | B2 |  | MC | C | FI |
|  | Z1 | **Zone 1** |  |  | 2012-10-01 | 2013-12-26 |  |  |  |  |  |  |  |  |
|  | FL | **Floor Finishes** |  |  | 2012-12-24 | 2013-12-26 |  |  |  |  |  |  |  |  |
| HCFWB4Z1001 |  | B4 Z1 :Foam Concrete & Proofing Membrane Under Floorings |  | 16d | 2012-12-24 | 2013-01-13 | HCFWB4Z1015 | 81.25d | 0d | B2 | 07 | MC | C | FI |
| HCFWB4Z1002 |  | B4 Z1 :Trawelled smooth Concrete screed |  | 8d | 2013-01-13 | 2013-01-22 | HCFWB4Z1001 | 81.25d | 0d | B2 | 03 | MC | C | FI |
| HCFWB4Z1003 |  | B4 Z1 :Epoxy Screed Finish Works |  | 10d | 2013-02-04 | 2013-02-16 | HCFWB4Z1009, HCFWB4Z1002, HCFWB4Z1017 FF | 91.25d | 10d | B2 |  | MC | C | FI |
| HCFWB4Z1004 |  | B4 Z1 :Sealed Concrete |  | 8d | 2013-02-16 | 2013-02-25 | HCFWB4Z1003 SS, HCFWB4Z1002, HCFWB4Z1017 | 81.25d | 0d | B2 | 03 | MC | C | FI |
| HCFWB4Z1005 |  | B4 Z1 :Rubber Flooring With Spicial Adhesive |  | 10d | 2013-02-16 | 2013-02-27 | HCFWB4Z1004 SS, HCFWB4Z1002, HCFWB4Z1017 | 81.25d | 0d | B2 | 09 | MC | C | FI |
| HCFWB4Z1006 |  | B4 Z1 :Rubber Skirting |  | 2d | 2013-02-27 | 2013-03-02 | HCFWB4Z1005 | 231.25d | 0d | B2 | 09 | MC | C | FI |
| HCFWB4Z1026 |  | B4 Z1: Curb Stone & Wheel Stopper for Parkings |  | 8d | 2013-12-17 | 2013-12-26 | HEPSAFI0210, HCFWB4Z1004 | 10d | 0d |  |  |  |  |  |
|  | WL | **Wall Finishes** |  |  | 2012-10-01 | 2013-06-24 |  |  |  |  |  |  |  |  |
| HCFWB4Z1007 |  | B4 Z1 :Block Works |  | 10d | 2012-10-01 | 2012-10-11 | HCSWSSZ1250, HCSWB4Z1240 | 17.5d | 0d | B2 | 04 | MC | C | FI |
| HCFWB4Z1008 |  | B4 Z1 :Plaster First Layer |  | 8.75d | 2012-10-13 | 2012-10-22 | HCFWB4Z1007, HCFWB400000 | 17.5d | 0d | B2 | 09 | MC | C | FI |
| HCFWB4Z1009 |  | B4 Z1 :Plaster Second Layer |  | 8d | 2012-10-22 | 2012-11-05 | HCFWB4Z1008 | 81.25d | 0d | B2 | 09 | MC | C | FI |
| HCFWB4Z1010 |  | B4 Z1 :Plaster Final Layer |  | 8.75d | 2012-11-05 | 2012-11-17 | HCFWB4Z1009 | 81.25d | 0d | B2 | 09 | MC | C | FI |
| HCFWB4Z1011 |  | B4 Z1 :Paint First Layer |  | 4d | 2013-06-16 | 2013-06-19 | HCFWB4Z1010, HCFWB2Z4011 FF | 3d | 0d | B2 | 09 | MC | C | FI |
| HCFWB4Z1012 |  | B4 Z1 :Paint Final Layer |  | 4d | 2013-06-20 | 2013-06-24 | HCFWB4Z1011 | 3d | 0d | B2 | 09 | MC | C | FI |

| ID | WBS | Activity | Duration | Start | Finish | Predecessors | Total float | Free float | Bill No. | Division No. | Responsibility | Phase Code | Trade |
| --- | --- | --- | --- | --- | --- | --- | --- | --- | --- | --- | --- | --- | --- |
|  | CL | **Ceiling Finishes** |  | 2012-11-17 | 2013-10-23 |  |  |  |  |  |  |  |  |
| HCFWB4Z1013 |  | B4 Z1 :Plaster First Layer | 8.75d | 2012-11-17 | 2012-11-27 | HCFWB4Z1010 | 81.25d | 0d | B2 | 09 | MC | C | FI |
| HCFWB4Z1014 |  | B4 Z1 :Plaster Second Layer | 8d | 2012-11-27 | 2012-12-06 | HCFWB4Z1013 | 81.25d | 0d | B2 | 09 | MC | C | FI |
| HCFWB4Z1015 |  | B4 Z1 :Plaster Final Layer | 15.5d | 2012-12-06 | 2012-12-24 | HCFWB4Z1014 | 81.25d | 0d | B2 | 09 | MC | C | FI |
| HCFWB4Z1016 |  | B4 Z1 :Paint First Layer | 10d | 2013-01-22 | 2013-02-04 | HCFWB4Z1015, HCFWB4Z1002 | 81.25d | 0d | B2 | 09 | MC | C | FI |
| HCFWB4Z1017 |  | B4 Z1 :Paint Final Layer | 10d | 2013-02-04 | 2013-02-16 | HCFWB4Z1016 | 81.25d | 0d | B2 | 09 | MC | C | FI |
| HCFWB4Z1018 |  | B4 Z1 :Gybsum Board Ceiling | 15d | 2013-10-02 | 2013-10-23 | HCFWB4Z1015, HEPSAFI0160 | 26d | 0d | B2 | 09 | MC | C | FI |
|  | MS | **Miscellaneous** |  | 2013-09-28 | 2013-11-06 |  |  |  |  |  |  |  |  |
| HCFWB4Z1019 |  | B4 Z1 :Metal Works & Gutters | 10d | 2013-09-28 | 2013-10-08 | HCFWB4Z1023 SS, HCFWB400000, HCFWB4Z2019 SS, HEPSAFI0320 SS+150d | 53d | 0d | B2 | 05 | MC | C | FI |
| HCFWB4Z1020 |  | B4 Z1 :Steel Doors | 10d | 2013-09-28 | 2013-10-08 | HCFWB4Z1019 SS, HEPSAFI0070 | 60d | 0d | B2 | 08 | MC | C | FI |
| HCFWB4Z1023 |  | B4 Z1 :Handrails & Railling | 15d | 2013-09-28 | 2013-10-14 | HCFWB4Z1015, HEPSAAL0020 | 43d | 0d | B2 |  | MC | C | FI |
| HCFWB4Z1021 |  | B4 Z1 :Steel Fire Rated Doors | 10d | 2013-10-09 | 2013-10-24 | HCFWB4Z1020, HEPSAFI0070 | 60d | 0d | B2 | 08 | MC | C | FI |
| HCFWB4Z1022 |  | B4 Z1 :Wooden Doors | 10d | 2013-10-26 | 2013-11-06 | HCFWB4Z1020 SS, HCFWB4Z1021, HEPSAFI0550 | 60d | 0d | B2 | 08 | MC | C | FI |
|  | Z2 | **Zone 2** |  | 2012-09-26 | 2014-01-06 |  |  |  |  |  |  |  |  |
|  | FL | **Floor Finishes** |  | 2012-11-17 | 2014-01-06 |  |  |  |  |  |  |  |  |
| HCFWB4Z2002 |  | B4 Z2 :Foam Concrete & Proofing Membrane Under Floorings | 16d | 2012-11-17 | 2012-12-05 | HCFWB4Z2007 | 17.5d | 0d | B2 | 07 | MC | C | FI |
| HCFWB4Z2003 |  | B4 Z2 :Trawelled smooth Concrete screed | 8d | 2012-12-05 | 2012-12-15 | HCFWB4Z2002 | 17.5d | 0d | B2 | 03 | MC | C | FI |
| HCFWB4Z2001 |  | B4 Z2 :Sealed Concrete | 8d | 2013-02-16 | 2013-02-25 | HCFWB4Z2004 SS, HCFWB4Z2017 | 81.25d | 0d | B2 | 03 | MC | C | FI |
| HCFWB4Z2004 |  | B4 Z2 :Epoxy Screed Finish Works | 10d | 2013-02-16 | 2013-02-27 | HCFWB4Z2017 | 81.25d | 0d | B2 |  | MC | C | FI |
| HCFWB4Z2005 |  | B4 Z2 :Rubber Flooring With Spicial Adhesive | 10d | 2013-02-16 | 2013-02-27 | HCFWB4Z2001 SS, HCFWB4Z2017 | 81.25d | 0d | B2 | 09 | MC | C | FI |
| HCFWB4Z2006 |  | B4 Z2 :Rubber Skirting | 2d | 2013-03-02 | 2013-03-04 | HCFWB4Z2005, HCFWB4Z1006 | 231.25d | 205.25d | B2 | 09 | MC | C | FI |
| HCFWB4Z2010 |  | B4 Z2: Curb Stone & Wheel Stopper for Parkings | 8d | 2013-12-28 | 2014-01-06 | HCFWB4Z2001, HCFWB4Z1026 | 10d | 0d |  |  |  |  |  |
|  | WL | **Wall Finishes** |  | 2012-09-26 | 2012-12-15 |  |  |  |  |  |  |  |  |
| HCFWB4Z2000 |  | B4 Z2 :Block Works | 10d | 2012-09-26 | 2012-10-07 | HCSWSSZ2250, HCSWB4Z2240 | 21.5d | 0d | B2 | 04 | MC | C | FI |
| HCFWB4Z20000 |  | B4 Z2 :Plaster First Layer | 8.75d | 2012-10-13 | 2012-10-22 | HCFWB4Z2000, HCFWB4Z1008 SS | 17.5d | 0d | B2 | 09 | MC | C | FI |
| HCFWB4Z2011 |  | B4 Z2 :Plaster Second Layer | 8d | 2012-10-22 | 2012-11-05 | HCFWB4Z20000 | 17.5d | 0d | B2 | 09 | MC | C | FI |
| HCFWB4Z2007 |  | B4 Z2 :Plaster Final Layer | 8.75d | 2012-11-05 | 2012-11-17 | HCFWB4Z2011 | 17.5d | 0d | B2 | 09 | MC | C | FI |
| HCFWB4Z2009 |  | B4 Z2 :Paint First Layer | 12d | 2012-11-17 | 2012-12-01 | HCFWB4Z2007 | 113.5d | 0d | B2 | 09 | MC | C | FI |
| HCFWB4Z2012 |  | B4 Z2 :Paint Final Layer | 12d | 2012-12-01 | 2012-12-15 | HCFWB4Z2009 | 113.5d | 15d | B2 | 09 | MC | C | FI |

| ID | WBS | Activity | Duration | Start | Finish | Predecessors | Total float | Free float | Bill No. | Division No. | Responsibility | Phase Code | Trade |
| --- | --- | --- | --- | --- | --- | --- | --- | --- | --- | --- | --- | --- | --- |
|  | CL | **Ceiling Finishes** |  | 2012-12-15 | 2013-10-22 |  |  |  |  |  |  |  |  |
| HCFWB4Z2015 |  | B4 Z2 :Plaster First Layer | 8.75d | 2012-12-15 | 2012-12-25 | HCFWB4Z2003 | 17.5d | 0d | B2 | 09 | MC | C | FI |
| HCFWB4Z2016 |  | B4 Z2 :Plaster Second Layer | 8d | 2012-12-25 | 2013-01-05 | HCFWB4Z2015 | 81.25d | 0d | B2 | 09 | MC | C | FI |
| HCFWB4Z2013 |  | B4 Z2 :Plaster Final Layer | 15.5d | 2013-01-05 | 2013-01-22 | HCFWB4Z2016 | 81.25d | 0d | B2 | 09 | MC | C | FI |
| HCFWB4Z2014 |  | B4 Z2 :Paint First Layer | 10d | 2013-01-22 | 2013-02-04 | HCFWB4Z2013, HCFWB4Z2012, HCFWB4Z2012 FF | 81.25d | 0d | B2 | 09 | MC | C | FI |
| HCFWB4Z2017 |  | B4 Z2 :Paint Final Layer | 10d | 2013-02-04 | 2013-02-16 | HCFWB4Z2014 | 81.25d | 0d | B2 | 09 | MC | C | FI |
| HCFWB4Z2018 |  | B4 Z2 :Gybsum Board Ceiling | 14d | 2013-10-02 | 2013-10-22 | HCFWB4Z2013, HEPSAFI0160 | 37d | 0d | B2 | 09 | MC | C | FI |
|  | MS | **Miscellaneous** |  | 2013-09-28 | 2013-10-30 |  |  |  |  |  |  |  |  |
| HCFWB4Z2019 |  | B4 Z2 :Metal Works & Gutters | 10d | 2013-09-28 | 2013-10-08 | HCFWB4Z2023 SS, HEPSAFI0320 SS+150d | 53d | 0d | B2 | 05 | MC | C | FI |
| HCFWB4Z2023 |  | B4 Z2 :Handrails & Railling | 15d | 2013-09-28 | 2013-10-14 | HCFWB4Z2017, HEPSAAL0020 | 43d | 0d | B2 |  | MC | C | FI |
| HCFWB4Z2020 |  | B4 Z2 :Steel Doors | 10d | 2013-10-20 | 2013-10-30 | HCFWB4Z2021 SS, HCFWB4Z2019 SS, HEPSAFI0070 | 70d | 0d | B2 | 08 | MC | C | FI |
| HCFWB4Z2021 |  | B4 Z2 :Steel Fire Rated Doors | 10d | 2013-10-20 | 2013-10-30 | HCFWB4Z2023, HEPSAFI0070 | 70d | 0d | B2 | 08 | MC | C | FI |
| HCFWB4Z2022 |  | B4 Z2 :Wooden Doors | 10d | 2013-10-20 | 2013-10-30 | HCFWB4Z2020 SS, HEPSAFI0550 | 80d | 0d | B2 | 08 | MC | C | FI |
|  | Z3 | **Zone 3** |  | 2012-10-11 | 2014-01-16 |  |  |  |  |  |  |  |  |
|  | FL | **Floor Finishes** |  | 2013-01-14 | 2014-01-16 |  |  |  |  |  |  |  |  |
| HCFWB4Z3001 |  | B4 Z3 :Foam Concrete & Proofing Membrane Under Floorings | 16d | 2013-01-14 | 2013-02-03 | HCFWB4Z3012 | 123.75d | 0d | B2 | 07 | MC | C | FI |
| HCFWB4Z3002 |  | B4 Z3 :Trawelled smooth Concrete screed | 8d | 2013-02-03 | 2013-02-12 | HCFWB4Z3001 | 123.75d | 0d | B2 | 03 | MC | C | FI |
| HCFWB4Z3003 |  | B4 Z3 :Epoxy Screed Finish Works | 10d | 2013-10-29 | 2013-11-10 | HCFWB4Z3020 | 26d | 0d | B2 |  | MC | C | FI |
| HCFWB4Z3004 |  | B4 Z3 :Sealed Concrete | 8d | 2013-10-29 | 2013-11-07 | HCFWB4Z3003 SS, HCFWB4Z3020 | 26d | 0d | B2 | 03 | MC | C | FI |
| HCFWB4Z3005 |  | B4 Z3 :Rubber Flooring With Spicial Adhesive | 10d | 2013-10-29 | 2013-11-10 | HCFWB4Z3004 SS, HCFWB4Z3020 | 26d | 0d | B2 | 09 | MC | C | FI |
| HCFWB4Z3007 |  | B4 Z3 :Stone Flooring | 12d | 2013-10-29 | 2013-11-12 | HCFWB4Z3020 | 42d | 0d | B2 | 09 | MC | C | FI |
| HCFWB4Z3006 |  | B4 Z3 :Rubber Skirting | 2d | 2013-11-11 | 2013-11-12 | HCFWB4Z3005, HCFWB4Z2006 | 26d | 0d | B2 | 09 | MC | C | FI |
| HCFWB4Z3008 |  | B4 Z3 :Stone Skirting | 10d | 2013-11-13 | 2013-11-24 | HCFWB4Z3007 | 160d | 47d | B2 | 09 | MC | C | FI |
| HCFWB4Z3100 |  | B4 Z3: Curb Stone & Wheel Stopper for Parkings | 8d | 2014-01-07 | 2014-01-16 | HCFWB4Z2010 | 10d | 0d |  |  |  |  |  |

| ID | WBS | Activity | Duration | Start | Finish | Predecessors | Total float | Free float | Bill No. | Division No. | Responsibility | Phase Code | Trade |
| --- | --- | --- | --- | --- | --- | --- | --- | --- | --- | --- | --- | --- | --- |
|  | WL | **Wall Finishes** |  | 2012-10-11 | 2013-02-05 |  |  |  |  |  |  |  |  |
| HCFWB4Z3009 |  | B4 Z3 :Block Works | 14d | 2012-10-11 | 2012-10-31 | HCSWSSZ3250, HCSWB4Z3240 | 54d | 0d | B2 | 04 | MC | C | FI |
| HCFWB4Z3010 |  | B4 Z3 :Plaster First Layer | 8.75d | 2012-12-15 | 2012-12-25 | HCFWB4Z3009, HCFWB4Z2015 SS | 17.5d | 0d | B2 | 09 | MC | C | FI |
| HCFWB4Z3011 |  | B4 Z3 :Plaster Second Layer | 8d | 2012-12-25 | 2013-01-05 | HCFWB4Z3010 | 25d | 0d | B2 | 09 | MC | C | FI |
| HCFWB4Z3012 |  | B4 Z3 :Plaster Final Layer | 8d | 2013-01-05 | 2013-01-14 | HCFWB4Z3011 | 25d | 0d | B2 | 09 | MC | C | FI |
| HCFWB4Z3013 |  | B4 Z3 :Paint First Layer | 8d | 2013-01-14 | 2013-01-23 | HCFWB4Z3012 | 185.75d | 0d | B2 | 09 | MC | C | FI |
| HCFWB4Z3014 |  | B4 Z3 :Paint Final Layer | 8d | 2013-01-23 | 2013-02-03 | HCFWB4Z3013, HCFWB4Z3015 SS | 185.75d | 23d | B2 | 09 | MC | C | FI |
| HCFWB4Z3015 |  | B4 Z3 :Epoxy Paint for Walls | 10d | 2013-01-23 | 2013-02-05 | HCFWB4Z3013 | 185.75d | 0d | B2 | 09 | MC | C | FI |
|  | CL | **Ceiling Finishes** |  | 2013-02-12 | 2013-10-28 |  |  |  |  |  |  |  |  |
| HCFWB4Z3016 |  | B4 Z3 :Plaster First Layer | 8.75d | 2013-02-12 | 2013-02-21 | HCFWB4Z3002, HCFWB4Z3012 | 123.75d | 0d | B2 | 09 | MC | C | FI |
| HCFWB4Z3017 |  | B4 Z3 :Plaster Second Layer | 8d | 2013-02-23 | 2013-03-03 | HCFWB4Z3016 | 123.75d | 0d | B2 | 09 | MC | C | FI |
| HCFWB4Z3018 |  | B4 Z3 :Plaster Final Layer | 8d | 2013-03-04 | 2013-03-12 | HCFWB4Z3017 | 123.75d | 0d | B2 | 09 | MC | C | FI |
| HCFWB4Z3019 |  | B4 Z3 :Paint First Layer | 10d | 2013-03-13 | 2013-03-24 | HCFWB4Z3018, HCFWB4Z3014, HCFWB4Z3014 FF | 199d | 125d | B2 | 09 | MC | C | FI |
| HCFWB4Z3021 |  | B4 Z3 :Gybsum Board Ceiling | 14d | 2013-10-02 | 2013-10-22 | HCFWB4Z3018, HEPSAFI0160 | 26d | 0d | B2 | 09 | MC | C | FI |
| HCFWB4Z3020 |  | B4 Z3 :Paint Final Layer | 5d | 2013-10-23 | 2013-10-28 | HCFWB4Z3019, HCFWB4Z3021 | 26d | 0d | B2 | 09 | MC | C | FI |
|  | MS | **Miscellaneous** |  | 2013-08-24 | 2013-10-14 |  |  |  |  |  |  |  |  |
| HCFWB4Z3024 |  | B4 Z3 :Steel Fire Rated Doors | 10d | 2013-08-24 | 2013-09-03 | HCFWB4Z3019, HEPSAFI0070 | 95d | 0d | B2 | 08 | MC | C | FI |
| HCFWB4Z3022 |  | B4 Z3 :Metal Works & Gutters | 10d | 2013-09-28 | 2013-10-08 | HCFWB4Z3026 SS, HCFWB4Z2019 SS, HEPSAFI0320 SS+150d | 60d | 0d | B2 | 05 | MC | C | FI |
| HCFWB4Z3023 |  | B4 Z3 :Steel Doors | 10d | 2013-09-28 | 2013-10-08 | HCFWB4Z3024 SS, HCFWB4Z3022 SS, HEPSAFI0070 | 65d | 0d | B2 | 08 | MC | C | FI |
| HCFWB4Z3025 |  | B4 Z3 :Wooden Doors | 10d | 2013-09-28 | 2013-10-08 | HCFWB4Z3023 SS, HEPSAFI0550 | 65d | 5d | B2 | 08 | MC | C | FI |
| HCFWB4Z3026 |  | B4 Z3 :Handrails & Railling | 15d | 2013-09-28 | 2013-10-14 | HCFWB4Z3019, HEPSAAL0020 | 45d | 0d | B2 |  | MC | C | FI |
|  | Z4 | **Zone 4** |  | 2012-10-23 | 2014-01-26 |  |  |  |  |  |  |  |  |
|  | FL | **Floor Finishes** |  | 2013-01-15 | 2014-01-26 |  |  |  |  |  |  |  |  |
| HCFWB4Z4001 |  | B4 Z4 :Foam Concrete & Proofing Membrane Under Floorings | 16d | 2013-01-15 | 2013-02-03 | HCFWB4Z4010 | 17.5d | 0d | B2 | 07 | MC | C | FI |
| HCFWB4Z4002 |  | B4 Z4 :Trawelled smooth Concrete screed | 8d | 2013-02-04 | 2013-02-12 | HCFWB4Z4001 | 17.5d | 0d | B2 | 03 | MC | C | FI |
| HCFWB4Z4003 |  | B4 Z4 :Epoxy Screed Finish Works | 10d | 2013-03-23 | 2013-04-03 | HCFWB4Z4015 | 144.75d | 0d | B2 |  | MC | C | FI |
| HCFWB4Z4004 |  | B4 Z4 :Sealed Concrete | 8d | 2013-03-23 | 2013-04-01 | HCFWB4Z4003 SS, HCFWB4Z4015 | 144.75d | 0d | B2 | 03 | MC | C | FI |
| HCFWB4Z4005 |  | B4 Z4 :Rubber Flooring With Spicial Adhesive | 10d | 2013-03-23 | 2013-04-03 | HCFWB4Z4004 SS, HCFWB4Z4015 | 144.75d | 0d | B2 | 09 | MC | C | FI |
| HCFWB4Z4006 |  | B4 Z4 :Rubber Skirting | 2d | 2013-11-13 | 2013-11-14 | HCFWB4Z4005, HCFWB4Z3006 | 26d | 0d | B2 | 09 | MC | C | FI |
| HCFWB4Z4100 |  | B4 Z4: Curb Stone & Wheel Stopper for Parkings | 8d | 2014-01-18 | 2014-01-26 | HCFWB4Z3100 | 10d | 0d |  |  |  |  |  |

| ID | WBS | Activity | Duration | Start | Finish | Predecessors | Total float | Free float | Bill No. | Division No. | Responsibility | Phase Code | Trade |
| --- | --- | --- | --- | --- | --- | --- | --- | --- | --- | --- | --- | --- | --- |
|  | WL | **Wall Finishes** |  | 2012-10-23 | 2013-03-03 |  |  |  |  |  |  |  |  |
| HCFWB4Z4007 |  | B4 Z4 :Block Works | 10d | 2012-10-23 | 2012-11-07 | HCSWSSZ4250, HCSWB4Z4240 | 48d | 0d | B2 | 04 | MC | C | FI |
| HCFWB4Z4008 |  | B4 Z4 :Plaster First Layer | 8.75d | 2012-12-15 | 2012-12-25 | HCFWB4Z4007, HCFWB4Z3010 SS | 17.5d | 0d | B2 | 09 | MC | C | FI |
| HCFWB4Z4009 |  | B4 Z4 :Plaster Second Layer | 8d | 2012-12-25 | 2013-01-05 | HCFWB4Z4008 | 17.5d | 0d | B2 | 09 | MC | C | FI |
| HCFWB4Z4010 |  | B4 Z4 :Plaster Final Layer | 8.75d | 2013-01-05 | 2013-01-14 | HCFWB4Z4009 | 17.5d | 0d | B2 | 09 | MC | C | FI |
| HCFWB4Z4011 |  | B4 Z4 :Paint First Layer | 8d | 2013-02-13 | 2013-02-21 | HCFWB4Z4002 | 48d | 0d | B2 | 09 | MC | C | FI |
| HCFWB4Z4012 |  | B4 Z4 :Paint Final Layer | 8d | 2013-02-23 | 2013-03-03 | HCFWB4Z4011 | 48d | 26.25d | B2 | 09 | MC | C | FI |
|  | CL | **Ceiling Finishes** |  | 2013-02-13 | 2013-10-22 |  |  |  |  |  |  |  |  |
| HCFWB4Z4013 |  | B4 Z4 :Plaster First Layer | 8.75d | 2013-02-13 | 2013-02-23 | HCFWB4Z4002, HCFWB4Z4010 | 17.5d | 0d | B2 | 09 | MC | C | FI |
| HCFWB4Z4014 |  | B4 Z4 :Plaster Second Layer | 8d | 2013-02-23 | 2013-03-04 | HCFWB4Z4013 | 17.5d | 0d | B2 | 09 | MC | C | FI |
| HCFWB4Z4015 |  | B4 Z4 :Plaster Final Layer | 15.5d | 2013-03-04 | 2013-03-23 | HCFWB4Z4014 | 17.5d | 0d | B2 | 09 | MC | C | FI |
| HCFWB4Z4016 |  | B4 Z4 :Paint First Layer | 10d | 2013-03-23 | 2013-04-03 | HCFWB4Z4015 | 21.75d | 0d | B2 | 09 | MC | C | FI |
| HCFWB4Z4017 |  | B4 Z4 :Paint Final Layer | 10d | 2013-04-03 | 2013-04-15 | HCFWB4Z4016, HCFWB4Z4012 | 21.75d | 0d | B2 | 09 | MC | C | FI |
| HCFWB4Z4018 |  | B4 Z4 :Gybsum Board Ceiling | 14d | 2013-10-02 | 2013-10-22 | HCFWB4Z4016, HEPSAFI0160 | 93d | 0d | B2 | 09 | MC | C | FI |
|  | MS | **Miscellaneous** |  | 2013-08-24 | 2013-10-24 |  |  |  |  |  |  |  |  |
| HCFWB4Z4021 |  | B4 Z4 :Steel Fire Rated Doors | 10d | 2013-08-24 | 2013-09-03 | HCFWB4Z4016, HEPSAFI0070 | 133d | 0d | B2 | 08 | MC | C | FI |
| HCFWB4Z4023 |  | B4 Z4 :Handrails & Railling | 15d | 2013-09-28 | 2013-10-14 | HCFWB4Z4016, HEPSAAL0020 | 93d | 0d | B2 |  | MC | C | FI |
| HCFWB4Z4019 |  | B4 Z4 :Metal Works & Gutters | 10d | 2013-10-09 | 2013-10-24 | HCFWB4Z4023 SS, HCFWB4Z3022 SS, HCFWB4Z5019 SS, HEPSAFI0320 SS+15d | 93d | 0d | B2 | 05 | MC | C | FI |
| HCFWB4Z4020 |  | B4 Z4 :Steel Doors | 10d | 2013-10-09 | 2013-10-24 | HCFWB4Z4021 SS, HCFWB4Z4019 SS, HEPSAFI0070 | 93d | 0d | B2 | 08 | MC | C | FI |
| HCFWB4Z4022 |  | B4 Z4 :Wooden Doors | 10d | 2013-10-09 | 2013-10-24 | HCFWB4Z4020 SS | 93d | 0d | B2 | 08 | MC | C | FI |
|  | Z5 | **Zone 5** |  | 2012-11-28 | 2014-02-04 |  |  |  |  |  |  |  |  |
|  | FL | **Floor Finishes** |  | 2013-01-15 | 2014-02-04 |  |  |  |  |  |  |  |  |
| HCFWB4Z5001 |  | B4 Z4 :Foam Concrete & Proofing Membrane Under Floorings | 16d | 2013-01-15 | 2013-02-03 | HCFWB4Z5009 | 19.5d | 0d | B2 | 07 | MC | C | FI |
| HCFWB4Z5002 |  | B4 Z4 :Trawelled smooth Concrete screed | 8d | 2013-02-04 | 2013-02-12 | HCFWB4Z5001 | 19.5d | 0d | B2 | 03 | MC | C | FI |
| HCFWB4Z5003 |  | B4 Z4 :Epoxy Screed Finish Works | 10d | 2013-03-14 | 2013-03-26 | HCFWB4Z5015 | 30.5d | 0d | B2 |  | MC | C | FI |
| HCFWB4Z5004 |  | B4 Z4 :Sealed Concrete | 8d | 2013-03-14 | 2013-03-24 | HCFWB4Z5003 SS, HCFWB4Z5015 | 30.5d | 0d | B2 | 03 | MC | C | FI |
| HCFWB4Z5005 |  | B4 Z4 :Rubber Flooring With Spicial Adhesive | 10d | 2013-03-14 | 2013-03-26 | HCFWB4Z5015 | 176.5d | 0d | B2 | 09 | MC | C | FI |
| HCFWB4Z5006 |  | B4 Z4 :Rubber Skirting | 2d | 2013-11-16 | 2013-11-17 | HCFWB4Z5005, HCFWB4Z4006 | 26d | 0d | B2 | 09 | MC | C | FI |
| HCFWB4Z5100 |  | B4 Z5: Curb Stone & Wheel Stopper for Parkings | 8d | 2014-01-27 | 2014-02-04 | HCFWB4Z4100 | 10d | 0d |  |  |  |  |  |

| ID | WBS | Activity | Duration | Start | Finish | Predecessors | Total float | Free float | Bill No. | Division No. | Responsibility | Phase Code | Trade |
| --- | --- | --- | --- | --- | --- | --- | --- | --- | --- | --- | --- | --- | --- |
|  | WL | **Wall Finishes** |  | 2012-11-28 | 2013-05-27 |  |  |  |  |  |  |  |  |
| HCFWB4Z5012 |  | B4 Z4 :Block Works | 10d | 2012-11-28 | 2012-12-09 | HCSWSSZ5250, HCSWB4Z5240, HCSWB4Z6240 | 24d | 0d | B2 | 04 | MC | C | FI |
| HCFWB4Z5007 |  | B4 Z4 :Plaster First Layer | 8.75d | 2012-12-15 | 2012-12-25 | HCFWB4Z5012, HCFWB4Z4008 SS | 19.5d | 0d | B2 | 09 | MC | C | FI |
| HCFWB4Z5008 |  | B4 Z4 :Plaster Second Layer | 8d | 2012-12-25 | 2013-01-05 | HCFWB4Z5007 | 19.5d | 0d | B2 | 09 | MC | C | FI |
| HCFWB4Z5009 |  | B4 Z4 :Plaster Final Layer | 8.75d | 2013-01-05 | 2013-01-14 | HCFWB4Z5008 | 19.5d | 0d | B2 | 09 | MC | C | FI |
| HCFWB4Z5010 |  | B4 Z4 :Paint First Layer | 12d | 2013-04-27 | 2013-05-12 | HCFWB4Z5017 | 307.75d | 0d | B2 | 09 | MC | C | FI |
| HCFWB4Z5011 |  | B4 Z4 :Paint Final Layer | 12d | 2013-05-12 | 2013-05-27 | HCFWB4Z5010 | 307.75d | 194.75d | B2 | 09 | MC | C | FI |
|  | CL | **Ceiling Finishes** |  | 2013-02-13 | 2013-04-27 |  |  |  |  |  |  |  |  |
| HCFWB4Z5013 |  | B4 Z4 :Plaster First Layer | 8.75d | 2013-02-13 | 2013-02-23 | HCFWB4Z5002, HCFWB4Z5009 | 19.5d | 0d | B2 | 09 | MC | C | FI |
| HCFWB4Z5014 |  | B4 Z4 :Plaster Second Layer | 8d | 2013-02-23 | 2013-03-04 | HCFWB4Z5013 | 19.5d | 0d | B2 | 09 | MC | C | FI |
| HCFWB4Z5015 |  | B4 Z4 :Plaster Final Layer | 8.75d | 2013-03-04 | 2013-03-14 | HCFWB4Z5014 | 19.5d | 0d | B2 | 09 | MC | C | FI |
| HCFWB4Z5016 |  | B4 Z4 :Paint First Layer | 10d | 2013-03-24 | 2013-04-04 | HCFWB4Z5004 | 30.5d | 8.75d | B2 | 09 | MC | C | FI |
| HCFWB4Z5017 |  | B4 Z4 :Paint Final Layer | 10d | 2013-04-15 | 2013-04-27 | HCFWB4Z5016, HCFWB4Z4017 | 21.75d | 0d | B2 | 09 | MC | C | FI |
|  | MS | **Miscellaneous** |  | 2013-08-24 | 2013-11-06 |  |  |  |  |  |  |  |  |
| HCFWB4Z5021 |  | B4 Z4 :Steel Fire Rated Doors | 10d | 2013-08-24 | 2013-09-03 | HCFWB4Z5016, HEPSAFI0070 | 155d | 0d | B2 | 08 | MC | C | FI |
| HCFWB4Z5019 |  | B4 Z4 :Metal Works & Gutters | 10d | 2013-10-09 | 2013-10-24 | HCFWB4Z5016, HEPSAFI0320 SS+180d | 65d | 0d | B2 | 05 | MC | C | FI |
| HCFWB4Z5020 |  | B4 Z4 :Steel Doors | 10d | 2013-10-26 | 2013-11-06 | HCFWB4Z5021 SS, HCFWB4Z5019, HEPSAFI0070 | 105d | 0d | B2 | 08 | MC | C | FI |
| HCFWB4Z5022 |  | B4 Z4 :Wooden Doors | 10d | 2013-10-26 | 2013-11-06 | HCFWB4Z5020 SS, HEPSAFI0550 | 175d | 62d | B2 | 08 | MC | C | FI |
|  | Z6 | **Zone 6** |  | 2012-11-28 | 2014-02-12 |  |  |  |  |  |  |  |  |
|  | FL | **Floor Finishes** |  | 2013-01-15 | 2014-02-12 |  |  |  |  |  |  |  |  |
| HCFWB4Z6001 |  | B4 Z6 :Foam Concrete & Proofing Membrane Under Floorings | 16d | 2013-01-15 | 2013-02-03 | HCFWB4Z6010 | 33.75d | 0d | B2 | 07 | MC | C | FI |
| HCFWB4Z6002 |  | B4 Z6 :Trawelled smooth Concrete screed | 8d | 2013-02-04 | 2013-02-12 | HCFWB4Z6001 | 33.75d | 0d | B2 | 03 | MC | C | FI |
| HCFWB4Z6003 |  | B4 Z6 :Epoxy Screed Finish Works | 10d | 2013-03-23 | 2013-04-03 | HCFWB4Z6015 | 33.75d | 0d | B2 |  | MC | C | FI |
| HCFWB4Z6004 |  | B4 Z6 :Sealed Concrete | 8d | 2013-03-23 | 2013-04-01 | HCFWB4Z6003 SS, HCFWB4Z6015 | 33.75d | 0d | B2 | 03 | MC | C | FI |
| HCFWB4Z6005 |  | B4 Z6 :Rubber Flooring With Spicial Adhesive | 10d | 2013-03-23 | 2013-04-03 | HCFWB4Z6004 SS, HCFWB4Z6015 | 169.75d | 0d | B2 | 09 | MC | C | FI |
| HCFWB4Z6006 |  | B4 Z6 :Rubber Skirting | 2d | 2013-11-18 | 2013-11-19 | HCFWB4Z6005, HCFWB4Z5006 | 26d | 0d | B2 | 09 | MC | C | FI |
| HCFWB4Z6100 |  | B4 Z6: Curb Stone & Wheel Stopper for Parkings | 7d | 2014-02-05 | 2014-02-12 | HCFWB4Z5100 | 10d | 0d |  |  |  |  |  |

| ID | WBS | Activity | Type | Duration | Start | Finish | Predecessors | Total float | Free float | Bill No. | Division No. | Responsibility | Phase Code | Trade |
| --- | --- | --- | --- | --- | --- | --- | --- | --- | --- | --- | --- | --- | --- | --- |
|  | WL | **Wall Finishes** |  |  | 2012-11-28 | 2013-04-29 |  |  |  |  |  |  |  |  |
| HCFWB4Z6007 |  | B4 Z6 :Block Works |  | 10d | 2012-11-28 | 2012-12-09 | HCSWSSZ6250, HCSWSSZ6370 | 38.25d | 0d | B2 | 04 | MC | C | FI |
| HCFWB4Z6008 |  | B4 Z6 :Plaster First Layer |  | 8.75d | 2012-12-15 | 2012-12-25 | HCFWB4Z6007, HCFWB4Z5007 SS | 33.75d | 0d | B2 | 09 | MC | C | FI |
| HCFWB4Z6009 |  | B4 Z6 :Plaster Second Layer |  | 8d | 2012-12-25 | 2013-01-05 | HCFWB4Z6008 | 33.75d | 0d | B2 | 09 | MC | C | FI |
| HCFWB4Z6010 |  | B4 Z6 :Plaster Final Layer |  | 8.75d | 2013-01-05 | 2013-01-14 | HCFWB4Z6009 | 33.75d | 0d | B2 | 09 | MC | C | FI |
| HCFWB4Z6011 |  | B4 Z6 :Paint First Layer |  | 12d | 2013-04-01 | 2013-04-15 | HCFWB4Z6004 | 249.75d | 0d | B2 | 09 | MC | C | FI |
| HCFWB4Z6012 |  | B4 Z6 :Paint Final Layer |  | 12d | 2013-04-15 | 2013-04-29 | HCFWB4Z6011 | 249.75d | 127.25d | B2 | 09 | MC | C | FI |
|  | CL | **Ceiling Finishes** |  |  | 2013-02-13 | 2013-05-07 |  |  |  |  |  |  |  |  |
| HCFWB4Z6013 |  | B4 Z6 :Plaster First Layer |  | 8.75d | 2013-02-13 | 2013-02-23 | HCFWB4Z6002 | 33.75d | 0d | B2 | 09 | MC | C | FI |
| HCFWB4Z6014 |  | B4 Z6 :Plaster Second Layer |  | 8d | 2013-02-23 | 2013-03-04 | HCFWB4Z6013 | 33.75d | 0d | B2 | 09 | MC | C | FI |
| HCFWB4Z6015 |  | B4 Z6 :Plaster Final Layer |  | 15.5d | 2013-03-04 | 2013-03-23 | HCFWB4Z6014 | 33.75d | 0d | B2 | 09 | MC | C | FI |
| HCFWB4Z6016 |  | B4 Z6 :Paint First Layer |  | 10d | 2013-04-01 | 2013-04-13 | HCFWB4Z6004 | 33.75d | 12d | B2 | 09 | MC | C | FI |
| HCFWB4Z6017 |  | B4 Z6 :Paint Final Layer |  | 8d | 2013-04-27 | 2013-05-07 | HCFWB4Z6016, HCFWB4Z5017 | 21.75d | 11d | B2 | 09 | MC | C | FI |
|  | MS | **Miscellaneous** |  |  | 2013-08-24 | 2013-10-24 |  |  |  |  |  |  |  |  |
| HCFWB4Z6020 |  | B4 Z6 :Steel Fire Rated Doors |  | 10d | 2013-08-24 | 2013-09-03 | HCFWB4Z6016, HEPSAFI0070 | 115d | 0d | B2 | 08 | MC | C | FI |
| HCFWB4Z6018 |  | B4 Z6 :Metal Works & Gutters |  | 10d | 2013-10-09 | 2013-10-24 | HCFWB4Z5019 FF, HEPSAFI0320 SS+180d | 65d | 0d | B2 | 05 | MC | C | FI |
| HCFWB4Z6019 |  | B4 Z6 :Steel Doors |  | 10d | 2013-10-09 | 2013-10-24 | HCFWB4Z6020 SS, HCFWB4Z6018 SS, HEPSAFI0070 | 75d | 0d | B2 | 08 | MC | C | FI |
| HCFWB4Z6021 |  | B4 Z6 :Wooden Doors |  | 10d | 2013-10-09 | 2013-10-24 | HCFWB4Z6019 SS, HEPSAFI0550 | 185d | 72d | B2 | 08 | MC | C | FI |
|  | B3 | **Basement 3 - Park** |  |  | 2012-11-06 | 2014-04-02 |  |  |  |  |  |  |  |  |
| HCFWB300010 |  | Start Finishing Works B3 | milestone | 0d | 2012-11-06 | 2012-11-06 | HCSWB3Z1240 | 32.75d | 10d | B2 |  | MC | C | FI |
| HCFWB300011 |  | End Finishing Works B3 | milestone | 0d | 2014-04-02 | 2014-04-02 | HCFWB3Z1006, HCFWB3Z1011, HCFWB3Z1017, HCFWB3Z1023, HCFWB3Z1018, HCFWB3Z1022, HCFWB3Z2006, HCFWB3Z2011, HCFWB3Z2018, HCFWB3Z2022, HCFWB3Z3006, HCFWB3Z3008, HCFWB3Z3013, HCFWB3Z3021, HCFWB3Z3024, HCFWB3Z3024 FF, HCFWB3Z4006, HCFWB3Z4011, HCFWB3Z4018, HCFWB3Z4018 FF, HCFWB3Z4017, HCFWB3Z4022, HCFWB3Z5006, HCFWB3Z5011, HCFWB3Z5021, HCFWB3Z6006, HCFWB3Z6012, HCFWB3Z6017, HCFWB3Z6021, HCFWB3Z6100, HCMEB3Z1245, HCMEB3Z2250, HCMEB3Z3255, HCMEB3Z4260, HCMEB3Z5265, HCMEB3Z5385, HCMEB3Z6270 | 52d |  | B2 |  | MC | C | FI |
|  | Z1 | **Zone 1** |  |  | 2012-11-06 | 2014-02-20 |  |  |  |  |  |  |  |  |
|  | FL | **Floor Finishes** |  |  | 2013-01-27 | 2014-02-20 |  |  |  |  |  |  |  |  |
| HCFWB3Z1001 |  | B3 Z1 :Foam Concrete & Proofing Membrane Under Floorings |  | 16d | 2013-01-27 | 2013-02-14 | HCFWB3Z1015 | 78.25d | 0d | B2 | 07 | MC | C | FI |
| HCFWB3Z1002 |  | B3 Z1 :Trawelled smooth Concrete screed |  | 8d | 2013-02-14 | 2013-02-24 | HCFWB3Z1001 | 78.25d | 0d | B2 | 03 | MC | C | FI |
| HCFWB3Z1003 |  | B3 Z1 :Sealed Concrete |  | 8d | 2013-06-18 | 2013-06-26 | HCFWB3Z1004 SS, HCFWB3Z1002, HCFWB3Z1017 | 3d | 0d | B2 | 03 | MC | C | FI |
| HCFWB3Z1004 |  | B3 Z1 :Epoxy Screed Finish Works |  | 10d | 2013-06-18 | 2013-06-29 | HCFWB3Z1008, HCFWB3Z1011 FF, HCFWB3Z1002, HCFWB3Z1017 | 3d | 0d | B2 |  | MC | C | FI |
| HCFWB3Z1005 |  | B3 Z1 :Rubber Flooring With Spicial Adhesive |  | 10d | 2013-06-18 | 2013-06-29 | HCFWB3Z1003 SS, HCFWB3Z1002, HCFWB3Z1017 | 3d | 0d | B2 | 09 | MC | C | FI |
| HCFWB3Z1006 |  | B3 Z1 :Rubber Skirting |  | 2d | 2013-11-20 | 2013-11-21 | HCFWB3Z1005, HCFWB4Z6006 | 26d | 0d | B2 | 09 | MC | C | FI |
| HCFWB3Z20010 |  | B3 Z1: Curb Stone & Wheel Stopper for Parkings |  | 7d | 2014-02-13 | 2014-02-20 | HCFWB4Z6100 | 10d | 0d |  |  |  |  |  |

| ID | WBS | Activity | Duration | Start | Finish | Predecessors | Total float | Free float | Bill No. | Division No. | Responsibility | Phase Code | Trade |
| --- | --- | --- | --- | --- | --- | --- | --- | --- | --- | --- | --- | --- | --- |
|  | WL | **Wall Finishes** |  | 2012-11-06 | 2013-06-29 |  |  |  |  |  |  |  |  |
| HCFWB3Z1012 |  | B3 Z1 :Block Works | 10d | 2012-11-06 | 2012-11-18 | HCSWB3Z1240, HCFWB4Z1007 | 22.75d | 0d | B2 | 04 | MC | C | FI |
| HCFWB3Z1007 |  | B3 Z1 :Plaster First Layer | 8.75d | 2012-11-19 | 2012-11-28 | HCFWB3Z1012, HCFWB300010 | 22.75d | 0d | B2 | 09 | MC | C | FI |
| HCFWB3Z1008 |  | B3 Z1 :Plaster Second Layer | 8d | 2012-11-28 | 2012-12-08 | HCFWB3Z1007 | 78.25d | 0d | B2 | 09 | MC | C | FI |
| HCFWB3Z1009 |  | B3 Z1 :Plaster Final Layer | 8.75d | 2012-12-08 | 2012-12-18 | HCFWB3Z1008 | 78.25d | 0d | B2 | 09 | MC | C | FI |
| HCFWB3Z1010 |  | B3 Z1 :Paint First Layer | 12d | 2012-12-18 | 2013-01-02 | HCFWB3Z1009 | 148.5d | 145.5d | B2 | 09 | MC | C | FI |
| HCFWB3Z1011 |  | B3 Z1 :Paint Final Layer | 4d | 2013-06-25 | 2013-06-29 | HCFWB3Z1010, HCFWB4Z1012 | 3d | 0d | B2 | 09 | MC | C | FI |
|  | CL | **Ceiling Finishes** |  | 2012-12-18 | 2013-11-10 |  |  |  |  |  |  |  |  |
| HCFWB3Z1013 |  | B3 Z1 :Plaster First Layer | 8.75d | 2012-12-18 | 2012-12-29 | HCFWB3Z1009 | 78.25d | 0d | B2 | 09 | MC | C | FI |
| HCFWB3Z1014 |  | B3 Z1 :Plaster Second Layer | 8d | 2012-12-29 | 2013-01-08 | HCFWB3Z1013 | 78.25d | 0d | B2 | 09 | MC | C | FI |
| HCFWB3Z1015 |  | B3 Z1 :Plaster Final Layer | 15.5d | 2013-01-08 | 2013-01-27 | HCFWB3Z1014 | 78.25d | 0d | B2 | 09 | MC | C | FI |
| HCFWB3Z1016 |  | B3 Z1 :Paint First Layer | 10d | 2013-02-24 | 2013-03-07 | HCFWB3Z1015, HCFWB3Z1002 | 78.25d | 0d | B2 | 09 | MC | C | FI |
| HCFWB3Z1017 |  | B3 Z1 :Paint Final Layer | 10d | 2013-03-07 | 2013-03-19 | HCFWB3Z1016 | 78.25d | 75.25d | B2 | 09 | MC | C | FI |
| HCFWB3Z1018 |  | B3 Z1 :Gybsum Board Ceiling | 14d | 2013-10-24 | 2013-11-10 | HCFWB3Z1015, HCFWB4Z1018 | 26d | 0d | B2 | 09 | MC | C | FI |
|  | MS | **Miscellaneous** |  | 2013-10-20 | 2013-11-18 |  |  |  |  |  |  |  |  |
| HCFWB3Z1019 |  | B3 Z1 :Metal Works & Gutters | 10d | 2013-10-20 | 2013-10-30 | HCFWB3Z1023 SS, HCFWB300010, HCFWB3Z2019 SS, HCFWB4Z1019, HCFWB4Z1019 FF | 48d | 5d | B2 | 05 | MC | C | FI |
| HCFWB3Z1023 |  | B3 Z1 :Handrails & Railling | 15d | 2013-10-20 | 2013-11-06 | HCFWB3Z1016, HCFWB4Z1023 | 43d | 0d | B2 |  | MC | C | FI |
| HCFWB3Z1020 |  | B3 Z1 :Steel Doors | 10d | 2013-10-26 | 2013-11-06 | HCFWB3Z1021 SS, HCFWB3Z1019 SS, HCFWB4Z1020 | 70d | 10d | B2 | 08 | MC | C | FI |
| HCFWB3Z1021 |  | B3 Z1 :Steel Fire Rated Doors | 10d | 2013-10-26 | 2013-11-06 | HCFWB3Z1016, HCFWB4Z1021 | 70d | 0d | B2 | 08 | MC | C | FI |
| HCFWB3Z1022 |  | B3 Z1 :Wooden Doors | 10d | 2013-11-07 | 2013-11-18 | HCFWB3Z1020 SS, HCFWB4Z1022 | 60d | 7d | B2 | 08 | MC | C | FI |
|  | Z2 | **Zone 2** |  | 2012-11-21 | 2014-03-01 |  |  |  |  |  |  |  |  |
|  | FL | **Floor Finishes** |  | 2013-01-02 | 2014-03-01 |  |  |  |  |  |  |  |  |
| HCFWB3Z2001 |  | B3 Z2 :Foam Concrete & Proofing Membrane Under Floorings | 16d | 2013-01-02 | 2013-01-21 | HCFWB3Z2009 | 10.75d | 0d | B2 | 07 | MC | C | FI |
| HCFWB3Z2002 |  | B3 Z2 :Trawelled smooth Concrete screed | 8d | 2013-01-21 | 2013-01-31 | HCFWB3Z2001 | 10.75d | 0d | B2 | 03 | MC | C | FI |
| HCFWB3Z2003 |  | B3 Z2 :Sealed Concrete | 8d | 2013-03-26 | 2013-04-03 | HCFWB3Z2004 SS, HCFWB3Z2017 | 73d | 0d | B2 | 03 | MC | C | FI |
| HCFWB3Z2004 |  | B3 Z2 :Epoxy Screed Finish Works | 10d | 2013-03-26 | 2013-04-06 | HCFWB3Z2017 | 73d | 0d | B2 |  | MC | C | FI |
| HCFWB3Z2005 |  | B3 Z2 :Rubber Flooring With Spicial Adhesive | 10d | 2013-03-26 | 2013-04-06 | HCFWB3Z2003 SS, HCFWB3Z2017 | 73d | 0d | B2 | 09 | MC | C | FI |
| HCFWB3Z2006 |  | B3 Z2 :Rubber Skirting | 2d | 2013-11-23 | 2013-11-24 | HCFWB3Z2005, HCFWB3Z1006 | 26d | 0d | B2 | 09 | MC | C | FI |
| HCFWB3Z2100 |  | B3 Z2: Curb Stone & Wheel Stopper for Parkings | 7d | 2014-02-22 | 2014-03-01 | HCFWB3Z20010 | 10d | 0d |  |  |  |  |  |

| ID | WBS | Activity | Duration | Start | Finish | Predecessors | Total float | Free float | Bill No. | Division No. | Responsibility | Phase Code | Trade |
| --- | --- | --- | --- | --- | --- | --- | --- | --- | --- | --- | --- | --- | --- |
|  | WL | **Wall Finishes** |  | 2012-11-21 | 2013-01-31 |  |  |  |  |  |  |  |  |
| HCFWB3Z2012 |  | B3 Z2 :Block Works | 10d | 2012-11-21 | 2012-12-02 | HCSWB3Z2240, HCFWB4Z2000 | 10.75d | 0d | B2 | 04 | MC | C | FI |
| HCFWB3Z2007 |  | B3 Z2 :Plaster First Layer | 8.75d | 2012-12-03 | 2012-12-12 | HCFWB3Z2012, HCFWB3Z1007 SS | 10.75d | 0d | B2 | 09 | MC | C | FI |
| HCFWB3Z2008 |  | B3 Z2 :Plaster Second Layer | 8d | 2012-12-12 | 2012-12-22 | HCFWB3Z2007 | 10.75d | 0d | B2 | 09 | MC | C | FI |
| HCFWB3Z2009 |  | B3 Z2 :Plaster Final Layer | 8.75d | 2012-12-22 | 2013-01-02 | HCFWB3Z2008 | 10.75d | 0d | B2 | 09 | MC | C | FI |
| HCFWB3Z2010 |  | B3 Z2 :Paint First Layer | 12d | 2013-01-02 | 2013-01-16 | HCFWB3Z2009, HCFWB4Z2012 | 98.5d | 0d | B2 | 09 | MC | C | FI |
| HCFWB3Z2011 |  | B3 Z2 :Paint Final Layer | 12d | 2013-01-16 | 2013-01-31 | HCFWB3Z2010 | 98.5d | 24.75d | B2 | 09 | MC | C | FI |
|  | CL | **Ceiling Finishes** |  | 2013-01-31 | 2013-11-09 |  |  |  |  |  |  |  |  |
| HCFWB3Z2013 |  | B3 Z2 :Plaster First Layer | 8.75d | 2013-01-31 | 2013-02-11 | HCFWB3Z2002 | 10.75d | 0d | B2 | 09 | MC | C | FI |
| HCFWB3Z2014 |  | B3 Z2 :Plaster Second Layer | 8d | 2013-02-11 | 2013-02-20 | HCFWB3Z2013 | 73d | 0d | B2 | 09 | MC | C | FI |
| HCFWB3Z2015 |  | B3 Z2 :Plaster Final Layer | 8.75d | 2013-02-20 | 2013-03-02 | HCFWB3Z2014 | 73d | 0d | B2 | 09 | MC | C | FI |
| HCFWB3Z2016 |  | B3 Z2 :Paint First Layer | 10d | 2013-03-03 | 2013-03-13 | HCFWB3Z2015 | 73d | 0d | B2 | 09 | MC | C | FI |
| HCFWB3Z2017 |  | B3 Z2 :Paint Final Layer | 10d | 2013-03-14 | 2013-03-25 | HCFWB3Z2016 | 73d | 0d | B2 | 09 | MC | C | FI |
| HCFWB3Z2018 |  | B3 Z2 :Gybsum Board Ceiling | 14d | 2013-10-23 | 2013-11-09 | HCFWB3Z2015, HCFWB4Z2018 | 37d | 0d | B2 | 09 | MC | C | FI |
|  | MS | **Miscellaneous** |  | 2013-10-20 | 2013-11-12 |  |  |  |  |  |  |  |  |
| HCFWB3Z2019 |  | B3 Z2 :Metal Works & Gutters | 10d | 2013-10-20 | 2013-10-30 | HCFWB3Z2023 SS, HCFWB4Z2019 | 48d | 0d | B2 | 05 | MC | C | FI |
| HCFWB3Z2023 |  | B3 Z2 :Handrails & Railling | 15d | 2013-10-20 | 2013-11-06 | HCFWB3Z2016, HCFWB4Z2023 | 43d | 0d | B2 |  | MC | C | FI |
| HCFWB3Z2020 |  | B3 Z2 :Steel Doors | 10d | 2013-10-31 | 2013-11-12 | HCFWB3Z2021 SS, HCFWB3Z2019 SS, HCFWB4Z2020 | 70d | 0d | B2 | 08 | MC | C | FI |
| HCFWB3Z2021 |  | B3 Z2 :Steel Fire Rated Doors | 10d | 2013-10-31 | 2013-11-12 | HCFWB3Z2016, HCFWB4Z2021 | 70d | 0d | B2 | 08 | MC | C | FI |
| HCFWB3Z2022 |  | B3 Z2 :Wooden Doors | 10d | 2013-10-31 | 2013-11-12 | HCFWB3Z2020 SS, HCFWB4Z2022 | 80d | 0d | B2 | 08 | MC | C | FI |
|  | Z3 | **Zone 3** |  | 2012-11-24 | 2014-03-09 |  |  |  |  |  |  |  |  |
|  | FL | **Floor Finishes** |  | 2013-03-02 | 2014-03-09 |  |  |  |  |  |  |  |  |
| HCFWB3Z3001 |  | B3 Z3 :B3 Z3 :Foam Concrete & Proofing Membrane Under Floorings | 16d | 2013-03-02 | 2013-03-20 | HCFWB3Z3011 | 109.5d | 0d | B2 | 07 | MC | C | FI |
| HCFWB3Z3002 |  | B3 Z3 :B3 Z3 :Trawelled smooth Concrete screed | 8d | 2013-03-20 | 2013-03-30 | HCFWB3Z3001 | 109.5d | 0d | B2 | 03 | MC | C | FI |
| HCFWB3Z3003 |  | B3 Z3 :B3 Z3 :Sealed Concrete | 8d | 2013-05-22 | 2013-06-01 | HCFWB3Z3004 SS, HCFWB3Z3020 | 167d | 0d | B2 | 03 | MC | C | FI |
| HCFWB3Z3004 |  | B3 Z3 :B3 Z3 :Epoxy Screed Finish Works | 10d | 2013-05-22 | 2013-06-03 | HCFWB3Z3020 | 167d | 0d | B2 |  | MC | C | FI |
| HCFWB3Z3005 |  | B3 Z3 :B3 Z3 :Rubber Flooring With Spicial Adhesive | 10d | 2013-05-22 | 2013-06-03 | HCFWB3Z3003 SS, HCFWB3Z3020 | 167d | 141d | B2 | 09 | MC | C | FI |
| HCFWB3Z3007 |  | B3 Z3 :B3 Z3 :Stone Flooring | 12d | 2013-05-22 | 2013-06-05 | HCFWB3Z3020 | 180d | 0d | B2 | 09 | MC | C | FI |
| HCFWB3Z3008 |  | B3 Z3 :B3 Z3 :Stone Skirting | 10d | 2013-06-06 | 2013-06-17 | HCFWB3Z3007 | 289d | 237d | B2 | 09 | MC | C | FI |
| HCFWB3Z3006 |  | B3 Z3 :B3 Z3 :Rubber Skirting | 2d | 2013-11-25 | 2013-11-26 | HCFWB3Z3005, HCFWB3Z2006 | 26d | 0d | B2 | 09 | MC | C | FI |
| HCFWB3Z3030 |  | B3 Z3: Curb Stone & Wheel Stopper for Parkings | 7d | 2014-03-02 | 2014-03-09 | HCFWB3Z2100 | 10d | 0d |  |  |  |  |  |

| ID | WBS | Activity | Duration | Start | Finish | Predecessors | Total float | Free float | Bill No. | Division No. | Responsibility | Phase Code | Trade |
| --- | --- | --- | --- | --- | --- | --- | --- | --- | --- | --- | --- | --- | --- |
|  | WL | **Wall Finishes** |  | 2012-11-24 | 2013-03-30 |  |  |  |  |  |  |  |  |
| HCFWB3Z3015 |  | B3 Z3 :B3 Z3 :Block Works | 14d | 2012-11-24 | 2012-12-09 | HCSWB3Z3240, HCFWB4Z3009 | 54.25d | 0d | B2 | 04 | MC | C | FI |
| HCFWB3Z3009 |  | B3 Z3 :B3 Z3 :Plaster First Layer | 8.75d | 2013-01-31 | 2013-02-11 | HCFWB3Z3015, HCFWB3Z2013 SS, HCFWB4Z3012 | 10.75d | 0d | B2 | 09 | MC | C | FI |
| HCFWB3Z3010 |  | B3 Z3 :B3 Z3 :Plaster Second Layer | 8d | 2013-02-11 | 2013-02-20 | HCFWB3Z3009 | 30.25d | 0d | B2 | 09 | MC | C | FI |
| HCFWB3Z3011 |  | B3 Z3 :B3 Z3 :Plaster Final Layer | 8d | 2013-02-20 | 2013-03-02 | HCFWB3Z3010 | 30.25d | 0d | B2 | 09 | MC | C | FI |
| HCFWB3Z3012 |  | B3 Z3 :B3 Z3 :Paint First Layer | 12d | 2013-03-02 | 2013-03-16 | HCFWB3Z3011, HCFWB3Z2011, HCFWB4Z3014 | 162.75d | 0d | B2 | 09 | MC | C | FI |
| HCFWB3Z3014 |  | B3 Z3 :B3 Z3 :Epoxy Paint for Walls | 10d | 2013-03-02 | 2013-03-13 | HCFWB3Z3011 | 174.75d | 12d | B2 | 09 | MC | C | FI |
| HCFWB3Z3013 |  | B3 Z3 :B3 Z3 :Paint Final Layer | 12d | 2013-03-16 | 2013-03-30 | HCFWB3Z3012, HCFWB3Z3014 SS | 162.75d | 24.75d | B2 | 09 | MC | C | FI |
|  | CL | **Ceiling Finishes** |  | 2013-03-30 | 2013-11-09 |  |  |  |  |  |  |  |  |
| HCFWB3Z3016 |  | B3 Z3 :B3 Z3 :Plaster First Layer | 8.75d | 2013-03-30 | 2013-04-08 | HCFWB3Z3002, HCFWB4Z3018, HCFWB3Z3011 | 109.5d | 0d | B2 | 09 | MC | C | FI |
| HCFWB3Z3017 |  | B3 Z3 :B3 Z3 :Plaster Second Layer | 8d | 2013-04-09 | 2013-04-17 | HCFWB3Z3016 | 109.5d | 0d | B2 | 09 | MC | C | FI |
| HCFWB3Z3018 |  | B3 Z3 :B3 Z3 :Plaster Final Layer | 8d | 2013-04-18 | 2013-04-27 | HCFWB3Z3017 | 109.5d | 0d | B2 | 09 | MC | C | FI |
| HCFWB3Z3019 |  | B3 Z3 :B3 Z3 :Paint First Layer | 10d | 2013-04-28 | 2013-05-09 | HCFWB3Z3018, HCFWB3Z2011, HCFWB3Z3013 | 167d | 0d | B2 | 09 | MC | C | FI |
| HCFWB3Z3020 |  | B3 Z3 :B3 Z3 :Paint Final Layer | 10d | 2013-05-11 | 2013-05-21 | HCFWB3Z3019 | 167d | 0d | B2 | 09 | MC | C | FI |
| HCFWB3Z3021 |  | B3 Z3 :B3 Z3 :Gybsum Board Ceiling | 14d | 2013-10-23 | 2013-11-09 | HCFWB3Z3018, HCFWB4Z3021 | 41d | 0d | B2 | 09 | MC | C | FI |
|  | MS | **Miscellaneous** |  | 2013-09-04 | 2013-11-06 |  |  |  |  |  |  |  |  |
| HCFWB3Z3025 |  | B3 Z3 :B3 Z3 :Steel Fire Rated Doors | 10d | 2013-09-04 | 2013-09-15 | HCFWB3Z3019, HCFWB4Z3024 | 95d | 0d | B2 | 08 | MC | C | FI |
| HCFWB3Z3022 |  | B3 Z3 :B3 Z3 :Metal Works & Gutters | 10d | 2013-10-20 | 2013-10-30 | HCFWB3Z3026 SS, HCFWB3Z2019 SS, HCFWB4Z3022, HCFWB4Z3022 FF | 55d | 0d | B2 | 05 | MC | C | FI |
| HCFWB3Z3023 |  | B3 Z3 :B3 Z3 :Steel Doors | 10d | 2013-10-20 | 2013-10-30 | HCFWB3Z3025 SS, HCFWB3Z3022 SS, HCFWB4Z3023 | 60d | 0d | B2 | 08 | MC | C | FI |
| HCFWB3Z3024 |  | B3 Z3 :B3 Z3 :Wooden Doors | 10d | 2013-10-20 | 2013-10-30 | HCFWB3Z3023 SS, HCFWB4Z3025 | 60d | 5d | B2 | 08 | MC | C | FI |
| HCFWB3Z3026 |  | B3 Z3 :B3 Z3 :Handrails & Railling | 15d | 2013-10-20 | 2013-11-06 | HCFWB3Z3019, HCFWB4Z3026 | 45d | 0d | B2 |  | MC | C | FI |
|  | Z4 | **Zone 4** |  | 2012-12-26 | 2014-03-17 |  |  |  |  |  |  |  |  |
|  | FL | **Floor Finishes** |  | 2013-03-03 | 2014-03-17 |  |  |  |  |  |  |  |  |
| HCFWB3Z4001 |  | B3 Z4 :Foam Concrete & Proofing Membrane Under Floorings | 16d | 2013-03-03 | 2013-03-20 | HCFWB3Z4009 | 10.75d | 0d | B2 | 07 | MC | C | FI |
| HCFWB3Z4002 |  | B3 Z4 :Trawelled smooth Concrete screed | 8d | 2013-03-21 | 2013-03-30 | HCFWB3Z4001 | 10.75d | 0d | B2 | 03 | MC | C | FI |
| HCFWB3Z4003 |  | B3 Z4 :Sealed Concrete | 8d | 2013-05-08 | 2013-05-18 | HCFWB3Z4005 SS, HCFWB3Z4015 | 125.75d | 0d | B2 | 03 | MC | C | FI |
| HCFWB3Z4004 |  | B3 Z4 :Rubber Flooring With Spicial Adhesive | 10d | 2013-05-08 | 2013-05-20 | HCFWB3Z4003 SS, HCFWB3Z4015 | 125.75d | 0d | B2 | 09 | MC | C | FI |
| HCFWB3Z4005 |  | B3 Z4 :Epoxy Screed Finish Works | 10d | 2013-05-08 | 2013-05-20 | HCFWB3Z4015 | 125.75d | 0d | B2 |  | MC | C | FI |
| HCFWB3Z4006 |  | B3 Z4 :Rubber Skirting | 2d | 2013-11-27 | 2013-11-28 | HCFWB3Z4004, HCFWB3Z3006 | 26d | 0d | B2 | 09 | MC | C | FI |
| HCFWB3Z4100 |  | B3 Z4: Curb Stone & Wheel Stopper for Parkings | 7d | 2014-03-10 | 2014-03-17 | HCFWB3Z3030 | 10d | 0d |  |  |  |  |  |

| ID | WBS | Activity | Duration | Start | Finish | Predecessors | Total float | Free float | Bill No. | Division No. | Responsibility | Phase Code | Trade |
| --- | --- | --- | --- | --- | --- | --- | --- | --- | --- | --- | --- | --- | --- |
|  | WL | **Wall Finishes** |  | 2012-12-26 | 2013-04-17 |  |  |  |  |  |  |  |  |
| HCFWB3Z4012 |  | B3 Z4 :Block Works | 10d | 2012-12-26 | 2013-01-07 | HCSWB3Z4240, HCFWB4Z4007 | 30.25d | 0d | B2 | 04 | MC | C | FI |
| HCFWB3Z4007 |  | B3 Z4 :Plaster First Layer | 8.75d | 2013-01-31 | 2013-02-11 | HCFWB3Z4012, HCFWB3Z3009 SS, HCFWB4Z4010 | 10.75d | 0d | B2 | 09 | MC | C | FI |
| HCFWB3Z4008 |  | B3 Z4 :Plaster Second Layer | 8d | 2013-02-11 | 2013-02-20 | HCFWB3Z4007 | 10.75d | 0d | B2 | 09 | MC | C | FI |
| HCFWB3Z4009 |  | B3 Z4 :Plaster Final Layer | 8.75d | 2013-02-20 | 2013-03-02 | HCFWB3Z4008 | 10.75d | 0d | B2 | 09 | MC | C | FI |
| HCFWB3Z4010 |  | B3 Z4 :Paint First Layer | 8d | 2013-03-31 | 2013-04-08 | HCFWB3Z4002 | 39d | 0d | B2 | 09 | MC | C | FI |
| HCFWB3Z4011 |  | B3 Z4 :Paint Final Layer | 8d | 2013-04-09 | 2013-04-17 | HCFWB3Z4010 | 39d | 36d | B2 | 09 | MC | C | FI |
|  | CL | **Ceiling Finishes** |  | 2013-03-31 | 2013-11-09 |  |  |  |  |  |  |  |  |
| HCFWB3Z4013 |  | B3 Z4 :Plaster First Layer | 8.75d | 2013-03-31 | 2013-04-09 | HCFWB3Z4002, HCFWB4Z4015, HCFWB3Z4009 | 10.75d | 0d | B2 | 09 | MC | C | FI |
| HCFWB3Z4014 |  | B3 Z4 :Plaster Second Layer | 8d | 2013-04-09 | 2013-04-18 | HCFWB3Z4013 | 10.75d | 0d | B2 | 09 | MC | C | FI |
| HCFWB3Z4015 |  | B3 Z4 :Plaster Final Layer | 15.5d | 2013-04-18 | 2013-05-08 | HCFWB3Z4014 | 10.75d | 0d | B2 | 09 | MC | C | FI |
| HCFWB3Z4016 |  | B3 Z4 :Paint First Layer | 10d | 2013-05-08 | 2013-05-20 | HCFWB3Z4015 | 10.75d | 0d | B2 | 09 | MC | C | FI |
| HCFWB3Z4017 |  | B3 Z4 :Paint Final Layer | 10d | 2013-05-20 | 2013-06-02 | HCFWB3Z4016, HCFWB4Z6017 | 10.75d | 7.75d | B2 | 09 | MC | C | FI |
| HCFWB3Z4018 |  | B3 Z4 :Gybsum Board Ceiling | 14d | 2013-10-23 | 2013-11-09 | HCFWB3Z4015, HEPSAFI0160, HCFWB4Z4018 | 93d | 0d | B2 | 09 | MC | C | FI |
|  | MS | **Miscellaneous** |  | 2013-09-04 | 2013-11-06 |  |  |  |  |  |  |  |  |
| HCFWB3Z4021 |  | B3 Z4 :Steel Fire Rated Doors | 10d | 2013-09-04 | 2013-09-15 | HCFWB3Z4016, HCFWB4Z4021 | 133d | 0d | B2 | 08 | MC | C | FI |
| HCFWB3Z4023 |  | B3 Z4 :Handrails & Railling | 15d | 2013-10-20 | 2013-11-06 | HCFWB3Z4016, HCFWB4Z4023 | 93d | 0d | B2 |  | MC | C | FI |
| HCFWB3Z4019 |  | B3 Z4 :Metal Works & Gutters | 10d | 2013-10-26 | 2013-11-06 | HCFWB3Z4023 SS, HCFWB3Z3022 SS, HCFWB3Z5018 SS, HCFWB4Z4019, HCFWB4Z4019 FF | 93d | 0d | B2 | 05 | MC | C | FI |
| HCFWB3Z4020 |  | B3 Z4 :Steel Doors | 10d | 2013-10-26 | 2013-11-06 | HCFWB3Z4021 SS, HCFWB3Z4019 SS | 93d | 0d | B2 | 08 | MC | C | FI |
| HCFWB3Z4022 |  | B3 Z4 :Wooden Doors | 10d | 2013-10-26 | 2013-11-06 | HCFWB3Z4020 SS, HCFWB4Z4022 | 93d | 0d | B2 | 08 | MC | C | FI |
|  | Z5 | **Zone 5** |  | 2012-12-10 | 2014-03-25 |  |  |  |  |  |  |  |  |
|  | FL | **Floor Finishes** |  | 2013-04-14 | 2014-03-25 |  |  |  |  |  |  |  |  |
| HCFWB3Z5001 |  | B3 Z5 :Foam Concrete & Proofing Membrane Under Floorings | 16d | 2013-04-14 | 2013-05-02 | HCFWB3Z5009 | 19.5d | 0d | B2 | 07 | MC | C | FI |
| HCFWB3Z5002 |  | B3 Z5 :Trawelled smooth Concrete screed | 8d | 2013-05-04 | 2013-05-12 | HCFWB3Z5001 | 19.5d | 0d | B2 | 03 | MC | C | FI |
| HCFWB3Z5003 |  | B3 Z5 :Epoxy Screed Finish Works | 10d | 2013-06-12 | 2013-06-24 | HCFWB3Z5015 | 155.5d | 0d | B2 |  | MC | C | FI |
| HCFWB3Z5004 |  | B3 Z5 :Sealed Concrete | 8d | 2013-06-12 | 2013-06-22 | HCFWB3Z5003 SS, HCFWB3Z5015 | 155.5d | 0d | B2 | 03 | MC | C | FI |
| HCFWB3Z5005 |  | B3 Z5 :Rubber Flooring With Spicial Adhesive | 10d | 2013-06-12 | 2013-06-24 | HCFWB3Z5015 | 124.5d | 0d | B2 | 09 | MC | C | FI |
| HCFWB3Z5006 |  | B3 Z5 :Rubber Skirting | 2d | 2013-11-30 | 2013-12-01 | HCFWB3Z5005, HCFWB3Z4006 | 26d | 0d | B2 | 09 | MC | C | FI |
| HCFWB3Z5100 |  | B4 Z5: Curb Stone & Wheel Stopper for Parkings | 7d | 2014-03-18 | 2014-03-25 | HCFWB3Z4100 | 10d | 0d |  |  |  |  |  |

| ID | WBS | Activity | Duration | Start | Finish | Predecessors | Total float | Free float | Bill No. | Division No. | Responsibility | Phase Code | Trade |
| --- | --- | --- | --- | --- | --- | --- | --- | --- | --- | --- | --- | --- | --- |
|  | WL | **Wall Finishes** |  | 2012-12-10 | 2013-08-15 |  |  |  |  |  |  |  |  |
| HCFWB3Z5012 |  | B3 Z5 :Block Works | 10d | 2012-12-10 | 2012-12-20 | HCSWB3Z5240, HCFWB4Z5012 | 89d | 0d | B2 | 04 | MC | C | FI |
| HCFWB3Z5007 |  | B3 Z5 :Plaster First Layer | 8.75d | 2013-03-14 | 2013-03-25 | HCFWB3Z5012, HCFWB3Z4007 SS, HCFWB4Z5015 | 19.5d | 0d | B2 | 09 | MC | C | FI |
| HCFWB3Z5008 |  | B3 Z5 :Plaster Second Layer | 8d | 2013-03-25 | 2013-04-03 | HCFWB3Z5007 | 19.5d | 0d | B2 | 09 | MC | C | FI |
| HCFWB3Z5009 |  | B3 Z5 :Plaster Final Layer | 8.75d | 2013-04-03 | 2013-04-13 | HCFWB3Z5008 | 19.5d | 0d | B2 | 09 | MC | C | FI |
| HCFWB3Z5010 |  | B3 Z5 :Paint First Layer | 12d | 2013-07-15 | 2013-07-29 | HCFWB3Z5017 | 241.5d | 0d | B2 | 09 | MC | C | FI |
| HCFWB3Z5011 |  | B3 Z5 :Paint Final Layer | 12d | 2013-07-29 | 2013-08-15 | HCFWB3Z5010 | 241.5d | 189.5d | B2 | 09 | MC | C | FI |
|  | CL | **Ceiling Finishes** |  | 2013-05-13 | 2013-07-15 |  |  |  |  |  |  |  |  |
| HCFWB3Z5013 |  | B3 Z5 :Plaster First Layer | 8.75d | 2013-05-13 | 2013-05-22 | HCFWB3Z5002, HCFWB3Z5009 | 19.5d | 0d | B2 | 09 | MC | C | FI |
| HCFWB3Z5014 |  | B3 Z5 :Plaster Second Layer | 8d | 2013-05-22 | 2013-06-02 | HCFWB3Z5013 | 19.5d | 0d | B2 | 09 | MC | C | FI |
| HCFWB3Z5015 |  | B3 Z5 :Plaster Final Layer | 8.75d | 2013-06-02 | 2013-06-12 | HCFWB3Z5014 | 19.5d | 0d | B2 | 09 | MC | C | FI |
| HCFWB3Z5016 |  | B3 Z5 :Paint First Layer | 10d | 2013-06-22 | 2013-07-03 | HCFWB3Z5004 | 155.5d | 0d | B2 | 09 | MC | C | FI |
| HCFWB3Z5017 |  | B3 Z5 :Paint Final Layer | 10d | 2013-07-03 | 2013-07-15 | HCFWB3Z5016 | 241.5d | 0d | B2 | 09 | MC | C | FI |
|  | MS | **Miscellaneous** |  | 2013-09-04 | 2013-11-18 |  |  |  |  |  |  |  |  |
| HCFWB3Z5020 |  | B3 Z5 :Steel Fire Rated Doors | 10d | 2013-09-04 | 2013-09-15 | HCFWB3Z5016, HCFWB4Z5021 | 155d | 14.5d | B2 | 08 | MC | C | FI |
| HCFWB3Z5018 |  | B3 Z5 :Metal Works & Gutters | 10d | 2013-10-26 | 2013-11-06 | HCFWB3Z5016, HCFWB4Z5019 | 65d | 0d | B2 | 05 | MC | C | FI |
| HCFWB3Z5019 |  | B3 Z5 :Steel Doors | 10d | 2013-11-07 | 2013-11-18 | HCFWB3Z5020 SS, HCFWB3Z5018 SS, HCFWB4Z5020 | 105d | 0d | B2 | 08 | MC | C | FI |
| HCFWB3Z5021 |  | B3 Z5 :Wooden Doors | 10d | 2013-11-07 | 2013-11-18 | HCFWB3Z5019 SS | 165d | 113d | B2 | 08 | MC | C | FI |
|  | Z6 | **Zone 6** |  | 2012-12-29 | 2014-04-02 |  |  |  |  |  |  |  |  |
|  | FL | **Floor Finishes** |  | 2013-04-14 | 2014-04-02 |  |  |  |  |  |  |  |  |
| HCFWB3Z6001 |  | B3 Z6 :Foam Concrete & Proofing Membrane Under Floorings | 16d | 2013-04-14 | 2013-05-02 | HCFWB3Z6009 | 117.75d | 0d | B2 | 07 | MC | C | FI |
| HCFWB3Z6002 |  | B3 Z6 :Trawelled smooth Concrete screed | 8d | 2013-05-04 | 2013-05-12 | HCFWB3Z6001 | 117.75d | 0d | B2 | 03 | MC | C | FI |
| HCFWB3Z6003 |  | B3 Z6 :Sealed Concrete | 8d | 2013-06-20 | 2013-06-30 | HCFWB3Z6004 SS, HCFWB3Z6015 | 117.75d | 0d | B2 | 03 | MC | C | FI |
| HCFWB3Z6004 |  | B3 Z6 :Epoxy Screed Finish Works | 10d | 2013-06-20 | 2013-07-02 | HCFWB3Z6015 | 117.75d | 0d | B2 |  | MC | C | FI |
| HCFWB3Z6005 |  | B3 Z6 :Rubber Flooring With Spicial Adhesive | 10d | 2013-06-20 | 2013-07-02 | HCFWB3Z6003 SS, HCFWB3Z6015 | 117.75d | 0d | B2 | 09 | MC | C | FI |
| HCFWB3Z6006 |  | B3 Z6 :Rubber Skirting | 2d | 2013-12-02 | 2013-12-03 | HCFWB3Z6005, HCFWB3Z5006 | 26d | 0d | B2 | 09 | MC | C | FI |
| HCFWB3Z6100 |  | B4 Z6: Curb Stone & Wheel Stopper for Parkings | 7d | 2014-03-26 | 2014-04-02 | HCFWB3Z5100 | 10d | 0d |  |  |  |  |  |

| ID | WBS | Activity | Type | Duration | Start | Finish | Predecessors | Total float | Free float | Bill No. | Division No. | Responsibility | Phase Code | Trade |
| --- | --- | --- | --- | --- | --- | --- | --- | --- | --- | --- | --- | --- | --- | --- |
|  | WL | **Wall Finishes** |  |  | 2012-12-29 | 2013-07-28 |  |  |  |  |  |  |  |  |
| HCFWB3Z6011 |  | B3 Z6 :Block Works |  | 10d | 2012-12-29 | 2013-01-09 | HCSWB3Z6240 | 171.25d | 0d | B2 | 04 | MC | C | FI |
| HCFWB3Z6007 |  | B3 Z6 :Plaster First Layer |  | 8.75d | 2013-03-14 | 2013-03-25 | HCFWB3Z6011, HCFWB3Z5007 SS | 117.75d | 0d | B2 | 09 | MC | C | FI |
| HCFWB3Z6008 |  | B3 Z6 :Plaster Second Layer |  | 8d | 2013-03-25 | 2013-04-03 | HCFWB3Z6007 | 117.75d | 0d | B2 | 09 | MC | C | FI |
| HCFWB3Z6009 |  | B3 Z6 :Plaster Final Layer |  | 8.75d | 2013-04-03 | 2013-04-13 | HCFWB3Z6008 | 117.75d | 0d | B2 | 09 | MC | C | FI |
| HCFWB3Z6010 |  | B3 Z6 :Paint First Layer |  | 12d | 2013-06-30 | 2013-07-14 | HCFWB3Z6003 | 254.75d | 0d | B2 | 09 | MC | C | FI |
| HCFWB3Z6012 |  | B3 Z6 :Paint Final Layer |  | 12d | 2013-07-14 | 2013-07-28 | HCFWB3Z6010 | 254.75d | 202.75d | B2 | 09 | MC | C | FI |
|  | CL | **Ceiling Finishes** |  |  | 2013-05-13 | 2013-07-23 |  |  |  |  |  |  |  |  |
| HCFWB3Z6013 |  | B3 Z6 :Plaster First Layer |  | 8.75d | 2013-05-13 | 2013-05-22 | HCFWB3Z6002 | 117.75d | 0d | B2 | 09 | MC | C | FI |
| HCFWB3Z6014 |  | B3 Z6 :Plaster Second Layer |  | 8d | 2013-05-22 | 2013-06-02 | HCFWB3Z6013 | 117.75d | 0d | B2 | 09 | MC | C | FI |
| HCFWB3Z6015 |  | B3 Z6 :Plaster Final Layer |  | 15.5d | 2013-06-02 | 2013-06-20 | HCFWB3Z6014 | 117.75d | 0d | B2 | 09 | MC | C | FI |
| HCFWB3Z6016 |  | B3 Z6 :Paint First Layer |  | 10d | 2013-06-30 | 2013-07-11 | HCFWB3Z6003 | 148.75d | 0d | B2 | 09 | MC | C | FI |
| HCFWB3Z6017 |  | B3 Z6 :Paint Final Layer |  | 10d | 2013-07-11 | 2013-07-23 | HCFWB3Z6016 | 248.75d | 0d | B2 | 09 | MC | C | FI |
|  | MS | **Miscellaneous** |  |  | 2013-09-04 | 2013-11-06 |  |  |  |  |  |  |  |  |
| HCFWB3Z6020 |  | B3 Z6 :Steel Fire Rated Doors |  | 10d | 2013-09-04 | 2013-09-15 | HCFWB3Z6016, HCFWB4Z6020 | 115d | 21.25d | B2 | 08 | MC | C | FI |
| HCFWB3Z6018 |  | B3 Z6 :Metal Works & Gutters |  | 10d | 2013-10-26 | 2013-11-06 | HCFWB3Z5018 SS, HCFWB3Z6016, HCFWB4Z6018 | 65d | 0d | B2 | 05 | MC | C | FI |
| HCFWB3Z6019 |  | B3 Z6 :Steel Doors |  | 10d | 2013-10-26 | 2013-11-06 | HCFWB3Z6020 SS, HCFWB3Z6018 SS, HCFWB4Z6019 | 75d | 0d | B2 | 08 | MC | C | FI |
| HCFWB3Z6021 |  | B3 Z6 :Wooden Doors |  | 10d | 2013-10-26 | 2013-11-06 | HCFWB3Z6019 SS | 175d | 123d | B2 | 08 | MC | C | FI |
|  | B2 | **Basement 2 - Park** |  |  | 2012-12-19 | 2014-05-22 |  |  |  |  |  |  |  |  |
| HCFWB20000 |  | Start Finishing Works B2 | milestone | 0d | 2012-12-19 | 2012-12-19 | HCSWB2Z1240 | 41d | 10d | B2 |  | MC | C | FI |
| HCFWB20001 |  | End Finishing Works B2 | milestone | 0d | 2014-05-22 | 2014-05-22 | HCFWB2Z1006, HCFWB2Z1011, HCFWB2Z1017, HCFWB2Z1023, HCFWB2Z1018, HCFWB2Z1022, HCFWB2Z2006, HCFWB2Z2012, HCFWB2Z2019, HCFWB2Z2023, HCFWB2Z3006, HCFWB2Z3008, HCFWB2Z3013, HCFWB2Z3021, HCFWB2Z3024, HCFWB2Z4006, HCFWB2Z4011, HCFWB2Z4018, HCFWB2Z4017, HCFWB2Z4022, HCFWB2Z5006, HCFWB2Z5011, HCFWB2Z5021, HCFWB2Z6006, HCFWB2Z6011, HCFWB2Z6017, HCFWB2Z6021, HCFWB2Z6100, HCMEB2Z1250, HCMEB2Z2255, HCMEB2Z3260, HCMEB2Z4265, HCMEB2Z5270, HCMEB2Z5390, HCMEB2Z6275 | 10d |  | B2 |  | MC | C | FI |
|  | Z1 | **Zone 1** |  |  | 2012-12-19 | 2014-04-10 |  |  |  |  |  |  |  |  |
|  | FL | **Floor Finishes** |  |  | 2013-03-10 | 2014-04-10 |  |  |  |  |  |  |  |  |
| HCFWB2Z1001 |  | B2 Z1 :Foam Concrete Under Floorings |  | 16d | 2013-03-10 | 2013-03-28 | HCFWB2Z1015 | 66.25d | 0d | B2 | 07 | MC | C | FI |
| HCFWB2Z1002 |  | B2 Z1 :Trawelled smooth Concrete screed |  | 8d | 2013-03-28 | 2013-04-07 | HCFWB2Z1001 | 66.25d | 0d | B2 | 03 | MC | C | FI |
| HCFWB2Z1003 |  | B2 Z1 :Sealed Concrete |  | 8d | 2013-07-14 | 2013-07-22 | HCFWB2Z1004 SS, HCFWB2Z1002, HCFWB2Z1017 | 5d | 0d | B2 | 03 | MC | C | FI |
| HCFWB2Z1004 |  | B2 Z1 :Epoxy Screed Finish Works |  | 10d | 2013-07-14 | 2013-07-24 | HCFWB2Z1008, HCFWB2Z1011, HCFWB2Z1002, HCFWB2Z1017 | 5d | 0d | B2 |  | MC | C | FI |
| HCFWB2Z1005 |  | B2 Z1 :Rubber Flooring With Spicial Adhesive |  | 10d | 2013-07-14 | 2013-07-24 | HCFWB2Z1003 SS, HCFWB2Z1002, HCFWB2Z1017 | 5d | 0d | B2 | 09 | MC | C | FI |
| HCFWB2Z1006 |  | B2 Z1 :Rubber Skirting |  | 2d | 2013-12-04 | 2013-12-05 | HCFWB2Z1005, HCFWB3Z6006 | 26d | 0d | B2 | 09 | MC | C | FI |
| HCFWB2Z1100 |  | B2 Z1: Curb Stone & Wheel Stopper for Parkings |  | 7d | 2014-04-03 | 2014-04-10 | HCFWB3Z6100 | 10d | 0d |  |  |  |  |  |

| ID | WBS | Activity | Duration | Start | Finish | Predecessors | Total float | Free float | Bill No. | Division No. | Responsibility | Phase Code | Trade |
| --- | --- | --- | --- | --- | --- | --- | --- | --- | --- | --- | --- | --- | --- |
|  | WL | **Wall Finishes** |  | 2012-12-19 | 2013-07-13 |  |  |  |  |  |  |  |  |
| HCFWB2Z1012 |  | B2 Z1 :Block Works | 10d | 2012-12-19 | 2012-12-30 | HCSWB2Z1240, HCFWB3Z1012 | 31d | 0d | B2 | 04 | MC | C | FI |
| HCFWB2Z1007 |  | B2 Z1 :Plaster First Layer | 8.75d | 2012-12-31 | 2013-01-10 | HCFWB2Z1012, HCFWB20000 | 31d | 0d | B2 | 09 | MC | C | FI |
| HCFWB2Z1008 |  | B2 Z1 :Plaster Second Layer | 8d | 2013-01-10 | 2013-01-20 | HCFWB2Z1007 | 66.25d | 0d | B2 | 09 | MC | C | FI |
| HCFWB2Z1009 |  | B2 Z1 :Plaster Final Layer | 8.75d | 2013-01-20 | 2013-01-31 | HCFWB2Z1008 | 66.25d | 0d | B2 | 09 | MC | C | FI |
| HCFWB2Z1010 |  | B2 Z1 :Paint First Layer | 12d | 2013-01-31 | 2013-02-14 | HCFWB2Z1009 | 118.5d | 113.5d | B2 | 09 | MC | C | FI |
| HCFWB2Z1011 |  | B2 Z1 :Paint Final Layer | 12d | 2013-06-30 | 2013-07-13 | HCFWB2Z1010, HCFWB3Z1011 | 5d | 0d | B2 | 09 | MC | C | FI |
|  | CL | **Ceiling Finishes** |  | 2013-01-31 | 2013-11-26 |  |  |  |  |  |  |  |  |
| HCFWB2Z1013 |  | B2 Z1 :Plaster First Layer | 8.75d | 2013-01-31 | 2013-02-11 | HCFWB2Z1009 | 66.25d | 0d | B2 | 09 | MC | C | FI |
| HCFWB2Z1014 |  | B2 Z1 :Plaster Second Layer | 8d | 2013-02-11 | 2013-02-20 | HCFWB2Z1013 | 66.25d | 0d | B2 | 09 | MC | C | FI |
| HCFWB2Z1015 |  | B2 Z1 :Plaster Final Layer | 15.5d | 2013-02-20 | 2013-03-10 | HCFWB2Z1014 | 66.25d | 0d | B2 | 09 | MC | C | FI |
| HCFWB2Z1016 |  | B2 Z1 :Paint First Layer | 10d | 2013-04-07 | 2013-04-18 | HCFWB2Z1015, HCFWB2Z1002 | 66.25d | 0d | B2 | 09 | MC | C | FI |
| HCFWB2Z1017 |  | B2 Z1 :Paint Final Layer | 10d | 2013-04-18 | 2013-04-30 | HCFWB2Z1016 | 66.25d | 61.25d | B2 | 09 | MC | C | FI |
| HCFWB2Z1018 |  | B2 Z1 :Gybsum Board Ceiling | 14d | 2013-11-11 | 2013-11-26 | HCFWB2Z1015, HCFWB3Z1018 | 26d | 0d | B2 | 09 | MC | C | FI |
|  | MS | **Miscellaneous** |  | 2013-11-27 | 2013-12-14 |  |  |  |  |  |  |  |  |
| HCFWB2Z1019 |  | B2 Z1 :Metal Works & Gutters | 10d | 2013-11-27 | 2013-12-08 | HCFWB2Z1023 SS, HCFWB20000, HCFWB2Z2020 SS, HCFWB3Z1019, HCFWB3Z1019 FF | 26d | 0d | B2 | 05 | MC | C | FI |
| HCFWB2Z1020 |  | B2 Z1 :Steel Doors | 10d | 2013-11-27 | 2013-12-08 | HCFWB2Z1021 SS, HCFWB2Z1019 SS, HCFWB3Z1020 | 53d | 0d | B2 | 08 | MC | C | FI |
| HCFWB2Z1021 |  | B2 Z1 :Steel Fire Rated Doors | 10d | 2013-11-27 | 2013-12-08 | HCFWB2Z1018, HCFWB3Z1021 | 53d | 0d | B2 | 08 | MC | C | FI |
| HCFWB2Z1022 |  | B2 Z1 :Wooden Doors | 10d | 2013-11-27 | 2013-12-08 | HCFWB2Z1020 SS, HCFWB3Z1022 | 53d | 10d | B2 | 08 | MC | C | FI |
| HCFWB2Z1023 |  | B2 Z1 :Handrails & Railling | 15d | 2013-11-27 | 2013-12-14 | HCFWB2Z1018, HCFWB3Z1023 | 26d | 0d | B2 |  | MC | C | FI |
|  | Z2 | **Zone 2** |  | 2013-01-22 | 2014-04-19 |  |  |  |  |  |  |  |  |
|  | FL | **Floor Finishes** |  | 2013-03-05 | 2014-04-19 |  |  |  |  |  |  |  |  |
| HCFWB2Z2001 |  | B2 Z2 :Foam Concrete Under Floorings | 16d | 2013-03-05 | 2013-03-24 | HCFWB2Z2010 | 3d | 0d | B2 | 07 | MC | C | FI |
| HCFWB2Z2002 |  | B2 Z2 :Trawelled smooth Concrete screed | 8d | 2013-03-24 | 2013-04-02 | HCFWB2Z2001 | 3d | 0d | B2 | 03 | MC | C | FI |
| HCFWB2Z2003 |  | B2 Z2 :Sealed Concrete | 8d | 2013-06-04 | 2013-06-13 | HCFWB2Z2004 SS, HCFWB2Z2018 | 38.25d | 0d | B2 | 03 | MC | C | FI |
| HCFWB2Z2004 |  | B2 Z2 :Epoxy Screed Finish Works | 10d | 2013-06-04 | 2013-06-16 | HCFWB2Z2018 | 38.25d | 0d | B2 |  | MC | C | FI |
| HCFWB2Z2005 |  | B2 Z2 :Rubber Flooring With Spicial Adhesive | 10d | 2013-06-04 | 2013-06-16 | HCFWB2Z2003 SS, HCFWB2Z2018 | 38.25d | 0d | B2 | 09 | MC | C | FI |
| HCFWB2Z2006 |  | B2 Z2 :Rubber Skirting | 2d | 2013-12-07 | 2013-12-08 | HCFWB2Z2005, HCFWB2Z1006 | 26d | 0d | B2 | 09 | MC | C | FI |
| HCFWB2Z2100 |  | B2 Z2: Curb Stone & Wheel Stopper for Parkings | 7d | 2014-04-12 | 2014-04-19 | HCFWB2Z1100 | 10d | 0d |  |  |  |  |  |

| ID | WBS | Activity | Duration | Start | Finish | Predecessors | Total float | Free float | Bill No. | Division No. | Responsibility | Phase Code | Trade |
| --- | --- | --- | --- | --- | --- | --- | --- | --- | --- | --- | --- | --- | --- |
|  | WL | **Wall Finishes** |  | 2013-01-22 | 2013-04-02 |  |  |  |  |  |  |  |  |
| HCFWB2Z2013 |  | B2 Z2 :Block Works | 10d | 2013-01-22 | 2013-02-03 | HCSWB2Z2240, HCFWB3Z2012 | 3d | 0d | B2 | 04 | MC | C | FI |
| HCFWB2Z2007 |  | B2 Z2 :Plaster First Layer | 8.75d | 2013-02-04 | 2013-02-13 | HCFWB2Z2013, HCFWB2Z1007 SS | 3d | 0d | B2 | 09 | MC | C | FI |
| HCFWB2Z2008 |  | B2 Z2 :Plaster Second Layer | 8d | 2013-02-13 | 2013-02-23 | HCFWB2Z2007 | 3d | 0d | B2 | 09 | MC | C | FI |
| HCFWB2Z2010 |  | B2 Z2 :Plaster Final Layer | 8.75d | 2013-02-23 | 2013-03-05 | HCFWB2Z2008 | 3d | 0d | B2 | 09 | MC | C | FI |
| HCFWB2Z2011 |  | B2 Z2 :Paint First Layer | 12d | 2013-03-05 | 2013-03-19 | HCFWB2Z2010, HCFWB3Z2011 | 70.5d | 0d | B2 | 09 | MC | C | FI |
| HCFWB2Z2012 |  | B2 Z2 :Paint Final Layer | 12d | 2013-03-19 | 2013-04-02 | HCFWB2Z2011 | 70.5d | 32.25d | B2 | 09 | MC | C | FI |
|  | CL | **Ceiling Finishes** |  | 2013-04-02 | 2013-11-25 |  |  |  |  |  |  |  |  |
| HCFWB2Z2014 |  | B2 Z2 :Plaster First Layer | 8.75d | 2013-04-02 | 2013-04-13 | HCFWB2Z2002 | 3d | 0d | B2 | 09 | MC | C | FI |
| HCFWB2Z2015 |  | B2 Z2 :Plaster Second Layer | 8d | 2013-04-13 | 2013-04-22 | HCFWB2Z2014 | 38.25d | 0d | B2 | 09 | MC | C | FI |
| HCFWB2Z2016 |  | B2 Z2 :Plaster Final Layer | 15.5d | 2013-04-22 | 2013-05-11 | HCFWB2Z2015 | 38.25d | 0d | B2 | 09 | MC | C | FI |
| HCFWB2Z2017 |  | B2 Z2 :Paint First Layer | 10d | 2013-05-11 | 2013-05-22 | HCFWB2Z2016, HCFWB2Z2012 | 38.25d | 0d | B2 | 09 | MC | C | FI |
| HCFWB2Z2018 |  | B2 Z2 :Paint Final Layer | 10d | 2013-05-22 | 2013-06-04 | HCFWB2Z2017 | 38.25d | 0d | B2 | 09 | MC | C | FI |
| HCFWB2Z2019 |  | B2 Z2 :Gybsum Board Ceiling | 14d | 2013-11-10 | 2013-11-25 | HCFWB2Z2016, HCFWB3Z2018 | 37d | 0d | B2 | 09 | MC | C | FI |
|  | MS | **Miscellaneous** |  | 2013-11-07 | 2013-11-24 |  |  |  |  |  |  |  |  |
| HCFWB2Z2020 |  | B2 Z2 :Metal Works & Gutters | 10d | 2013-11-07 | 2013-11-18 | HCFWB2Z2024 SS, HCFWB3Z2019 | 43d | 0d | B2 | 05 | MC | C | FI |
| HCFWB2Z2024 |  | B2 Z2 :Handrails & Railling | 15d | 2013-11-07 | 2013-11-24 | HCFWB2Z2017, HCFWB3Z2023 | 43d | 0d | B2 |  | MC | C | FI |
| HCFWB2Z2021 |  | B2 Z2 :Steel Doors | 10d | 2013-11-13 | 2013-11-24 | HCFWB2Z2022 SS, HCFWB2Z2020 SS, HCFWB3Z2020 | 70d | 0d | B2 | 08 | MC | C | FI |
| HCFWB2Z2022 |  | B2 Z2 :Steel Fire Rated Doors | 10d | 2013-11-13 | 2013-11-24 | HCFWB2Z2017, HCFWB3Z2021 | 70d | 0d | B2 | 08 | MC | C | FI |
| HCFWB2Z2023 |  | B2 Z2 :Wooden Doors | 10d | 2013-11-13 | 2013-11-24 | HCFWB2Z2021 SS, HCFWB3Z2022 | 80d | 32d | B2 | 08 | MC | C | FI |
|  | Z3 | **Zone 3** |  | 2013-01-05 | 2014-04-27 |  |  |  |  |  |  |  |  |
|  | FL | **Floor Finishes** |  | 2013-05-02 | 2014-04-27 |  |  |  |  |  |  |  |  |
| HCFWB2Z3001 |  | B2 Z3 :Foam Concrete Under Floorings | 16d | 2013-05-02 | 2013-05-21 | HCFWB2Z3011 | 82.25d | 0d | B2 | 07 | MC | C | FI |
| HCFWB2Z3002 |  | B2 Z3 :Trawelled smooth Concrete screed | 8d | 2013-05-21 | 2013-06-01 | HCFWB2Z3001 | 82.25d | 0d | B2 | 03 | MC | C | FI |
| HCFWB2Z3003 |  | B2 Z3 :Sealed Concrete | 8d | 2013-07-23 | 2013-07-31 | HCFWB2Z3004 SS, HCFWB2Z3020 | 127d | 0d | B2 | 03 | MC | C | FI |
| HCFWB2Z3004 |  | B2 Z3 :Epoxy Screed Finish Works | 10d | 2013-07-23 | 2013-08-03 | HCFWB2Z3020 | 127d | 0d | B2 |  | MC | C | FI |
| HCFWB2Z3005 |  | B2 Z3 :Rubber Flooring With Spicial Adhesive | 10d | 2013-07-23 | 2013-08-03 | HCFWB2Z3003 SS, HCFWB2Z3020 | 127d | 101d | B2 | 09 | MC | C | FI |
| HCFWB2Z3007 |  | B2 Z3 :Stone Flooring | 12d | 2013-07-23 | 2013-08-05 | HCFWB2Z3020 | 136d | 0d | B2 | 09 | MC | C | FI |
| HCFWB2Z3008 |  | B2 Z3 :Stone Skirting | 10d | 2013-08-06 | 2013-08-20 | HCFWB2Z3007 | 237d | 227d | B2 | 09 | MC | C | FI |
| HCFWB2Z3006 |  | B2 Z3 :Rubber Skirting | 2d | 2013-12-09 | 2013-12-10 | HCFWB2Z3005, HCFWB2Z2006 | 26d | 0d | B2 | 09 | MC | C | FI |
| HCFWB2Z3100 |  | B2 Z3: Curb Stone & Wheel Stopper for Parkings | 7d | 2014-04-20 | 2014-04-27 | HCFWB2Z2100 | 10d | 0d |  |  |  |  |  |

| ID | WBS | Activity | Duration | Start | Finish | Predecessors | Total float | Free float | Bill No. | Division No. | Responsibility | Phase Code | Trade |
| --- | --- | --- | --- | --- | --- | --- | --- | --- | --- | --- | --- | --- | --- |
|  | WL | **Wall Finishes** |  | 2013-01-05 | 2013-06-01 |  |  |  |  |  |  |  |  |
| HCFWB2Z3015 |  | B2 Z3 :Block Works | 14d | 2013-01-05 | 2013-01-20 | HCSWB2Z3240, HCFWB3Z3015 | 63.5d | 0d | B2 | 04 | MC | C | FI |
| HCFWB2Z3009 |  | B2 Z3 :Plaster First Layer | 8.75d | 2013-04-02 | 2013-04-13 | HCFWB2Z3015, HCFWB2Z2014 SS, HCFWB3Z3011 | 3d | 0d | B2 | 09 | MC | C | FI |
| HCFWB2Z3010 |  | B2 Z3 :Plaster Second Layer | 8d | 2013-04-13 | 2013-04-22 | HCFWB2Z3009 | 82.25d | 0d | B2 | 09 | MC | C | FI |
| HCFWB2Z3011 |  | B2 Z3 :Plaster Final Layer | 8d | 2013-04-22 | 2013-05-02 | HCFWB2Z3010 | 82.25d | 0d | B2 | 09 | MC | C | FI |
| HCFWB2Z3012 |  | B2 Z3 :Paint First Layer | 12d | 2013-05-02 | 2013-05-16 | HCFWB2Z3011, HCFWB3Z3013 | 134.75d | 0d | B2 | 09 | MC | C | FI |
| HCFWB2Z3014 |  | B2 Z3 :Epoxy Paint for Walls | 10d | 2013-05-02 | 2013-05-14 | HCFWB2Z3011 | 146.75d | 12d | B2 | 09 | MC | C | FI |
| HCFWB2Z3013 |  | B2 Z3 :Paint Final Layer | 12d | 2013-05-16 | 2013-06-01 | HCFWB2Z3012, HCFWB2Z3014 SS | 134.75d | 0d | B2 | 09 | MC | C | FI |
|  | CL | **Ceiling Finishes** |  | 2013-06-01 | 2013-11-25 |  |  |  |  |  |  |  |  |
| HCFWB2Z3016 |  | B2 Z3 :Plaster First Layer | 8.75d | 2013-06-01 | 2013-06-10 | HCFWB2Z3002, HCFWB2Z3011, HCFWB3Z3018 | 82.25d | 0d | B2 | 09 | MC | C | FI |
| HCFWB2Z3017 |  | B2 Z3 :Plaster Second Layer | 8d | 2013-06-11 | 2013-06-19 | HCFWB2Z3016 | 82.25d | 0d | B2 | 09 | MC | C | FI |
| HCFWB2Z3018 |  | B2 Z3 :Plaster Final Layer | 8d | 2013-06-20 | 2013-06-29 | HCFWB2Z3017 | 82.25d | 0d | B2 | 09 | MC | C | FI |
| HCFWB2Z3019 |  | B2 Z3 :Paint First Layer | 10d | 2013-06-30 | 2013-07-10 | HCFWB2Z3018, HCFWB2Z3013 | 127d | 0d | B2 | 09 | MC | C | FI |
| HCFWB2Z3020 |  | B2 Z3 :Paint Final Layer | 10d | 2013-07-11 | 2013-07-22 | HCFWB2Z3019 | 127d | 0d | B2 | 09 | MC | C | FI |
| HCFWB2Z3021 |  | B2 Z3 :Gybsum Board Ceiling | 14d | 2013-11-10 | 2013-11-25 | HCFWB2Z3018, HCFWB3Z3021 | 41d | 0d | B2 | 09 | MC | C | FI |
|  | MS | **Miscellaneous** |  | 2013-09-16 | 2013-11-24 |  |  |  |  |  |  |  |  |
| HCFWB2Z3025 |  | B2 Z3 :Steel Fire Rated Doors | 10d | 2013-09-16 | 2013-09-26 | HCFWB2Z3019, HCFWB3Z3025 | 95d | 0d | B2 | 08 | MC | C | FI |
| HCFWB2Z3022 |  | B2 Z3 :Metal Works & Gutters | 10d | 2013-11-07 | 2013-11-18 | HCFWB2Z3026 SS, HCFWB2Z2020 SS, HCFWB3Z3022, HCFWB3Z3022 FF | 50d | 0d | B2 | 05 | MC | C | FI |
| HCFWB2Z3023 |  | B2 Z3 :Steel Doors | 10d | 2013-11-07 | 2013-11-18 | HCFWB2Z3025 SS, HCFWB2Z3022 SS, HCFWB3Z3023 | 55d | 0d | B2 | 08 | MC | C | FI |
| HCFWB2Z3024 |  | B2 Z3 :Wooden Doors | 10d | 2013-11-07 | 2013-11-18 | HCFWB2Z3023 SS, HCFWB3Z3024 | 55d | 29d | B2 | 08 | MC | C | FI |
| HCFWB2Z3026 |  | B2 Z3 :Handrails & Railling | 15d | 2013-11-07 | 2013-11-24 | HCFWB2Z3019, HCFWB3Z3026 | 45d | 0d | B2 |  | MC | C | FI |
|  | Z4 | **Zone 4** |  | 2013-01-26 | 2014-05-06 |  |  |  |  |  |  |  |  |
|  | FL | **Floor Finishes** |  | 2013-05-04 | 2014-05-06 |  |  |  |  |  |  |  |  |
| HCFWB2Z4001 |  | B2 Z4 :Foam Concrete Under Floorings | 16d | 2013-05-04 | 2013-05-21 | HCFWB2Z4009 | 3d | 0d | B2 | 07 | MC | C | FI |
| HCFWB2Z4002 |  | B2 Z4 :Trawelled smooth Concrete screed | 8d | 2013-05-22 | 2013-06-01 | HCFWB2Z4001 | 3d | 0d | B2 | 03 | MC | C | FI |
| HCFWB2Z4003 |  | B2 Z4 :Sealed Concrete | 8d | 2013-07-09 | 2013-07-18 | HCFWB2Z4004 SS, HCFWB2Z4015 | 96.75d | 0d | B2 | 03 | MC | C | FI |
| HCFWB2Z4004 |  | B2 Z4 :Epoxy Screed Finish Works | 10d | 2013-07-09 | 2013-07-21 | HCFWB2Z4015 | 96.75d | 0d | B2 |  | MC | C | FI |
| HCFWB2Z4005 |  | B2 Z4 :Rubber Flooring With Spicial Adhesive | 10d | 2013-07-09 | 2013-07-21 | HCFWB2Z4003 SS, HCFWB2Z4015 | 96.75d | 0d | B2 | 09 | MC | C | FI |
| HCFWB2Z4006 |  | B2 Z4 :Rubber Skirting | 2d | 2013-12-11 | 2013-12-12 | HCFWB2Z4005, HCFWB2Z3006 | 26d | 0d | B2 | 09 | MC | C | FI |
| HCFWB2Z4100 |  | B2 Z4: Curb Stone & Wheel Stopper for Parkings | 7d | 2014-04-28 | 2014-05-06 | HCFWB2Z3100 | 10d | 0d |  |  |  |  |  |

| ID | WBS | Activity | Duration | Start | Finish | Predecessors | Total float | Free float | Bill No. | Division No. | Responsibility | Phase Code | Trade |
| --- | --- | --- | --- | --- | --- | --- | --- | --- | --- | --- | --- | --- | --- |
|  | WL | **Wall Finishes** |  | 2013-01-26 | 2013-06-19 |  |  |  |  |  |  |  |  |
| HCFWB2Z4012 |  | B2 Z4 :Block Works | 10d | 2013-01-26 | 2013-02-05 | HCSWB2Z4240, HCFWB3Z4012 | 50.5d | 0d | B2 | 04 | MC | C | FI |
| HCFWB2Z4007 |  | B2 Z4 :Plaster First Layer | 8.75d | 2013-04-02 | 2013-04-13 | HCFWB2Z4012, HCFWB2Z3009 SS, HCFWB3Z4009 | 3d | 0d | B2 | 09 | MC | C | FI |
| HCFWB2Z4008 |  | B2 Z4 :Plaster Second Layer | 8d | 2013-04-13 | 2013-04-22 | HCFWB2Z4007 | 3d | 0d | B2 | 09 | MC | C | FI |
| HCFWB2Z4009 |  | B2 Z4 :Plaster Final Layer | 8.75d | 2013-04-22 | 2013-05-02 | HCFWB2Z4008 | 3d | 0d | B2 | 09 | MC | C | FI |
| HCFWB2Z4010 |  | B2 Z4 :Paint First Layer | 8d | 2013-06-02 | 2013-06-10 | HCFWB2Z4002, HCFWB3Z4011 | 3d | 0d | B2 | 09 | MC | C | FI |
| HCFWB2Z4011 |  | B2 Z4 :Paint Final Layer | 8d | 2013-06-11 | 2013-06-19 | HCFWB2Z4010, HCFWB3Z4017 | 3d | 0d | B2 | 09 | MC | C | FI |
|  | CL | **Ceiling Finishes** |  | 2013-06-02 | 2013-11-25 |  |  |  |  |  |  |  |  |
| HCFWB2Z4013 |  | B2 Z4 :Plaster First Layer | 8.75d | 2013-06-02 | 2013-06-11 | HCFWB2Z4002, HCFWB3Z4015, HCFWB2Z4009 | 39d | 0d | B2 | 09 | MC | C | FI |
| HCFWB2Z4014 |  | B2 Z4 :Plaster Second Layer | 8d | 2013-06-11 | 2013-06-20 | HCFWB2Z4013 | 39d | 0d | B2 | 09 | MC | C | FI |
| HCFWB2Z4015 |  | B2 Z4 :Plaster Final Layer | 15.5d | 2013-06-20 | 2013-07-09 | HCFWB2Z4014 | 39d | 0d | B2 | 09 | MC | C | FI |
| HCFWB2Z4016 |  | B2 Z4 :Paint First Layer | 10d | 2013-07-09 | 2013-07-21 | HCFWB2Z4015 | 178.75d | 0d | B2 | 09 | MC | C | FI |
| HCFWB2Z4017 |  | B2 Z4 :Paint Final Layer | 10d | 2013-07-21 | 2013-08-01 | HCFWB2Z4016 | 250.75d | 240.75d | B2 | 09 | MC | C | FI |
| HCFWB2Z4018 |  | B2 Z4 :Gybsum Board Ceiling | 14d | 2013-11-10 | 2013-11-25 | HCFWB2Z4015, HEPSAFI0160, HCFWB3Z4018 | 93d | 0d | B2 | 09 | MC | C | FI |
|  | MS | **Miscellaneous** |  | 2013-09-16 | 2013-11-24 |  |  |  |  |  |  |  |  |
| HCFWB2Z4021 |  | B2 Z4 :Steel Fire Rated Doors | 10d | 2013-09-16 | 2013-09-26 | HCFWB2Z4016, HCFWB3Z4021 | 133d | 40d | B2 | 08 | MC | C | FI |
| HCFWB2Z4019 |  | B2 Z4 :Metal Works & Gutters | 10d | 2013-11-07 | 2013-11-18 | HCFWB2Z4023 SS, HCFWB2Z3022 SS, HCFWB2Z5018 SS, HCFWB3Z4019, HCFWB3Z4019 FF | 93d | 0d | B2 | 05 | MC | C | FI |
| HCFWB2Z4020 |  | B2 Z4 :Steel Doors | 10d | 2013-11-07 | 2013-11-18 | HCFWB2Z4021 SS, HCFWB2Z4019 SS | 93d | 0d | B2 | 08 | MC | C | FI |
| HCFWB2Z4022 |  | B2 Z4 :Wooden Doors | 10d | 2013-11-07 | 2013-11-18 | HCFWB2Z4020 SS, HCFWB3Z4022 | 93d | 31d | B2 | 08 | MC | C | FI |
| HCFWB2Z4023 |  | B2 Z4 :Handrails & Railling | 15d | 2013-11-07 | 2013-11-24 | HCFWB2Z4016, HCFWB3Z4023 | 93d | 0d | B2 |  | MC | C | FI |
|  | Z5 | **Zone 5** |  | 2013-01-14 | 2014-05-14 |  |  |  |  |  |  |  |  |
|  | FL | **Floor Finishes** |  | 2013-07-13 | 2014-05-14 |  |  |  |  |  |  |  |  |
| HCFWB2Z5001 |  | B2 Z5 :Foam Concrete Under Floorings | 16d | 2013-07-13 | 2013-07-30 | HCFWB2Z5009 | 19.5d | 0d | B2 | 07 | MC | C | FI |
| HCFWB2Z5002 |  | B2 Z5 :Trawelled smooth Concrete screed | 8d | 2013-07-31 | 2013-08-12 | HCFWB2Z5001 | 19.5d | 0d | B2 | 03 | MC | C | FI |
| HCFWB2Z5003 |  | B2 Z5 :Epoxy Screed Finish Works | 10d | 2013-09-11 | 2013-09-23 | HCFWB2Z5015 | 90.5d | 0d | B2 |  | MC | C | FI |
| HCFWB2Z5004 |  | B2 Z5 :Sealed Concrete | 8d | 2013-09-11 | 2013-09-21 | HCFWB2Z5003 SS, HCFWB2Z5015 | 90.5d | 0d | B2 | 03 | MC | C | FI |
| HCFWB2Z5005 |  | B2 Z5 :Rubber Flooring With Spicial Adhesive | 10d | 2013-09-11 | 2013-09-23 | HCFWB2Z5015 | 73.5d | 0d | B2 | 09 | MC | C | FI |
| HCFWB2Z5006 |  | B2 Z5 :Rubber Skirting | 2d | 2013-12-14 | 2013-12-15 | HCFWB2Z5005, HCFWB2Z4006 | 26d | 0d | B2 | 09 | MC | C | FI |
| HCFWB2Z5100 |  | B2 Z5: Curb Stone & Wheel Stopper for Parkings | 7d | 2014-05-07 | 2014-05-14 | HCFWB2Z4100 | 10d | 0d |  |  |  |  |  |

| ID | WBS | Activity | Duration | Start | Finish | Predecessors | Total float | Free float | Bill No. | Division No. | Responsibility | Phase Code | Trade |
| --- | --- | --- | --- | --- | --- | --- | --- | --- | --- | --- | --- | --- | --- |
|  | WL | **Wall Finishes** |  | 2013-01-14 | 2013-11-17 |  |  |  |  |  |  |  |  |
| HCFWB2Z5012 |  | B2 Z5 :Block Works | 10d | 2013-01-14 | 2013-01-26 | HCSWB2Z5240, HCFWB3Z5012 | 135d | 0d | B2 | 04 | MC | C | FI |
| HCFWB2Z5007 |  | B2 Z5 :Plaster First Layer | 8.75d | 2013-06-12 | 2013-06-23 | HCFWB2Z5012, HCFWB2Z4007 SS, HCFWB3Z5015 | 19.5d | 0d | B2 | 09 | MC | C | FI |
| HCFWB2Z5008 |  | B2 Z5 :Plaster Second Layer | 8d | 2013-06-23 | 2013-07-02 | HCFWB2Z5007 | 19.5d | 0d | B2 | 09 | MC | C | FI |
| HCFWB2Z5009 |  | B2 Z5 :Plaster Final Layer | 8.75d | 2013-07-02 | 2013-07-11 | HCFWB2Z5008 | 19.5d | 0d | B2 | 09 | MC | C | FI |
| HCFWB2Z5010 |  | B2 Z5 :Paint First Layer | 12d | 2013-10-14 | 2013-11-02 | HCFWB2Z5017 | 166.5d | 0d | B2 | 09 | MC | C | FI |
| HCFWB2Z5011 |  | B2 Z5 :Paint Final Layer | 12d | 2013-11-02 | 2013-11-17 | HCFWB2Z5010 | 166.5d | 156.5d | B2 | 09 | MC | C | FI |
|  | CL | **Ceiling Finishes** |  | 2013-08-13 | 2013-10-14 |  |  |  |  |  |  |  |  |
| HCFWB2Z5013 |  | B2 Z5 :Plaster First Layer | 8.75d | 2013-08-13 | 2013-08-22 | HCFWB2Z5002, HCFWB2Z5009 | 19.5d | 0d | B2 | 09 | MC | C | FI |
| HCFWB2Z5014 |  | B2 Z5 :Plaster Second Layer | 8d | 2013-08-22 | 2013-09-01 | HCFWB2Z5013 | 19.5d | 0d | B2 | 09 | MC | C | FI |
| HCFWB2Z5015 |  | B2 Z5 :Plaster Final Layer | 8.75d | 2013-09-01 | 2013-09-11 | HCFWB2Z5014 | 19.5d | 0d | B2 | 09 | MC | C | FI |
| HCFWB2Z5016 |  | B2 Z5 :Paint First Layer | 10d | 2013-09-21 | 2013-10-02 | HCFWB2Z5004 | 90.5d | 0d | B2 | 09 | MC | C | FI |
| HCFWB2Z5017 |  | B2 Z5 :Paint Final Layer | 10d | 2013-10-02 | 2013-10-14 | HCFWB2Z5016 | 166.5d | 0d | B2 | 09 | MC | C | FI |
|  | MS | **Miscellaneous** |  | 2013-10-02 | 2013-11-30 |  |  |  |  |  |  |  |  |
| HCFWB2Z5020 |  | B2 Z5 :Steel Fire Rated Doors | 10d | 2013-10-02 | 2013-10-14 | HCFWB2Z5016, HCFWB3Z5020 | 140.5d | 35.5d | B2 | 08 | MC | C | FI |
| HCFWB2Z5018 |  | B2 Z5 :Metal Works & Gutters | 10d | 2013-11-07 | 2013-11-18 | HCFWB2Z5016, HCFWB3Z5018 | 65d | 0d | B2 | 05 | MC | C | FI |
| HCFWB2Z5019 |  | B2 Z5 :Steel Doors | 10d | 2013-11-19 | 2013-11-30 | HCFWB2Z5020 SS, HCFWB2Z5018 SS, HCFWB3Z5019 | 105d | 0d | B2 | 08 | MC | C | FI |
| HCFWB2Z5021 |  | B2 Z5 :Wooden Doors | 10d | 2013-11-19 | 2013-11-30 | HCFWB2Z5019 SS | 155d | 145d | B2 | 08 | MC | C | FI |
|  | Z6 | **Zone 6** |  | 2012-12-19 | 2014-05-22 |  |  |  |  |  |  |  |  |
|  | FL | **Floor Finishes** |  | 2013-07-13 | 2014-05-22 |  |  |  |  |  |  |  |  |
| HCFWB2Z6001 |  | B2 Z6 :Foam Concrete Under Floorings | 16d | 2013-07-13 | 2013-07-30 | HCFWB2Z6009 | 66.75d | 0d | B2 | 07 | MC | C | FI |
| HCFWB2Z6002 |  | B2 Z6 :Trawelled smooth Concrete screed | 8d | 2013-07-31 | 2013-08-12 | HCFWB2Z6001 | 66.75d | 0d | B2 | 03 | MC | C | FI |
| HCFWB2Z6003 |  | B2 Z6 :Sealed Concrete | 8d | 2013-09-19 | 2013-09-29 | HCFWB2Z6004 SS, HCFWB2Z6015 | 66.75d | 0d | B2 | 03 | MC | C | FI |
| HCFWB2Z6004 |  | B2 Z6 :Epoxy Screed Finish Works | 10d | 2013-09-19 | 2013-10-01 | HCFWB2Z6015 | 66.75d | 0d | B2 |  | MC | C | FI |
| HCFWB2Z6005 |  | B2 Z6 :Rubber Flooring With Spicial Adhesive | 10d | 2013-09-19 | 2013-10-01 | HCFWB2Z6003 SS, HCFWB2Z6015 | 66.75d | 0d | B2 | 09 | MC | C | FI |
| HCFWB2Z6006 |  | B2 Z6 :Rubber Skirting | 2d | 2013-12-16 | 2013-12-17 | HCFWB2Z6005, HCFWB2Z5006 | 26d | 0d | B2 | 09 | MC | C | FI |
| HCFWB2Z6100 |  | B2 Z6: Curb Stone & Wheel Stopper for Parkings | 7d | 2014-05-15 | 2014-05-22 | HCFWB2Z5100 | 10d | 0d |  |  |  |  |  |

| ID | WBS | Activity | Type | Duration | Start | Finish | Predecessors | Total float | Free float | Bill No. | Division No. | Responsibility | Phase Code | Trade |
| --- | --- | --- | --- | --- | --- | --- | --- | --- | --- | --- | --- | --- | --- | --- |
|  | WL | **Wall Finishes** |  |  | 2012-12-19 | 2013-10-31 |  |  |  |  |  |  |  |  |
| HCFWB2Z6012 |  | B2 Z6 :Block Works |  | 10d | 2012-12-19 | 2012-12-30 | HCSWB2Z1240 | 203.25d | 0d | B2 | 04 | MC | C | FI |
| HCFWB2Z6007 |  | B2 Z6 :Plaster First Layer |  | 8.75d | 2013-06-12 | 2013-06-23 | HCFWB2Z6012, HCFWB2Z5007 SS | 66.75d | 0d | B2 | 09 | MC | C | FI |
| HCFWB2Z6008 |  | B2 Z6 :Plaster Second Layer |  | 8d | 2013-06-23 | 2013-07-02 | HCFWB2Z6007 | 66.75d | 0d | B2 | 09 | MC | C | FI |
| HCFWB2Z6009 |  | B2 Z6 :Plaster Final Layer |  | 8.75d | 2013-07-02 | 2013-07-11 | HCFWB2Z6008 | 66.75d | 0d | B2 | 09 | MC | C | FI |
| HCFWB2Z6010 |  | B2 Z6 :Paint First Layer |  | 12d | 2013-09-29 | 2013-10-13 | HCFWB2Z6003 | 179.75d | 0d | B2 | 09 | MC | C | FI |
| HCFWB2Z6011 |  | B2 Z6 :Paint Final Layer |  | 12d | 2013-10-13 | 2013-10-31 | HCFWB2Z6010 | 179.75d | 169.75d | B2 | 09 | MC | C | FI |
|  | CL | **Ceiling Finishes** |  |  | 2013-08-13 | 2013-10-27 |  |  |  |  |  |  |  |  |
| HCFWB2Z6013 |  | B2 Z6 :Plaster First Layer |  | 8.75d | 2013-08-13 | 2013-08-22 | HCFWB2Z6002 | 66.75d | 0d | B2 | 09 | MC | C | FI |
| HCFWB2Z6014 |  | B2 Z6 :Plaster Second Layer |  | 8d | 2013-08-22 | 2013-09-01 | HCFWB2Z6013 | 66.75d | 0d | B2 | 09 | MC | C | FI |
| HCFWB2Z6015 |  | B2 Z6 :Plaster Final Layer |  | 15.5d | 2013-09-01 | 2013-09-19 | HCFWB2Z6014 | 66.75d | 0d | B2 | 09 | MC | C | FI |
| HCFWB2Z6016 |  | B2 Z6 :Paint First Layer |  | 10d | 2013-09-29 | 2013-10-10 | HCFWB2Z6003 | 93.75d | 0d | B2 | 09 | MC | C | FI |
| HCFWB2Z6017 |  | B2 Z6 :Paint Final Layer |  | 10d | 2013-10-10 | 2013-10-27 | HCFWB2Z6016 | 173.75d | 0d | B2 | 09 | MC | C | FI |
|  | MS | **Miscellaneous** |  |  | 2013-10-10 | 2013-11-18 |  |  |  |  |  |  |  |  |
| HCFWB2Z6020 |  | B2 Z6 :Steel Fire Rated Doors |  | 10d | 2013-10-10 | 2013-10-27 | HCFWB2Z6016, HCFWB3Z6020 | 93.75d | 0d | B2 | 08 | MC | C | FI |
| HCFWB2Z6018 |  | B2 Z6 :Metal Works & Gutters |  | 10d | 2013-11-07 | 2013-11-18 | HCFWB2Z5018 SS, HCFWB3Z6018 | 65d | 0d | B2 | 05 | MC | C | FI |
| HCFWB2Z6019 |  | B2 Z6 :Steel Doors |  | 10d | 2013-11-07 | 2013-11-18 | HCFWB2Z6020 SS, HCFWB2Z6018 SS, HCFWB3Z6019 | 75d | 0d | B2 | 08 | MC | C | FI |
| HCFWB2Z6021 |  | B2 Z6 :Wooden Doors |  | 10d | 2013-11-07 | 2013-11-18 | HCFWB2Z6019 SS | 165d | 155d | B2 | 08 | MC | C | FI |
|  | B1 | **Basement 1 - Service & Technical** |  |  | 2013-01-30 | 2014-03-24 |  |  |  |  |  |  |  |  |
| HCFWB10000 |  | Start Finishing Works B1 | milestone | 0d | 2013-01-30 | 2013-01-30 | HCSWB1Z1240 | 40d | 4d | B2 |  | MC | C | FI |
| HCFWB10001 |  | End Finishing Works B1 | milestone | 0d | 2014-03-24 | 2014-03-24 | HCFWB1Z1022, HCFWB1Z1005, HCFWB1Z1010, HCFWB1Z1017, HCFWB1Z1021, HCFWB1Z2005, HCFWB1Z2010, HCFWB1Z2017, HCFWB1Z2022, HCFWB1Z2021, HCFWB1Z3008, HCFWB1Z3006, HCFWB1Z3007, HCFWB1Z3010, HCFWB1Z3012, HCFWB1Z3019, HCFWB1Z3022, HCFWB1Z3028, HCFWB1Z3035, HCFWB1Z3037, HCFWB1Z3033, HCFWB1Z4005, HCFWB1Z4006, HCFWB1Z4015, HCFWB1Z4013, HCFWB1Z4021, HCFWB1Z4029, HCFWB1Z4030, HCFWB1Z4026, HCFWB1Z5007, HCFWB1Z5006, HCFWB1Z5014, HCFWB1Z5020, HCFWB1Z5025, HCFWB1Z5029, HCFWB1Z5026, HCFWB1Z6007, HCFWB1Z6016, HCFWB1Z6022, HCFWB1Z6027, HCFWB1Z6027 FF, HCFWB1Z6026, HCFWB1Z6037, HCMEB1Z1255, HCMEB1Z2260, HCMEB1Z3265, HCMEB1Z4270, HCMEB1Z5275, HCMEB1Z5395, HCMEB1Z6280, HCFWB1Z3052, HCFWB1Z3042 | 20.5d | 0d | B2 |  | MC | C | FI |
|  | Z1 | **Zone 1** |  |  | 2013-02-04 | 2014-01-08 |  |  |  |  |  |  |  |  |
|  | FL | **Floor Finishes** |  |  | 2013-03-17 | 2013-12-19 |  |  |  |  |  |  |  |  |
| HCFWB1Z1001 |  | B1 Z1 :Foam Concrete Under Floorings |  | 16d | 2013-03-17 | 2013-04-04 | HCFWB1Z1008 | 69.25d | 0d | B2 | 07 | MC | C | FI |
| HCFWB1Z1002 |  | B1 Z1 :Trawelled smooth Concrete screed |  | 8d | 2013-04-04 | 2013-04-14 | HCFWB1Z1001 | 69.25d | 0d | B2 | 03 | MC | C | FI |
| HCFWB1Z1003 |  | B1 Z1 :Sealed Concrete |  | 8d | 2013-05-22 | 2013-06-02 | HCFWB1Z1014 | 148.25d | 0d | B2 | 03 | MC | C | FI |
| HCFWB1Z1004 |  | B1 Z1 :Rubber Flooring |  | 10d | 2013-05-22 | 2013-06-04 | HCFWB1Z1014 | 69.25d | 0d | B2 | 09 | MC | C | FI |
| HCFWB1Z1005 |  | B1 Z1 :Rubber Skirting |  | 2d | 2013-12-18 | 2013-12-19 | HCFWB1Z1004, HCFWB2Z6006 | 26d | 0d | B2 | 09 | MC | C | FI |

| ID | WBS | Activity | Duration | Start | Finish | Predecessors | Total float | Free float | Bill No. | Division No. | Responsibility | Phase Code | Trade |
| --- | --- | --- | --- | --- | --- | --- | --- | --- | --- | --- | --- | --- | --- |
|  | WL | **Wall Finishes** |  | 2013-02-04 | 2013-07-27 |  |  |  |  |  |  |  |  |
| HCFWB1Z1011 |  | B1 Z1 :Block Works | 10d | 2013-02-04 | 2013-02-14 | HCFWB10000, HCSWB1Z1240, HCFWB2Z1012, HCSWB1RA050 | 36d | 0d | B2 | 04 | MC | C | FI |
| HCFWB1Z1006 |  | B1 Z1 :Plaster First Layer | 8.75d | 2013-02-16 | 2013-02-25 | HCFWB1Z1011 | 69.25d | 0d | B2 | 09 | MC | C | FI |
| HCFWB1Z1031 |  | B1 Z1: Gybsum board partitions | 10d | 2013-02-16 | 2013-02-26 | HCFWB1Z1011 | 49.25d | 0d |  |  |  |  |  |
| HCFWB1Z1007 |  | B1 Z1 :Plaster Second Layer | 8d | 2013-02-25 | 2013-03-06 | HCFWB1Z1006 | 69.25d | 0d | B2 | 09 | MC | C | FI |
| HCFWB1Z1008 |  | B1 Z1 :Plaster Final Layer | 8.75d | 2013-03-06 | 2013-03-17 | HCFWB1Z1007 | 69.25d | 0d | B2 | 09 | MC | C | FI |
| HCFWB1Z1009 |  | B1 Z1 :Paint First Layer | 12d | 2013-06-02 | 2013-06-16 | HCFWB1Z1003 | 148.25d | 0d | B2 | 09 | MC | C | FI |
| HCFWB1Z1010 |  | B1 Z1 :Paint Final Layer | 12d | 2013-07-14 | 2013-07-27 | HCFWB1Z1009, HCFWB2Z1011 | 167d | 122d | B2 | 09 | MC | C | FI |
|  | 1 | **Ceiling Finishes** |  | 2013-04-14 | 2013-12-12 |  |  |  |  |  |  |  |  |
| HCFWB1Z1012 |  | B1 Z1 :Plaster First Layer | 8.75d | 2013-04-14 | 2013-04-24 | HCFWB1Z1002 | 69.25d | 0d | B2 | 09 | MC | C | FI |
| HCFWB1Z1013 |  | B1 Z1 :Plaster Second Layer | 8d | 2013-04-24 | 2013-05-05 | HCFWB1Z1012 | 69.25d | 0d | B2 | 09 | MC | C | FI |
| HCFWB1Z1014 |  | B1 Z1 :Plaster Final Layer | 15.5d | 2013-05-05 | 2013-05-22 | HCFWB1Z1013 | 69.25d | 0d | B2 | 09 | MC | C | FI |
| HCFWB1Z1015 |  | B1 Z1 :Paint First Layer | 10d | 2013-06-16 | 2013-06-27 | HCFWB1Z1009 | 148.25d | 0d | B2 | 09 | MC | C | FI |
| HCFWB1Z1016 |  | B1 Z1 :Paint Final Layer | 10d | 2013-06-27 | 2013-07-09 | HCFWB1Z1015 | 148.25d | 112.25d | B2 | 09 | MC | C | FI |
| HCFWB1Z1017 |  | B1 Z1 :Gybsum Board Ceiling | 14d | 2013-11-27 | 2013-12-12 | HCFWB1Z1016, HCFWB2Z1018 | 36d | 0d | B2 | 09 | MC | C | FI |
|  | MS | **Miscellaneous** |  | 2013-12-09 | 2014-01-08 |  |  |  |  |  |  |  |  |
| HCFWB1Z1018 |  | B1 Z1 :Metal Works | 10d | 2013-12-09 | 2013-12-19 | HCFWB10000, HCFWB1Z1015, HCFWB2Z1019, HCFWB2Z1019 FF | 26d | 0d | B2 | 05 | MC | C | FI |
| HCFWB1Z1020 |  | B1 Z1 :Steel Fire Rated Doors | 10d | 2013-12-09 | 2013-12-19 | HCFWB1Z1015, HCFWB2Z1021 | 53d | 0d | B2 | 08 | MC | C | FI |
| HCFWB1Z1022 |  | B1 Z1 :Handrails & Railling | 15d | 2013-12-15 | 2014-01-02 | HCFWB1Z1018 SS, HCFWB2Z1023 | 28d | 0d | B2 |  | MC | C | FI |
| HCFWB1Z1019 |  | B1 Z1 :Steel Doors | 10d | 2013-12-21 | 2014-01-02 | HCFWB1Z1020 SS, HCFWB1Z1018, HCFWB2Z1020 | 43d | 0d | B2 | 08 | MC | C | FI |
| HCFWB1Z1021 |  | B1 Z1 :Wooden & Glass Doors & Partitions | 15d | 2013-12-21 | 2014-01-08 | HCFWB1Z1019 SS, HCFWB2Z1022 | 43d | 0d | B2 | 08 | MC | C | FI |
|  | Z2 | **Zone 2** |  | 2013-02-21 | 2014-01-15 |  |  |  |  |  |  |  |  |
|  | FL | **Floor Finishes** |  | 2013-04-09 | 2013-12-22 |  |  |  |  |  |  |  |  |
| HCFWB1Z2001 |  | B1 Z2 :Foam Concrete Under Floorings | 16d | 2013-04-09 | 2013-04-28 | HCFWB1Z2008 | 49.25d | 0d | B2 | 07 | MC | C | FI |
| HCFWB1Z2002 |  | B1 Z2 :Trawelled smooth Concrete screed | 8d | 2013-04-28 | 2013-05-08 | HCFWB1Z2001 | 49.25d | 0d | B2 | 03 | MC | C | FI |
| HCFWB1Z2003 |  | B1 Z2 :Sealed Concrete | 8d | 2013-06-16 | 2013-06-25 | HCFWB1Z2014 | 116.25d | 0d | B2 | 03 | MC | C | FI |
| HCFWB1Z2004 |  | B1 Z2 :Rubber Flooring | 10d | 2013-06-16 | 2013-06-27 | HCFWB1Z2014 | 49.25d | 0d | B2 | 09 | MC | C | FI |
| HCFWB1Z2005 |  | B1 Z2 :Rubber Skirting | 2d | 2013-12-21 | 2013-12-22 | HCFWB1Z2004, HCFWB1Z1005 | 26d | 0d | B2 | 09 | MC | C | FI |

| ID | WBS | Activity | Duration | Start | Finish | Predecessors | Total float | Free float | Bill No. | Division No. | Responsibility | Phase Code | Trade |
| --- | --- | --- | --- | --- | --- | --- | --- | --- | --- | --- | --- | --- | --- |
|  | WL | **Wall Finishes** |  | 2013-02-21 | 2013-07-23 |  |  |  |  |  |  |  |  |
| HCFWB1Z2011 |  | B1 Z2 :Block Works | 10d | 2013-02-21 | 2013-03-04 | HCFWB1Z1011 SS, HCSWB1Z2240, HCFWB2Z2013 | 54.25d | 0d | B2 | 04 | MC | C | FI |
| HCFWB1Z2037 |  | B1 Z2: Gybsum board partitions | 10d | 2013-02-27 | 2013-03-10 | HCFWB1Z1031 | 49.25d | 0d |  |  |  |  |  |
| HCFWB1Z2006 |  | B1 Z2 :Plaster First Layer | 8.75d | 2013-03-11 | 2013-03-20 | HCFWB1Z2011, HCFWB1Z2037 | 49.25d | 0d | B2 | 09 | MC | C | FI |
| HCFWB1Z2007 |  | B1 Z2 :Plaster Second Layer | 8d | 2013-03-20 | 2013-03-30 | HCFWB1Z2006 | 49.25d | 0d | B2 | 09 | MC | C | FI |
| HCFWB1Z2008 |  | B1 Z2 :Plaster Final Layer | 8.75d | 2013-03-30 | 2013-04-09 | HCFWB1Z2007 | 49.25d | 0d | B2 | 09 | MC | C | FI |
| HCFWB1Z2009 |  | B1 Z2 :Paint First Layer | 12d | 2013-06-25 | 2013-07-09 | HCFWB1Z2003, HCFWB2Z2012 | 116.25d | 0d | B2 | 09 | MC | C | FI |
| HCFWB1Z2010 |  | B1 Z2 :Paint Final Layer | 12d | 2013-07-09 | 2013-07-23 | HCFWB1Z2009 | 116.25d | 0d | B2 | 09 | MC | C | FI |
|  | 1 | **Ceiling Finishes** |  | 2013-05-08 | 2013-12-11 |  |  |  |  |  |  |  |  |
| HCFWB1Z2012 |  | B1 Z2 :Plaster First Layer | 8.75d | 2013-05-08 | 2013-05-19 | HCFWB1Z2002 | 49.25d | 0d | B2 | 09 | MC | C | FI |
| HCFWB1Z2013 |  | B1 Z2 :Plaster Second Layer | 8d | 2013-05-19 | 2013-05-29 | HCFWB1Z2012 | 49.25d | 0d | B2 | 09 | MC | C | FI |
| HCFWB1Z2014 |  | B1 Z2 :Plaster Final Layer | 15.5d | 2013-05-29 | 2013-06-16 | HCFWB1Z2013 | 49.25d | 0d | B2 | 09 | MC | C | FI |
| HCFWB1Z2015 |  | B1 Z2 :Paint First Layer | 10d | 2013-07-23 | 2013-08-04 | HCFWB1Z2009, HCFWB1Z2010 | 116.25d | 0d | B2 | 09 | MC | C | FI |
| HCFWB1Z2016 |  | B1 Z2 :Paint Final Layer | 10d | 2013-08-04 | 2013-08-19 | HCFWB1Z2015 | 116.25d | 79.25d | B2 | 09 | MC | C | FI |
| HCFWB1Z2017 |  | B1 Z2 :Gybsum Board Ceiling | 14d | 2013-11-26 | 2013-12-11 | HCFWB1Z2016, HCFWB2Z2019 | 37d | 0d | B2 | 09 | MC | C | FI |
|  | MS | **Mecellanuos** |  | 2013-11-25 | 2014-01-15 |  |  |  |  |  |  |  |  |
| HCFWB1Z2020 |  | B1 Z2 :Steel Fire Rated Doors | 10d | 2013-11-25 | 2013-12-05 | HCFWB1Z2015, HCFWB2Z2022 | 70d | 0d | B2 | 08 | MC | C | FI |
| HCFWB1Z2018 |  | B1 Z2 :Metal Works | 10d | 2013-12-21 | 2014-01-02 | HCFWB1Z1018, HCFWB2Z2020 | 26d | 0d | B2 | 05 | MC | C | FI |
| HCFWB1Z2022 |  | B1 Z2 :Handrails & Railling | 15d | 2013-12-21 | 2014-01-08 | HCFWB1Z2018 SS, HCFWB2Z2024 | 26d | 0d | B2 |  | MC | C | FI |
| HCFWB1Z2019 |  | B1 Z2 :Steel Doors | 10d | 2014-01-04 | 2014-01-15 | HCFWB1Z2020 SS, HCFWB1Z2018, HCFWB2Z2021 | 38d | 0d | B2 | 08 | MC | C | FI |
| HCFWB1Z2021 |  | B1 Z2 :Wooden Doors | 10d | 2014-01-04 | 2014-01-15 | HCFWB1Z2019 SS, HCFWB2Z2023 | 48d | 0d | B2 | 08 | MC | C | FI |
|  | Z3 | **Zone 3** |  | 2013-02-21 | 2014-01-29 |  |  |  |  |  |  |  |  |
|  | FL | **Floor Finishes** |  | 2013-06-02 | 2014-01-05 |  |  |  |  |  |  |  |  |
| HCFWB1Z3001 |  | B1 Z3 :Foam Concrete Under Floorings | 16d | 2013-06-02 | 2013-06-19 | HCFWB1Z3016 | 82.25d | 0d | B2 | 07 | MC | C | FI |
| HCFWB1Z3002 |  | B1 Z3 :Trawelled smooth Concrete screed | 8d | 2013-06-20 | 2013-06-29 | HCFWB1Z3001 | 82.25d | 0d | B2 | 03 | MC | C | FI |
| HCFWB1Z3008 |  | B1 Z3 :Epoxy Screed Finish | 10d | 2013-06-30 | 2013-07-10 | HCFWB1Z3002 | 229d | 208.5d | B2 |  | MC | C | FI |
| HCFWB1Z3004 |  | B1 Z3 :Sealed Concrete | 8d | 2013-07-28 | 2013-08-06 | HCFWB1Z3025 | 82.25d | 0d | B2 | 03 | MC | C | FI |
| HCFWB1Z3005 |  | B1 Z3 :Rubber Flooring | 10d | 2013-07-28 | 2013-08-12 | HCFWB1Z3025 | 134.25d | 0d | B2 | 09 | MC | C | FI |
| HCFWB1Z3007 |  | B1 Z3 :Stone Flooring All types | 12d | 2013-07-28 | 2013-08-14 | HCFWB1Z3005 SS | 142.25d | 0d | B2 | 09 | MC | C | FI |
| HCFWB1Z3006 |  | B1 Z3 :Carpet Tile Flooring | 10d | 2013-12-05 | 2013-12-16 | HCFWB1Z3005 SS, HEPSAFI0210 FF | 101d | 0d | B2 | 09 | MC | C | FI |
| HCFWB1Z3042 |  | B1 Z3 :Wood Flooring | 10d | 2013-12-05 | 2013-12-16 | HCFWB1Z3006 SS, HCFWB1Z3006 FF | 101d | 80.5d |  |  |  |  |  |
| HCFWB1Z3009 |  | B1 Z3 :Rubber Skirting | 2d | 2013-12-23 | 2013-12-24 | HCFWB1Z3005, HCFWB1Z2005 | 26d | 0d | B2 | 09 | MC | C | FI |
| HCFWB1Z3010 |  | B1 Z3 :Aluminum & Stainless Steel Skirting | 10d | 2013-12-23 | 2014-01-05 | HCFWB1Z3009 SS | 86d | 65.5d | B2 | 09 | MC | C | FI |
| HCFWB1Z3011 |  | B1 Z3 :Wooden Base Skirting | 10d | 2013-12-23 | 2014-01-05 | HCFWB1Z3009 SS, HCFWB2Z3024 | 26d | 0d | B2 | 06 | MC | C | FI |
| HCFWB1Z3012 |  | B1 Z3 :Stone Base Skirting | 10d | 2013-12-23 | 2014-01-05 | HCFWB1Z3011 SS | 86d | 65.5d | B2 | 09 | MC | C | FI |

| ID | WBS | Activity | Duration | Start | Finish | Predecessors | Total float | Free float | Bill No. | Division No. | Responsibility | Phase Code | Trade |
| --- | --- | --- | --- | --- | --- | --- | --- | --- | --- | --- | --- | --- | --- |
|  | WL | **Wall Finishes** |  | 2013-02-21 | 2014-01-18 |  |  |  |  |  |  |  |  |
| HCFWB1Z3013 |  | B1 Z3 :Block Works | 14d | 2013-02-21 | 2013-03-09 | HCFWB1Z2011 SS, HCSWB1Z3240, HCFWB2Z3015, HCSWB1RA050 | 83d | 0d | B2 | 04 | MC | C | FI |
| HCFWB1Z3014 |  | B1 Z3 :Plaster First Layer | 8.75d | 2013-05-02 | 2013-05-12 | HCFWB1Z3013, HCFWB2Z3011 | 82.25d | 0d | B2 | 09 | MC | C | FI |
| HCFWB1Z3015 |  | B1 Z3 :Plaster Second Layer | 8d | 2013-05-13 | 2013-05-21 | HCFWB1Z3014 | 82.25d | 0d | B2 | 09 | MC | C | FI |
| HCFWB1Z3016 |  | B1 Z3 :Plaster Final Layer | 8d | 2013-05-22 | 2013-06-01 | HCFWB1Z3015 | 82.25d | 0d | B2 | 09 | MC | C | FI |
| HCFWB1Z3017 |  | B1 Z3 :Paint First Layer | 12d | 2013-08-06 | 2013-08-24 | HCFWB1Z3004, HCFWB2Z3013 | 82.25d | 0d | B2 | 09 | MC | C | FI |
| HCFWB1Z3018 |  | B1 Z3 :Paint Final Layer | 12d | 2013-08-24 | 2013-09-07 | HCFWB1Z3017 | 82.25d | 0d | B2 | 09 | MC | C | FI |
| HCFWB1Z3019 |  | B1 Z3 :Epoxy Wall Paint | 10d | 2013-08-24 | 2013-09-04 | HCFWB1Z3018 SS | 184.25d | 163.75d | B2 | 09 | MC | C | FI |
| HCFWB1Z3020 |  | B1 Z3 :Stainless steel Wire Cloth Finish For Elev Lobby | 10d | 2013-08-24 | 2013-09-04 | HCFWB1Z3018 SS | 134.25d | 0d | B2 | 08 | MC | C | FI |
| HCFWB1Z3021 |  | B1 Z3 :Glass Wall Tile & Laminated Taupe | 10d | 2013-08-24 | 2013-09-04 | HCFWB1Z3020 SS | 134.25d | 108.25d | B2 | 09 | MC | C | FI |
| HCFWB1Z3055 |  | B1 Z3: Gybsum board partitions | 10d | 2013-12-12 | 2013-12-23 | HCFWB1Z2017 | 65d | 0d |  |  |  |  |  |
| HCFWB1Z3022 |  | B1 Z3 :Wooden Wall Covering | 10d | 2014-01-06 | 2014-01-18 | HCFWB1Z3021 SS, HCFWB1Z3011 | 26d | 0d | B2 | 09 | MC | C | FI |
| HCFWB1Z3052 |  | B1 Z3: Wall paper cover | 10d | 2014-01-06 | 2014-01-18 | HCFWB1Z3022 SS, HCFWB1Z3022 FF | 76d | 55.5d |  |  |  |  |  |
|  | CL | **Ceiling Finishes** |  | 2013-06-30 | 2013-12-11 |  |  |  |  |  |  |  |  |
| HCFWB1Z3023 |  | B1 Z3 :Plaster First Layer | 8.75d | 2013-06-30 | 2013-07-09 | HCFWB1Z3002, HCFWB2Z3018, HCFWB1Z3016 | 82.25d | 0d | B2 | 09 | MC | C | FI |
| HCFWB1Z3024 |  | B1 Z3 :Plaster Second Layer | 8d | 2013-07-09 | 2013-07-18 | HCFWB1Z3023 | 82.25d | 0d | B2 | 09 | MC | C | FI |
| HCFWB1Z3025 |  | B1 Z3 :Plaster Final Layer | 8d | 2013-07-18 | 2013-07-28 | HCFWB1Z3024 | 82.25d | 0d | B2 | 09 | MC | C | FI |
| HCFWB1Z3026 |  | B1 Z3 :Paint First Layer | 10d | 2013-09-07 | 2013-09-18 | HCFWB1Z3017, HCFWB1Z3018 | 84.25d | 0d | B2 | 09 | MC | C | FI |
| HCFWB1Z3027 |  | B1 Z3 :Paint Final Layer | 10d | 2013-09-18 | 2013-09-30 | HCFWB1Z3026 | 84.25d | 43.25d | B2 | 09 | MC | C | FI |
| HCFWB1Z3029 |  | B1 Z3 :Acoustical Ceiling | 10d | 2013-09-18 | 2013-09-30 | HCFWB1Z3026 | 94.25d | 53.25d | B2 | 09 | MC | C | FI |
| HCFWB1Z3028 |  | B1 Z3 :Gybsum Board Ceiling | 14d | 2013-11-26 | 2013-12-11 | HCFWB1Z3027, HCFWB1Z3029 SS, HCFWB2Z3021 | 41d | 0d | B2 | 09 | MC | C | FI |
|  | MS | **Mecellanuos** |  | 2013-09-28 | 2014-01-29 |  |  |  |  |  |  |  |  |
| HCFWB1Z3032 |  | B1 Z3 :Steel Fire Rated Doors | 10d | 2013-09-28 | 2013-10-08 | HCFWB1Z3026, HCFWB2Z3025 | 115d | 6.75d | B2 | 08 | MC | C | FI |
| HCFWB1Z3030 |  | B1 Z3 :Metal Works | 10d | 2013-11-19 | 2013-11-30 | HCFWB1Z3026, HCFWB2Z3022, HCFWB2Z3022 FF | 50d | 0d | B2 | 05 | MC | C | FI |
| HCFWB1Z3034 |  | B1 Z3 :Handrails & Railling | 15d | 2013-11-25 | 2013-12-11 | HCFWB1Z3030 SS, HCFWB2Z3026 | 45d | 0d | B2 |  | MC | C | FI |
| HCFWB1Z3035 |  | B1 Z3 :Stone Decoration For Benches | 10d | 2013-11-25 | 2013-12-05 | HCFWB1Z3034 SS | 110d | 89.5d | B2 |  | MC | C | FI |
| HCFWB1Z3036 |  | B1 Z3 :Mirror | 10d | 2013-11-25 | 2013-12-05 | HCFWB1Z3034 SS | 110d | 0d | B2 | 08 | MC | C | FI |
| HCFWB1Z3037 |  | B1 Z3 :Toilet & corian vanity tops | 10d | 2013-11-25 | 2013-12-05 | HCFWB1Z3036 SS, HEPSAFI0270 | 110d | 89.5d | B2 | 10 | MC | C | FI |
| HCFWB1Z3031 |  | B1 Z3 :Steel Doors | 10d | 2013-12-01 | 2013-12-11 | HCFWB1Z3032 SS, HCFWB1Z3030, HCFWB2Z3023 | 65d | 0d | B2 | 08 | MC | C | FI |
| HCFWB1Z3033 |  | B1 Z3 :Wooden Doors | 10d | 2014-01-19 | 2014-01-29 | HCFWB1Z3031 SS, HCFWB1Z3022 | 26d | 0d | B2 | 08 | MC | C | FI |

| ID | WBS | Activity | Duration | Start | Finish | Predecessors | Total float | Free float | Bill No. | Division No. | Responsibility | Phase Code | Trade |
| --- | --- | --- | --- | --- | --- | --- | --- | --- | --- | --- | --- | --- | --- |
|  | Z4 | **Zone 4** |  | 2013-03-16 | 2014-02-03 |  |  |  |  |  |  |  |  |
|  | FL | **Floor Finishes** |  | 2013-08-07 | 2014-01-07 |  |  |  |  |  |  |  |  |
| HCFWB1Z4001 |  | B1 Z4 :Foam Concrete Under Floorings | 16d | 2013-08-07 | 2013-08-29 | HCFWB1Z4011 | 39d | 0d | B2 | 07 | MC | C | FI |
| HCFWB1Z4002 |  | B1 Z4 :Trawelled smooth Concrete screed | 8d | 2013-08-29 | 2013-09-08 | HCFWB1Z4001 | 39d | 0d | B2 | 03 | MC | C | FI |
| HCFWB1Z4003 |  | B1 Z4 :Sealed Concrete | 8d | 2013-10-21 | 2013-10-29 | HCFWB1Z4018 | 83d | 0d | B2 | 03 | MC | C | FI |
| HCFWB1Z4004 |  | B1 Z4 :Rubber Flooring | 10d | 2013-10-21 | 2013-10-31 | HCFWB1Z4018 | 39d | 0d | B2 | 09 | MC | C | FI |
| HCFWB1Z4005 |  | B1 Z4 :Carpet Tile Flooring | 10d | 2013-12-05 | 2013-12-16 | HCFWB1Z4004 SS, HEPSAFI0210 FF | 69d | 0d | B2 | 09 | MC | C | FI |
| HCFWB1Z4061 |  | B1 Z4 :Aluminum Base Skirting | 10d | 2013-12-17 | 2013-12-29 | HCFWB1Z4005 | 69d | 7d | B2 | 09 | MC | C | FI |
| HCFWB1Z4006 |  | B1 Z4 :Wooden Base Skirting | 10d | 2013-12-26 | 2014-01-07 | HCFWB1Z4007 SS, HCFWB1Z4061 SS, HCFWB2Z4022 | 62d | 0d | B2 | 06 | MC | C | FI |
| HCFWB1Z4007 |  | B1 Z4 :Rubber Skirting | 2d | 2013-12-26 | 2013-12-28 | HCFWB1Z4004, HCFWB1Z3009 | 62d | 0d | B2 | 09 | MC | C | FI |
|  | WL | **Wall Finishes** |  | 2013-03-16 | 2014-02-03 |  |  |  |  |  |  |  |  |
| HCFWB1Z4008 |  | B1 Z4 :Block Works | 10d | 2013-03-16 | 2013-03-26 | HCFWB1Z3013 SS, HCSWB1Z4240, HCFWB2Z4012 | 126.25d | 0d | B2 | 04 | MC | C | FI |
| HCFWB1Z4009 |  | B1 Z4 :Plaster First Layer | 8.75d | 2013-07-09 | 2013-07-18 | HCFWB1Z4008, HCFWB2Z4015 | 39d | 0d | B2 | 09 | MC | C | FI |
| HCFWB1Z4010 |  | B1 Z4 :Plaster Second Layer | 8d | 2013-07-20 | 2013-07-28 | HCFWB1Z4009 | 39d | 0d | B2 | 09 | MC | C | FI |
| HCFWB1Z4011 |  | B1 Z4 :Plaster Final Layer | 8.75d | 2013-07-29 | 2013-08-07 | HCFWB1Z4010 | 39d | 0d | B2 | 09 | MC | C | FI |
| HCFWB1Z4012 |  | B1 Z4 :Paint First Layer | 12d | 2013-10-30 | 2013-11-13 | HCFWB1Z4003 | 83d | 0d | B2 | 09 | MC | C | FI |
| HCFWB1Z4014 |  | B1 Z4 :Glass Wall Tile & Laminated Taupe | 10d | 2013-12-08 | 2013-12-18 | HCFWB1Z4012, HEPSAFI0460 | 73d | 0d | B2 | 09 | MC | C | FI |
| HCFWB1Z4035 |  | B1 Z4 :Ceramic Wall Tiles | 10d | 2013-12-08 | 2013-12-18 | HCFWB1Z4014 SS | 73d | 0d |  |  |  |  |  |
| HCFWB1Z4037 |  | B1 Z4: Gybsum board partitions | 10d | 2013-12-24 | 2014-01-06 | HCFWB1Z3055 | 65d | 0d |  |  |  |  |  |
| HCFWB1Z4015 |  | B1 Z4 :Wooden Wall Covering | 10d | 2014-01-08 | 2014-01-20 | HCFWB1Z4014 SS, HCFWB1Z4012, HCFWB1Z4006 | 62d | 0d | B2 | 09 | MC | C | FI |
| HCFWB1Z4013 |  | B1 Z4 :Paint Final Layer | 12d | 2014-01-21 | 2014-02-03 | HCFWB1Z4012, HCFWB1Z4014, HCFWB1Z4015 | 62d | 41.5d | B2 | 09 | MC | C | FI |
|  | Cl | **Ceiling Finishes** |  | 2013-09-08 | 2014-01-06 |  |  |  |  |  |  |  |  |
| HCFWB1Z4016 |  | B1 Z4 :Plaster First Layer | 8.75d | 2013-09-08 | 2013-09-18 | HCFWB1Z4002, HCFWB1Z4011 | 39d | 0d | B2 | 09 | MC | C | FI |
| HCFWB1Z4017 |  | B1 Z4 :Plaster Second Layer | 8d | 2013-09-18 | 2013-09-28 | HCFWB1Z4016 | 39d | 0d | B2 | 09 | MC | C | FI |
| HCFWB1Z4018 |  | B1 Z4 :Plaster Final Layer | 15.5d | 2013-09-28 | 2013-10-20 | HCFWB1Z4017 | 39d | 0d | B2 | 09 | MC | C | FI |
| HCFWB1Z4019 |  | B1 Z4 :Paint First Layer | 10d | 2013-11-14 | 2013-11-25 | HCFWB1Z4012 | 83d | 0d | B2 | 09 | MC | C | FI |
| HCFWB1Z4020 |  | B1 Z4 :Paint Final Layer | 10d | 2013-11-26 | 2013-12-07 | HCFWB1Z4019 | 83d | 10d | B2 | 09 | MC | C | FI |
| HCFWB1Z4022 |  | B1 Z4 :Acoustical Ceiling | 10d | 2013-11-26 | 2013-12-07 | HCFWB1Z4019 | 93d | 20d | B2 | 09 | MC | C | FI |
| HCFWB1Z4021 |  | B1 Z4 :Gybsum Board Ceiling | 14d | 2013-12-19 | 2014-01-06 | HCFWB1Z4020, HCFWB1Z4022 SS, HCFWB2Z4018, HCFWB1Z4035 | 73d | 0d | B2 | 09 | MC | C | FI |

| ID | WBS | Activity | Duration | Start | Finish | Predecessors | Total float | Free float | Bill No. | Division No. | Responsibility | Phase Code | Trade |
| --- | --- | --- | --- | --- | --- | --- | --- | --- | --- | --- | --- | --- | --- |
|  | MS | **Mecellanuos** |  | 2013-11-26 | 2014-02-01 |  |  |  |  |  |  |  |  |
| HCFWB1Z4023 |  | B1 Z4 :Metal Works | 10d | 2013-11-26 | 2013-12-07 | HCFWB1Z4019, HCFWB2Z4019, HCFWB2Z4019 FF | 99d | 0d | B2 | 05 | MC | C | FI |
| HCFWB1Z4025 |  | B1 Z4 :Steel Fire Rated Doors | 10d | 2013-11-26 | 2013-12-07 | HCFWB1Z4019, HCFWB2Z4021 | 109d | 0d | B2 | 08 | MC | C | FI |
| HCFWB1Z4027 |  | B1 Z4 :Handrails & Railling | 15d | 2013-11-26 | 2013-12-12 | HCFWB1Z4023 SS, HCFWB2Z4023 | 109d | 0d | B2 |  | MC | C | FI |
| HCFWB1Z4028 |  | B1 Z4 :Mirror | 10d | 2013-11-26 | 2013-12-07 | HCFWB1Z4027 SS | 109d | 0d | B2 | 08 | MC | C | FI |
| HCFWB1Z4029 |  | B1 Z4 :Toilet & corian vanity tops | 10d | 2013-11-26 | 2013-12-07 | HCFWB1Z4028 SS, HEPSAFI0270 | 109d | 88.5d | B2 | 10 | MC | C | FI |
| HCFWB1Z4030 |  | B1 Z4 :Stone Decoration For Benches | 10d | 2013-11-26 | 2013-12-07 | HCFWB1Z4027 SS | 109d | 88.5d | B2 |  | MC | C | FI |
| HCFWB1Z4024 |  | B1 Z4 :Steel Doors | 10d | 2013-12-08 | 2013-12-18 | HCFWB1Z4025 SS, HCFWB1Z4023 | 99d | 35d | B2 | 08 | MC | C | FI |
| HCFWB1Z4026 |  | B1 Z4 :Wooden Doors | 10d | 2014-01-21 | 2014-02-01 | HCFWB1Z4024 SS, HCFWB1Z4015 | 64d | 0d | B2 | 08 | MC | C | FI |
|  | Z5 | **Zone 5** |  | 2013-02-25 | 2014-02-18 |  |  |  |  |  |  |  |  |
|  | FL | **Floor Finishes** |  | 2013-10-12 | 2013-12-30 |  |  |  |  |  |  |  |  |
| HCFWB1Z5001 |  | B1 Z5 :Foam Concrete Under Floorings | 16d | 2013-10-12 | 2013-11-03 | HCFWB1Z5011 | 19.5d | 0d | B2 | 07 | MC | C | FI |
| HCFWB1Z5002 |  | B1 Z5 :Trawelled smooth Concrete screed | 8d | 2013-11-04 | 2013-11-13 | HCFWB1Z5001 | 19.5d | 0d | B2 | 03 | MC | C | FI |
| HCFWB1Z5003 |  | B1 Z5 :Epoxy Screed Finish | 10d | 2013-11-14 | 2013-11-25 | HCFWB1Z5002 | 63d | 25.5d | B2 |  | MC | C | FI |
| HCFWB1Z5004 |  | B1 Z5 :Sealed Concrete | 8d | 2013-12-14 | 2013-12-23 | HCFWB1Z5017, HCFWB1Z5003 SS | 37.5d | 0d | B2 | 03 | MC | C | FI |
| HCFWB1Z5005 |  | B1 Z5 :Rubber Flooring | 10d | 2013-12-14 | 2013-12-26 | HCFWB1Z5017 | 19.5d | 0d | B2 | 09 | MC | C | FI |
| HCFWB1Z5007 |  | B1 Z5 :Carpet Tile Flooring | 10d | 2013-12-14 | 2013-12-26 | HCFWB1Z5005 SS, HEPSAFI0210 FF | 93.5d | 73d | B2 | 09 | MC | C | FI |
| HCFWB1Z5006 |  | B1 Z5 :Rubber Skirting | 2d | 2013-12-29 | 2013-12-30 | HCFWB1Z5005, HCFWB1Z4007 | 90d | 0d | B2 | 09 | MC | C | FI |
|  | WL | **Wall Finishes** |  | 2013-02-25 | 2014-01-23 |  |  |  |  |  |  |  |  |
| HCFWB1Z5008 |  | B1 Z5 :Block Works | 10d | 2013-02-25 | 2013-03-07 | HCSWB1Z5240, HCFWB2Z5012 | 175d | 0d | B2 | 04 | MC | C | FI |
| HCFWB1Z5009 |  | B1 Z5 :Plaster First Layer | 8.75d | 2013-09-11 | 2013-09-22 | HCFWB1Z5008, HCFWB2Z5015 | 19.5d | 0d | B2 | 09 | MC | C | FI |
| HCFWB1Z5010 |  | B1 Z5 :Plaster Second Layer | 8d | 2013-09-22 | 2013-10-01 | HCFWB1Z5009 | 19.5d | 0d | B2 | 09 | MC | C | FI |
| HCFWB1Z5011 |  | B1 Z5 :Plaster Final Layer | 8.75d | 2013-10-01 | 2013-10-10 | HCFWB1Z5010 | 19.5d | 0d | B2 | 09 | MC | C | FI |
| HCFWB1Z5034 |  | B1 Z5 :Ceramic Wall Tiles | 10d | 2013-10-01 | 2013-10-13 | HCFWB1Z5010 | 125.75d | 88.25d |  |  |  |  |  |
| HCFWB1Z5012 |  | B1 Z5 :Paint First Layer | 12d | 2013-12-23 | 2014-01-08 | HCFWB1Z5004 | 37.5d | 0d | B2 | 09 | MC | C | FI |
| HCFWB1Z5037 |  | B1 Z5: Gybsum board partitions | 10d | 2014-01-07 | 2014-01-19 | HCFWB1Z4037 | 65d | 0d |  |  |  |  |  |
| HCFWB1Z5013 |  | B1 Z5 :Paint Final Layer | 12d | 2014-01-08 | 2014-01-23 | HCFWB1Z5012 | 73.5d | 0d | B2 | 09 | MC | C | FI |
| HCFWB1Z5014 |  | B1 Z5 :Epoxy Wall Paint | 10d | 2014-01-08 | 2014-01-21 | HCFWB1Z5013 SS | 73.5d | 53d | B2 | 09 | MC | C | FI |

| ID | WBS | Activity | Duration | Start | Finish | Predecessors | Total float | Free float | Bill No. | Division No. | Responsibility | Phase Code | Trade |
| --- | --- | --- | --- | --- | --- | --- | --- | --- | --- | --- | --- | --- | --- |
|  | CL | **Ceiling Finishes** |  | 2013-11-14 | 2014-02-18 |  |  |  |  |  |  |  |  |
| HCFWB1Z5015 |  | B1 Z5 :Plaster First Layer | 8.75d | 2013-11-14 | 2013-11-24 | HCFWB1Z5002, HCFWB1Z5011 | 19.5d | 0d | B2 | 09 | MC | C | FI |
| HCFWB1Z5016 |  | B1 Z5 :Plaster Second Layer | 8d | 2013-11-24 | 2013-12-03 | HCFWB1Z5015 | 19.5d | 0d | B2 | 09 | MC | C | FI |
| HCFWB1Z5017 |  | B1 Z5 :Plaster Final Layer | 8.75d | 2013-12-03 | 2013-12-14 | HCFWB1Z5016 | 19.5d | 0d | B2 | 09 | MC | C | FI |
| HCFWB1Z5018 |  | B1 Z5 :Paint First Layer | 10d | 2014-01-08 | 2014-01-21 | HCFWB1Z5012 | 37.5d | 0d | B2 | 09 | MC | C | FI |
| HCFWB1Z5019 |  | B1 Z5 :Paint Final Layer | 10d | 2014-01-21 | 2014-02-02 | HCFWB1Z5018 | 37.5d | 0d | B2 | 09 | MC | C | FI |
| HCFWB1Z5021 |  | B1 Z5 :Acoustical Ceiling | 10d | 2014-01-21 | 2014-02-02 | HCFWB1Z5018 | 47.5d | 10d | B2 | 09 | MC | C | FI |
| HCFWB1Z5020 |  | B1 Z5 :Gybsum Board Ceiling | 14d | 2014-02-02 | 2014-02-18 | HCFWB1Z5019, HCFWB1Z5021 SS, HEPSAFI0160, HCFWB1Z5034 | 37.5d | 0d | B2 | 09 | MC | C | FI |
|  | MS | **Mecellanuos** |  | 2014-01-21 | 2014-02-13 |  |  |  |  |  |  |  |  |
| HCFWB1Z5022 |  | B1 Z5 :Metal Works | 10d | 2014-01-21 | 2014-02-02 | HCFWB1Z5018, HCFWB2Z5018 | 53.5d | 0d | B2 | 05 | MC | C | FI |
| HCFWB1Z5023 |  | B1 Z5 :Steel Fire Rated Doors | 10d | 2014-01-21 | 2014-02-02 | HCFWB1Z5018, HCFWB2Z5020 | 63.5d | 0d | B2 | 08 | MC | C | FI |
| HCFWB1Z5025 |  | B1 Z5 :Stone Decoration For Benches | 10d | 2014-01-21 | 2014-02-02 | HCFWB1Z5027 SS | 63.5d | 43d | B2 |  | MC | C | FI |
| HCFWB1Z5027 |  | B1 Z5 :Handrails & Railling | 15d | 2014-01-21 | 2014-02-08 | HCFWB1Z5022 SS, HEPSAAL0020 | 58.5d | 0d | B2 |  | MC | C | FI |
| HCFWB1Z5028 |  | B1 Z5 :Mirror | 10d | 2014-01-21 | 2014-02-02 | HCFWB1Z5027 SS | 63.5d | 0d | B2 | 08 | MC | C | FI |
| HCFWB1Z5029 |  | B1 Z5 :Toilet & corian vanity tops | 10d | 2014-01-21 | 2014-02-02 | HCFWB1Z5028 SS, HEPSAFI0270 | 63.5d | 43d | B2 | 10 | MC | C | FI |
| HCFWB1Z5024 |  | B1 Z5 :Steel Doors | 10d | 2014-02-02 | 2014-02-13 | HCFWB1Z5023 SS, HCFWB1Z5022, HCFWB2Z5019 | 53.5d | 0d | B2 | 08 | MC | C | FI |
| HCFWB1Z5026 |  | B1 Z5 :Wooden Doors | 10d | 2014-02-02 | 2014-02-13 | HCFWB1Z5024 SS | 53.5d | 33d | B2 | 08 | MC | C | FI |
|  | Z6 | **Zone 6** |  | 2013-04-02 | 2014-01-30 |  |  |  |  |  |  |  |  |
|  | FL | **Floor Finishes** |  | 2013-05-14 | 2013-12-29 |  |  |  |  |  |  |  |  |
| HCFWB1Z6001 |  | B1 Z6 :B1 Z6 :Foam Concrete Under Floorings | 16d | 2013-05-14 | 2013-06-03 | HCFWB1Z6011 | 131.25d | 0d | B2 | 07 | MC | C | FI |
| HCFWB1Z6002 |  | B1 Z6 :B1 Z6 :Trawelled smooth Concrete screed | 8d | 2013-06-03 | 2013-06-12 | HCFWB1Z6001 | 131.25d | 0d | B2 | 03 | MC | C | FI |
| HCFWB1Z6005 |  | B1 Z6 :B1 Z6 :Epoxy Screed Finish | 10d | 2013-06-12 | 2013-06-24 | HCFWB1Z6002 | 163.5d | 0d | B2 |  | MC | C | FI |
| HCFWB1Z6003 |  | B1 Z6 :B1 Z6 :Sealed Concrete | 8d | 2013-07-20 | 2013-07-29 | HCFWB1Z6019, HCFWB1Z6005 SS | 131.25d | 0d | B2 | 03 | MC | C | FI |
| HCFWB1Z6004 |  | B1 Z6 :B1 Z6 :Carpet Tile Flooring | 10d | 2013-12-05 | 2013-12-16 | HCFWB1Z6005 SS, HCFWB1Z6002, HEPSAFI0210 FF | 91d | 0d | B2 | 09 | MC | C | FI |
| HCFWB1Z6006 |  | B1 Z6 :B1 Z6 :Wooden Base Skirting | 10d | 2013-12-17 | 2013-12-29 | HCFWB1Z6004 | 91d | 0d | B2 | 06 | MC | C | FI |
| HCFWB1Z6007 |  | B1 Z6 :B1 Z6 :Aluminum & Stainless Steel Base Skirting | 10d | 2013-12-17 | 2013-12-29 | HCFWB1Z6006 SS | 91d | 70.5d | B2 | 09 | MC | C | FI |

| ID | WBS | Activity | Duration | Start | Finish | Predecessors | Total float | Free float | Bill No. | Division No. | Responsibility | Phase Code | Trade |
| --- | --- | --- | --- | --- | --- | --- | --- | --- | --- | --- | --- | --- | --- |
|  | WL | **Wall Finishes** |  | 2013-04-02 | 2014-01-30 |  |  |  |  |  |  |  |  |
| HCFWB1Z6008 |  | B1 Z6 :B1 Z6 :Block Works | 10d | 2013-04-02 | 2013-04-13 | HCSWB1Z6240 | 131.25d | 0d | B2 | 04 | MC | C | FI |
| HCFWB1Z6009 |  | B1 Z6 :B1 Z6 :Plaster First Layer | 8.75d | 2013-04-14 | 2013-04-23 | HCFWB1Z6008 | 131.25d | 0d | B2 | 09 | MC | C | FI |
| HCFWB1Z6010 |  | B1 Z6 :B1 Z6 :Plaster Second Layer | 8d | 2013-04-23 | 2013-05-04 | HCFWB1Z6009 | 131.25d | 0d | B2 | 09 | MC | C | FI |
| HCFWB1Z6011 |  | B1 Z6 :B1 Z6 :Plaster Final Layer | 8.75d | 2013-05-04 | 2013-05-14 | HCFWB1Z6010 | 131.25d | 0d | B2 | 09 | MC | C | FI |
| HCFWB1Z6012 |  | B1 Z6 :B1 Z6 :Paint First Layer | 12d | 2013-07-29 | 2013-08-15 | HCFWB1Z6003 | 131.25d | 0d | B2 | 09 | MC | C | FI |
| HCFWB1Z6013 |  | B1 Z6 :B1 Z6 :Paint Final Layer | 12d | 2013-08-15 | 2013-08-29 | HCFWB1Z6012 | 181.25d | 0d | B2 | 09 | MC | C | FI |
| HCFWB1Z6014 |  | B1 Z6 :B1 Z6 :Epoxy Wall Paint | 10d | 2013-08-15 | 2013-08-27 | HCFWB1Z6013 SS | 181.25d | 0d | B2 | 09 | MC | C | FI |
| HCFWB1Z6015 |  | B1 Z6 :B1 Z6 :Wire Cloth Stainless Steel Wall Cover | 10d | 2013-08-15 | 2013-08-27 | HCFWB1Z6014 SS | 181.25d | 0d | B2 | 09 | MC | C | FI |
| HCFWB1Z6016 |  | B1 Z6 :B1 Z6 :Glass BackPainted Wall Tile | 10d | 2013-08-27 | 2013-09-08 | HCFWB1Z6015 | 181.25d | 160.75d | B2 | 09 | MC | C | FI |
| HCFWB1Z6037 |  | B1 B6: Gybsum board partitions | 10d | 2014-01-20 | 2014-01-30 | HCFWB1Z5037 | 65d | 44.5d |  |  |  |  |  |
|  | CL | **Ceiling Finishes** |  | 2013-06-12 | 2013-09-08 |  |  |  |  |  |  |  |  |
| HCFWB1Z6017 |  | B1 Z6 :B1 Z6 :Plaster First Layer | 8.75d | 2013-06-12 | 2013-06-23 | HCFWB1Z6002 | 131.25d | 0d | B2 | 09 | MC | C | FI |
| HCFWB1Z6018 |  | B1 Z6 :B1 Z6 :Plaster Second Layer | 8d | 2013-06-23 | 2013-07-02 | HCFWB1Z6017 | 131.25d | 0d | B2 | 09 | MC | C | FI |
| HCFWB1Z6019 |  | B1 Z6 :B1 Z6 :Plaster Final Layer | 15.5d | 2013-07-02 | 2013-07-20 | HCFWB1Z6018 | 131.25d | 0d | B2 | 09 | MC | C | FI |
| HCFWB1Z6020 |  | B1 Z6 :B1 Z6 :Paint First Layer | 10d | 2013-08-15 | 2013-08-27 | HCFWB1Z6012 | 131.25d | 0d | B2 | 09 | MC | C | FI |
| HCFWB1Z6021 |  | B1 Z6 :B1 Z6 :Paint Final Layer | 10d | 2013-08-27 | 2013-09-08 | HCFWB1Z6020 | 169.25d | 0d | B2 | 09 | MC | C | FI |
| HCFWB1Z6022 |  | B1 Z6 :B1 Z6 :Acoustical Ceiling | 10d | 2013-08-27 | 2013-09-08 | HCFWB1Z6021 SS | 169.25d | 0d | B2 | 09 | MC | C | FI |
|  | MS | **Mecellanuos** |  | 2013-10-27 | 2013-12-11 |  |  |  |  |  |  |  |  |
| HCFWB1Z6024 |  | B1 Z6 :B1 Z6 :Steel Fire Rated Doors | 10d | 2013-10-27 | 2013-11-09 | HCFWB1Z6020, HCFWB2Z6020 | 93.75d | 28.75d | B2 | 08 | MC | C | FI |
| HCFWB1Z6023 |  | B1 Z6 :B1 Z6 :Metal Works | 10d | 2013-11-19 | 2013-11-30 | HCFWB1Z6020, HCFWB2Z6018 | 65d | 0d | B2 | 05 | MC | C | FI |
| HCFWB1Z6027 |  | B1 Z6 :B1 Z6 :Handrails & Railling | 15d | 2013-11-19 | 2013-12-05 | HCFWB1Z6023 SS, HEPSAAL0020 | 110d | 51.5d | B2 |  | MC | C | FI |
| HCFWB1Z6025 |  | B1 Z6 :B1 Z6 :Steel Doors | 10d | 2013-12-01 | 2013-12-11 | HCFWB1Z6024 SS, HCFWB1Z6023, HCFWB2Z6019 | 65d | 0d | B2 | 08 | MC | C | FI |
| HCFWB1Z6026 |  | B1 Z6 :B1 Z6 :Wooden Doors | 10d | 2013-12-01 | 2013-12-11 | HCFWB1Z6025 SS | 105d | 84.5d | B2 | 08 | MC | C | FI |

| ID | WBS | Activity | Type | Duration | Start | Finish | Predecessors | Total float | Free float | Bill No. | Responsibility | Phase Code | Trade | Division No. |
| --- | --- | --- | --- | --- | --- | --- | --- | --- | --- | --- | --- | --- | --- | --- |
|  | UF | **Upper Floors** |  |  | 2012-10-21 | 2014-06-04 |  |  |  |  |  |  |  |  |
|  | GF | **Ground Floor** |  |  | 2012-10-21 | 2014-03-04 |  |  |  |  |  |  |  |  |
| HCFWGF0000 |  | Start Finishing Works GF | milestone | 0d | 2013-02-13 | 2013-02-13 | HCSWGFZ1090 | 52d | 2d | B3 | MC | C | FI |  |
| HCFWGF0001 |  | End Finishing Works GF | milestone | 0d | 2014-03-04 | 2014-03-04 | HCFWGF0000, HCFWGFZ1014, HCFWGFZ1021, HCFWGFZ2013, HCFWGFZ2019, HCFWGFZ3016, HCFWGFZ1007, HCFWGFZ1005, HCFWGFZ1006, HCFWGFZ1004, HCFWGFZ1022, HCFWGFZ1029, HCFWGFZ1027, HCFWGFZ2006, HCFWGFZ2005, HCFWGFZ2014, HCFWGFZ2020, HCFWGFZ2025, HCFWGFZ2024, HCFWGFZ3007, HCFWGFZ3008, HCFWGFZ3005, HCFWGFZ3009, HCFWGFZ3019, HCFWGFZ3018, HCFWGFZ3024, HCFWGFZ3033, HCFWGFZ3034, HCFWGFZ3035, HCFWGFZ3030, HCFWGFZ1049, HCFWGFZ1037, HCFWGFZ3688, HCFWGFZ4698, HCFWGFZ1032, HCMEGFZ1260, HCMEGFZ2265, HCMEGFZ3270, HCFWGFZ1039, HCFWGFZ4587, HCFWGFZ4517, HCFWGFZ4567, HCFWGFZ4497, HCFWGFZ4617, HCFWGFZ4527, HCFWGFZ4537, HCFWGFZ4627, HCFWGFZ4657, HCFWGFZ4417 | 77d |  | B3 | MC | C | FI |  |
|  | Z1 | **Zone 1 - Reception** |  |  | 2012-10-21 | 2014-02-02 |  |  |  |  |  |  |  |  |
|  | FL | **Floor Finishes** |  |  | 2013-03-28 | 2014-01-02 |  |  |  |  |  |  |  |  |
| HCFWGFZ1001 |  | GF Z1 :Foam Concrete Under Floorings |  | 16d | 2013-03-28 | 2013-04-16 | HCFWGFZ1012 | 71d | 0d | B3 | MC | C | FI | 07 |
| HCFWGFZ1002 |  | GF Z1 :Trawelled smooth Concrete screed |  | 8d | 2013-04-16 | 2013-04-25 | HCFWGFZ1001 | 71d | 0d | B3 | MC | C | FI | 03 |
| HCFWGFZ1007 |  | GF Z1 :Epoxy Screed Finish |  | 10d | 2013-04-25 | 2013-05-08 | HCFWGFZ1002 | 103.5d | 15.5d | B3 | MC | C | FI |  |
| HCFWGFZ1003 |  | GF Z1 :Rubber Flooring |  | 10d | 2013-05-28 | 2013-06-08 | HCFWGFZ1019, HCFWGFZ1007 | 88d | 0d | B3 | MC | C | FI | 09 |
| HCFWGFZ1006 |  | GF Z1 :Stone Flooring |  | 12d | 2013-05-28 | 2013-06-10 | HCFWGFZ1003 SS | 88d | 0d | B3 | MC | C | FI | 09 |
| HCFWGFZ1005 |  | GF Z1 :Carpet Floor Tiles |  | 10d | 2013-12-17 | 2013-12-29 | HCFWGFZ1003 SS, HEPSAFI0210 | 131d | 54d | B3 | MC | C | FI | 09 |
| HCFWGFZ1037 |  | GF Z1: Ceramic Floor Tiles |  | 10d | 2013-12-17 | 2013-12-29 | HEPSAFI0210, HCFWGFZ1003 SS | 131d | 54d |  |  |  |  |  |
| HCFWGFZ1004 |  | GF Z1 :Rubber Skirting |  | 2d | 2013-12-31 | 2014-01-02 | HCFWGFZ1003, HCFWB1Z5006 | 98d | 0d | B3 | MC | C | FI |  |
|  | WL | **Wall Finishes** |  |  | 2013-02-16 | 2014-01-11 |  |  |  |  |  |  |  |  |
| HCFWGFZ1008 |  | GF Z1 :Block Works |  | 10d | 2013-02-16 | 2013-02-26 | HCSWGFZ1090, HCFWB1Z1011, HCFWGF0000 | 50d | 0d | B3 | MC | C | FI | 04 |
| HCFWGFZ1009 |  | GF Z1 :Gybsum Board Partitions |  | 10d | 2013-02-16 | 2013-02-26 | HCFWGFZ1008 SS | 102d | 15d | B3 | MC | C | FI | 10 |
| HCFWGFZ1010 |  | GF Z1 :Plaster First Layer |  | 8.75d | 2013-02-27 | 2013-03-09 | HCFWGFZ1008 | 71d | 0d | B3 | MC | C | FI | 09 |
| HCFWGFZ1011 |  | GF Z1 :Plaster Second Layer |  | 8d | 2013-03-09 | 2013-03-18 | HCFWGFZ1010 | 71d | 0d | B3 | MC | C | FI | 09 |
| HCFWGFZ1012 |  | GF Z1 :Plaster Final Layer |  | 8.75d | 2013-03-18 | 2013-03-28 | HCFWGFZ1011 | 71d | 0d | B3 | MC | C | FI | 09 |
| HCFWGFZ1013 |  | GF Z1 :Paint prime coat |  | 12d | 2013-03-28 | 2013-04-11 | HCFWGFZ1012 | 216.5d | 0d | B3 | MC | C | FI | 09 |
| HCFWGFZ1015 |  | GF Z1 :Stone Cladding |  | 10d | 2013-03-28 | 2013-04-09 | HCFWGFZ1012 | 232.5d | 207.5d | B3 | MC | C | FI | 04 |
| HCFWGFZ1016 |  | GF Z1 :Glass Wall Cladding |  | 16d | 2013-12-08 | 2013-12-26 | HCFWGFZ1015 SS, HEPSAFI0460 | 25d | 0d | B3 | MC | C | FI | 09 |
| HCFWGFZ1014 |  | GF Z1 :Paint putty coat |  | 12d | 2013-12-28 | 2014-01-11 | HCFWGFZ1013, HCFWGFZ1016, HCFWB1Z1010 | 45d | 0d | B3 | MC | C | FI | 09 |

| ID | WBS | Activity | Duration | Start | Finish | Predecessors | Total float | Free float | Bill No. | Division No. | Responsibility | Phase Code | Trade |
| --- | --- | --- | --- | --- | --- | --- | --- | --- | --- | --- | --- | --- | --- |
|  | 1 | **Ceiling Finishes** |  | 2013-04-25 | 2013-12-30 |  |  |  |  |  |  |  |  |
| HCFWGFZ1017 |  | GF Z1 :Plaster First Layer | 8.75d | 2013-04-25 | 2013-05-07 | HCFWGFZ1002, HCFWGFZ1012 | 71d | 0d | B3 | 09 | MC | C | FI |
| HCFWGFZ1018 |  | GF Z1 :Plaster Second Layer | 8d | 2013-05-07 | 2013-05-16 | HCFWGFZ1017 | 71d | 0d | B3 | 09 | MC | C | FI |
| HCFWGFZ1019 |  | GF Z1 :Plaster Final Layer | 8.75d | 2013-05-16 | 2013-05-27 | HCFWGFZ1018 | 71d | 0d | B3 | 09 | MC | C | FI |
| HCFWGFZ1020 |  | GF Z1 :Paint prime coat | 10d | 2013-05-28 | 2013-06-08 | HCFWGFZ1013, HCFWGFZ1019 | 179d | 0d | B3 | 09 | MC | C | FI |
| HCFWGFZ1021 |  | GF Z1 :Paint putty coat | 10d | 2013-06-09 | 2013-06-19 | HCFWGFZ1020 | 179d | 143d | B3 | 09 | MC | C | FI |
| HCFWGFZ1022 |  | GF Z1 :Gybsum Board Ceiling | 14d | 2013-12-14 | 2013-12-30 | HCFWGFZ1021, HCFWB1Z1017 | 36d | 0d | B3 | 09 | MC | C | FI |
| HCFWGFZ1032 |  | GF Z1: Spicial Metal Ceiling | 14d | 2013-12-14 | 2013-12-30 | HCFWGFZ1022 SS, HEPSAFI0160 | 60d | 0d |  |  |  |  |  |
|  | MS | **Miscellaneous** |  | 2012-10-21 | 2014-02-02 |  |  |  |  |  |  |  |  |
| HCFWGFZ1049 |  | GF Z1: Aluminum Doors | 14d | 2012-10-21 | 2012-11-10 | HEPSAAL0080 | 472d | 395d |  |  |  |  |  |
| HCFWGFZ1023 |  | GF Z1 :Metal Works | 10d | 2013-12-21 | 2014-01-02 | HCFWGFZ1020, HCFWB1Z1018, HCFWB1Z1018 FF | 31d | 0d | B3 | 05 | MC | C | FI |
| HCFWGFZ1024 |  | GF Z1 :Steel Fire Rated Doors | 10d | 2013-12-21 | 2014-01-02 | HCFWGFZ1020, HCFWB1Z1020 | 58d | 0d | B3 | 08 | MC | C | FI |
| HCFWGFZ1025 |  | GF Z1 :Steel Doors | 10d | 2014-01-04 | 2014-01-15 | HCFWGFZ1024 SS, HCFWGFZ1023, HCFWB1Z1019 | 48d | 0d | B3 | 08 | MC | C | FI |
| HCFWGFZ1026 |  | GF Z1 :Handrails & Railling | 15d | 2014-01-04 | 2014-01-21 | HCFWGFZ1023 SS, HCFWB1Z1022 | 28d | 0d | B3 | 05 | MC | C | FI |
| HCFWGFZ1027 |  | GF Z1 :Wooden & Glass Doors Doors | 10d | 2014-01-09 | 2014-01-21 | HCFWGFZ1025 SS, HCFWB1Z1021 | 43d | 0d | B3 | 08 | MC | C | FI |
| HCFWGFZ1028 |  | GF Z1 :Mirrors | 10d | 2014-01-22 | 2014-02-02 | HCFWGFZ1026 SS, HCFWGFZ1027 | 103d | 0d | B3 | 08 | MC | C | FI |
| HCFWGFZ1029 |  | GF Z1 :Toilet & corian vanity tops | 10d | 2014-01-22 | 2014-02-02 | HCFWGFZ1028 SS, HEPSAFI0270 | 103d | 0d | B3 | 10 | MC | C | FI |
| HCFWGFZ1039 |  | GF Z1 :Reception Counter & Decoration | 10d | 2014-01-22 | 2014-02-02 | HCFWGFZ1029 SS | 103d | 26d |  |  |  |  |  |
|  | Z2 | **Zone 2 - Meduim & Large Conf Rooms** |  | 2013-03-05 | 2014-01-27 |  |  |  |  |  |  |  |  |
|  | FL | **Floor Finishes** |  | 2013-04-14 | 2014-01-05 |  |  |  |  |  |  |  |  |
| HCFWGFZ2001 |  | GF Z2 :Foam Concrete Under Floorings | 16d | 2013-04-14 | 2013-05-02 | HCFWGFZ2011 | 79d | 0d | B3 | 07 | MC | C | FI |
| HCFWGFZ2002 |  | GF Z2 :Trawelled smooth Concrete screed | 8d | 2013-05-04 | 2013-05-12 | HCFWGFZ2001 | 79d | 0d | B3 | 03 | MC | C | FI |
| HCFWGFZ2003 |  | GF Z2 :Stone Flooring | 12d | 2013-05-04 | 2013-05-16 | HCFWGFZ2001 | 108d | 0d | B3 | 09 | MC | C | FI |
| HCFWGFZ2004 |  | GF Z2 :Rubber Flooring | 10d | 2013-06-11 | 2013-06-22 | HCFWGFZ2017, HCFWGFZ2003 SS | 255d | 154d | B3 | 09 | MC | C | FI |
| HCFWGFZ2006 |  | GF Z2 :Carpet Tiles | 10d | 2013-12-17 | 2013-12-29 | HCFWGFZ2004 SS, HEPSAFI0210 | 131d | 54d | B3 |  | MC | C | FI |
| HCFWGFZ2005 |  | GF Z2 :Rubber Skirting | 2d | 2014-01-04 | 2014-01-05 | HCFWGFZ2004, HCFWGFZ1004 | 98d | 0d | B3 |  | MC | C | FI |

| ID | WBS | Activity | Duration | Start | Finish | Predecessors | Total float | Free float | Bill No. | Division No. | Responsibility | Phase Code | Trade |
| --- | --- | --- | --- | --- | --- | --- | --- | --- | --- | --- | --- | --- | --- |
|  | WL | **Wall Finishes** |  | 2013-03-05 | 2013-12-26 |  |  |  |  |  |  |  |  |
| HCFWGFZ2007 |  | GF Z2 :Block Works | 10d | 2013-03-05 | 2013-03-16 | HCFWGFZ1008 SS, HCFWB1Z2011 | 79d | 0d | B3 | 04 | MC | C | FI |
| HCFWGFZ2008 |  | GF Z2 :Gybsum Board Partitions | 10d | 2013-03-05 | 2013-03-16 | HCFWGFZ2007 SS, HCFWGFZ1009 SS | 87d |  | B3 | 10 | MC | C | FI |
| HCFWGFZ2009 |  | GF Z2 :Plaster First Layer | 8d | 2013-03-17 | 2013-03-25 | HCFWGFZ2007 | 79d | 0d | B3 | 09 | MC | C | FI |
| HCFWGFZ2010 |  | GF Z2 :Plaster Second Layer | 8d | 2013-03-26 | 2013-04-03 | HCFWGFZ2009 | 79d | 0d | B3 | 09 | MC | C | FI |
| HCFWGFZ2011 |  | GF Z2 :Plaster Final Layer | 8d | 2013-04-04 | 2013-04-13 | HCFWGFZ2010 | 79d | 0d | B3 | 09 | MC | C | FI |
| HCFWGFZ2012 |  | GF Z2 :Paint prime coat | 12d | 2013-07-23 | 2013-08-06 | HCFWGFZ2011, HCFWB1Z2010 | 118.25d | 0d | B3 | 09 | MC | C | FI |
| HCFWGFZ2013 |  | GF Z2 :Paint putty coat | 12d | 2013-08-06 | 2013-08-24 | HCFWGFZ2012 | 126.25d | 0d | B3 | 09 | MC | C | FI |
| HCFWGFZ2014 |  | GF Z2 :Glass Wall Cladding | 16d | 2013-12-08 | 2013-12-26 | HCFWGFZ2011, HEPSAFI0460 | 37d | 0d | B3 | 09 | MC | C | FI |
|  | 1 | **Ceiling Finishes** |  | 2013-05-13 | 2013-12-29 |  |  |  |  |  |  |  |  |
| HCFWGFZ2015 |  | GF Z2 :Plaster First Layer | 8d | 2013-05-13 | 2013-05-21 | HCFWGFZ2002, HCFWGFZ2011 | 79d | 0d | B3 | 09 | MC | C | FI |
| HCFWGFZ2016 |  | GF Z2 :Plaster Second Layer | 8d | 2013-05-22 | 2013-06-01 | HCFWGFZ2015 | 79d | 0d | B3 | 09 | MC | C | FI |
| HCFWGFZ2017 |  | GF Z2 :Plaster Final Layer | 8d | 2013-06-02 | 2013-06-10 | HCFWGFZ2016 | 79d | 0d | B3 | 09 | MC | C | FI |
| HCFWGFZ2018 |  | GF Z2 :Paint prime coat | 10d | 2013-08-06 | 2013-08-21 | HCFWGFZ2012, HCFWGFZ2017 | 118.25d | 0d | B3 | 09 | MC | C | FI |
| HCFWGFZ2019 |  | GF Z2 :Paint putty coat | 10d | 2013-08-21 | 2013-09-02 | HCFWGFZ2018 | 118.25d | 81.25d | B3 | 09 | MC | C | FI |
| HCFWGFZ2020 |  | GF Z2 :Gybsum Board Ceiling | 14d | 2013-12-12 | 2013-12-29 | HCFWGFZ2019, HCFWB1Z2017 | 37d | 0d | B3 | 09 | MC | C | FI |
|  | MS | **Mecellanuos** |  | 2013-12-07 | 2014-01-27 |  |  |  |  |  |  |  |  |
| HCFWGFZ2023 |  | GF Z2 :Steel Fire Rated Doors | 10d | 2013-12-07 | 2013-12-17 | HCFWGFZ2018, HCFWB1Z2020 | 70d | 32d | B3 | 08 | MC | C | FI |
| HCFWGFZ2021 |  | GF Z2 :Metal Works | 10d | 2014-01-04 | 2014-01-15 | HCFWGFZ1023, HCFWB1Z2018 | 31d | 0d | B3 | 05 | MC | C | FI |
| HCFWGFZ2025 |  | GF Z2 :Handrails & Railling | 15d | 2014-01-09 | 2014-01-27 | HCFWGFZ2021 SS, HCFWB1Z2022 | 26d | 0d | B3 | 05 | MC | C | FI |
| HCFWGFZ2022 |  | GF Z2 :Steel Doors | 10d | 2014-01-16 | 2014-01-27 | HCFWGFZ2023 SS, HCFWGFZ2021, HCFWB1Z2019, HCFWB1Z6025 | 38d | 0d | B3 | 08 | MC | C | FI |
| HCFWGFZ2024 |  | GF Z2 :Wooden Doors | 10d | 2014-01-16 | 2014-01-27 | HCFWGFZ2022 SS, HCFWB1Z2021 | 48d | 0d | B3 | 08 | MC | C | FI |
|  | Z3 | **Zone 3 - Conference** |  | 2013-06-17 | 2014-02-22 |  |  |  |  |  |  |  |  |
|  | FL | **Floor Finishes** |  | 2013-07-27 | 2014-01-18 |  |  |  |  |  |  |  |  |
| HCFWGFZ3001 |  | GF Z3 :Foam Concrete Under Floorings | 16d | 2013-07-27 | 2013-08-17 | HCFWGFZ3014 | 0d |  | B3 | 07 | MC | C | FI |
| HCFWGFZ3002 |  | GF Z3 :Trawelled smooth Concrete screed | 8d | 2013-08-18 | 2013-08-26 | HCFWGFZ3001 | 0d |  | B3 | 03 | MC | C | FI |
| HCFWGFZ3007 |  | GF Z3 :Epoxy Screed Finish | 10d | 2013-08-27 | 2013-09-07 | HCFWGFZ3002 | 222d | 145d | B3 |  | MC | C | FI |
| HCFWGFZ3003 |  | GF Z3 :Rubber Flooring | 10d | 2013-09-24 | 2013-10-05 | HCFWGFZ3022 | 108d | 0d | B3 | 09 | MC | C | FI |
| HCFWGFZ3006 |  | GF Z3 :Stone Flooring All types | 12d | 2013-09-24 | 2013-10-07 | HCFWGFZ3003 SS | 186d | 0d | B3 | 09 | MC | C | FI |
| HCFWGFZ3009 |  | GF Z3 :Stone Base Skirting | 10d | 2013-10-08 | 2013-10-23 | HCFWGFZ3006 | 186d | 109d | B3 | 09 | MC | C | FI |
| HCFWGFZ3008 |  | GF Z3 :Carpet Tile Flooring | 10d | 2013-12-17 | 2013-12-29 | HCFWGFZ3003 SS, HEPSAFI0210 | 131d | 54d | B3 | 09 | MC | C | FI |
| HCFWGFZ3688 |  | GF Z3: Ceramic Floor Tiles | 10d | 2013-12-17 | 2013-12-29 | HEPSAFI0210, HCFWGFZ3003 SS | 131d | 54d |  |  |  |  |  |
| HCFWGFZ3004 |  | GF Z3 :Rubber Skirting | 2d | 2014-01-06 | 2014-01-07 | HCFWGFZ3003, HCFWGFZ2005 | 98d | 0d | B3 |  | MC | C | FI |
| HCFWGFZ3005 |  | GF Z3 :Aluminum & Stainless Steel Skirting | 10d | 2014-01-06 | 2014-01-18 | HCFWGFZ3004 SS | 116d | 39d | B3 | 09 | MC | C | FI |

| ID | WBS | Activity | Duration | Start | Finish | Predecessors | Total float | Free float | Bill No. | Division No. | Responsibility | Phase Code | Trade |
| --- | --- | --- | --- | --- | --- | --- | --- | --- | --- | --- | --- | --- | --- |
|  | WL | **Wall Finishes** |  | 2013-06-17 | 2013-12-26 |  |  |  |  |  |  |  |  |
| HCFWGFZ3010 |  | GF Z3 :Gybsum Board Partitions | 10d | 2013-06-17 | 2013-06-27 | HCFWGFZ2008 SS, HCSSGFZ3090 | 0d |  | B3 | 10 | MC | C | FI |
| HCFWGFZ3011 |  | GF Z3 :Block Works | 10d | 2013-06-17 | 2013-06-27 | HCFWGFZ2007 SS, HCFWGFZ3010 SS, HCSWGFZ3080, HCSSGFZ3090, HCFWB1Z3013 | 0d |  | B3 | 04 | MC | C | FI |
| HCFWGFZ3012 |  | GF Z3 :Plaster First Layer | 8d | 2013-06-29 | 2013-07-07 | HCFWGFZ3011 | 0d |  | B3 | 09 | MC | C | FI |
| HCFWGFZ3013 |  | GF Z3 :Plaster Second Layer | 8d | 2013-07-08 | 2013-07-16 | HCFWGFZ3012 | 0d |  | B3 | 09 | MC | C | FI |
| HCFWGFZ3014 |  | GF Z3 :Plaster Final Layer | 8d | 2013-07-17 | 2013-07-25 | HCFWGFZ3013 | 0d |  | B3 | 09 | MC | C | FI |
| HCFWGFZ3015 |  | GF Z3 :Paint prime coat | 12d | 2013-09-07 | 2013-09-21 | HCFWGFZ3014, HCFWB1Z3018 | 82.25d | 0d | B3 | 09 | MC | C | FI |
| HCFWGFZ3016 |  | GF Z3 :Paint putty coat | 12d | 2013-09-21 | 2013-10-05 | HCFWGFZ3015 | 82.25d | 0d | B3 | 09 | MC | C | FI |
| HCFWGFZ3018 |  | GF Z3 :Stainless steel Wire Cloth Finish For Elev Lobby | 10d | 2013-09-21 | 2013-10-02 | HCFWGFZ3016 SS | 200.25d | 123.25d | B3 | 05 | MC | C | FI |
| HCFWGFZ3017 |  | GF Z3 :Glass Wall Cladding | 16d | 2013-12-08 | 2013-12-26 | HCFWGFZ3014, HEPSAFI0460 | 7d | 0d | B3 | 09 | MC | C | FI |
| HCFWGFZ3019 |  | GF Z3 :Stone Cladding | 10d | 2013-12-08 | 2013-12-18 | HCFWGFZ3017 SS | 139d | 62d | B3 | 04 | MC | C | FI |
|  | CL | **Ceiling Finishes** |  | 2013-08-27 | 2014-01-11 |  |  |  |  |  |  |  |  |
| HCFWGFZ3020 |  | GF Z3 :Plaster First Layer | 8d | 2013-08-27 | 2013-09-04 | HCFWGFZ3002, HCFWGFZ3014 | 0d |  | B3 | 09 | MC | C | FI |
| HCFWGFZ3021 |  | GF Z3 :Plaster Second Layer | 8d | 2013-09-05 | 2013-09-14 | HCFWGFZ3020 | 0d |  | B3 | 09 | MC | C | FI |
| HCFWGFZ3022 |  | GF Z3 :Plaster Final Layer | 8d | 2013-09-15 | 2013-09-23 | HCFWGFZ3021 | 0d |  | B3 | 09 | MC | C | FI |
| HCFWGFZ3023 |  | GF Z3 :Paint prime coat | 10d | 2013-10-05 | 2013-10-21 | HCFWGFZ3015, HCFWGFZ3022, HCFWGFZ3016 | 84.25d | 0d | B3 | 09 | MC | C | FI |
| HCFWGFZ3026 |  | GF Z3 :Acoustical Ceiling | 10d | 2013-10-21 | 2013-11-02 | HCFWGFZ3023 | 84.25d | 43.25d | B3 | 09 | MC | C | FI |
| HCFWGFZ3025 |  | GF Z3 :Gybsum Board Ceiling | 14d | 2013-12-12 | 2013-12-29 | HCFWGFZ3026 SS, HCFWGFZ3023, HCFWB1Z3028 | 41d | 0d | B3 | 09 | MC | C | FI |
| HCFWGFZ3024 |  | GF Z3 :Paint putty coat | 10d | 2013-12-30 | 2014-01-11 | HCFWGFZ3023, HCFWGFZ3025 | 121d | 44d | B3 | 09 | MC | C | FI |
|  | MS | **Mecellanuos** |  | 2013-10-21 | 2014-02-22 |  |  |  |  |  |  |  |  |
| HCFWGFZ3038 |  | GF Z3 :Steel Fire Rated Doors | 10d | 2013-10-21 | 2013-11-02 | HCFWGFZ3023, HCFWB1Z3032 | 108.25d | 43.25d | B3 | 08 | MC | C | FI |
| HCFWGFZ3035 |  | GF Z3 :Glass Doors | 10d | 2013-12-01 | 2013-12-11 | HCFWGFZ3036 SS | 145d | 68d | B3 | 08 | MC | C | FI |
| HCFWGFZ3036 |  | GF Z3 :Metal Works | 10d | 2013-12-01 | 2013-12-11 | HCFWGFZ3023, HCFWB1Z3030, HCFWB1Z3030 FF | 55d | 0d | B3 | 05 | MC | C | FI |
| HCFWGFZ3031 |  | GF Z3 :Handrails & Railling | 15d | 2013-12-12 | 2013-12-30 | HCFWGFZ3036 SS, HCFWB1Z3034 | 45d | 0d | B3 | 05 | MC | C | FI |
| HCFWGFZ3034 |  | GF Z3 :Stone Decoration For Benches | 10d | 2013-12-12 | 2013-12-23 | HCFWGFZ3031 SS | 135d | 58d | B3 | 04 | MC | C | FI |
| HCFWGFZ3037 |  | GF Z3 :Steel Doors | 10d | 2013-12-12 | 2013-12-23 | HCFWGFZ3038 SS, HCFWGFZ3036, HCFWB1Z3031 | 65d | 39d | B3 | 08 | MC | C | FI |
| HCFWGFZ3030 |  | GF Z3 :Wooden Doors | 10d | 2014-01-30 | 2014-02-10 | HCFWGFZ3037 SS, HCFWB1Z3033 | 26d | 0d | B3 | 08 | MC | C | FI |
| HCFWGFZ3032 |  | GF Z3 :Mirror | 10d | 2014-02-11 | 2014-02-22 | HCFWGFZ3031 SS, HCFWGFZ3030 | 86d | 0d | B3 | 08 | MC | C | FI |
| HCFWGFZ3033 |  | GF Z3 :Toilet & corian vanity tops | 10d | 2014-02-11 | 2014-02-22 | HCFWGFZ3032 SS, HEPSAFI0270 | 86d | 9d | B3 | 10 | MC | C | FI |

| ID | WBS | Activity | Duration | Start | Finish | Predecessors | Total float | Free float | Bill No. | Division No. | Responsibility | Phase Code | Trade |
| --- | --- | --- | --- | --- | --- | --- | --- | --- | --- | --- | --- | --- | --- |
|  | Z31 | **Auditorium** |  | 2013-06-29 | 2013-12-29 |  |  |  |  |  |  |  |  |
|  | FL | **Floor Finishes** |  | 2013-08-07 | 2013-12-29 |  |  |  |  |  |  |  |  |
| HCFWGFZ4297 |  | GF Z4 :Foam Concrete Under Floorings | 16d | 2013-08-07 | 2013-08-28 | HCFWGFZ4347, HCFWGFZ2001 | 158d | 0d | B3 | 07 | MC | C | FI |
| HCFWGFZ4287 |  | GF Z4 :Trawelled smooth Concrete screed | 8d | 2013-08-29 | 2013-09-07 | HCFWGFZ4297 | 158d | 0d | B3 | 03 | MC | C | FI |
| HCFWGFZ4497 |  | GF Z4 :Epoxy Screed Finish | 10d | 2013-09-08 | 2013-09-18 | HCFWGFZ4287 | 212d | 135d | B3 |  | MC | C | FI |
| HCFWGFZ4307 |  | GF Z4 :Rubber Flooring | 10d | 2013-10-06 | 2013-10-21 | HCFWGFZ4397 | 176d | 0d | B3 | 09 | MC | C | FI |
| HCFWGFZ4507 |  | GF Z4 :Stone Flooring All types | 12d | 2013-10-06 | 2013-10-23 | HCFWGFZ4307 SS | 176d | 0d | B3 | 09 | MC | C | FI |
| HCFWGFZ4567 |  | GF Z4 :Carpet Tile Flooring | 10d | 2013-10-06 | 2013-10-21 | HCFWGFZ4307 SS | 188d | 111d | B3 | 09 | MC | C | FI |
| HCFWGFZ4317 |  | GF Z4 :Rubber Skirting | 2d | 2013-10-22 | 2013-10-23 | HCFWGFZ4307 | 178d | 0d | B3 |  | MC | C | FI |
| HCFWGFZ4517 |  | GF Z4 :Aluminum & Stainless Steel Skirting | 10d | 2013-10-22 | 2013-11-02 | HCFWGFZ4317 SS | 178d | 101d | B3 | 09 | MC | C | FI |
| HCFWGFZ4587 |  | GF Z4 :Stone Base Skirting | 10d | 2013-10-24 | 2013-11-04 | HCFWGFZ4507 | 176d | 99d | B3 | 09 | MC | C | FI |
| HCFWGFZ4698 |  | GF Z4: Ceramic Floor Tiles | 10d | 2013-12-17 | 2013-12-29 | HEPSAFI0210, HCFWGFZ4307 SS | 131d | 54d |  |  |  |  |  |
|  | WL | **Wall Finishes** |  | 2013-06-29 | 2013-09-07 |  |  |  |  |  |  |  |  |
| HCFWGFZ4327 |  | GF Z4 :Block Works | 10d | 2013-06-29 | 2013-07-09 | HCFWGFZ4607 SS | 158d | 0d | B3 | 04 | MC | C | FI |
| HCFWGFZ4607 |  | GF Z4 :Gybsum Board Partitions | 10d | 2013-06-29 | 2013-07-09 | HCFWGFZ3011 | 158d | 0d | B3 | 10 | MC | C | FI |
| HCFWGFZ4337 |  | GF Z4 :Plaster First Layer | 8d | 2013-07-10 | 2013-07-18 | HCFWGFZ4327 | 158d | 0d | B3 | 09 | MC | C | FI |
| HCFWGFZ4377 |  | GF Z4 :Plaster Second Layer | 8d | 2013-07-20 | 2013-07-28 | HCFWGFZ4337 | 158d | 0d | B3 | 09 | MC | C | FI |
| HCFWGFZ4347 |  | GF Z4 :Plaster Final Layer | 8d | 2013-07-29 | 2013-08-06 | HCFWGFZ4377 | 158d | 0d | B3 | 09 | MC | C | FI |
| HCFWGFZ4357 |  | GF Z4 :Paint prime coat | 12d | 2013-08-07 | 2013-08-24 | HCFWGFZ4347 | 182d | 0d | B3 | 09 | MC | C | FI |
| HCFWGFZ4597 |  | GF Z4 :Glass Wall Cladding | 16d | 2013-08-07 | 2013-08-28 | HCFWGFZ4347 | 236d | 0d | B3 | 09 | MC | C | FI |
| HCFWGFZ4617 |  | GF Z4 :Stone Cladding | 10d | 2013-08-07 | 2013-08-21 | HCFWGFZ4597 SS | 236d | 159d | B3 | 04 | MC | C | FI |
| HCFWGFZ4367 |  | GF Z4 :Paint putty coat | 12d | 2013-08-25 | 2013-09-07 | HCFWGFZ4357 | 182d | 0d | B3 | 09 | MC | C | FI |
| HCFWGFZ4527 |  | GF Z4 :Stainless steel Wire Cloth Finish For Elev Lobby | 10d | 2013-08-25 | 2013-09-04 | HCFWGFZ4367 SS | 224d | 147d | B3 | 05 | MC | C | FI |
|  | CL | **Ceiling Finishes** |  | 2013-09-08 | 2013-11-19 |  |  |  |  |  |  |  |  |
| HCFWGFZ4387 |  | GF Z4 :Plaster First Layer | 8d | 2013-09-08 | 2013-09-16 | HCFWGFZ4287, HCFWGFZ4347 | 158d | 0d | B3 | 09 | MC | C | FI |
| HCFWGFZ4437 |  | GF Z4 :Plaster Second Layer | 8d | 2013-09-17 | 2013-09-25 | HCFWGFZ4387 | 158d | 0d | B3 | 09 | MC | C | FI |
| HCFWGFZ4397 |  | GF Z4 :Plaster Final Layer | 8d | 2013-09-26 | 2013-10-05 | HCFWGFZ4437 | 158d | 0d | B3 | 09 | MC | C | FI |
| HCFWGFZ4407 |  | GF Z4 :Paint prime coat | 10d | 2013-10-06 | 2013-10-21 | HCFWGFZ4357, HCFWGFZ4397, HCFWGFZ4367 | 158d | 0d | B3 | 09 | MC | C | FI |
| HCFWGFZ4427 |  | GF Z4 :Gybsum Board Ceiling | 14d | 2013-10-22 | 2013-11-07 | HCFWGFZ4577 SS, HCFWGFZ4407 | 164d | 0d | B3 | 09 | MC | C | FI |
| HCFWGFZ4577 |  | GF Z4 :Acoustical Ceiling | 10d | 2013-10-22 | 2013-11-02 | HCFWGFZ4407 | 164d | 0d | B3 | 09 | MC | C | FI |
| HCFWGFZ4417 |  | GF Z4 :Paint putty coat | 10d | 2013-11-09 | 2013-11-19 | HCFWGFZ4407, HCFWGFZ4427 | 164d | 87d | B3 | 09 | MC | C | FI |

| ID | WBS | Activity | Type | Duration | Start | Finish | Predecessors | Total float | Free float | Bill No. | Division No. | Responsibility | Phase Code | Trade |
| --- | --- | --- | --- | --- | --- | --- | --- | --- | --- | --- | --- | --- | --- | --- |
|  | MS | **Mecellanuos** |  |  | 2013-10-22 | 2013-11-26 |  |  |  |  |  |  |  |  |
| HCFWGFZ4447 |  | GF Z4 :Steel Fire Rated Doors |  | 10d | 2013-10-22 | 2013-11-02 | HCFWGFZ4407 | 168d | 10d | B3 | 08 | MC | C | FI |
| HCFWGFZ4477 |  | GF Z4 :Metal Works |  | 10d | 2013-10-22 | 2013-11-02 | HCFWGFZ4407 | 158d | 0d | B3 | 05 | MC | C | FI |
| HCFWGFZ4487 |  | GF Z4 :Handrails & Railling |  | 15d | 2013-10-22 | 2013-11-09 | HCFWGFZ4477 SS | 178d | 0d | B3 | 05 | MC | C | FI |
| HCFWGFZ4537 |  | GF Z4 :Stone Decoration For Benches |  | 10d | 2013-10-22 | 2013-11-02 | HCFWGFZ4487 SS | 178d | 101d | B3 | 04 | MC | C | FI |
| HCFWGFZ4627 |  | GF Z4 :Glass Doors |  | 10d | 2013-10-22 | 2013-11-02 | HCFWGFZ4477 SS | 178d | 101d | B3 | 08 | MC | C | FI |
| HCFWGFZ4457 |  | GF Z4 :Steel Doors |  | 10d | 2013-11-03 | 2013-11-14 | HCFWGFZ4447 SS, HCFWGFZ4477 | 158d | 0d | B3 | 08 | MC | C | FI |
| HCFWGFZ4467 |  | GF Z4 :Wooden Doors |  | 10d | 2013-11-03 | 2013-11-14 | HCFWGFZ4457 SS | 158d | 0d | B3 | 08 | MC | C | FI |
| HCFWGFZ4547 |  | GF Z4 :Mirror |  | 10d | 2013-11-16 | 2013-11-26 | HCFWGFZ4487 SS, HCFWGFZ4467 | 158d | 0d | B3 | 08 | MC | C | FI |
| HCFWGFZ4557 |  | GF Z4 :Toilet & corian vanity tops |  | 10d | 2013-11-16 | 2013-11-26 | HCFWGFZ4547 SS | 158d | 0d | B3 | 10 | MC | C | FI |
| HCFWGFZ4637 |  | GF Z4 :Wooden Stage & Interior Decoration for Auditoruim |  | 10d | 2013-11-16 | 2013-11-26 | HCFWGFZ4557 SS | 158d | 0d |  |  |  |  |  |
| HCFWGFZ4647 |  | GF Z4 :Wood Decking |  | 10d | 2013-11-16 | 2013-11-26 | HCFWGFZ4637 SS | 158d | 0d |  |  |  |  |  |
| HCFWGFZ4657 |  | GF Z4 :Block Boards |  | 10d | 2013-11-16 | 2013-11-26 | HCFWGFZ4647 SS | 158d | 81d |  |  |  |  |  |
|  | F1 | **First Floor** |  |  | 2013-03-02 | 2014-03-18 |  |  |  |  |  |  |  |  |
| HCFWF10000 |  | Start Finishing Works First Floor | milestone | 0d | 2013-03-02 | 2013-03-02 | HCSWFFZ1090 | 61d | 0d | B3 |  | MC | C | FI |
| HCFWF10001 |  | End Finishing Works First Floor | milestone | 0d | 2014-03-18 | 2014-03-18 | HCFWF10000, HCFWF1Z2039, HCFWF1Z3051, HCFWF1Z3044, HCFWF1Z1045, HCFWF1Z1056, HCFWF1Z1034, HCFWF1Z1062, HCFWF1Z1036, HCFWF1Z1059, HCFWF1Z1047, HCFWF1Z2046, HCFWF1Z2030, HCFWF1Z2049, HCFWF1Z2045, HCFWF1Z2050, HCFWF1Z2044, HCFWF1Z3057, HCFWF1Z3068, HCFWF1Z3060, HCFWF1Z3058, HCFWF1Z3063, HCFWF1Z3070, HCFWF1Z3055, HCFWF1Z3049, HCFWF1Z4708, HCFWGFZ4718, HCFWF1Z1728, HCMEF1Z1265, HCMEF1Z2270, HCMEF1Z3275, HCFWF1Z1064, HCFWF1Z1160 | 65d |  | B3 |  | MC | C | FI |
|  | Z1 | **Zone 1** |  |  | 2013-03-02 | 2014-02-13 |  |  |  |  |  |  |  |  |
|  | FL | **Floor Finishes** |  |  | 2013-04-28 | 2014-01-09 |  |  |  |  |  |  |  |  |
| HCFWF1Z1031 |  | F1 Z1 :Foam Concrete Under Floorings |  | 16d | 2013-04-28 | 2013-05-16 | HCFWF1Z1130 | 71d | 0d | B3 | 07 | MC | C | FI |
| HCFWF1Z1032 |  | F1 Z1 :Trawelled smooth Concrete screed |  | 8d | 2013-05-18 | 2013-05-27 | HCFWF1Z1031 | 71d | 0d | B3 | 03 | MC | C | FI |
| HCFWF1Z1043 |  | F1 Z1 :Rubber Flooring |  | 10d | 2013-06-26 | 2013-07-08 | HCFWF1Z1039 | 82.5d | 0d | B3 | 09 | MC | C | FI |
| HCFWF1Z1051 |  | F1 Z1 :Stone Flooring |  | 12d | 2013-06-26 | 2013-07-10 | HCFWF1Z1043 SS | 82.5d | 0d | B3 | 09 | MC | C | FI |
| HCFWF1Z1064 |  | F1 Z1 :Stone Base Skirting |  | 10d | 2013-07-10 | 2013-07-22 | HCFWF1Z1051 | 259.5d | 194.5d | B3 | 09 | MC | C | FI |
| HCFWF1Z1045 |  | F1 Z1 :Carpet Floor Tiles |  | 10d | 2013-12-17 | 2013-12-29 | HCFWF1Z1043 SS, HEPSAFI0210 | 131d | 66d | B3 | 09 | MC | C | FI |
| HCFWF1Z4708 |  | F1 Z1: Ceramic Floor Tiles |  | 10d | 2013-12-17 | 2013-12-29 | HEPSAFI0210, HCFWF1Z1043 SS | 131d | 66d |  |  |  |  |  |
| HCFWF1Z1010 |  | F1 Z1 :Rubber Skirting |  | 2d | 2014-01-08 | 2014-01-09 | HCFWGFZ3004 | 98d | 0d | B3 |  | MC | C | FI |

| ID | WBS | Activity | Duration | Start | Finish | Predecessors | Total float | Free float | Bill No. | Division No. | Responsibility | Phase Code | Trade |
| --- | --- | --- | --- | --- | --- | --- | --- | --- | --- | --- | --- | --- | --- |
|  | WL | **Wall Finishes** |  | 2013-03-02 | 2014-01-26 |  |  |  |  |  |  |  |  |
| HCFWF1Z1033 |  | F1 Z1 :Block Works | 10d | 2013-03-02 | 2013-03-12 | HCSWFFZ1090, HCFWGFZ1008, HCFWF10000 | 61d | 0d | B3 | 04 | MC | C | FI |
| HCFWF1Z1054 |  | F1 Z1 :Gybsum Board Partitions | 10d | 2013-03-02 | 2013-03-12 | HCFWF1Z1033 SS | 114d | 48d | B3 | 10 | MC | C | FI |
| HCFWF1Z1120 |  | F1 Z1 :Plaster First Layer | 8.75d | 2013-03-28 | 2013-04-08 | HCFWGFZ1012 | 71d | 0d | B3 | 09 | MC | C | FI |
| HCFWF1Z1110 |  | F1 Z1 :Plaster Second Layer | 8d | 2013-04-08 | 2013-04-17 | HCFWF1Z1120 | 71d | 0d | B3 | 09 | MC | C | FI |
| HCFWF1Z1038 |  | F1 Z1 :Paint Prime coat | 12d | 2013-04-11 | 2013-04-25 | HCFWGFZ1013 | 222.5d | 0d | B3 | 09 | MC | C | FI |
| HCFWF1Z1130 |  | F1 Z1 :Plaster Final Layer | 8.75d | 2013-04-17 | 2013-04-27 | HCFWF1Z1110 | 71d | 0d | B3 | 09 | MC | C | FI |
| HCFWF1Z1160 |  | F1 Z1 :Stone Cladding | 10d | 2013-04-28 | 2013-05-09 | HCFWF1Z1130 | 321d | 256d | B3 | 04 | MC | C | FI |
| HCFWF1Z1056 |  | F1 Z1 :Glass Wall Cladding | 16d | 2013-12-28 | 2014-01-16 | HCFWGFZ1016 | 25d | 0d | B3 | 09 | MC | C | FI |
| HCFWF1Z1034 |  | F1 Z1 :Paint putty coat | 12d | 2014-01-12 | 2014-01-26 | HCFWF1Z1038, HCFWGFZ1014 | 45d | 8d | B3 | 09 | MC | C | FI |
|  | CL | **Ceiling Finishes** |  | 2013-05-28 | 2014-01-18 |  |  |  |  |  |  |  |  |
| HCFWF1Z1042 |  | F1 Z1 :Plaster First Layer | 8.75d | 2013-05-28 | 2013-06-06 | HCFWF1Z1032, HCFWGFZ1019 | 71d | 0d | B3 | 09 | MC | C | FI |
| HCFWF1Z1053 |  | F1 Z1 :Plaster Second Layer | 8d | 2013-06-06 | 2013-06-16 | HCFWF1Z1042 | 71d | 0d | B3 | 09 | MC | C | FI |
| HCFWF1Z1039 |  | F1 Z1 :Plaster Final Layer | 8.75d | 2013-06-16 | 2013-06-26 | HCFWF1Z1053 | 71d | 0d | B3 | 09 | MC | C | FI |
| HCFWF1Z1035 |  | F1 Z1 :Paint Prime coat | 10d | 2013-06-26 | 2013-07-08 | HCFWF1Z1038, HCFWF1Z1039 | 179.5d | 0d | B3 | 09 | MC | C | FI |
| HCFWF1Z1036 |  | F1 Z1 :Paint putty coat | 10d | 2013-07-08 | 2013-07-20 | HCFWF1Z1035 | 261.5d | 196.5d | B3 | 09 | MC | C | FI |
| HCFWF1Z1052 |  | F1 Z1 :Gybsum Board Ceiling | 14d | 2013-12-31 | 2014-01-18 | HCFWF1Z1038, HCFWGFZ1022 | 36d | 0d | B3 | 09 | MC | C | FI |
| HCFWF1Z1062 |  | F1 Z1 :Acoustical Ceiling | 10d | 2013-12-31 | 2014-01-12 | HCFWF1Z1052 SS | 60d | 0d | B3 | 09 | MC | C | FI |
| HCFWF1Z1728 |  | F1 Z1: Spicial Metal Ceiling | 14d | 2013-12-31 | 2014-01-18 | HCFWF1Z1062 SS, HCFWGFZ1032 | 60d | 24d |  |  |  |  |  |
|  | MS | **Miscellaneous** |  | 2014-01-04 | 2014-02-13 |  |  |  |  |  |  |  |  |
| HCFWF1Z1044 |  | F1 Z1 :Steel Fire Rated Doors | 10d | 2014-01-04 | 2014-01-15 | HCFWF1Z1035, HCFWGFZ1024 | 58d | 0d | B3 | 08 | MC | C | FI |
| HCFWF1Z1048 |  | F1 Z1 :Metal Works | 10d | 2014-01-04 | 2014-01-15 | HCFWF1Z1035, HCFWGFZ1023, HCFWGFZ1023 FF | 36d | 0d | B3 | 05 | MC | C | FI |
| HCFWF1Z1040 |  | F1 Z1 :Steel Doors | 10d | 2014-01-16 | 2014-01-27 | HCFWF1Z1044 SS, HCFWF1Z1048, HCFWGFZ1025 | 48d | 0d | B3 | 08 | MC | C | FI |
| HCFWF1Z1041 |  | F1 Z1 :Handrails & Railling | 15d | 2014-01-22 | 2014-02-08 | HCFWF1Z1048 SS, HCFWGFZ1026 | 28d | 0d | B3 | 05 | MC | C | FI |
| HCFWF1Z1047 |  | F1 Z1 :Wooden Doors | 10d | 2014-01-22 | 2014-02-02 | HCFWF1Z1040 SS, HCFWGFZ1027 | 43d | 0d | B3 | 08 | MC | C | FI |
| HCFWF1Z1058 |  | F1 Z1 :Mirrors | 10d | 2014-02-03 | 2014-02-13 | HCFWF1Z1041 SS, HCFWF1Z1047 | 93d | 0d | B3 | 08 | MC | C | FI |
| HCFWF1Z1059 |  | F1 Z1 :Toilet & corian vanity tops | 10d | 2014-02-03 | 2014-02-13 | HCFWF1Z1058 SS, HEPSAFI0270 | 93d | 28d | B3 | 10 | MC | C | FI |

| ID | WBS | Activity | Duration | Start | Finish | Predecessors | Total float | Free float | Bill No. | Division No. | Responsibility | Phase Code | Trade |
| --- | --- | --- | --- | --- | --- | --- | --- | --- | --- | --- | --- | --- | --- |
|  | Z2 | **Zone 2** |  | 2013-04-27 | 2014-02-13 |  |  |  |  |  |  |  |  |
|  | FL | **Floor Finishes** |  | 2013-06-08 | 2014-01-12 |  |  |  |  |  |  |  |  |
| HCFWF1Z2026 |  | F1 Z2 :Foam Concrete Under Floorings | 16d | 2013-06-08 | 2013-06-25 | HCFWF1Z2031 | 58d | 0d | B3 | 07 | MC | C | FI |
| HCFWF1Z2027 |  | F1 Z2 :Trawelled smooth Concrete screed | 8d | 2013-06-26 | 2013-07-04 | HCFWF1Z2026 | 58d | 0d | B3 | 03 | MC | C | FI |
| HCFWF1Z2043 |  | F1 Z2 :Stone Flooring | 12d | 2013-07-06 | 2013-07-18 | HCFWF1Z2027 | 75d | 0d | B3 | 09 | MC | C | FI |
| HCFWF1Z2029 |  | F1 Z2 :Rubber Flooring | 10d | 2013-08-03 | 2013-08-17 | HCFWF1Z2042, HCFWF1Z2043 SS | 190d | 0d | B3 | 09 | MC | C | FI |
| HCFWF1Z2030 |  | F1 Z2 :Rubber Skirting | 2d | 2013-08-18 | 2013-08-19 | HCFWF1Z2029 | 190d | 64d | B3 |  | MC | C | FI |
| HCFWF1Z2046 |  | F1 Z2 :Carpet Tiles | 10d | 2013-12-17 | 2013-12-29 | HCFWF1Z2029 SS, HEPSAFI0210 | 131d | 66d | B3 |  | MC | C | FI |
| HCFWF1Z20030 |  | F1 Z2 :Rubber Skirting | 2d | 2014-01-11 | 2014-01-12 | HCFWF1Z1010 | 98d | 0d | B3 |  | MC | C | FI |
|  | WL | **Wall Finishes** |  | 2013-04-27 | 2014-01-16 |  |  |  |  |  |  |  |  |
| HCFWF1Z2032 |  | F1 Z2 :Block Works | 10d | 2013-04-27 | 2013-05-08 | HCFWF1Z1033 SS, HCSWFFZ2090, HCFWGFZ2007 | 56d | 0d | B3 | 04 | MC | C | FI |
| HCFWF1Z2048 |  | F1 Z2 :Gybsum Board Partitions | 10d | 2013-04-27 | 2013-05-08 | HCFWF1Z2032 SS, HCFWF1Z1054 SS | 66d | 62d | B3 | 10 | MC | C | FI |
| HCFWF1Z2034 |  | F1 Z2 :Plaster First Layer | 8d | 2013-05-09 | 2013-05-18 | HCFWF1Z2032, HCFWGFZ2011 | 58d | 0d | B3 | 09 | MC | C | FI |
| HCFWF1Z2035 |  | F1 Z2 :Plaster Second Layer | 8d | 2013-05-19 | 2013-05-28 | HCFWF1Z2034 | 58d | 0d | B3 | 09 | MC | C | FI |
| HCFWF1Z2031 |  | F1 Z2 :Plaster Final Layer | 8d | 2013-05-29 | 2013-06-06 | HCFWF1Z2035 | 58d | 0d | B3 | 09 | MC | C | FI |
| HCFWF1Z2037 |  | F1 Z2 :Paint Prime coat | 12d | 2013-08-06 | 2013-08-24 | HCFWF1Z2031, HCFWGFZ2012 | 118.25d | 0d | B3 | 09 | MC | C | FI |
| HCFWF1Z2028 |  | F1 Z2 :Paint putty coat | 12d | 2013-08-24 | 2013-09-07 | HCFWF1Z2037, HCFWGFZ2013 | 126.25d | 0d | B3 | 09 | MC | C | FI |
| HCFWF1Z2049 |  | F1 Z2 :Glass Wall Cladding | 16d | 2013-12-28 | 2014-01-16 | HCFWF1Z2031, HCFWF1Z2028, HCFWGFZ2014 | 37d | 0d | B3 | 09 | MC | C | FI |
|  | CL | **Ceiling Finishes** |  | 2013-07-06 | 2014-01-16 |  |  |  |  |  |  |  |  |
| HCFWF1Z2040 |  | F1 Z2 :Plaster First Layer | 8d | 2013-07-06 | 2013-07-14 | HCFWF1Z2027, HCFWGFZ2017, HCFWF1Z2031, HCFWF1Z2031 FF | 58d | 0d | B3 | 09 | MC | C | FI |
| HCFWF1Z2036 |  | F1 Z2 :Plaster Second Layer | 8d | 2013-07-15 | 2013-07-23 | HCFWF1Z2040 | 58d | 0d | B3 | 09 | MC | C | FI |
| HCFWF1Z2042 |  | F1 Z2 :Plaster Final Layer | 8d | 2013-07-24 | 2013-08-01 | HCFWF1Z2036 | 58d | 0d | B3 | 09 | MC | C | FI |
| HCFWF1Z2033 |  | F1 Z2 :Paint Prime coat | 10d | 2013-08-24 | 2013-09-04 | HCFWF1Z2037 | 120.25d | 0d | B3 | 09 | MC | C | FI |
| HCFWF1Z2039 |  | F1 Z2 :Paint putty coat | 10d | 2013-09-04 | 2013-09-16 | HCFWF1Z2033 | 120.25d | 83.25d | B3 | 09 | MC | C | FI |
| HCFWF1Z2045 |  | F1 Z2 :Gybsum Board Ceiling | 14d | 2013-12-30 | 2014-01-16 | HCFWF1Z2039, HCFWGFZ2020 | 37d | 0d | B3 | 09 | MC | C | FI |

| ID | WBS | Activity | Duration | Start | Finish | Predecessors | Total float | Free float | Bill No. | Division No. | Responsibility | Phase Code | Trade |
| --- | --- | --- | --- | --- | --- | --- | --- | --- | --- | --- | --- | --- | --- |
|  | MS | **Mecellanuos** |  | 2014-01-16 | 2014-02-13 |  |  |  |  |  |  |  |  |
| HCFWF1Z2041 |  | F1 Z2 :Metal Works | 10d | 2014-01-16 | 2014-01-27 | HCFWF1Z1048, HCFWGFZ2021 | 36d | 0d | B3 | 05 | MC | C | FI |
| HCFWF1Z2038 |  | F1 Z2 :Steel Fire Rated Doors | 10d | 2014-01-28 | 2014-02-08 | HCFWF1Z2041, HCFWGFZ2023 | 38d | 0d | B3 | 08 | MC | C | FI |
| HCFWF1Z2044 |  | F1 Z2 :Wooden Doors | 10d | 2014-01-28 | 2014-02-08 | HCFWF1Z2047 SS, HCFWGFZ2024 | 48d | 0d | B3 | 08 | MC | C | FI |
| HCFWF1Z2047 |  | F1 Z2 :Steel Doors | 10d | 2014-01-28 | 2014-02-08 | HCFWF1Z2038 SS, HCFWF1Z2041, HCFWGFZ2022 | 38d | 0d | B3 | 08 | MC | C | FI |
| HCFWF1Z2050 |  | F1 Z2 :Handrails & Railling | 15d | 2014-01-28 | 2014-02-13 | HCFWF1Z2041 SS, HCFWGFZ2025 | 26d | 0d | B3 | 05 | MC | C | FI |
|  | Z3 | **Zone 3** |  | 2013-06-29 | 2014-03-16 |  |  |  |  |  |  |  |  |
|  | FL | **Floor Finishes** |  | 2013-08-27 | 2014-01-15 |  |  |  |  |  |  |  |  |
| HCFWF1Z3041 |  | F1 Z3 :Foam Concrete Under Floorings | 16d | 2013-08-27 | 2013-09-14 | HCFWF1Z3039 | 0d |  | B3 | 07 | MC | C | FI |
| HCFWF1Z3027 |  | F1 Z3 :Trawelled smooth Concrete screed | 8d | 2013-09-15 | 2013-09-23 | HCFWF1Z3041 | 0d |  | B3 | 03 | MC | C | FI |
| HCFWF1Z3057 |  | F1 Z3 :Epoxy Screed Finish | 10d | 2013-09-24 | 2013-10-05 | HCFWF1Z3027 | 198d | 133d | B3 |  | MC | C | FI |
| HCFWF1Z3028 |  | F1 Z3 :Rubber Flooring | 10d | 2013-10-27 | 2013-11-07 | HCFWF1Z3047 | 46d | 0d | B3 | 09 | MC | C | FI |
| HCFWF1Z3071 |  | F1 Z3 :Stone Flooring All types | 12d | 2013-10-27 | 2013-11-10 | HCFWF1Z3028 SS | 46d | 0d | B3 | 09 | MC | C | FI |
| HCFWF1Z3029 |  | F1 Z3 :Rubber Skirting | 2d | 2013-11-09 | 2013-11-10 | HCFWF1Z3028, HCFWF1Z2030 | 126d | 0d | B3 |  | MC | C | FI |
| HCFWF1Z3060 |  | F1 Z3 :Aluminum & Stainless Steel Skirting | 10d | 2013-11-09 | 2013-11-19 | HCFWF1Z3029 SS | 164d | 99d | B3 | 09 | MC | C | FI |
| HCFWF1Z3054 |  | F1 Z3 :Stone Base Skirting | 10d | 2013-11-11 | 2013-11-21 | HCFWF1Z3071 | 46d | 39d | B3 | 09 | MC | C | FI |
| HCFWF1Z3068 |  | F1 Z3 :Carpet Tile Flooring | 10d | 2013-12-17 | 2013-12-29 | HCFWF1Z3028 SS, HEPSAFI0210 | 131d | 66d | B3 | 09 | MC | C | FI |
| HCFWGFZ4718 |  | F1 Z3: Ceramic Floor Tiles | 10d | 2013-12-17 | 2013-12-29 | HEPSAFI0210, HCFWF1Z3028 SS | 131d | 66d |  |  |  |  |  |
| HCFWF1Z30029 |  | F1 Z3 :Rubber Skirting | 2d | 2014-01-13 | 2014-01-15 | HCFWF1Z20030 | 98d | 0d | B3 |  | MC | C | FI |
|  | WL | **Wall Finishes** |  | 2013-06-29 | 2014-01-23 |  |  |  |  |  |  |  |  |
| HCFWF1Z30046 |  | F1 Z3 :Block Works | 10d | 2013-06-29 | 2013-07-09 | HCSWFFZ3090, HCFWGFZ3011 | 75d | 0d | B3 | 04 | MC | C | FI |
| HCFWF1Z3046 |  | F1 Z3 :Block Works | 10d | 2013-06-29 | 2013-07-09 | HCFWF1Z2032 SS, HCSWFFZ3090, HCFWGFZ3011 | 4d | 0d | B3 | 04 | MC | C | FI |
| HCFWF1Z3065 |  | F1 Z3 :Gybsum Board Partitions | 10d | 2013-07-10 | 2013-07-21 | HCFWF1Z2048 SS, HCFWF1Z3046 | 4d |  | B3 | 10 | MC | C | FI |
| HCFWF1Z3042 |  | F1 Z3 :Plaster First Layer | 8d | 2013-07-27 | 2013-08-04 | HCFWF1Z3046, HCFWF1Z3065, HCFWGFZ3014 | 0d |  | B3 | 09 | MC | C | FI |
| HCFWF1Z3043 |  | F1 Z3 :Plaster Second Layer | 8d | 2013-08-05 | 2013-08-17 | HCFWF1Z3042 | 0d |  | B3 | 09 | MC | C | FI |
| HCFWF1Z3039 |  | F1 Z3 :Plaster Final Layer | 8d | 2013-08-18 | 2013-08-26 | HCFWF1Z3043 | 0d |  | B3 | 09 | MC | C | FI |
| HCFWF1Z3040 |  | F1 Z3 :Paint Prime coat | 12d | 2013-08-27 | 2013-09-09 | HCFWF1Z3039 | 104d | 97d | B3 | 09 | MC | C | FI |
| HCFWF1Z3059 |  | F1 Z3 :Stone Cladding | 10d | 2013-12-28 | 2014-01-08 | HCFWF1Z3067 SS | 7d | 0d | B3 | 04 | MC | C | FI |
| HCFWF1Z3067 |  | F1 Z3 :Glass Wall Cladding | 16d | 2013-12-28 | 2014-01-16 | HCFWF1Z3039, HCFWGFZ3017 | 7d | 0d | B3 | 09 | MC | C | FI |
| HCFWF1Z3051 |  | F1 Z3 :Paint putty coat | 12d | 2014-01-09 | 2014-01-23 | HCFWF1Z3040, HCFWF1Z3054, HCFWF1Z3059, HCFWGFZ3016 | 7d | 0d | B3 | 09 | MC | C | FI |
| HCFWF1Z3058 |  | F1 Z3 :Stainless steel Wire Cloth Finish For Elev Lobby | 10d | 2014-01-09 | 2014-01-21 | HCFWF1Z3051 SS | 113d | 48d | B3 | 05 | MC | C | FI |

| ID | WBS | Activity | Type | Duration | Start | Finish | Predecessors | Total float | Free float | Bill No. | Division No. | Responsibility | Phase Code | Trade |
| --- | --- | --- | --- | --- | --- | --- | --- | --- | --- | --- | --- | --- | --- | --- |
|  | CL | **Ceiling Finishes** |  |  | 2013-09-24 | 2014-03-04 |  |  |  |  |  |  |  |  |
| HCFWF1Z3045 |  | F1 Z3 :Plaster First Layer |  | 8d | 2013-09-24 | 2013-10-02 | HCFWF1Z3027, HCFWGFZ3022, HCFWF1Z3039 | 0d |  | B3 | 09 | MC | C | FI |
| HCFWF1Z3056 |  | F1 Z3 :Plaster Second Layer |  | 8d | 2013-10-03 | 2013-10-12 | HCFWF1Z3045 | 0d |  | B3 | 09 | MC | C | FI |
| HCFWF1Z3047 |  | F1 Z3 :Plaster Final Layer |  | 8d | 2013-10-13 | 2013-10-26 | HCFWF1Z3056 | 0d |  | B3 | 09 | MC | C | FI |
| HCFWF1Z3048 |  | F1 Z3 :Paint Prime coat |  | 10d | 2014-01-25 | 2014-02-04 | HCFWF1Z3040, HCFWF1Z3047, HCFWF1Z3051 | 11d | 0d | B3 | 09 | MC | C | FI |
| HCFWF1Z3050 |  | F1 Z3 :Gybsum Board Ceiling |  | 14d | 2014-02-05 | 2014-02-20 | HCFWF1Z3076 SS, HCFWGFZ3025 | 11d | 0d | B3 | 09 | MC | C | FI |
| HCFWF1Z3076 |  | F1 Z3 :Acoustical Ceiling |  | 10d | 2014-02-05 | 2014-02-16 | HCFWF1Z3048 | 11d | 0d | B3 | 09 | MC | C | FI |
| HCFWF1Z3044 |  | F1 Z3 :Paint putty coat |  | 10d | 2014-02-22 | 2014-03-04 | HCFWF1Z3048, HCFWF1Z3050, HCFWF1Z3076 | 67d | 0d | B3 | 09 | MC | C | FI |
|  | MS | **Mecellanuos** |  |  | 2014-02-05 | 2014-03-16 |  |  |  |  |  |  |  |  |
| HCFWF1Z3053 |  | F1 Z3 :Steel Fire Rated Doors |  | 10d | 2014-02-05 | 2014-02-16 | HCFWF1Z3048, HCFWGFZ3038 | 31d | 0d | B3 | 08 | MC | C | FI |
| HCFWF1Z3061 |  | F1 Z3 :Metal Works |  | 10d | 2014-02-05 | 2014-02-16 | HCFWF1Z3048, HCFWGFZ3036, HCFWGFZ3036 FF | 16d | 0d | B3 | 05 | MC | C | FI |
| HCFWF1Z3066 |  | F1 Z3 :Handrails & Railling |  | 15d | 2014-02-05 | 2014-02-22 | HCFWF1Z3061 SS, HCFWGFZ3031 | 16d | 0d | B3 | 05 | MC | C | FI |
| HCFWF1Z3070 |  | F1 Z3 :Glass Doors |  | 10d | 2014-02-05 | 2014-02-16 | HCFWF1Z3061 SS | 91d | 26d | B3 | 08 | MC | C | FI |
| HCFWF1Z3052 |  | F1 Z3 :Steel Doors |  | 10d | 2014-02-17 | 2014-02-27 | HCFWF1Z3053 SS, HCFWF1Z3061, HCFWGFZ3037 | 21d | 0d | B3 | 08 | MC | C | FI |
| HCFWF1Z3055 |  | F1 Z3 :Wooden Doors |  | 10d | 2014-02-17 | 2014-02-27 | HCFWF1Z3052 SS, HCFWGFZ3030 | 21d | 0d | B3 | 08 | MC | C | FI |
| HCFWF1Z3062 |  | F1 Z3 :Mirror |  | 10d | 2014-03-01 | 2014-03-11 | HCFWF1Z3066 SS, HCFWF1Z3055 | 71d | 0d | B3 | 08 | MC | C | FI |
| HCFWF1Z3063 |  | F1 Z3 :Toilet & corian vanity tops |  | 10d | 2014-03-01 | 2014-03-11 | HCFWF1Z3062 SS, HEPSAFI0270 | 71d | 6d | B3 | 10 | MC | C | FI |
| HCFWF1Z3049 |  | F1 Z3 :Stone Decoration For Benches |  | 10d | 2014-03-05 | 2014-03-16 | HCFWF1Z3066 SS, HCFWF1Z3044 | 67d | 2d | B3 | 04 | MC | C | FI |
|  | F2 | **Second Floor** |  |  | 2013-03-09 | 2014-04-01 |  |  |  |  |  |  |  |  |
| HCFWF20000 |  | Start Finishing Works Second Floor | milestone | 0d | 2013-03-09 | 2013-03-09 | HCSW2FZ1090 | 78d | 4d | B3 |  | MC | C | FI |
| HCFWF20001 |  | End Finishing Works Second Floor | milestone | 0d | 2014-04-01 | 2014-04-01 | HCFWF20000, HCFWF2Z1069, HCFWF2Z1066, HCFWF2Z2053, HCFWF2Z2064, HCFWF2Z3091, HCFWF2Z3074, HCFWF2Z1070, HCFWF2Z1084, HCFWF2Z1094, HCFWF2Z1077, HCFWF2Z2071, HCFWF2Z2055, HCFWF2Z2074, HCFWF2Z2075, HCFWF2Z2069, HCFWF2Z3084, HCFWF2Z3092, HCFWF2Z3103, HCFWF2Z3111, HCFWF2Z3095, HCFWF2Z3089, HCFWF2Z3093, HCFWF2Z3085, HCFWF2Z3079, HCFWF2Z3105, HCFWF2Z3098, HCFWF2Z1728, HCFWF2Z1738, HCFWF2Z1090, HCMEF2Z1270, HCMEF2Z2275, HCMEF2Z3280 | 53d |  | B3 |  | MC | C | FI |
|  | Z1 | **Zone 1** |  |  | 2013-03-09 | 2014-02-25 |  |  |  |  |  |  |  |  |
|  | FL | **Floor Finishes** |  |  | 2013-04-23 | 2014-01-18 |  |  |  |  |  |  |  |  |
| HCFWF2Z1061 |  | F2 Z1Foam Concrete Under Floorings |  | 16d | 2013-04-23 | 2013-05-13 | HCFWF2Z1067 | 100d | 0d | B3 | 07 | MC | C | FI |
| HCFWF2Z1057 |  | F2 Z1Trawelled smooth Concrete screed |  | 8d | 2013-05-13 | 2013-05-22 | HCFWF2Z1061 | 100d | 29d | B3 | 03 | MC | C | FI |
| HCFWF2Z1073 |  | F2 Z1Rubber Flooring |  | 10d | 2013-07-27 | 2013-08-06 | HCFWF2Z1074 | 80d | 0d | B3 | 09 | MC | C | FI |
| HCFWF2Z1081 |  | F2 Z1Stone Flooring |  | 12d | 2013-07-27 | 2013-08-12 | HCFWF2Z1073 SS | 80d | 0d | B3 | 09 | MC | C | FI |
| HCFWF2Z1099 |  | F2 Z1Stone Base Skirting |  | 10d | 2013-08-13 | 2013-08-24 | HCFWF2Z1081 | 198d | 72d | B3 | 09 | MC | C | FI |
| HCFWF2Z1084 |  | F2 Z1Rubber Skirting |  | 2d | 2013-11-11 | 2013-11-12 | HCFWF2Z1073, HCFWF2Z1099 SS, HCFWF1Z3029 | 126d | 0d | B3 |  | MC | C | FI |
| HCFWF2Z1070 |  | F2 Z1Carpet Floor Tiles |  | 10d | 2013-12-17 | 2013-12-29 | HCFWF2Z1073 SS, HEPSAFI0210 | 131d | 78d | B3 | 09 | MC | C | FI |
| HCFWF2Z1728 |  | F2 Z1Ceramic Floor Tiles |  | 10d | 2013-12-17 | 2013-12-29 | HEPSAFI0210, HCFWF2Z1073 SS | 131d | 78d |  |  |  |  |  |
| HCFWF2Z1010 |  | F2 Z1Rubber Skirting |  | 2d | 2014-01-16 | 2014-01-18 | HCFWF1Z30029 | 98d | 0d | B3 |  | MC | C | FI |

| ID | WBS | Activity | Duration | Start | Finish | Predecessors | Total float | Free float | Bill No. | Division No. | Responsibility | Phase Code | Trade |
| --- | --- | --- | --- | --- | --- | --- | --- | --- | --- | --- | --- | --- | --- |
|  | WL | **Wall Finishes** |  | 2013-03-09 | 2014-02-23 |  |  |  |  |  |  |  |  |
| HCFWF2Z11063 |  | F2 Z1Block Works | 10d | 2013-03-09 | 2013-03-19 | HCSW2FZ1090 | 78d | 0d | B3 | 04 | MC | C | FI |
| HCFWF2Z1063 |  | F2 Z1Block Works | 10d | 2013-03-13 | 2013-03-24 | HCSW2FZ1090, HCFWF1Z1033, HCFWF20000 | 74d | 0d | B3 | 04 | MC | C | FI |
| HCFWF2Z1089 |  | F2 Z1Gybsum Board Partitions | 10d | 2013-03-13 | 2013-03-24 | HCFWF2Z1063 SS | 128d | 48d | B3 | 10 | MC | C | FI |
| HCFWF2Z1055 |  | F2 Z1Plaster First Layer | 8.75d | 2013-03-25 | 2013-04-03 | HCFWF2Z1063 | 100d | 0d | B3 | 09 | MC | C | FI |
| HCFWF2Z1076 |  | F2 Z1Plaster Second Layer | 8d | 2013-04-03 | 2013-04-13 | HCFWF2Z1055 | 100d | 0d | B3 | 09 | MC | C | FI |
| HCFWF2Z1067 |  | F2 Z1Plaster Final Layer | 8.75d | 2013-04-13 | 2013-04-23 | HCFWF2Z1076 | 100d | 0d | B3 | 09 | MC | C | FI |
| HCFWF2Z1075 |  | F2 Z1Stone Cladding | 10d | 2013-04-23 | 2013-05-06 | HCFWF2Z1067 | 242.5d | 217.5d | B3 | 04 | MC | C | FI |
| HCFWF2Z1068 |  | F2 Z1Paint Prime coat | 12d | 2013-04-25 | 2013-05-11 | HCFWF2Z1067, HCFWF1Z1038 | 222.5d | 11.5d | B3 | 09 | MC | C | FI |
| HCFWF2Z1086 |  | F2 Z1Glass Wall Cladding | 16d | 2014-01-18 | 2014-02-04 | HCFWF2Z1075 SS, HCFWF1Z1056 | 25d | 0d | B3 | 09 | MC | C | FI |
| HCFWF2Z1069 |  | F2 Z1Paint putty coat | 16d | 2014-02-05 | 2014-02-23 | HCFWF2Z1068, HCFWF2Z1086, HCFWF2Z1086 FF, HCFWF1Z1034 | 37d | 0d | B3 | 09 | MC | C | FI |
|  | CL | **Ceiling Finishes** |  | 2013-06-26 | 2014-02-15 |  |  |  |  |  |  |  |  |
| HCFWF2Z1072 |  | F2 Z1Plaster First Layer | 8.75d | 2013-06-26 | 2013-07-07 | HCFWF2Z1057, HCFWF1Z1039 | 71d | 0d | B3 | 09 | MC | C | FI |
| HCFWF2Z1083 |  | F2 Z1Plaster Second Layer | 8d | 2013-07-07 | 2013-07-16 | HCFWF2Z1072 | 71d | 0d | B3 | 09 | MC | C | FI |
| HCFWF2Z1074 |  | F2 Z1Plaster Final Layer | 8.75d | 2013-07-16 | 2013-07-25 | HCFWF2Z1083 | 71d | 0d | B3 | 09 | MC | C | FI |
| HCFWF2Z1060 |  | F2 Z1Paint Prime coat | 10d | 2013-07-27 | 2013-08-06 | HCFWF2Z1068, HCFWF2Z1074 | 166d | 128d | B3 | 09 | MC | C | FI |
| HCFWF2Z1082 |  | F2 Z1Gybsum Board Ceiling | 14d | 2014-01-19 | 2014-02-03 | HCFWF2Z1060, HCFWF1Z1052 | 36d | 0d | B3 | 09 | MC | C | FI |
| HCFWF2Z1087 |  | F2 Z1Acoustical Ceiling | 10d | 2014-01-19 | 2014-01-29 | HCFWF2Z1082 SS | 36d | 0d | B3 | 09 | MC | C | FI |
| HCFWF2Z1066 |  | F2 Z1Paint putty coat | 10d | 2014-01-30 | 2014-02-10 | HCFWF2Z1060, HCFWF2Z1087 | 96d | 43d | B3 | 09 | MC | C | FI |
| HCFWF2Z1090 |  | F2 Z1Spicial Metal Ceiling | 14d | 2014-01-30 | 2014-02-15 | HCFWF1Z1728 SS, HCFWF2Z1087 | 36d | 0d |  |  |  |  |  |
|  | MS | **Miscellaneous** |  | 2014-01-16 | 2014-02-25 |  |  |  |  |  |  |  |  |
| HCFWF2Z1078 |  | F2 Z1Metal Works | 10d | 2014-01-16 | 2014-01-27 | HCFWF2Z1060, HCFWF1Z1048, HCFWF1Z1048 FF | 38d | 0d | B3 | 05 | MC | C | FI |
| HCFWF2Z1079 |  | F2 Z1Steel Fire Rated Doors | 10d | 2014-01-16 | 2014-01-27 | HCFWF2Z1060, HCFWF1Z1044 | 58d | 0d | B3 | 08 | MC | C | FI |
| HCFWF2Z1065 |  | F2 Z1Steel Doors | 10d | 2014-01-28 | 2014-02-08 | HCFWF2Z1079 SS, HCFWF2Z1078, HCFWF1Z1040 | 48d | 0d | B3 | 08 | MC | C | FI |
| HCFWF2Z1077 |  | F2 Z1Wooden Doors | 10d | 2014-02-03 | 2014-02-13 | HCFWF2Z1065 SS, HCFWF1Z1047 | 43d | 0d | B3 | 08 | MC | C | FI |
| HCFWF2Z1071 |  | F2 Z1Handrails & Railling | 15d | 2014-02-09 | 2014-02-25 | HCFWF2Z1078 SS, HCFWF1Z1041 | 28d | 0d | B3 | 05 | MC | C | FI |
| HCFWF2Z1088 |  | F2 Z1Mirrors | 10d | 2014-02-15 | 2014-02-25 | HCFWF2Z1071 SS, HCFWF2Z1077 | 83d | 0d | B3 | 08 | MC | C | FI |
| HCFWF2Z1094 |  | F2 Z1Toilet & corian vanity tops | 10d | 2014-02-15 | 2014-02-25 | HCFWF2Z1088 SS, HEPSAFI0270 | 83d | 30d | B3 | 10 | MC | C | FI |

| ID | WBS | Activity | Duration | Start | Finish | Predecessors | Total float | Free float | Bill No. | Division No. | Responsibility | Phase Code | Trade |
| --- | --- | --- | --- | --- | --- | --- | --- | --- | --- | --- | --- | --- | --- |
|  | Z2 | **Zone 2** |  | 2013-05-05 | 2014-03-03 |  |  |  |  |  |  |  |  |
|  | FL | **Floor Finishes** |  | 2013-07-06 | 2014-01-20 |  |  |  |  |  |  |  |  |
| HCFWF2Z2051 |  | F2 Z2 :Foam Concrete Under Floorings | 16d | 2013-07-06 | 2013-07-23 | HCFWF2Z2056 | 58d | 0d | B3 | 07 | MC | C | FI |
| HCFWF2Z2052 |  | F2 Z2 :Trawelled smooth Concrete screed | 8d | 2013-07-24 | 2013-08-01 | HCFWF2Z2051 | 58d | 0d | B3 | 03 | MC | C | FI |
| HCFWF2Z2068 |  | F2 Z2 :Stone Flooring | 12d | 2013-08-03 | 2013-08-19 | HCFWF2Z2052 | 74d | 0d | B3 | 09 | MC | C | FI |
| HCFWF2Z2054 |  | F2 Z2 :Rubber Flooring | 10d | 2013-09-03 | 2013-09-14 | HCFWF2Z2067, HCFWF2Z2068 SS | 172d | 46d | B3 | 09 | MC | C | FI |
| HCFWF2Z2055 |  | F2 Z2 :Rubber Skirting | 2d | 2013-11-13 | 2013-11-14 | HCFWF2Z2054, HCFWF2Z1084 | 126d | 18d | B3 |  | MC | C | FI |
| HCFWF2Z2071 |  | F2 Z2 :Carpet Tiles | 10d | 2013-12-17 | 2013-12-29 | HCFWF2Z2054 SS, HEPSAFI0210 | 131d | 78d | B3 |  | MC | C | FI |
| HCFWF2Z21055 |  | F2 Z2 :Rubber Skirting | 2d | 2014-01-19 | 2014-01-20 | HCFWF2Z1010 | 98d | 0d | B3 |  | MC | C | FI |
|  | WL | **Wall Finishes** |  | 2013-05-05 | 2014-02-04 |  |  |  |  |  |  |  |  |
| HCFWF2Z21057 |  | F2 Z2 :Block Works | 10d | 2013-05-05 | 2013-05-15 | HCFWF2Z11063 SS, HCSW2FZ2090 | 121d | 0d | B3 | 04 | MC | C | FI |
| HCFWF2Z2057 |  | F2 Z2 :Block Works | 10d | 2013-05-09 | 2013-05-20 | HCFWF2Z1063 SS, HCSW2FZ2090, HCFWF1Z2032 | 72d | 0d | B3 | 04 | MC | C | FI |
| HCFWF2Z2073 |  | F2 Z2 :Gybsum Board Partitions | 10d | 2013-05-09 | 2013-05-20 | HCFWF2Z2057 SS, HCFWF2Z1089 SS | 80d | 39d | B3 | 10 | MC | C | FI |
| HCFWF2Z2059 |  | F2 Z2 :Plaster First Layer | 8d | 2013-06-08 | 2013-06-16 | HCFWF2Z2057, HCFWF1Z2031 | 58d | 0d | B3 | 09 | MC | C | FI |
| HCFWF2Z2060 |  | F2 Z2 :Plaster Second Layer | 8d | 2013-06-17 | 2013-06-25 | HCFWF2Z2059 | 58d | 0d | B3 | 09 | MC | C | FI |
| HCFWF2Z2056 |  | F2 Z2 :Plaster Final Layer | 8d | 2013-06-26 | 2013-07-04 | HCFWF2Z2060 | 58d | 0d | B3 | 09 | MC | C | FI |
| HCFWF2Z2062 |  | F2 Z2 :Paint Prime coat | 12d | 2013-08-24 | 2013-09-07 | HCFWF2Z2056, HCFWF1Z2037 | 118.25d | 0d | B3 | 09 | MC | C | FI |
| HCFWF2Z2053 |  | F2 Z2 :Paint putty coat | 16d | 2013-09-07 | 2013-09-25 | HCFWF2Z2062, HCFWF1Z2028 | 158.25d | 0d | B3 | 09 | MC | C | FI |
| HCFWF2Z2074 |  | F2 Z2 :Glass Wall Cladding | 16d | 2014-01-18 | 2014-02-04 | HCFWF2Z2056, HCFWF1Z2049 | 37d | 0d | B3 | 09 | MC | C | FI |
|  | CL | **Ceiling Finishes** |  | 2013-08-03 | 2014-02-13 |  |  |  |  |  |  |  |  |
| HCFWF2Z2065 |  | F2 Z2 :Plaster First Layer | 8d | 2013-08-03 | 2013-08-14 | HCFWF2Z2052, HCFWF1Z2042, HCFWF2Z2056 | 58d | 0d | B3 | 09 | MC | C | FI |
| HCFWF2Z2061 |  | F2 Z2 :Plaster Second Layer | 8d | 2013-08-15 | 2013-08-24 | HCFWF2Z2065 | 58d | 0d | B3 | 09 | MC | C | FI |
| HCFWF2Z2067 |  | F2 Z2 :Plaster Final Layer | 8d | 2013-08-25 | 2013-09-02 | HCFWF2Z2061 | 58d | 0d | B3 | 09 | MC | C | FI |
| HCFWF2Z2058 |  | F2 Z2 :Paint Prime coat | 10d | 2013-09-07 | 2013-09-18 | HCFWF2Z2062, HCFWF2Z2067 | 132.25d | 95.25d | B3 | 09 | MC | C | FI |
| HCFWF2Z2070 |  | F2 Z2 :Gybsum Board Ceiling | 14d | 2014-01-18 | 2014-02-02 | HCFWF2Z2058, HCFWF1Z2045 | 37d | 0d | B3 | 09 | MC | C | FI |
| HCFWF2Z2064 |  | F2 Z2 :Paint putty coat | 10d | 2014-02-03 | 2014-02-13 | HCFWF2Z2058, HCFWF2Z2070 | 93d | 40d | B3 | 09 | MC | C | FI |

| ID | WBS | Activity | Duration | Start | Finish | Predecessors | Total float | Free float | Bill No. | Division No. | Responsibility | Phase Code | Trade |
| --- | --- | --- | --- | --- | --- | --- | --- | --- | --- | --- | --- | --- | --- |
|  | MS | **Mecellanuos** |  | 2014-01-28 | 2014-03-03 |  |  |  |  |  |  |  |  |
| HCFWF2Z2066 |  | F2 Z2 :Metal Works | 10d | 2014-01-28 | 2014-02-08 | HCFWF2Z1078, HCFWF2Z2058, HCFWF1Z2041 | 38d | 0d | B3 | 05 | MC | C | FI |
| HCFWF2Z2063 |  | F2 Z2 :Steel Fire Rated Doors | 10d | 2014-02-09 | 2014-02-19 | HCFWF2Z2058, HCFWF1Z2038 | 38d | 0d | B3 | 08 | MC | C | FI |
| HCFWF2Z2069 |  | F2 Z2 :Wooden Doors | 10d | 2014-02-09 | 2014-02-19 | HCFWF2Z2072 SS, HCFWF1Z2044 | 48d | 0d | B3 | 08 | MC | C | FI |
| HCFWF2Z2072 |  | F2 Z2 :Steel Doors | 10d | 2014-02-09 | 2014-02-19 | HCFWF2Z2063 SS, HCFWF2Z2066, HCFWF1Z2047 | 38d | 0d | B3 | 08 | MC | C | FI |
| HCFWF2Z2075 |  | F2 Z2 :Handrails & Railling | 15d | 2014-02-15 | 2014-03-03 | HCFWF2Z2066 SS, HCFWF1Z2050 | 26d | 0d | B3 | 05 | MC | C | FI |
|  | Z3 | **Zone 3** |  | 2013-06-25 | 2014-03-23 |  |  |  |  |  |  |  |  |
|  | FL | **Floor Finishes** |  | 2013-09-24 | 2014-01-22 |  |  |  |  |  |  |  |  |
| HCFWF2Z3081 |  | F2 Z3 :Foam Concrete Under Floorings | 16d | 2013-09-24 | 2013-10-12 | HCFWF2Z3069 | 0d |  | B3 | 07 | MC | C | FI |
| HCFWF2Z3072 |  | F2 Z3 :Trawelled smooth Concrete screed | 8d | 2013-10-13 | 2013-10-26 | HCFWF2Z3081 | 0d |  | B3 | 03 | MC | C | FI |
| HCFWF2Z3092 |  | F2 Z3 :Epoxy Screed Finish | 10d | 2013-10-27 | 2013-11-07 | HCFWF2Z3072 | 174d | 121d | B3 |  | MC | C | FI |
| HCFWF2Z3073 |  | F2 Z3 :Rubber Flooring | 10d | 2013-11-25 | 2013-12-05 | HCFWF2Z3082 | 72d | 0d | B3 | 09 | MC | C | FI |
| HCFWF2Z3111 |  | F2 Z3 :Stone Flooring All types | 12d | 2013-11-25 | 2013-12-08 | HCFWF2Z3073 SS | 72d | 0d | B3 | 09 | MC | C | FI |
| HCFWF2Z3064 |  | F2 Z3 :Rubber Skirting | 2d | 2013-12-07 | 2013-12-08 | HCFWF2Z3073, HCFWF2Z2055 | 108d | 0d | B3 |  | MC | C | FI |
| HCFWF2Z3095 |  | F2 Z3 :Aluminum & Stainless Steel Skirting | 10d | 2013-12-07 | 2013-12-17 | HCFWF2Z3064 SS | 140d | 87d | B3 | 09 | MC | C | FI |
| HCFWF2Z3084 |  | F2 Z3 :Stone Base Skirting | 10d | 2013-12-09 | 2013-12-19 | HCFWF2Z3111 | 138d | 85d | B3 | 09 | MC | C | FI |
| HCFWF2Z1738 |  | F2 Z3 :Ceramic Floor Tiles | 10d | 2013-12-17 | 2013-12-29 | HCFWF2Z3073 SS, HEPSAFI0210 | 131d | 78d |  |  |  |  |  |
| HCFWF2Z3103 |  | F2 Z3 :Carpet Tile Flooring | 10d | 2013-12-17 | 2013-12-29 | HCFWF2Z3073 SS, HEPSAFI0210 | 131d | 78d | B3 | 09 | MC | C | FI |
| HCFWGFZ3064 |  | F2 Z3 :GF Z3 :Rubber Skirting | 2d | 2014-01-21 | 2014-01-22 | HCFWF2Z21055 | 98d | 0d | B3 |  | MC | C | FI |
|  | WL | **Wall Finishes** |  | 2013-06-25 | 2014-02-11 |  |  |  |  |  |  |  |  |
| HCFWF2Z3100 |  | F2 Z3 :Gybsum Board Partitions | 10d | 2013-06-25 | 2013-07-06 | HCFWF2Z2073 SS, HCSW2FZ3090 | 41d | 13d | B3 | 10 | MC | C | FI |
| HCFWF2Z3086 |  | F2 Z3 :Block Works | 10d | 2013-07-10 | 2013-07-21 | HCFWF2Z2057 SS, HCFWF2Z3100 SS, HCSW2FZ3090, HCFWF1Z3046 | 28d | 0d | B3 | 04 | MC | C | FI |
| HCFWGFZ3086 |  | F2 Z3 :GF Z3 :Block Works | 10d | 2013-07-10 | 2013-07-21 | HCFWF2Z21057 SS, HCSW2FZ3090, HCFWF1Z30046 | 75d | 0d | B3 | 04 | MC | C | FI |
| HCFWF2Z3077 |  | F2 Z3 :Plaster First Layer | 8d | 2013-08-27 | 2013-09-04 | HCFWF2Z3086, HCFWF1Z3039 | 0d |  | B3 | 09 | MC | C | FI |
| HCFWF2Z3078 |  | F2 Z3 :Plaster Second Layer | 8d | 2013-09-05 | 2013-09-14 | HCFWF2Z3077 | 0d |  | B3 | 09 | MC | C | FI |
| HCFWF2Z3069 |  | F2 Z3 :Plaster Final Layer | 8d | 2013-09-15 | 2013-09-23 | HCFWF2Z3078 | 0d |  | B3 | 09 | MC | C | FI |
| HCFWF2Z3075 |  | F2 Z3 :Paint Prime coat | 10d | 2013-09-24 | 2013-10-05 | HCFWF2Z3069 | 94d | 87d | B3 | 09 | MC | C | FI |
| HCFWF2Z3089 |  | F2 Z3 :Stone Cladding | 10d | 2014-01-18 | 2014-01-28 | HCFWF2Z3102 SS | 107d | 54d | B3 | 04 | MC | C | FI |
| HCFWF2Z3102 |  | F2 Z3 :Glass Wall Cladding | 16d | 2014-01-18 | 2014-02-04 | HCFWF2Z3069, HCFWF1Z3067 | 43d | 0d | B3 | 09 | MC | C | FI |
| HCFWF2Z3091 |  | F2 Z3 :Paint putty coat | 10d | 2014-01-25 | 2014-02-04 | HCFWF2Z3075, HCFWF1Z3051 | 7d | 0d | B3 | 09 | MC | C | FI |
| HCFWF2Z3093 |  | F2 Z3 :Stainless steel Wire Cloth Finish For Elev Lobby | 16d | 2014-01-25 | 2014-02-11 | HCFWF2Z3091 SS | 95d | 42d | B3 | 05 | MC | C | FI |

| ID | WBS | Activity | Type | Duration | Start | Finish | Predecessors | Total float | Free float | Bill No. | Division No. | Responsibility | Phase Code | Trade |
| --- | --- | --- | --- | --- | --- | --- | --- | --- | --- | --- | --- | --- | --- | --- |
|  | CL | **Ceiling Finishes** |  |  | 2013-10-27 | 2014-03-09 |  |  |  |  |  |  |  |  |
| HCFWF2Z3080 |  | F2 Z3 :Plaster First Layer |  | 8d | 2013-10-27 | 2013-11-04 | HCFWF2Z3072, HCFWF1Z3047, HCFWF2Z3069 | 0d |  | B3 | 09 | MC | C | FI |
| HCFWF2Z3096 |  | F2 Z3 :Plaster Second Layer |  | 8d | 2013-11-06 | 2013-11-14 | HCFWF2Z3080 | 0d |  | B3 | 09 | MC | C | FI |
| HCFWF2Z3082 |  | F2 Z3 :Plaster Final Layer |  | 8d | 2013-11-16 | 2013-11-24 | HCFWF2Z3096 | 0d |  | B3 | 09 | MC | C | FI |
| HCFWF2Z3083 |  | F2 Z3 :Paint Prime coat |  | 10d | 2014-02-05 | 2014-02-16 | HCFWF2Z3075, HCFWF2Z3082, HCFWF2Z3091 | 15d | 0d | B3 | 09 | MC | C | FI |
| HCFWF2Z3074 |  | F2 Z3 :Paint putty coat |  | 10d | 2014-02-17 | 2014-02-27 | HCFWF2Z3083 | 81d | 28d | B3 | 09 | MC | C | FI |
| HCFWF2Z3116 |  | F2 Z3 :Acoustical Ceiling |  | 10d | 2014-02-17 | 2014-02-27 | HCFWF2Z3083 | 15d | 4d | B3 | 09 | MC | C | FI |
| HCFWF2Z3085 |  | F2 Z3 :Gybsum Board Ceiling |  | 14d | 2014-02-22 | 2014-03-09 | HCFWF2Z3116 SS, HCFWF2Z3083, HCFWF1Z3050 | 11d | 0d | B3 | 09 | MC | C | FI |
|  | MS | **Mecellanuos** |  |  | 2014-02-17 | 2014-03-23 |  |  |  |  |  |  |  |  |
| HCFWF2Z3088 |  | F2 Z3 :Steel Fire Rated Doors |  | 10d | 2014-02-17 | 2014-02-27 | HCFWF2Z3083, HCFWF1Z3053 | 31d | 2d | B3 | 08 | MC | C | FI |
| HCFWF2Z3101 |  | F2 Z3 :Metal Works |  | 10d | 2014-02-17 | 2014-02-27 | HCFWF2Z3083, HCFWF1Z3061, HCFWF1Z3061 FF | 21d | 0d | B3 | 05 | MC | C | FI |
| HCFWF2Z3105 |  | F2 Z3 :Glass Doors |  | 10d | 2014-02-17 | 2014-02-27 | HCFWF2Z3101 SS | 81d | 28d | B3 | 08 | MC | C | FI |
| HCFWF2Z3079 |  | F2 Z3 :Stone Decoration For Benches |  | 10d | 2014-02-23 | 2014-03-05 | HCFWF2Z3106 SS | 76d | 23d | B3 | 04 | MC | C | FI |
| HCFWF2Z3106 |  | F2 Z3 :Handrails & Railling |  | 15d | 2014-02-23 | 2014-03-11 | HCFWF2Z3101 SS, HCFWF1Z3066 | 16d | 0d | B3 | 05 | MC | C | FI |
| HCFWF2Z3087 |  | F2 Z3 :Steel Doors |  | 10d | 2014-03-01 | 2014-03-11 | HCFWF2Z3088 SS, HCFWF2Z3101, HCFWF1Z3052 | 21d | 0d | B3 | 08 | MC | C | FI |
| HCFWF2Z3090 |  | F2 Z3 :Wooden Doors |  | 10d | 2014-03-01 | 2014-03-11 | HCFWF2Z3087 SS, HCFWF1Z3055 | 21d | 0d | B3 | 08 | MC | C | FI |
| HCFWF2Z3097 |  | F2 Z3 :Mirror |  | 10d | 2014-03-12 | 2014-03-23 | HCFWF2Z3106 SS, HCFWF2Z3090 | 61d | 0d | B3 | 08 | MC | C | FI |
| HCFWF2Z3098 |  | F2 Z3 :Toilet & corian vanity tops |  | 10d | 2014-03-12 | 2014-03-23 | HCFWF2Z3097 SS, HCFWF2Z3090, HEPSAFI0270 | 61d | 8d | B3 | 10 | MC | C | FI |
|  | F3 | **Third Floor** |  |  | 2013-03-16 | 2014-04-15 |  |  |  |  |  |  |  |  |
| HCFWF30000 |  | Start Finishing Works Third Floor | milestone | 0d | 2013-03-16 | 2013-03-16 | HCSW3FZ1090 | 96d | 8d | B3 |  | MC | C | FI |
| HCFWF30001 |  | End Finishing Works Third Floor | milestone | 0d | 2014-04-15 | 2014-04-15 | HCFWF30000, HCFWF3Z1104, HCFWF3Z1096, HCFWF3Z2078, HCFWF3Z2089, HCFWF3Z3131, HCFWF3Z3104, HCFWF3Z1095, HCFWF3Z1111, HCFWF3Z1119, HCFWF3Z1116, HCFWF3Z1117, HCFWF3Z1129, HCFWF3Z1107, HCFWF3Z2096, HCFWF3Z2080, HCFWF3Z2099, HCFWF3Z2095, HCFWF3Z2100, HCFWF3Z2094, HCFWF3Z3114, HCFWF3Z3127, HCFWF3Z3138, HCFWF3Z3130, HCFWF3Z3119, HCFWF3Z3128, HCFWF3Z3120, HCFWF3Z3109, HCFWF3Z3133, HCFWF3Z3140, HCFWF3Z3125, HCFWF3Z1748, HCFWF3Z3758, HCFWF3Z1120, HCMEF3Z1275, HCMEF3Z2280, HCMEF3Z3285 | 41d |  | B3 |  | MC | C | FI |
|  | Z1 | **Zone 1** |  |  | 2013-03-20 | 2014-03-15 |  |  |  |  |  |  |  |  |
|  | FL | **Floor Finishes** |  |  | 2013-05-26 | 2014-01-25 |  |  |  |  |  |  |  |  |
| HCFWF3Z1091 |  | F3 Z1 :Foam Concrete Under Floorings |  | 16d | 2013-05-26 | 2013-06-12 | HCFWF3Z1097 | 100d | 0d | B3 | 07 | MC | C | FI |
| HCFWF3Z1092 |  | F3 Z1 :Trawelled smooth Concrete screed |  | 8d | 2013-06-13 | 2013-06-22 | HCFWF3Z1091 | 100d | 29d | B3 | 03 | MC | C | FI |
| HCFWF3Z1103 |  | F3 Z1 :Rubber Flooring |  | 10d | 2013-08-28 | 2013-09-09 | HCFWF3Z1109 | 78.5d | 0d | B3 | 09 | MC | C | FI |
| HCFWF3Z1111 |  | F3 Z1 :Stone Flooring |  | 12d | 2013-08-28 | 2013-09-11 | HCFWF3Z1103 SS | 78.5d | 0d | B3 | 09 | MC | C | FI |
| HCFWF3Z1134 |  | F3 Z1 :Stone Base Skirting |  | 10d | 2013-09-11 | 2013-09-23 | HCFWF3Z1111 | 178.5d | 70.5d | B3 | 09 | MC | C | FI |
| HCFWF3Z1119 |  | F3 Z1 :Rubber Skirting |  | 2d | 2013-12-09 | 2013-12-10 | HCFWF3Z1103, HCFWF3Z1134 SS, HCFWF2Z3064 | 108d | 0d | B3 |  | MC | C | FI |
| HCFWF3Z1095 |  | F3 Z1 :Carpet Floor Tiles |  | 10d | 2013-12-17 | 2013-12-29 | HCFWF3Z1103 SS, HEPSAFI0210 | 131d | 90d | B3 | 09 | MC | C | FI |
| HCFWF3Z1748 |  | F3 Z1 :Ceramic Floor Tiles |  | 10d | 2013-12-17 | 2013-12-29 | HCFWF3Z1103 SS, HEPSAFI0210 | 131d | 90d |  |  |  |  |  |
| HCFWF3Z11119 |  | F3 Z1 :Rubber Skirting |  | 2d | 2014-01-23 | 2014-01-25 | HCFWGFZ3064 | 98d | 0d | B3 |  | MC | C | FI |

| ID | WBS | Activity | Duration | Start | Finish | Predecessors | Total float | Free float | Bill No. | Division No. | Responsibility | Phase Code | Trade |
| --- | --- | --- | --- | --- | --- | --- | --- | --- | --- | --- | --- | --- | --- |
|  | WL | **Wall Finishes** |  | 2013-03-20 | 2014-03-09 |  |  |  |  |  |  |  |  |
| HCFWF3Z11093 |  | F3 Z1 :Block Works | 10d | 2013-03-20 | 2013-03-31 | HCSW3FZ1090, HCFWF2Z11063 | 92d | 0d | B3 | 04 | MC | C | FI |
| HCFWF3Z1093 |  | F3 Z1 :Block Works | 10d | 2013-03-25 | 2013-04-04 | HCSW3FZ1090, HCFWF2Z1063, HCFWF30000 | 88d | 0d | B3 | 04 | MC | C | FI |
| HCFWF3Z1124 |  | F3 Z1 :Gybsum Board Partitions | 10d | 2013-03-25 | 2013-04-04 | HCFWF3Z1093 SS, HCSW3FZ1090 | 142d | 48d | B3 | 10 | MC | C | FI |
| HCFWF3Z1080 |  | F3 Z1 :Plaster First Layer | 8.75d | 2013-04-23 | 2013-05-05 | HCFWF3Z1093, HCFWF2Z1067 | 100d | 0d | B3 | 09 | MC | C | FI |
| HCFWF3Z1106 |  | F3 Z1 :Plaster Second Layer | 8d | 2013-05-05 | 2013-05-14 | HCFWF3Z1080 | 100d | 0d | B3 | 09 | MC | C | FI |
| HCFWF3Z1097 |  | F3 Z1 :Plaster Final Layer | 8.75d | 2013-05-14 | 2013-05-23 | HCFWF3Z1106 | 100d | 0d | B3 | 09 | MC | C | FI |
| HCFWF3Z1098 |  | F3 Z1 :Paint Prime coat | 12d | 2013-05-26 | 2013-06-08 | HCFWF3Z1097, HCFWF2Z1068 | 211d | 13.5d | B3 | 09 | MC | C | FI |
| HCFWF3Z1100 |  | F3 Z1 :Stone Cladding | 10d | 2013-05-26 | 2013-06-05 | HCFWF3Z1097 | 233d | 208d | B3 | 04 | MC | C | FI |
| HCFWF3Z1116 |  | F3 Z1 :Glass Wall Cladding | 16d | 2014-02-05 | 2014-02-23 | HCFWF3Z1100 SS, HCFWF2Z1086 | 25d | 0d | B3 | 09 | MC | C | FI |
| HCFWF3Z1104 |  | F3 Z1 :Paint putty coat | 12d | 2014-02-24 | 2014-03-09 | HCFWF3Z1098, HCFWF2Z1069 | 37d | 0d | B3 | 09 | MC | C | FI |
|  | CL | **Ceiling Finishes** |  | 2013-07-27 | 2014-03-03 |  |  |  |  |  |  |  |  |
| HCFWF3Z1102 |  | F3 Z1 :Plaster First Layer | 8.75d | 2013-07-27 | 2013-08-05 | HCFWF3Z1092, HCFWF2Z1074, HCFWF3Z1097, HCFWF3Z1097 FF | 71d | 0d | B3 | 09 | MC | C | FI |
| HCFWF3Z1113 |  | F3 Z1 :Plaster Second Layer | 8d | 2013-08-05 | 2013-08-18 | HCFWF3Z1102 | 71d | 0d | B3 | 09 | MC | C | FI |
| HCFWF3Z1109 |  | F3 Z1 :Plaster Final Layer | 8.75d | 2013-08-18 | 2013-08-28 | HCFWF3Z1113 | 71d | 0d | B3 | 09 | MC | C | FI |
| HCFWF3Z1085 |  | F3 Z1 :Paint Prime coat | 10d | 2013-08-28 | 2013-09-09 | HCFWF3Z1098, HCFWF3Z1109 | 144.5d | 0d | B3 | 09 | MC | C | FI |
| HCFWF3Z1096 |  | F3 Z1 :Paint putty coat | 10d | 2013-09-09 | 2013-09-21 | HCFWF3Z1085 | 144.5d | 108.5d | B3 | 09 | MC | C | FI |
| HCFWF3Z1112 |  | F3 Z1 :Gybsum Board Ceiling | 14d | 2014-02-04 | 2014-02-19 | HCFWF3Z1096, HCFWF2Z1082 | 36d | 0d | B3 | 09 | MC | C | FI |
| HCFWF3Z1117 |  | F3 Z1 :Acoustical Ceiling | 10d | 2014-02-04 | 2014-02-15 | HCFWF3Z1112 SS | 46d | 4d | B3 | 09 | MC | C | FI |
| HCFWF3Z1120 |  | F3 Z1 :Spicial Metal Ceiling | 14d | 2014-02-16 | 2014-03-03 | HCFWF2Z1090, HCFWF3Z1117 SS | 36d | 0d |  |  |  |  |  |
|  | MS | **Miscellaneous** |  | 2014-01-28 | 2014-03-15 |  |  |  |  |  |  |  |  |
| HCFWF3Z1108 |  | F3 Z1 :Metal Works | 10d | 2014-01-28 | 2014-02-08 | HCFWF3Z1085, HCFWF2Z1078, HCFWF2Z1078 FF | 38d | 0d | B3 | 05 | MC | C | FI |
| HCFWF3Z1114 |  | F3 Z1 :Steel Fire Rated Doors | 10d | 2014-01-28 | 2014-02-08 | HCFWF3Z1085, HCFWF2Z1079 | 58d | 0d | B3 | 08 | MC | C | FI |
| HCFWF3Z1090 |  | F3 Z1 :Steel Doors | 10d | 2014-02-09 | 2014-02-19 | HCFWF3Z1114 SS, HCFWF3Z1108, HCFWF2Z1065 | 48d | 0d | B3 | 08 | MC | C | FI |
| HCFWF3Z1107 |  | F3 Z1 :Wooden Doors | 10d | 2014-02-15 | 2014-02-25 | HCFWF3Z1090 SS, HCFWF2Z1077 | 43d | 0d | B3 | 08 | MC | C | FI |
| HCFWF3Z1101 |  | F3 Z1 :Handrails & Railling | 15d | 2014-02-26 | 2014-03-15 | HCFWF3Z1108 SS, HCFWF2Z1071 | 28d | 0d | B3 | 05 | MC | C | FI |
| HCFWF3Z1118 |  | F3 Z1 :Mirrors | 10d | 2014-02-26 | 2014-03-09 | HCFWF3Z1101 SS, HCFWF3Z1107 | 73d | 0d | B3 | 08 | MC | C | FI |
| HCFWF3Z1129 |  | F3 Z1 :Toilet & corian vanity tops | 10d | 2014-02-26 | 2014-03-09 | HCFWF3Z1118 SS, HEPSAFI0270 | 73d | 32d | B3 | 10 | MC | C | FI |

| ID | WBS | Activity | Duration | Start | Finish | Predecessors | Total float | Free float | Bill No. | Division No. | Responsibility | Phase Code | Trade |
| --- | --- | --- | --- | --- | --- | --- | --- | --- | --- | --- | --- | --- | --- |
|  | Z2 | **Zone 2 - Modular conf room** |  | 2013-05-16 | 2014-03-20 |  |  |  |  |  |  |  |  |
|  | FL | **Floor Finishes** |  | 2013-08-03 | 2014-01-27 |  |  |  |  |  |  |  |  |
| HCFWF3Z2076 |  | F3 Z2 :Foam Concrete Under Floorings | 16d | 2013-08-03 | 2013-08-24 | HCFWF3Z2081 | 58d | 0d | B3 | 07 | MC | C | FI |
| HCFWF3Z2077 |  | F3 Z2 :Trawelled smooth Concrete screed | 8d | 2013-08-25 | 2013-09-02 | HCFWF3Z2076 | 58d | 0d | B3 | 03 | MC | C | FI |
| HCFWF3Z2093 |  | F3 Z2 :Stone Flooring | 12d | 2013-09-03 | 2013-09-16 | HCFWF3Z2077 | 74d | 0d | B3 | 09 | MC | C | FI |
| HCFWF3Z2079 |  | F3 Z2 :Rubber Flooring | 10d | 2013-10-01 | 2013-10-12 | HCFWF3Z2092, HCFWF3Z2093 SS | 154d | 46d | B3 | 09 | MC | C | FI |
| HCFWF3Z2080 |  | F3 Z2 :Rubber Skirting | 2d | 2013-12-11 | 2013-12-12 | HCFWF3Z2079, HCFWF3Z1119 | 108d | 18d | B3 |  | MC | C | FI |
| HCFWF3Z2096 |  | F3 Z2 :Carpet Tiles | 10d | 2013-12-17 | 2013-12-29 | HCFWF3Z2079 SS, HEPSAFI0210 | 131d | 90d | B3 |  | MC | C | FI |
| HCFWF3Z21080 |  | F3 Z2 :Rubber Skirting | 2d | 2014-01-26 | 2014-01-27 | HCFWF3Z11119 | 98d | 0d | B3 |  | MC | C | FI |
|  | WL | **Wall Finishes** |  | 2013-05-16 | 2014-02-23 |  |  |  |  |  |  |  |  |
| HCFWF3Z21082 |  | F3 Z2 :Block Works | 10d | 2013-05-16 | 2013-05-28 | HCFWF3Z11093 SS, HCSW3FZ2090 FF, HCFWF2Z21057 | 121d | 0d | B3 | 04 | MC | C | FI |
| HCFWF3Z2082 |  | F3 Z2 :Block Works | 10d | 2013-05-21 | 2013-06-02 | HCFWF3Z1093 SS, HCSW3FZ2090 FF, HCFWF2Z2057 | 86d | 0d | B3 | 04 | MC | C | FI |
| HCFWF3Z2098 |  | F3 Z2 :Gybsum Board Partitions | 10d | 2013-05-21 | 2013-06-02 | HCFWF3Z2082 SS, HCFWF3Z1124 SS, HCSW3FZ2090 | 94d | 37d | B3 | 10 | MC | C | FI |
| HCFWF3Z2084 |  | F3 Z2 :Plaster First Layer | 8d | 2013-07-06 | 2013-07-14 | HCFWF3Z2082, HCFWF2Z2056 | 58d | 0d | B3 | 09 | MC | C | FI |
| HCFWF3Z2085 |  | F3 Z2 :Plaster Second Layer | 8d | 2013-07-15 | 2013-07-23 | HCFWF3Z2084 | 58d | 0d | B3 | 09 | MC | C | FI |
| HCFWF3Z2081 |  | F3 Z2 :Plaster Final Layer | 8d | 2013-07-24 | 2013-08-01 | HCFWF3Z2085 | 58d | 0d | B3 | 09 | MC | C | FI |
| HCFWF3Z2087 |  | F3 Z2 :Paint Prime coat | 12d | 2013-09-07 | 2013-09-21 | HCFWF3Z2081, HCFWF2Z2062 | 118.25d | 0d | B3 | 09 | MC | C | FI |
| HCFWF3Z2078 |  | F3 Z2 :Paint putty coat | 12d | 2013-09-25 | 2013-10-09 | HCFWF3Z2087, HCFWF2Z2053 | 158.25d | 0d | B3 | 09 | MC | C | FI |
| HCFWF3Z2099 |  | F3 Z2 :Glass Wall Cladding | 16d | 2014-02-05 | 2014-02-23 | HCFWF3Z2081, HCFWF2Z2074 | 37d | 0d | B3 | 09 | MC | C | FI |
|  | CL | **Ceiling Finishes** |  | 2013-09-03 | 2014-02-18 |  |  |  |  |  |  |  |  |
| HCFWF3Z2090 |  | F3 Z2 :Plaster First Layer | 8d | 2013-09-03 | 2013-09-11 | HCFWF3Z2077, HCFWF2Z2067, HCFWF3Z2081 | 58d | 0d | B3 | 09 | MC | C | FI |
| HCFWF3Z2086 |  | F3 Z2 :Plaster Second Layer | 8d | 2013-09-12 | 2013-09-21 | HCFWF3Z2090 | 58d | 0d | B3 | 09 | MC | C | FI |
| HCFWF3Z2092 |  | F3 Z2 :Plaster Final Layer | 8d | 2013-09-22 | 2013-09-30 | HCFWF3Z2086 | 58d | 0d | B3 | 09 | MC | C | FI |
| HCFWF3Z2083 |  | F3 Z2 :Paint Prime coat | 10d | 2013-10-01 | 2013-10-12 | HCFWF3Z2087, HCFWF3Z2092 | 116d | 0d | B3 | 09 | MC | C | FI |
| HCFWF3Z2089 |  | F3 Z2 :Paint putty coat | 10d | 2013-10-13 | 2013-10-28 | HCFWF3Z2083 | 116d | 79d | B3 | 09 | MC | C | FI |
| HCFWF3Z2095 |  | F3 Z2 :Gybsum Board Ceiling | 14d | 2014-02-03 | 2014-02-18 | HCFWF3Z2089, HCFWF2Z2070 | 37d | 0d | B3 | 09 | MC | C | FI |

| ID | WBS | Activity | Duration | Start | Finish | Predecessors | Total float | Free float | Bill No. | Division No. | Responsibility | Phase Code | Trade |
| --- | --- | --- | --- | --- | --- | --- | --- | --- | --- | --- | --- | --- | --- |
|  | MS | **Mecellanuos** |  | 2014-02-09 | 2014-03-20 |  |  |  |  |  |  |  |  |
| HCFWF3Z2091 |  | F3 Z2 :Metal Works | 10d | 2014-02-09 | 2014-02-19 | HCFWF3Z1108, HCFWF3Z2083, HCFWF2Z2066 | 38d | 0d | B3 | 05 | MC | C | FI |
| HCFWF3Z2088 |  | F3 Z2 :Steel Fire Rated Doors | 10d | 2014-02-20 | 2014-03-03 | HCFWF3Z2083, HCFWF2Z2063 | 38d | 0d | B3 | 08 | MC | C | FI |
| HCFWF3Z2094 |  | F3 Z2 :Wooden Doors | 10d | 2014-02-20 | 2014-03-03 | HCFWF3Z2097 SS, HCFWF2Z2069 | 48d | 0d | B3 | 08 | MC | C | FI |
| HCFWF3Z2097 |  | F3 Z2 :Steel Doors | 10d | 2014-02-20 | 2014-03-03 | HCFWF3Z2088 SS, HCFWF3Z2091, HCFWF2Z2072 | 38d | 0d | B3 | 08 | MC | C | FI |
| HCFWF3Z2100 |  | F3 Z2 :Handrails & Railling | 15d | 2014-03-04 | 2014-03-20 | HCFWF3Z2091 SS, HCFWF2Z2075 | 26d | 0d | B3 | 05 | MC | C | FI |
|  | Z3 | **Zone 3** |  | 2013-07-04 | 2014-04-06 |  |  |  |  |  |  |  |  |
|  | FL | **Floor Finishes** |  | 2013-10-27 | 2014-01-29 |  |  |  |  |  |  |  |  |
| HCFWF3Z3121 |  | F3 Z3 :Foam Concrete Under Floorings | 16d | 2013-10-27 | 2013-11-14 | HCFWF3Z3099 | 0d |  | B3 | 07 | MC | C | FI |
| HCFWF3Z3107 |  | F3 Z3 :Trawelled smooth Concrete screed | 8d | 2013-11-16 | 2013-11-24 | HCFWF3Z3121 | 0d |  | B3 | 03 | MC | C | FI |
| HCFWF3Z3127 |  | F3 Z3 :Epoxy Screed Finish | 10d | 2013-11-25 | 2013-12-05 | HCFWF3Z3107 | 150d | 109d | B3 |  | MC | C | FI |
| HCFWF3Z3108 |  | F3 Z3 :Rubber Flooring | 10d | 2013-12-23 | 2014-01-05 | HCFWF3Z3117 | 55d | 0d | B3 | 09 | MC | C | FI |
| HCFWF3Z3138 |  | F3 Z3 :Carpet Tile Flooring | 10d | 2013-12-23 | 2014-01-05 | HCFWF3Z3108 SS, HEPSAFI0210 | 126d | 85d | B3 | 09 | MC | C | FI |
| HCFWF3Z3151 |  | F3 Z3 :Stone Flooring All types | 12d | 2013-12-23 | 2014-01-07 | HCFWF3Z3108 SS | 55d | 0d | B3 | 09 | MC | C | FI |
| HCFWF3Z3094 |  | F3 Z3 :Rubber Skirting | 2d | 2014-01-06 | 2014-01-07 | HCFWF3Z3108, HCFWF3Z2080 | 90d | 0d | B3 |  | MC | C | FI |
| HCFWF3Z3130 |  | F3 Z3 :Aluminum & Stainless Steel Skirting | 10d | 2014-01-06 | 2014-01-18 | HCFWF3Z3094 SS | 116d | 75d | B3 | 09 | MC | C | FI |
| HCFWF3Z3758 |  | F3 Z3 :Ceramic Floor Tiles | 10d | 2014-01-06 | 2014-01-18 | HCFWF3Z3108, HEPSAFI0210 | 116d | 75d |  |  |  |  |  |
| HCFWF3Z3114 |  | F3 Z3 :Stone Base Skirting | 10d | 2014-01-08 | 2014-01-20 | HCFWF3Z3151 | 114d | 73d | B3 | 09 | MC | C | FI |
| HCFWF3Z31094 |  | F3 Z3 :Rubber Skirting | 2d | 2014-01-28 | 2014-01-29 | HCFWF3Z21080 | 98d | 0d | B3 |  | MC | C | FI |
|  | WL | **Wall Finishes** |  | 2013-07-04 | 2014-02-23 |  |  |  |  |  |  |  |  |
| HCFWF3Z3135 |  | F3 Z3 :Gybsum Board Partitions | 10d | 2013-07-04 | 2013-07-15 | HCFWF3Z2098 SS, HCSW3FZ3090 | 57d | 15d | B3 | 10 | MC | C | FI |
| HCFWF3Z31126 |  | F3 Z3 :Block Works | 10d | 2013-07-22 | 2013-08-01 | HCFWF3Z21082 SS, HCSW3FZ3090 FF, HCFWGFZ3086 | 79d | 0d | B3 | 04 | MC | C | FI |
| HCFWF3Z3126 |  | F3 Z3 :Block Works | 10d | 2013-07-22 | 2013-08-01 | HCFWF3Z2082 SS, HCFWF3Z3135 SS, HCSW3FZ3090 FF, HCFWF2Z3086 | 42d | 0d | B3 | 04 | MC | C | FI |
| HCFWF3Z3112 |  | F3 Z3 :Plaster First Layer | 8d | 2013-09-24 | 2013-10-02 | HCFWF3Z3126, HCFWF2Z3069 | 0d |  | B3 | 09 | MC | C | FI |
| HCFWF3Z3113 |  | F3 Z3 :Plaster Second Layer | 8d | 2013-10-03 | 2013-10-12 | HCFWF3Z3112 | 0d |  | B3 | 09 | MC | C | FI |
| HCFWF3Z3099 |  | F3 Z3 :Plaster Final Layer | 8d | 2013-10-13 | 2013-10-26 | HCFWF3Z3113 | 0d |  | B3 | 09 | MC | C | FI |
| HCFWF3Z3110 |  | F3 Z3 :Paint Prime coat | 12d | 2013-10-27 | 2013-11-10 | HCFWF3Z3099 | 78d | 71d | B3 | 09 | MC | C | FI |
| HCFWF3Z3119 |  | F3 Z3 :Stone Cladding | 10d | 2014-02-05 | 2014-02-16 | HCFWF3Z3137 SS | 91d | 50d | B3 | 04 | MC | C | FI |
| HCFWF3Z3128 |  | F3 Z3 :Stainless steel Wire Cloth Finish For Elev Lobby | 10d | 2014-02-05 | 2014-02-16 | HCFWF3Z3131 SS | 91d | 50d | B3 | 05 | MC | C | FI |
| HCFWF3Z3131 |  | F3 Z3 :Paint putty coat | 12d | 2014-02-05 | 2014-02-18 | HCFWF3Z3110, HCFWF2Z3091 | 7d | 0d | B3 | 09 | MC | C | FI |
| HCFWF3Z3137 |  | F3 Z3 :Glass Wall Cladding | 16d | 2014-02-05 | 2014-02-23 | HCFWF3Z3099, HCFWF2Z3102 | 43d | 0d | B3 | 09 | MC | C | FI |

| ID | WBS | Activity | Type | Duration | Start | Finish | Predecessors | Total float | Free float | Bill No. | Division No. | Responsibility | Phase Code | Trade |
| --- | --- | --- | --- | --- | --- | --- | --- | --- | --- | --- | --- | --- | --- | --- |
|  | CL | **Ceiling Finishes** |  |  | 2013-11-25 | 2014-03-30 |  |  |  |  |  |  |  |  |
| HCFWF3Z3115 |  | F3 Z3 :Plaster First Layer |  | 8d | 2013-11-25 | 2013-12-03 | HCFWF3Z3107, HCFWF2Z3082, HCFWF3Z3099 | 0d |  | B3 | 09 | MC | C | FI |
| HCFWF3Z3136 |  | F3 Z3 :Plaster Second Layer |  | 8d | 2013-12-04 | 2013-12-12 | HCFWF3Z3115 | 0d |  | B3 | 09 | MC | C | FI |
| HCFWF3Z3117 |  | F3 Z3 :Plaster Final Layer |  | 8d | 2013-12-14 | 2013-12-22 | HCFWF3Z3136 | 0d |  | B3 | 09 | MC | C | FI |
| HCFWF3Z3118 |  | F3 Z3 :Paint Prime coat |  | 10d | 2014-02-19 | 2014-03-02 | HCFWF3Z3110, HCFWF3Z3117, HCFWF3Z3131 | 7d | 0d | B3 | 09 | MC | C | FI |
| HCFWF3Z3104 |  | F3 Z3 :Paint putty coat |  | 10d | 2014-03-03 | 2014-03-13 | HCFWF3Z3118 | 7d | 0d | B3 | 09 | MC | C | FI |
| HCFWF3Z3156 |  | F3 Z3 :Acoustical Ceiling |  | 10d | 2014-03-03 | 2014-03-13 | HCFWF3Z3118 | 17d | 10d | B3 | 09 | MC | C | FI |
| HCFWF3Z3120 |  | F3 Z3 :Gybsum Board Ceiling |  | 14d | 2014-03-15 | 2014-03-30 | HCFWF3Z3104, HCFWF3Z3156 SS, HCFWF2Z3085 | 7d | 0d | B3 | 09 | MC | C | FI |
|  | MS | **Mecellanuos** |  |  | 2014-03-03 | 2014-04-06 |  |  |  |  |  |  |  |  |
| HCFWF3Z3123 |  | F3 Z3 :Steel Fire Rated Doors |  | 10d | 2014-03-03 | 2014-03-13 | HCFWF3Z3118, HCFWF2Z3088 | 29d | 0d | B3 | 08 | MC | C | FI |
| HCFWF3Z3140 |  | F3 Z3 :Glass Doors |  | 10d | 2014-03-03 | 2014-03-13 | HCFWF3Z3141 SS | 69d | 28d | B3 | 08 | MC | C | FI |
| HCFWF3Z3141 |  | F3 Z3 :Metal Works |  | 10d | 2014-03-03 | 2014-03-13 | HCFWF3Z3118, HCFWF2Z3101, HCFWF2Z3101 FF | 19d | 0d | B3 | 05 | MC | C | FI |
| HCFWF3Z3109 |  | F3 Z3 :Stone Decoration For Benches |  | 10d | 2014-03-12 | 2014-03-23 | HCFWF3Z3146 SS | 61d | 20d | B3 | 04 | MC | C | FI |
| HCFWF3Z3146 |  | F3 Z3 :Handrails & Railling |  | 15d | 2014-03-12 | 2014-03-29 | HCFWF3Z3141 SS, HCFWF2Z3106 | 16d | 0d | B3 | 05 | MC | C | FI |
| HCFWF3Z3122 |  | F3 Z3 :Steel Doors |  | 10d | 2014-03-15 | 2014-03-25 | HCFWF3Z3123 SS, HCFWF3Z3141, HCFWF2Z3087 | 19d | 0d | B3 | 08 | MC | C | FI |
| HCFWF3Z3125 |  | F3 Z3 :Wooden Doors |  | 10d | 2014-03-15 | 2014-03-25 | HCFWF3Z3122 SS, HCFWF2Z3090 | 19d | 0d | B3 | 08 | MC | C | FI |
| HCFWF3Z3132 |  | F3 Z3 :Mirror |  | 10d | 2014-03-26 | 2014-04-06 | HCFWF3Z3146 SS, HCFWF3Z3125 | 49d | 0d | B3 | 08 | MC | C | FI |
| HCFWF3Z3133 |  | F3 Z3 :Toilet & corian vanity tops |  | 10d | 2014-03-26 | 2014-04-06 | HCFWF3Z3132 SS, HEPSAFI0270 | 49d | 8d | B3 | 10 | MC | C | FI |
|  | F4 | **Forth Floor** |  |  | 2013-03-23 | 2014-04-29 |  |  |  |  |  |  |  |  |
| HCFWF40000 |  | Start Finishing Works Forth Floor | milestone | 0d | 2013-03-23 | 2013-03-23 | HCSW4FZ1090 | 111d | 12d | B3 |  | MC | C | FI |
| HCFWF40001 |  | End Finishing Works Forth Floor | milestone | 0d | 2014-04-29 | 2014-04-29 | HCFWF40000, HCFWF4Z1139, HCFWF4Z1126, HCFWF4Z2103, HCFWF4Z2114, HCFWF4Z3171, HCFWF4Z3134, HCFWF4Z4128, HCFWF4Z2139, HCFWF4Z5144, HCFWF4Z5173, HCFWF4Z1120, HCFWF4Z1141, HCFWF4Z1154, HCFWF4Z1146, HCFWF4Z1147, HCFWF4Z1164, HCFWF4Z1137 FF, HCFWF4Z2121, HCFWF4Z2105, HCFWF4Z2124, HCFWF4Z2120, HCFWF4Z2125, HCFWF4Z2119, HCFWF4Z3144, HCFWF4Z3173, HCFWF4Z3191, HCFWF4Z3165, HCFWF4Z3149, HCFWF4Z3163, HCFWF4Z3155, HCFWF4Z3139, HCFWF4Z3168, HCFWF4Z3175, HCFWF4Z3160, HCFWF4Z4146, HCFWF4Z4130, HCFWF4Z4249, HCFWF4Z2145, HCFWF4Z2150, HCFWF4Z2144, HCFWF4Z5164, HCFWF4Z5186, HCFWF4Z5198, HCFWF4Z5145, HCFWF4Z5193, HCFWF4Z5170, HCFWF4Z5154, HCFWF4Z5159, HCFWF4Z5183, HCFWF4Z5160, HCFWF4Z1768, HCFWF4Z3778, HCFWF4Z5788, HCFWF4Z1150, HCMEF4Z1280, HCMEF4Z2285, HCMEF4Z3290, HCMEF4Z4295, HCMEF4Z5300, HCMEF4Z5420, HCFWF4Z3162, HCFWF4Z41130 | 29d |  | B3 |  | MC | C | FI |
|  | Z1 | **Zone 1** |  |  | 2013-04-01 | 2014-04-01 |  |  |  |  |  |  |  |  |
|  | FL | **Floor Finishes** |  |  | 2013-06-24 | 2014-02-01 |  |  |  |  |  |  |  |  |
| HCFWF4Z1121 |  | F4 Z1 :Foam Concrete Under Floorings |  | 16d | 2013-06-24 | 2013-07-13 | HCFWF4Z1127 | 100d | 0d | B3 | 07 | MC | C | FI |
| HCFWF4Z1122 |  | F4 Z1 :Trawelled smooth Concrete screed |  | 8d | 2013-07-13 | 2013-07-22 | HCFWF4Z1121 | 100d | 29d | B3 | 03 | MC | C | FI |
| HCFWF4Z1133 |  | F4 Z1 :Rubber Flooring |  | 10d | 2013-09-28 | 2013-10-08 | HCFWF4Z1144 | 74d | 0d | B3 | 09 | MC | C | FI |
| HCFWF4Z1141 |  | F4 Z1 :Stone Flooring |  | 12d | 2013-09-28 | 2013-10-10 | HCFWF4Z1133 SS | 74d | 0d | B3 | 09 | MC | C | FI |
| HCFWF4Z1169 |  | F4 Z1 :Stone Base Skirting |  | 10d | 2013-10-12 | 2013-10-27 | HCFWF4Z1141 | 159d | 69d | B3 | 09 | MC | C | FI |
| HCFWF4Z1120 |  | F4 Z1 :Carpet Floor Tiles |  | 10d | 2013-12-17 | 2013-12-29 | HCFWF4Z1133 SS, HEPSAFI0210 | 131d | 102d | B3 | 09 | MC | C | FI |
| HCFWF4Z1768 |  | F4 Z1 :Ceramic Floor Tiles |  | 10d | 2013-12-17 | 2013-12-29 | HCFWF4Z1133 SS, HEPSAFI0210 | 131d | 102d |  |  |  |  |  |
| HCFWF4Z1154 |  | F4 Z1 :Rubber Skirting |  | 2d | 2014-01-08 | 2014-01-09 | HCFWF4Z1133, HCFWF4Z1169 SS, HCFWF3Z3094 | 90d | 0d | B3 |  | MC | C | FI |
| HCFWF4Z11155 |  | F4 Z1 :Rubber Skirting |  | 2d | 2014-01-30 | 2014-02-01 | HCFWF3Z31094 | 98d | 0d | B3 |  | MC | C | FI |

| ID | WBS | Activity | Duration | Start | Finish | Predecessors | Total float | Free float | Bill No. | Division No. | Responsibility | Phase Code | Trade |
| --- | --- | --- | --- | --- | --- | --- | --- | --- | --- | --- | --- | --- | --- |
|  | WL | **Wall Finishes** |  | 2013-04-01 | 2014-03-23 |  |  |  |  |  |  |  |  |
| HCFWF4Z11123 |  | F4 Z1 :Block Works | 10d | 2013-04-01 | 2013-04-11 | HCSW4FZ1090, HCFWF3Z11093 | 103d | 0d | B3 | 04 | MC | C | FI |
| HCFWF4Z1123 |  | F4 Z1 :Block Works | 10d | 2013-04-06 | 2013-04-16 | HCSW4FZ1090, HCFWF3Z1093, HCFWF40000 | 99d | 0d | B3 | 04 | MC | C | FI |
| HCFWF4Z1159 |  | F4 Z1 :Gybsum Board Partitions | 10d | 2013-04-06 | 2013-04-16 | HCFWF4Z1123 SS | 142.75d | 48d | B3 | 10 | MC | C | FI |
| HCFWF4Z1105 |  | F4 Z1 :Plaster First Layer | 8.75d | 2013-05-26 | 2013-06-04 | HCFWF4Z1123, HCFWF3Z1097 | 100d | 0d | B3 | 09 | MC | C | FI |
| HCFWF4Z1136 |  | F4 Z1 :Plaster Second Layer | 8d | 2013-06-04 | 2013-06-13 | HCFWF4Z1105 | 100d | 0d | B3 | 09 | MC | C | FI |
| HCFWF4Z1127 |  | F4 Z1 :Plaster Final Layer | 8.75d | 2013-06-13 | 2013-06-24 | HCFWF4Z1136 | 100d | 0d | B3 | 09 | MC | C | FI |
| HCFWF4Z1125 |  | F4 Z1 :Stone Cladding | 10d | 2013-06-24 | 2013-07-06 | HCFWF4Z1127 | 223.5d | 198.5d | B3 | 04 | MC | C | FI |
| HCFWF4Z1128 |  | F4 Z1 :Paint Prime coat | 12d | 2013-06-24 | 2013-07-08 | HCFWF4Z1127, HCFWF3Z1098 | 197.5d | 13.5d | B3 | 09 | MC | C | FI |
| HCFWF4Z1146 |  | F4 Z1 :Glass Wall Cladding | 16d | 2014-02-24 | 2014-03-13 | HCFWF4Z1125 SS, HCFWF3Z1116 | 25d | 0d | B3 | 09 | MC | C | FI |
| HCFWF4Z1139 |  | F4 Z1 :Paint putty coat | 12d | 2014-03-10 | 2014-03-23 | HCFWF4Z1128, HCFWF3Z1104 | 37d | 0d | B3 | 09 | MC | C | FI |
|  | CL | **Ceiling Finishes** |  | 2013-08-28 | 2014-03-19 |  |  |  |  |  |  |  |  |
| HCFWF4Z1132 |  | F4 Z1 :Plaster First Layer | 8.75d | 2013-08-28 | 2013-09-08 | HCFWF4Z1122, HCFWF3Z1109, HCFWF4Z1127 | 71d | 0d | B3 | 09 | MC | C | FI |
| HCFWF4Z1143 |  | F4 Z1 :Plaster Second Layer | 8d | 2013-09-08 | 2013-09-17 | HCFWF4Z1132 | 71d | 0d | B3 | 09 | MC | C | FI |
| HCFWF4Z1144 |  | F4 Z1 :Plaster Final Layer | 8.75d | 2013-09-17 | 2013-09-26 | HCFWF4Z1143 | 71d | 0d | B3 | 09 | MC | C | FI |
| HCFWF4Z1110 |  | F4 Z1 :Paint Prime coat | 10d | 2013-09-28 | 2013-10-08 | HCFWF4Z1128, HCFWF4Z1144 | 133d | 0d | B3 | 09 | MC | C | FI |
| HCFWF4Z1126 |  | F4 Z1 :Paint putty coat | 10d | 2013-10-09 | 2013-10-24 | HCFWF4Z1110 | 133d | 97d | B3 | 09 | MC | C | FI |
| HCFWF4Z1142 |  | F4 Z1 :Gybsum Board Ceiling | 14d | 2014-02-20 | 2014-03-08 | HCFWF4Z1126, HCFWF3Z1112 | 36d | 0d | B3 | 09 | MC | C | FI |
| HCFWF4Z1147 |  | F4 Z1 :Acoustical Ceiling | 10d | 2014-02-20 | 2014-03-03 | HCFWF4Z1142 SS | 46d | 4d | B3 | 09 | MC | C | FI |
| HCFWF4Z1150 |  | F4 Z1 :Spicial Metal Ceiling | 14d | 2014-03-04 | 2014-03-19 | HCFWF3Z1120, HCFWF4Z1147 SS | 36d | 0d |  |  |  |  |  |
|  | MS | **Miscellaneous** |  | 2014-02-09 | 2014-04-01 |  |  |  |  |  |  |  |  |
| HCFWF4Z1138 |  | F4 Z1 :Metal Works | 10d | 2014-02-09 | 2014-02-19 | HCFWF4Z1110, HCFWF3Z1108, HCFWF3Z1108 FF | 38d | 0d | B3 | 05 | MC | C | FI |
| HCFWF4Z1149 |  | F4 Z1 :Steel Fire Rated Doors | 10d | 2014-02-09 | 2014-02-19 | HCFWF4Z1110, HCFWF3Z1114 | 58d | 0d | B3 | 08 | MC | C | FI |
| HCFWF4Z1115 |  | F4 Z1 :Steel Doors | 10d | 2014-02-20 | 2014-03-03 | HCFWF4Z1149 SS, HCFWF4Z1138, HCFWF3Z1090 | 48d | 0d | B3 | 08 | MC | C | FI |
| HCFWF4Z1137 |  | F4 Z1 :Wooden Doors | 10d | 2014-02-26 | 2014-03-09 | HCFWF4Z1115 SS, HCFWF3Z1107 | 43d | 0d | B3 | 08 | MC | C | FI |
| HCFWF4Z1131 |  | F4 Z1 :Handrails & Railling | 15d | 2014-03-16 | 2014-04-01 | HCFWF4Z1138 SS, HCFWF3Z1101 | 28d | 0d | B3 | 05 | MC | C | FI |
| HCFWF4Z1148 |  | F4 Z1 :Mirrors | 10d | 2014-03-16 | 2014-03-26 | HCFWF4Z1131 SS, HCFWF4Z1137 | 58d | 0d | B3 | 08 | MC | C | FI |
| HCFWF4Z1164 |  | F4 Z1 :Toilet & corian vanity tops | 10d | 2014-03-16 | 2014-03-26 | HCFWF4Z1148 SS, HEPSAFI0270 | 58d | 29d | B3 | 10 | MC | C | FI |

| ID | WBS | Activity | Duration | Start | Finish | Predecessors | Total float | Free float | Bill No. | Division No. | Responsibility | Phase Code | Trade |
| --- | --- | --- | --- | --- | --- | --- | --- | --- | --- | --- | --- | --- | --- |
|  | Z2 | **Zone 2** |  | 2013-05-29 | 2014-04-05 |  |  |  |  |  |  |  |  |
|  | FL | **Floor Finishes** |  | 2013-09-03 | 2014-02-03 |  |  |  |  |  |  |  |  |
| HCFWF4Z2101 |  | F4 Z2 :Foam Concrete Under Floorings | 16d | 2013-09-03 | 2013-09-21 | HCFWF4Z2106 | 58d | 0d | B3 | 07 | MC | C | FI |
| HCFWF4Z2102 |  | F4 Z2 :Trawelled smooth Concrete screed | 8d | 2013-09-22 | 2013-09-30 | HCFWF4Z2101 | 58d | 0d | B3 | 03 | MC | C | FI |
| HCFWF4Z2118 |  | F4 Z2 :Stone Flooring | 12d | 2013-10-01 | 2013-10-14 | HCFWF4Z2102 | 71d | 0d | B3 | 09 | MC | C | FI |
| HCFWF4Z2104 |  | F4 Z2 :Rubber Flooring | 10d | 2013-11-03 | 2013-11-14 | HCFWF4Z2117, HCFWF4Z2118 SS | 136d | 37d | B3 | 09 | MC | C | FI |
| HCFWF4Z2121 |  | F4 Z2 :Carpet Tiles | 10d | 2013-12-17 | 2013-12-29 | HCFWF4Z2104 SS, HEPSAFI0210 | 131d | 102d | B3 |  | MC | C | FI |
| HCFWF4Z2105 |  | F4 Z2 :Rubber Skirting | 2d | 2014-01-11 | 2014-01-12 | HCFWF4Z2104, HCFWF4Z1154 | 90d | 18d | B3 |  | MC | C | FI |
| HCFWF4Z21105 |  | F4 Z2 :Rubber Skirting | 2d | 2014-02-02 | 2014-02-03 | HCFWF4Z11155 | 98d | 0d | B3 |  | MC | C | FI |
|  | WL | **Wall Finishes** |  | 2013-05-29 | 2014-03-13 |  |  |  |  |  |  |  |  |
| HCFWF4Z21107 |  | F4 Z2 :Block Works | 10d | 2013-05-29 | 2013-06-09 | HCFWF4Z11123 SS, HCSW4FZ2090, HCFWF3Z21082 | 125d | 0d | B3 | 04 | MC | C | FI |
| HCFWF4Z2107 |  | F4 Z2 :Block Works | 10d | 2013-06-03 | 2013-06-13 | HCFWF4Z1123 SS, HCSW4FZ2090, HCFWF3Z2082 | 94.75d | 0d | B3 | 04 | MC | C | FI |
| HCFWF4Z2123 |  | F4 Z2 :Gybsum Board Partitions | 10d | 2013-06-03 | 2013-06-13 | HCFWF4Z2107 SS, HCFWF4Z1159 SS | 94.75d | 35d | B3 | 10 | MC | C | FI |
| HCFWF4Z2109 |  | F4 Z2 :Plaster First Layer | 8d | 2013-08-03 | 2013-08-14 | HCFWF4Z2107, HCFWF3Z2081 | 58d | 0d | B3 | 09 | MC | C | FI |
| HCFWF4Z2110 |  | F4 Z2 :Plaster Second Layer | 8d | 2013-08-15 | 2013-08-24 | HCFWF4Z2109 | 58d | 0d | B3 | 09 | MC | C | FI |
| HCFWF4Z2106 |  | F4 Z2 :Plaster Final Layer | 8d | 2013-08-25 | 2013-09-02 | HCFWF4Z2110 | 58d | 0d | B3 | 09 | MC | C | FI |
| HCFWF4Z2112 |  | F4 Z2 :Paint Prime coat | 12d | 2013-09-21 | 2013-10-05 | HCFWF4Z2106, HCFWF3Z2087 | 118.25d | 0d | B3 | 09 | MC | C | FI |
| HCFWF4Z2103 |  | F4 Z2 :Paint putty coat | 12d | 2013-10-09 | 2013-10-28 | HCFWF4Z2112, HCFWF3Z2078 | 158.25d | 0d | B3 | 09 | MC | C | FI |
| HCFWF4Z2124 |  | F4 Z2 :Glass Wall Cladding | 16d | 2014-02-24 | 2014-03-13 | HCFWF4Z2106, HCFWF3Z2099 | 37d | 0d | B3 | 09 | MC | C | FI |
|  | CL | **Ceiling Finishes** |  | 2013-10-01 | 2014-03-06 |  |  |  |  |  |  |  |  |
| HCFWF4Z2115 |  | F4 Z2 :Plaster First Layer | 8d | 2013-10-01 | 2013-10-09 | HCFWF4Z2102, HCFWF3Z2092, HCFWF4Z2106 | 58d | 0d | B3 | 09 | MC | C | FI |
| HCFWF4Z2111 |  | F4 Z2 :Plaster Second Layer | 8d | 2013-10-10 | 2013-10-23 | HCFWF4Z2115 | 58d | 0d | B3 | 09 | MC | C | FI |
| HCFWF4Z2117 |  | F4 Z2 :Plaster Final Layer | 8d | 2013-10-24 | 2013-11-02 | HCFWF4Z2111 | 58d | 0d | B3 | 09 | MC | C | FI |
| HCFWF4Z2108 |  | F4 Z2 :Paint Prime coat | 10d | 2013-11-03 | 2013-11-14 | HCFWF4Z2112, HCFWF4Z2117 | 106d | 0d | B3 | 09 | MC | C | FI |
| HCFWF4Z2114 |  | F4 Z2 :Paint putty coat | 10d | 2013-11-16 | 2013-11-26 | HCFWF4Z2108 | 106d | 69d | B3 | 09 | MC | C | FI |
| HCFWF4Z2120 |  | F4 Z2 :Gybsum Board Ceiling | 14d | 2014-02-19 | 2014-03-06 | HCFWF4Z2114, HCFWF3Z2095 | 37d | 0d | B3 | 09 | MC | C | FI |

| ID | WBS | Activity | Duration | Start | Finish | Predecessors | Total float | Free float | Bill No. | Division No. | Responsibility | Phase Code | Trade |
| --- | --- | --- | --- | --- | --- | --- | --- | --- | --- | --- | --- | --- | --- |
|  | MS | **Mecellanuos** |  | 2014-02-20 | 2014-04-05 |  |  |  |  |  |  |  |  |
| HCFWF4Z2116 |  | F4 Z2 :Metal Works | 10d | 2014-02-20 | 2014-03-03 | HCFWF4Z1138, HCFWF4Z2108, HCFWF3Z2091 | 38d | 0d | B3 | 05 | MC | C | FI |
| HCFWF4Z2113 |  | F4 Z2 :Steel Fire Rated Doors | 10d | 2014-03-04 | 2014-03-15 | HCFWF4Z2108, HCFWF3Z2088 | 38d | 0d | B3 | 08 | MC | C | FI |
| HCFWF4Z2119 |  | F4 Z2 :Wooden Doors | 10d | 2014-03-04 | 2014-03-15 | HCFWF4Z2122 SS, HCFWF3Z2094 | 48d | 0d | B3 | 08 | MC | C | FI |
| HCFWF4Z2122 |  | F4 Z2 :Steel Doors | 10d | 2014-03-04 | 2014-03-15 | HCFWF4Z2113 SS, HCFWF4Z2116, HCFWF3Z2097 | 38d | 0d | B3 | 08 | MC | C | FI |
| HCFWF4Z2125 |  | F4 Z2 :Handrails & Railling | 13d | 2014-03-22 | 2014-04-05 | HCFWF4Z2116 SS, HCFWF3Z2100 | 26d | 0d | B3 | 05 | MC | C | FI |
|  | Z3 | **Zone 3** |  | 2013-07-14 | 2014-04-17 |  |  |  |  |  |  |  |  |
|  | FL | **Floor Finishes** |  | 2013-11-25 | 2014-02-17 |  |  |  |  |  |  |  |  |
| HCFWF4Z3161 |  | F4 Z3 :Foam Concrete Under Floorings | 16d | 2013-11-25 | 2013-12-12 | HCFWF4Z3129 | 0d |  | B3 | 07 | MC | C | FI |
| HCFWF4Z3142 |  | F4 Z3 :Trawelled smooth Concrete screed | 8d | 2013-12-14 | 2013-12-22 | HCFWF4Z3161 | 0d |  | B3 | 03 | MC | C | FI |
| HCFWF4Z3162 |  | F4 Z3 :Epoxy Screed Finish | 10d | 2013-12-23 | 2014-01-05 | HCFWF4Z3142 | 126d | 97d | B3 |  | MC | C | FI |
| HCFWF4Z3143 |  | F4 Z3 :Rubber Flooring | 10d | 2014-01-23 | 2014-02-03 | HCFWF4Z3152 | 37d | 0d | B3 | 09 | MC | C | FI |
| HCFWF4Z3173 |  | F4 Z3 :Carpet Tile Flooring | 10d | 2014-01-23 | 2014-02-03 | HCFWF4Z3143 SS, HEPSAFI0210 | 102d | 73d | B3 | 09 | MC | C | FI |
| HCFWF4Z3191 |  | F4 Z3 :Stone Flooring All types | 12d | 2014-01-23 | 2014-02-05 | HCFWF4Z3143 SS | 37d | 0d | B3 | 09 | MC | C | FI |
| HCFWF4Z3778 |  | F4 Z3 :Ceramic Floor Tiles | 10d | 2014-01-23 | 2014-02-03 | HCFWF4Z3143 SS, HEPSAFI0210 | 102d | 73d |  |  |  |  |  |
| HCFWF4Z31124 |  | F4 Z3 :Rubber Skirting | 2d | 2014-02-04 | 2014-02-05 | HCFWF4Z21105 | 98d | 0d | B3 |  | MC | C | FI |
| HCFWF4Z3124 |  | F4 Z3 :Rubber Skirting | 2d | 2014-02-04 | 2014-02-05 | HCFWF4Z3143, HCFWF4Z2105 | 72d | 0d | B3 |  | MC | C | FI |
| HCFWF4Z3165 |  | F4 Z3 :Aluminum & Stainless Steel Skirting | 10d | 2014-02-04 | 2014-02-15 | HCFWF4Z3124 SS | 92d | 63d | B3 | 09 | MC | C | FI |
| HCFWF4Z3144 |  | F4 Z3 :Stone Base Skirting | 10d | 2014-02-06 | 2014-02-17 | HCFWF4Z3191 | 90d | 61d | B3 | 09 | MC | C | FI |
|  | WL | **Wall Finishes** |  | 2013-07-14 | 2014-03-13 |  |  |  |  |  |  |  |  |
| HCFWF4Z3170 |  | F4 Z3 :Gybsum Board Partitions | 10d | 2013-07-14 | 2013-07-24 | HCFWF4Z2123 SS, HCSW4FZ3090 | 59.75d | 17d | B3 | 10 | MC | C | FI |
| HCFWF4Z31166 |  | F4 Z3 :Block Works | 10d | 2013-08-03 | 2013-08-17 | HCFWF4Z21107 SS, HCSW4FZ3090, HCFWF3Z31126 | 83d | 0d | B3 | 04 | MC | C | FI |
| HCFWF4Z3166 |  | F4 Z3 :Block Works | 10d | 2013-08-03 | 2013-08-17 | HCFWF4Z2107 SS, HCFWF4Z3170 SS, HCSW4FZ3090, HCFWF3Z3126 | 56d | 0d | B3 | 04 | MC | C | FI |
| HCFWF4Z3147 |  | F4 Z3 :Plaster First Layer | 8d | 2013-10-27 | 2013-11-04 | HCFWF4Z3166, HCFWF3Z3099 | 0d |  | B3 | 09 | MC | C | FI |
| HCFWF4Z3148 |  | F4 Z3 :Plaster Second Layer | 8d | 2013-11-06 | 2013-11-14 | HCFWF4Z3147 | 0d |  | B3 | 09 | MC | C | FI |
| HCFWF4Z3129 |  | F4 Z3 :Plaster Final Layer | 8d | 2013-11-16 | 2013-11-24 | HCFWF4Z3148 | 0d |  | B3 | 09 | MC | C | FI |
| HCFWF4Z3145 |  | F4 Z3 :Paint Prime coat | 12d | 2013-11-25 | 2013-12-08 | HCFWF4Z3129 | 70d | 36d | B3 | 09 | MC | C | FI |
| HCFWF4Z3163 |  | F4 Z3 :Stainless steel Wire Cloth Finish For Elev Lobby | 10d | 2014-02-19 | 2014-03-02 | HCFWF4Z3171 SS | 79d | 50d | B3 | 05 | MC | C | FI |
| HCFWF4Z3171 |  | F4 Z3 :Paint putty coat | 12d | 2014-02-19 | 2014-03-04 | HCFWF4Z3145, HCFWF3Z3131 | 11d | 0d | B3 | 09 | MC | C | FI |
| HCFWF4Z3149 |  | F4 Z3 :Stone Cladding | 10d | 2014-02-24 | 2014-03-06 | HCFWF4Z3172 SS | 75d | 46d | B3 | 04 | MC | C | FI |
| HCFWF4Z3172 |  | F4 Z3 :Glass Wall Cladding | 16d | 2014-02-24 | 2014-03-13 | HCFWF4Z3129, HCFWF3Z3137 | 43d | 0d | B3 | 09 | MC | C | FI |

| ID | WBS | Activity | Duration | Start | Finish | Predecessors | Total float | Free float | Bill No. | Division No. | Responsibility | Phase Code | Trade |
| --- | --- | --- | --- | --- | --- | --- | --- | --- | --- | --- | --- | --- | --- |
|  | CL | **Ceiling Finishes** |  | 2013-12-23 | 2014-04-15 |  |  |  |  |  |  |  |  |
| HCFWF4Z3150 |  | F4 Z3 :Plaster First Layer | 8d | 2013-12-23 | 2014-01-02 | HCFWF4Z3142, HCFWF3Z3117, HCFWF4Z3129 | 0d |  | B3 | 09 | MC | C | FI |
| HCFWF4Z3176 |  | F4 Z3 :Plaster Second Layer | 8d | 2014-01-04 | 2014-01-12 | HCFWF4Z3150 | 0d |  | B3 | 09 | MC | C | FI |
| HCFWF4Z3152 |  | F4 Z3 :Plaster Final Layer | 8d | 2014-01-13 | 2014-01-22 | HCFWF4Z3176 | 0d |  | B3 | 09 | MC | C | FI |
| HCFWF4Z3153 |  | F4 Z3 :Paint Prime coat | 10d | 2014-01-23 | 2014-02-03 | HCFWF4Z3145, HCFWF4Z3152 | 44d | 0d | B3 | 09 | MC | C | FI |
| HCFWF4Z3134 |  | F4 Z3 :Paint putty coat | 10d | 2014-02-04 | 2014-02-15 | HCFWF4Z3153 | 44d | 37d | B3 | 09 | MC | C | FI |
| HCFWF4Z3196 |  | F4 Z3 :Acoustical Ceiling | 10d | 2014-02-04 | 2014-02-15 | HCFWF4Z3153 | 54d | 47d | B3 | 09 | MC | C | FI |
| HCFWF4Z3155 |  | F4 Z3 :Gybsum Board Ceiling | 14d | 2014-03-31 | 2014-04-15 | HCFWF4Z3134, HCFWF4Z3196 SS, HCFWF3Z3120 | 7d | 0d | B3 | 09 | MC | C | FI |
|  | MS | **Mecellanuos** |  | 2014-03-15 | 2014-04-17 |  |  |  |  |  |  |  |  |
| HCFWF4Z3158 |  | F4 Z3 :Steel Fire Rated Doors | 10d | 2014-03-15 | 2014-03-25 | HCFWF4Z3153, HCFWF3Z3123 | 29d | 4d | B3 | 08 | MC | C | FI |
| HCFWF4Z3175 |  | F4 Z3 :Glass Doors | 10d | 2014-03-15 | 2014-03-25 | HCFWF4Z3181 SS | 59d | 30d | B3 | 08 | MC | C | FI |
| HCFWF4Z3181 |  | F4 Z3 :Metal Works | 10d | 2014-03-15 | 2014-03-25 | HCFWF4Z3153, HCFWF3Z3141, HCFWF3Z3141 FF | 19d | 0d | B3 | 05 | MC | C | FI |
| HCFWF4Z3157 |  | F4 Z3 :Steel Doors | 10d | 2014-03-26 | 2014-04-06 | HCFWF4Z3158 SS, HCFWF4Z3181, HCFWF3Z3122 | 19d | 0d | B3 | 08 | MC | C | FI |
| HCFWF4Z3160 |  | F4 Z3 :Wooden Doors | 10d | 2014-03-26 | 2014-04-06 | HCFWF4Z3157 SS, HCFWF3Z3125 | 19d | 0d | B3 | 08 | MC | C | FI |
| HCFWF4Z3139 |  | F4 Z3 :Stone Decoration For Benches | 10d | 2014-03-30 | 2014-04-09 | HCFWF4Z3186 SS | 46d | 17d | B3 | 04 | MC | C | FI |
| HCFWF4Z3186 |  | F4 Z3 :Handrails & Railling | 15d | 2014-03-30 | 2014-04-15 | HCFWF4Z3181 SS, HCFWF3Z3146 | 16d | 0d | B3 | 05 | MC | C | FI |
| HCFWF4Z3167 |  | F4 Z3 :Mirror | 10d | 2014-04-07 | 2014-04-17 | HCFWF4Z3186 SS, HCFWF4Z3160 | 39d | 0d | B3 | 08 | MC | C | FI |
| HCFWF4Z3168 |  | F4 Z3 :Toilet & corian vanity tops | 10d | 2014-04-07 | 2014-04-17 | HCFWF4Z3167 SS, HEPSAFI0270 | 39d | 10d | B3 | 10 | MC | C | FI |
|  | Z4 | **Zone 4** |  | 2013-05-19 | 2014-02-08 |  |  |  |  |  |  |  |  |
|  | FL | **Floor Finishes** |  | 2013-06-30 | 2014-02-08 |  |  |  |  |  |  |  |  |
| HCFWF4Z4126 |  | F4 Z4 :Foam Concrete Under Floorings | 16d | 2013-06-30 | 2013-07-18 | HCFWF4Z4131 | 123.5d | 0d | B3 | 07 | MC | C | FI |
| HCFWF4Z4127 |  | F4 Z4 :Trawelled smooth Concrete screed | 8d | 2013-07-18 | 2013-07-28 | HCFWF4Z4126 | 123.5d | 0d | B3 | 03 | MC | C | FI |
| HCFWF4Z4143 |  | F4 Z4 :Stone Flooring | 12d | 2013-07-28 | 2013-08-14 | HCFWF4Z4127 | 123.5d | 0d | B3 | 09 | MC | C | FI |
| HCFWF4Z4129 |  | F4 Z4 :Rubber Flooring | 10d | 2013-08-29 | 2013-09-10 | HCFWF4Z2142, HCFWF4Z4143 SS | 191.75d | 88.75d | B3 | 09 | MC | C | FI |
| HCFWF4Z4146 |  | F4 Z4 :Carpet Tiles | 10d | 2013-12-17 | 2013-12-29 | HCFWF4Z4129 SS, HEPSAFI0210 | 131d | 102d | B3 |  | MC | C | FI |
| HCFWF4Z41130 |  | F4 Z4 :Rubber Skirting | 2d | 2014-02-06 | 2014-02-08 | HCFWF4Z31124 | 98d | 69d | B3 |  | MC | C | FI |
| HCFWF4Z4130 |  | F4 Z4 :Rubber Skirting | 2d | 2014-02-06 | 2014-02-08 | HCFWF4Z4129, HCFWF4Z3124 | 72d | 0d | B3 |  | MC | C | FI |

| ID | WBS | Activity | Duration | Start | Finish | Predecessors | Total float | Free float | Bill No. | Division No. | Responsibility | Phase Code | Trade |
| --- | --- | --- | --- | --- | --- | --- | --- | --- | --- | --- | --- | --- | --- |
|  | WL | **Wall Finishes** |  | 2013-05-19 | 2013-12-26 |  |  |  |  |  |  |  |  |
| HCFWF4Z41132 |  | F4 Z4 :Block Works | 10d | 2013-05-19 | 2013-05-30 | HCSW4FZ2090, HCFWB1Z4008 | 133d | 0d | B3 | 04 | MC | C | FI |
| HCFWF4Z4132 |  | F4 Z4 :Block Works | 10d | 2013-05-19 | 2013-05-30 | HCSW4FZ2090, HCFWB1Z4008 | 98.5d | 0d | B3 | 04 | MC | C | FI |
| HCFWF4Z4148 |  | F4 Z4 :Gybsum Board Partitions | 10d | 2013-05-19 | 2013-05-30 | HCFWF4Z4132 SS | 98.5d | 0d | B3 | 10 | MC | C | FI |
| HCFWF4Z4134 |  | F4 Z4 :Plaster First Layer | 8.75d | 2013-06-01 | 2013-06-10 | HCFWF4Z4132, HCFWF4Z4148 | 98.5d | 0d | B3 | 09 | MC | C | FI |
| HCFWF4Z4135 |  | F4 Z4 :Plaster Second Layer | 8d | 2013-06-10 | 2013-06-19 | HCFWF4Z4134 | 98.5d | 0d | B3 | 09 | MC | C | FI |
| HCFWF4Z4131 |  | F4 Z4 :Plaster Final Layer | 8.75d | 2013-06-19 | 2013-06-30 | HCFWF4Z4135 | 98.5d | 0d | B3 | 09 | MC | C | FI |
| HCFWF4Z4137 |  | F4 Z4 :Paint Prime coat | 12d | 2013-06-30 | 2013-07-14 | HCFWF4Z4131 | 194.5d | 0d | B3 | 09 | MC | C | FI |
| HCFWF4Z4128 |  | F4 Z4 :Paint putty coat | 12d | 2013-07-14 | 2013-07-28 | HCFWF4Z4137 | 230.5d | 74d | B3 | 09 | MC | C | FI |
| HCFWF4Z4249 |  | F4 Z4 :Glass Wall Cladding | 16d | 2013-12-08 | 2013-12-26 | HCFWF4Z4131, HEPSAFI0460 | 101d | 0d | B3 | 09 | MC | C | FI |
|  | CL | **Ceiling Finishes** |  | 2013-07-28 | 2014-01-23 |  |  |  |  |  |  |  |  |
| HCFWF4Z4140 |  | F4 Z4 :Plaster First Layer | 8.75d | 2013-07-28 | 2013-08-07 | HCFWF4Z4127, HCFWF4Z4131 | 155.5d | 0d | B3 | 09 | MC | C | FI |
| HCFWF4Z4136 |  | F4 Z4 :Plaster Second Layer | 8d | 2013-08-07 | 2013-08-20 | HCFWF4Z4140 | 157.75d | 0d | B3 | 09 | MC | C | FI |
| HCFWF4Z2142 |  | F4 Z4 :Plaster Final Layer | 8d | 2013-08-20 | 2013-08-29 | HCFWF4Z4136 | 157.75d | 0d | B3 | 09 | MC | C | FI |
| HCFWF4Z2133 |  | F4 Z4 :Paint Prime coat | 10d | 2013-08-29 | 2013-09-10 | HCFWF4Z4137, HCFWF4Z2142 | 157.75d | 0d | B3 | 09 | MC | C | FI |
| HCFWF4Z2139 |  | F4 Z4 :Paint putty coat | 10d | 2013-09-10 | 2013-09-22 | HCFWF4Z2133 | 157.75d | 84.75d | B3 | 09 | MC | C | FI |
| HCFWF4Z2145 |  | F4 Z4 :Gybsum Board Ceiling | 14d | 2014-01-07 | 2014-01-23 | HCFWF4Z2139, HCFWB1Z4021 | 73d | 0d | B3 | 09 | MC | C | FI |
|  | MS | **Mecellanuos** |  | 2013-12-08 | 2013-12-31 |  |  |  |  |  |  |  |  |
| HCFWF4Z2138 |  | F4 Z4 :Steel Fire Rated Doors | 10d | 2013-12-08 | 2013-12-18 | HCFWF4Z2133, HCFWB1Z4025 | 119d | 10d | B3 | 08 | MC | C | FI |
| HCFWF4Z4141 |  | F4 Z4 :Metal Works | 10d | 2013-12-08 | 2013-12-18 | HCFWF4Z2133, HCFWB1Z4023 | 109d | 0d | B3 | 05 | MC | C | FI |
| HCFWF4Z2150 |  | F4 Z4 :Handrails & Railling | 15d | 2013-12-14 | 2013-12-31 | HCFWF4Z4141 SS, HCFWB1Z4027 | 129d | 100d | B3 | 05 | MC | C | FI |
| HCFWF4Z2144 |  | F4 Z4 :Wooden Doors | 10d | 2013-12-19 | 2013-12-31 | HCFWF4Z4147 SS | 119d | 81d | B3 | 08 | MC | C | FI |
| HCFWF4Z4147 |  | F4 Z4 :Steel Doors | 10d | 2013-12-19 | 2013-12-31 | HCFWF4Z2138 SS, HCFWF4Z4141 | 119d | 0d | B3 | 08 | MC | C | FI |
|  | Z5 | **Zone 5** |  | 2013-08-20 | 2014-03-09 |  |  |  |  |  |  |  |  |
|  | FL | **Floor Finishes** |  | 2013-09-30 | 2014-02-10 |  |  |  |  |  |  |  |  |
| HCFWF4Z5161 |  | F4 Z5 :Foam Concrete Under Floorings | 16d | 2013-09-30 | 2013-10-23 | HCFWF4Z5172 | 30.75d | 0d | B3 | 07 | MC | C | FI |
| HCFWF4Z5162 |  | F4 Z5 :Trawelled smooth Concrete screed | 8d | 2013-10-23 | 2013-11-02 | HCFWF4Z5161 | 30.75d | 0d | B3 | 03 | MC | C | FI |
| HCFWF4Z5164 |  | F4 Z5 :Epoxy Screed Finish | 10d | 2013-11-02 | 2013-11-14 | HCFWF4Z5162 | 168.5d | 139.5d | B3 |  | MC | C | FI |
| HCFWF4Z5167 |  | F4 Z5 :Rubber Flooring | 10d | 2013-12-10 | 2013-12-22 | HCFWF4Z5171 | 47.25d | 0d | B3 | 09 | MC | C | FI |
| HCFWF4Z5186 |  | F4 Z5 :Stone Flooring All types | 12d | 2013-12-10 | 2013-12-24 | HCFWF4Z5167 SS | 47.25d | 3.25d | B3 | 09 | MC | C | FI |
| HCFWF4Z5174 |  | F4 Z5 :Aluminum Floor Tiles | 10d | 2013-12-17 | 2013-12-29 | HCFWF4Z5188 SS | 95d | 0d | B3 | 09 | MC | C | FI |
| HCFWF4Z5188 |  | F4 Z5 :Quary Tiles | 10d | 2013-12-17 | 2013-12-29 | HCFWF4Z5192 SS | 44d | 0d | B3 |  | MC | C | FI |
| HCFWF4Z5192 |  | F4 Z5 :Carpet Tile Flooring | 10d | 2013-12-17 | 2013-12-29 | HCFWF4Z5167 SS, HEPSAFI0210 | 44d | 0d | B3 | 09 | MC | C | FI |
| HCFWF4Z5198 |  | F4 Z5 :Wood Flooring | 10d | 2013-12-17 | 2013-12-29 | HCFWF4Z5174 SS | 131d | 102d | B3 | 09 | MC | C | FI |
| HCFWF4Z5788 |  | F4 Z5 :Ceramic Floor Tiles | 10d | 2013-12-17 | 2013-12-29 | HEPSAFI0210, HCFWF4Z5192 SS | 131d | 102d |  |  |  |  |  |
| HCFWF4Z5175 |  | F4 Z5 :Stone Base Skirting | 10d | 2013-12-30 | 2014-01-11 | HCFWF4Z5191 SS, HCFWF4Z5186 | 95d | 23d | B3 | 09 | MC | C | FI |
| HCFWF4Z5191 |  | F4 Z5 :Aluminum & Stainless Steel Skirting | 10d | 2013-12-30 | 2014-01-11 | HCFWF4Z5174 | 95d | 0d | B3 | 09 | MC | C | FI |
| HCFWF4Z5145 |  | F4 Z5 :Rubber Skirting | 2d | 2014-02-09 | 2014-02-10 | HCFWF4Z5167, HCFWF4Z5175, HCFWF4Z4130 | 72d | 0d | B3 |  | MC | C | FI |

| ID | WBS | Activity | Duration | Start | Finish | Predecessors | Total float | Free float | Bill No. | Division No. | Responsibility | Phase Code | Trade |
| --- | --- | --- | --- | --- | --- | --- | --- | --- | --- | --- | --- | --- | --- |
|  | WL | **Wall Finishes** |  | 2013-08-20 | 2013-12-26 |  |  |  |  |  |  |  |  |
| HCFWF4Z51163 |  | F4 Z5 :Block Works | 10d | 2013-08-20 | 2013-08-31 | HCSW4FZ5090 | 64d | 0d | B3 | 04 | MC | C | FI |
| HCFWF4Z5163 |  | F4 Z5 :Block Works | 10d | 2013-08-20 | 2013-08-31 | HCFWF4Z5169 SS, HCSW4FZ5090 | 30.75d | 0d | B3 | 04 | MC | C | FI |
| HCFWF4Z5169 |  | F4 Z5 :Gybsum Board Partitions | 10d | 2013-08-20 | 2013-08-31 | HCFWF4Z3170 SS, HCSW4FZ5090 | 30.75d | 0d | B3 | 10 | MC | C | FI |
| HCFWF4Z5150 |  | F4 Z5 :Plaster First Layer | 8.75d | 2013-09-01 | 2013-09-10 | HCFWF4Z5163 | 30.75d | 0d | B3 | 09 | MC | C | FI |
| HCFWF4Z5197 |  | F4 Z5 :Acoustical Painted Walls | 10d | 2013-09-01 | 2013-09-11 | HCFWF4Z5163 | 186d | 79d | B3 | 09 | MC | C | FI |
| HCFWF4Z5166 |  | F4 Z5 :Plaster Second Layer | 8d | 2013-09-10 | 2013-09-19 | HCFWF4Z5150 | 30.75d | 0d | B3 | 09 | MC | C | FI |
| HCFWF4Z5172 |  | F4 Z5 :Plaster Final Layer | 8.75d | 2013-09-19 | 2013-09-30 | HCFWF4Z5166 | 30.75d | 0d | B3 | 09 | MC | C | FI |
| HCFWF4Z5168 |  | F4 Z5 :Paint Prime coat | 12d | 2013-09-30 | 2013-10-14 | HCFWF4Z5172, HCFWB4Z6012, HCFWB4Z6017 | 122.5d | 0d | B3 | 09 | MC | C | FI |
| HCFWF4Z5144 |  | F4 Z5 :Paint putty coat | 12d | 2013-10-14 | 2013-11-02 | HCFWF4Z5168 | 178.5d | 0d | B3 | 09 | MC | C | FI |
| HCFWF4Z5170 |  | F4 Z5 :Stone Wall Cladding | 10d | 2013-10-14 | 2013-10-30 | HCFWF4Z5144 SS | 180.5d | 151.5d | B3 | 04 | MC | C | FI |
| HCFWF4Z5193 |  | F4 Z5 :Stainless steel Wire Cloth Finish For Elev Lobby | 10d | 2013-12-08 | 2013-12-18 | HCFWF4Z5196 SS | 139d | 110d | B3 | 05 | MC | C | FI |
| HCFWF4Z5196 |  | F4 Z5 :Glass Wall Cladding | 16d | 2013-12-08 | 2013-12-26 | HCFWF4Z5172, HCFWF4Z5197 SS, HEPSAFI0460 | 107d | 0d | B3 | 09 | MC | C | FI |
|  | CL | **Ceiling Finishes** |  | 2013-11-02 | 2014-03-06 |  |  |  |  |  |  |  |  |
| HCFWF4Z5149 |  | F4 Z5 :Plaster First Layer | 8.75d | 2013-11-02 | 2013-11-13 | HCFWF4Z5162, HCFWF4Z5172 | 30.75d | 0d | B3 | 09 | MC | C | FI |
| HCFWF4Z5155 |  | F4 Z5 :Plaster Second Layer | 8d | 2013-11-13 | 2013-11-23 | HCFWF4Z5149 | 30.75d | 0d | B3 | 09 | MC | C | FI |
| HCFWF4Z5171 |  | F4 Z5 :Plaster Final Layer | 15.5d | 2013-11-23 | 2013-12-10 | HCFWF4Z5155 | 30.75d | 0d | B3 | 09 | MC | C | FI |
| HCFWF4Z5177 |  | F4 Z5 :Paint Prime coat | 10d | 2013-12-10 | 2013-12-22 | HCFWF4Z5168, HCFWF4Z5171 | 78.25d | 0d | B3 | 09 | MC | C | FI |
| HCFWF4Z5165 |  | F4 Z5 :Acoustical Ceiling | 10d | 2013-12-22 | 2014-01-05 | HCFWF4Z5177 | 88.25d | 46.75d | B3 | 09 | MC | C | FI |
| HCFWF4Z5173 |  | F4 Z5 :Paint putty coat | 10d | 2013-12-22 | 2014-01-05 | HCFWF4Z5177 | 78.25d | 36.75d | B3 | 09 | MC | C | FI |
| HCFWF4Z5154 |  | F4 Z5 :Gybsum Board Ceiling | 14d | 2014-02-18 | 2014-03-06 | HCFWF4Z5173, HCFWF4Z5165 SS, HCFWB1Z5020 | 41.5d | 0d | B3 | 09 | MC | C | FI |
|  | MS | **Mecellanuos** |  | 2014-02-02 | 2014-03-09 |  |  |  |  |  |  |  |  |
| HCFWF4Z5176 |  | F4 Z5 :Metal Works | 10d | 2014-02-02 | 2014-02-13 | HCFWF4Z5177, HCFWB1Z5022 | 53.5d | 0d | B3 | 05 | MC | C | FI |
| HCFWF4Z5182 |  | F4 Z5 :Steel Fire Rated Doors | 10d | 2014-02-02 | 2014-02-13 | HCFWF4Z5177, HCFWB1Z5023, HCFWB1Z6024 | 63.5d | 0d | B3 | 08 | MC | C | FI |
| HCFWF4Z5159 |  | F4 Z5 :Stone Decoration For Benches | 10d | 2014-02-08 | 2014-02-19 | HCFWF4Z5181 SS | 88.5d | 59.5d | B3 | 04 | MC | C | FI |
| HCFWF4Z5181 |  | F4 Z5 :Handrails & Railling | 15d | 2014-02-08 | 2014-02-25 | HCFWF4Z5176 SS, HCFWB1Z5027, HCFWB1Z6027 | 58.5d | 0d | B3 | 05 | MC | C | FI |
| HCFWF4Z5160 |  | F4 Z5 :Wooden Doors | 10d | 2014-02-13 | 2014-02-25 | HCFWF4Z5178 SS | 73.5d | 0d | B3 | 08 | MC | C | FI |
| HCFWF4Z5178 |  | F4 Z5 :Steel Doors | 10d | 2014-02-13 | 2014-02-25 | HCFWF4Z5182 SS, HCFWF4Z5176, HCFWB1Z5024 | 53.5d | 0d | B3 | 08 | MC | C | FI |
| HCFWF4Z5183 |  | F4 Z5 :Toilet & corian vanity tops | 10d | 2014-02-25 | 2014-03-09 | HCFWF4Z5187 SS, HEPSAFI0270 | 73.5d | 44.5d | B3 | 10 | MC | C | FI |
| HCFWF4Z5187 |  | F4 Z5 :Mirror | 10d | 2014-02-25 | 2014-03-09 | HCFWF4Z5181 SS, HCFWF4Z5160 | 73.5d | 0d | B3 | 08 | MC | C | FI |

| ID | WBS | Activity | Type | Duration | Start | Finish | Predecessors | Total float | Free float | Bill No. | Responsibility | Phase Code | Trade | Division No. |
| --- | --- | --- | --- | --- | --- | --- | --- | --- | --- | --- | --- | --- | --- | --- |
|  | F5 | **Fifth Floor** |  |  | 2013-03-30 | 2014-05-19 |  |  |  |  |  |  |  |  |
| HCFWF50000 |  | Start Finishing Works Fifth Floor | milestone | 0d | 2013-03-30 | 2013-03-30 | HCSW5FZ1090 | 129d | 16d | B3 | MC | C | FI |  |
| HCFWF50001 |  | End Finishing Works Fifth Floor | milestone | 0d | 2014-05-19 | 2014-05-19 | HCFWF50000, HCFWF5Z1174, HCFWF5Z1156, HCFWF5Z2153, HCFWF5Z2164, HCFWF5Z3211, HCFWF5Z3164, HCFWF5Z4278, HCFWF5Z4289, HCFWF5Z5179, HCFWF5Z5213, HCFWF5Z1145, HCFWF5Z1171, HCFWF5Z1189, HCFWF5Z1176, HCFWF5Z1177, HCFWF5Z1199, HCFWF5Z1167, HCFWF5Z2171, HCFWF5Z2155, HCFWF5Z2174, HCFWF5Z2170, HCFWF5Z2175, HCFWF5Z2169, HCFWF5Z3174, HCFWF5Z3197, HCFWF5Z3208, HCFWF5Z3200, HCFWF5Z3179, HCFWF5Z3198, HCFWF5Z3190, HCFWF5Z3169, HCFWF5Z3203, HCFWF5Z3210, HCFWF5Z3195, HCFWF5Z2196, HCFWF5Z4180, HCFWF5Z4298, HCFWF5Z4299, HCFWF5Z4295, HCFWF5Z2200, HCFWF5Z4294, HCFWF5Z5199, HCFWF5Z5238, HCFWF5Z5180, HCFWF5Z5233, HCFWF5Z5205, HCFWF5Z5189, HCFWF5Z5194, HCFWF5Z5223, HCFWF5Z5195, HCFWF6Z1170, HCFWF6Z1224, HCFWF6Z1207, HCFWF6Z1234, HCFWF6Z1197, HCFWF6Z2221, HCFWF6Z2205, HCFWF6Z2224, HCFWF6Z2220, HCFWF6Z2225, HCFWF6Z2219, HCFWF6Z3204, HCFWF6Z3232, HCFWF6Z3271, HCFWF6Z3235, HCFWF6Z3209, HCFWF6Z3233, HCFWF6Z3225, HCFWF6Z3199, HCFWF6Z3238, HCFWF6Z3245, HCFWF6Z3230, HCFWF6Z4246, HCFWF6Z4230, HCFWF6Z2248, HCFWF6Z2249, HCFWF6Z2245, HCFWF6Z2250, HCFWF6Z2244, HCFWF6Z5234, HCFWF6Z5266, HCFWF6Z5278, HCFWF6Z5215, HCFWF6Z5273, HCFWF6Z5240, HCFWF6Z5224, HCFWF6Z5229, HCFWF6Z5263, HCFWF6Z5230, HCFWF5Z51173, HCFWF5Z3117, HCFWF5Z5248, HCFWF5Z1180, HCMEF5Z1450, HCMEF5Z2455, HCMEF5Z3460, HCMEF5Z4465, HCMEF5Z5470, HCMEF5Z5545 | 13d |  | B3 | MC | C | FI |  |
|  | Z1 | **Zone 1** |  |  | 2013-04-13 | 2014-04-19 |  |  |  |  |  |  |  |  |
|  | FL | **Floor Finishes** |  |  | 2013-07-24 | 2014-02-12 |  |  |  |  |  |  |  |  |
| HCFWF5Z1151 |  | F5 Z1 :Foam Concrete Under Floorings |  | 16d | 2013-07-24 | 2013-08-14 | HCFWF5Z1157 | 100d | 0d | B3 | MC | C | FI | 07 |
| HCFWF5Z1152 |  | F5 Z1 :Trawelled smooth Concrete screed |  | 8d | 2013-08-15 | 2013-08-24 | HCFWF5Z1151 | 100d | 29d | B3 | MC | C | FI | 03 |
| HCFWF5Z1163 |  | F5 Z1 :Rubber Flooring |  | 10d | 2013-10-31 | 2013-11-13 | HCFWF5Z1179 | 72.5d | 0d | B3 | MC | C | FI | 09 |
| HCFWF5Z1171 |  | F5 Z1 :Stone Flooring |  | 12d | 2013-10-31 | 2013-11-16 | HCFWF5Z1163 SS | 72.5d | 0d | B3 | MC | C | FI | 09 |
| HCFWF5Z1204 |  | F5 Z1 :Stone Base Skirting |  | 10d | 2013-11-16 | 2013-11-27 | HCFWF5Z1171 | 143.5d | 71.5d | B3 | MC | C | FI | 09 |
| HCFWF5Z1145 |  | F5 Z1 :Carpet Floor Tiles |  | 10d | 2013-12-17 | 2013-12-29 | HCFWF5Z1163 SS, HEPSAFI0210 | 131d | 118d | B3 | MC | C | FI | 09 |
| HCFWF5Z51173 |  | F5 Z1 :Ceramic Floor Tiles |  | 10d | 2013-12-17 | 2013-12-29 | HCFWF5Z1163 SS, HEPSAFI0210 | 131d | 118d |  |  |  |  |  |
| HCFWF5Z1189 |  | F5 Z1 :Rubber Skirting |  | 2d | 2014-02-11 | 2014-02-12 | HCFWF5Z1163, HCFWF5Z1204 SS, HCFWF4Z5145 | 72d | 0d | B3 | MC | C | FI |  |
|  | WL | **Wall Finishes** |  |  | 2013-04-13 | 2014-04-06 |  |  |  |  |  |  |  |  |
| HCFWF5Z11153 |  | F5 Z1 :Block Works |  | 10d | 2013-04-13 | 2013-04-23 | HCSW5FZ1090, HCFWF4Z11123 | 117d | 0d | B3 | MC | C | FI | 04 |
| HCFWF5Z1153 |  | F5 Z1 :Block Works |  | 10d | 2013-04-17 | 2013-04-28 | HCSW5FZ1090, HCFWF4Z1123, HCFWF50000 | 113d | 0d | B3 | MC | C | FI | 04 |
| HCFWF5Z1194 |  | F5 Z1 :Gybsum Board Partitions |  | 10d | 2013-04-17 | 2013-04-28 | HCFWF5Z1153 SS, HCSW5FZ1090 | 165d | 48d | B3 | MC | C | FI | 10 |
| HCFWF5Z1130 |  | F5 Z1 :Plaster First Layer |  | 8.75d | 2013-06-24 | 2013-07-04 | HCFWF5Z1153, HCFWF4Z1127 | 100d | 0d | B3 | MC | C | FI | 09 |
| HCFWF5Z1166 |  | F5 Z1 :Plaster Second Layer |  | 8d | 2013-07-04 | 2013-07-14 | HCFWF5Z1130 | 100d | 0d | B3 | MC | C | FI | 09 |
| HCFWF5Z1157 |  | F5 Z1 :Plaster Final Layer |  | 8.75d | 2013-07-14 | 2013-07-23 | HCFWF5Z1166 | 100d | 0d | B3 | MC | C | FI | 09 |
| HCFWF5Z1150 |  | F5 Z1 :Stone Cladding |  | 10d | 2013-07-24 | 2013-08-04 | HCFWF5Z1157 | 214d | 189d | B3 | MC | C | FI | 04 |
| HCFWF5Z1158 |  | F5 Z1 :Paint Prime coat |  | 12d | 2013-07-24 | 2013-08-06 | HCFWF5Z1157, HCFWF4Z1128 | 184d | 13.5d | B3 | MC | C | FI | 09 |
| HCFWF5Z1176 |  | F5 Z1 :Glass Wall Cladding |  | 16d | 2014-03-15 | 2014-04-01 | HCFWF5Z1150 SS, HCFWF4Z1146 | 25d | 0d | B3 | MC | C | FI | 09 |
| HCFWF5Z1174 |  | F5 Z1 :Paint putty coat |  | 12d | 2014-03-24 | 2014-04-06 | HCFWF5Z1158, HCFWF4Z1139 | 37d | 12d | B3 | MC | C | FI | 09 |

| ID | WBS | Activity | Duration | Start | Finish | Predecessors | Total float | Free float | Bill No. | Division No. | Responsibility | Phase Code | Trade |
| --- | --- | --- | --- | --- | --- | --- | --- | --- | --- | --- | --- | --- | --- |
|  | CL | **Ceiling Finishes** |  | 2013-09-28 | 2014-04-05 |  |  |  |  |  |  |  |  |
| HCFWF5Z1162 |  | F5 Z1 :Plaster First Layer | 8.75d | 2013-09-28 | 2013-10-07 | HCFWF5Z1152, HCFWF4Z1144, HCFWF5Z1157 | 71d | 0d | B3 | 09 | MC | C | FI |
| HCFWF5Z1173 |  | F5 Z1 :Plaster Second Layer | 8d | 2013-10-07 | 2013-10-21 | HCFWF5Z1162 | 71d | 0d | B3 | 09 | MC | C | FI |
| HCFWF5Z1179 |  | F5 Z1 :Plaster Final Layer | 8.75d | 2013-10-21 | 2013-10-31 | HCFWF5Z1173 | 71d | 0d | B3 | 09 | MC | C | FI |
| HCFWF5Z1135 |  | F5 Z1 :Paint Prime coat | 10d | 2013-10-31 | 2013-11-13 | HCFWF5Z1158, HCFWF5Z1179 | 119.5d | 0d | B3 | 09 | MC | C | FI |
| HCFWF5Z1156 |  | F5 Z1 :Paint putty coat | 10d | 2013-11-13 | 2013-11-25 | HCFWF5Z1135 | 121.5d | 85.5d | B3 | 09 | MC | C | FI |
| HCFWF5Z1172 |  | F5 Z1 :Gybsum Board Ceiling | 14d | 2014-03-09 | 2014-03-24 | HCFWF5Z1156, HCFWF4Z1142 | 36d | 0d | B3 | 09 | MC | C | FI |
| HCFWF5Z1177 |  | F5 Z1 :Acoustical Ceiling | 10d | 2014-03-09 | 2014-03-19 | HCFWF5Z1172 SS | 46d | 4d | B3 | 09 | MC | C | FI |
| HCFWF5Z1180 |  | F5 Z1 :Spicial Metal Ceiling | 14d | 2014-03-20 | 2014-04-05 | HCFWF4Z1150, HCFWF5Z1177 SS | 36d | 0d |  |  |  |  |  |
|  | MS | **Miscellaneous** |  | 2014-02-20 | 2014-04-19 |  |  |  |  |  |  |  |  |
| HCFWF5Z1168 |  | F5 Z1 :Metal Works | 10d | 2014-02-20 | 2014-03-03 | HCFWF5Z1135, HCFWF4Z1138, HCFWF4Z1138 FF | 38d | 0d | B3 | 05 | MC | C | FI |
| HCFWF5Z1184 |  | F5 Z1 :Steel Fire Rated Doors | 10d | 2014-02-20 | 2014-03-03 | HCFWF5Z1135, HCFWF4Z1149 | 58d | 0d | B3 | 08 | MC | C | FI |
| HCFWF5Z1140 |  | F5 Z1 :Steel Doors | 10d | 2014-03-04 | 2014-03-15 | HCFWF5Z1184 SS, HCFWF5Z1168, HCFWF4Z1115 | 48d | 0d | B3 | 08 | MC | C | FI |
| HCFWF5Z1167 |  | F5 Z1 :Wooden Doors | 10d | 2014-03-10 | 2014-03-20 | HCFWF5Z1140 SS, HCFWF4Z1137 | 43d | 0d | B3 | 08 | MC | C | FI |
| HCFWF5Z1161 |  | F5 Z1 :Handrails & Railling | 15d | 2014-04-02 | 2014-04-19 | HCFWF5Z1168 SS, HCFWF4Z1131 | 28d | 0d | B3 | 05 | MC | C | FI |
| HCFWF5Z1178 |  | F5 Z1 :Mirrors | 10d | 2014-04-02 | 2014-04-13 | HCFWF5Z1161 SS, HCFWF5Z1167 | 43d | 0d | B3 | 08 | MC | C | FI |
| HCFWF5Z1199 |  | F5 Z1 :Toilet & corian vanity tops | 10d | 2014-04-02 | 2014-04-13 | HCFWF5Z1178 SS, HEPSAFI0270 | 43d | 30d | B3 | 10 | MC | C | FI |
|  | Z2 | **Zone 2** |  | 2013-06-10 | 2014-04-19 |  |  |  |  |  |  |  |  |
|  | FL | **Floor Finishes** |  | 2013-10-01 | 2014-02-15 |  |  |  |  |  |  |  |  |
| HCFWF5Z2151 |  | F5 Z2 :Foam Concrete Under Floorings | 16d | 2013-10-01 | 2013-10-23 | HCFWF5Z2156 | 58d | 0d | B3 | 07 | MC | C | FI |
| HCFWF5Z2152 |  | F5 Z2 :Trawelled smooth Concrete screed | 8d | 2013-10-24 | 2013-11-02 | HCFWF5Z2151 | 58d | 0d | B3 | 03 | MC | C | FI |
| HCFWF5Z2168 |  | F5 Z2 :Stone Flooring | 12d | 2013-11-03 | 2013-11-17 | HCFWF5Z2152 | 71d | 0d | B3 | 09 | MC | C | FI |
| HCFWF5Z2154 |  | F5 Z2 :Rubber Flooring | 10d | 2013-12-02 | 2013-12-12 | HCFWF5Z2167, HCFWF5Z2168 SS | 122d | 13d | B3 | 09 | MC | C | FI |
| HCFWF5Z2171 |  | F5 Z2 :Carpet Tiles | 10d | 2013-12-17 | 2013-12-29 | HCFWF5Z2154 SS, HEPSAFI0210 | 131d | 118d | B3 |  | MC | C | FI |
| HCFWF5Z2155 |  | F5 Z2 :Rubber Skirting | 2d | 2014-02-13 | 2014-02-15 | HCFWF5Z2154, HCFWF5Z1189 | 72d | 14d | B3 |  | MC | C | FI |

| ID | WBS | Activity | Duration | Start | Finish | Predecessors | Total float | Free float | Bill No. | Division No. | Responsibility | Phase Code | Trade |
| --- | --- | --- | --- | --- | --- | --- | --- | --- | --- | --- | --- | --- | --- |
|  | WL | **Wall Finishes** |  | 2013-06-10 | 2014-04-01 |  |  |  |  |  |  |  |  |
| HCFWF5Z21157 |  | F5 Z2 :Block Works | 10d | 2013-06-10 | 2013-06-20 | HCFWF5Z11153 SS, HCSW5FZ2090, HCFWF4Z21107 | 129d | 0d | B3 | 04 | MC | C | FI |
| HCFWF5Z2157 |  | F5 Z2 :Block Works | 10d | 2013-06-15 | 2013-06-25 | HCFWF5Z1153 SS, HCSW5FZ2090, HCFWF4Z2107 | 114d | 0d | B3 | 04 | MC | C | FI |
| HCFWF5Z2173 |  | F5 Z2 :Gybsum Board Partitions | 10d | 2013-06-15 | 2013-06-25 | HCFWF5Z2157 SS, HCFWF5Z1194 SS | 117d | 33d | B3 | 10 | MC | C | FI |
| HCFWF5Z2159 |  | F5 Z2 :Plaster First Layer | 8d | 2013-09-03 | 2013-09-11 | HCFWF5Z2157, HCFWF4Z2106 | 58d | 0d | B3 | 09 | MC | C | FI |
| HCFWF5Z2160 |  | F5 Z2 :Plaster Second Layer | 8d | 2013-09-12 | 2013-09-21 | HCFWF5Z2159 | 58d | 0d | B3 | 09 | MC | C | FI |
| HCFWF5Z2156 |  | F5 Z2 :Plaster Final Layer | 8d | 2013-09-22 | 2013-09-30 | HCFWF5Z2160 | 58d | 0d | B3 | 09 | MC | C | FI |
| HCFWF5Z2162 |  | F5 Z2 :Paint Prime coat | 12d | 2013-10-05 | 2013-10-23 | HCFWF5Z2156, HCFWF4Z2112 | 118.25d | 4d | B3 | 09 | MC | C | FI |
| HCFWF5Z2153 |  | F5 Z2 :Paint putty coat | 12d | 2013-10-28 | 2013-11-12 | HCFWF5Z2162, HCFWF4Z2103 | 158.25d | 154.25d | B3 | 09 | MC | C | FI |
| HCFWF5Z2174 |  | F5 Z2 :Glass Wall Cladding | 16d | 2014-03-15 | 2014-04-01 | HCFWF5Z2156, HCFWF4Z2124 | 37d | 0d | B3 | 09 | MC | C | FI |
|  | CL | **Ceiling Finishes** |  | 2013-11-03 | 2014-03-23 |  |  |  |  |  |  |  |  |
| HCFWF5Z2165 |  | F5 Z2 :Plaster First Layer | 8d | 2013-11-03 | 2013-11-12 | HCFWF5Z2152, HCFWF4Z2117, HCFWF5Z2156 | 58d | 0d | B3 | 09 | MC | C | FI |
| HCFWF5Z2161 |  | F5 Z2 :Plaster Second Layer | 8d | 2013-11-13 | 2013-11-21 | HCFWF5Z2165 | 58d | 0d | B3 | 09 | MC | C | FI |
| HCFWF5Z2167 |  | F5 Z2 :Plaster Final Layer | 8d | 2013-11-23 | 2013-12-01 | HCFWF5Z2161 | 58d | 0d | B3 | 09 | MC | C | FI |
| HCFWF5Z2158 |  | F5 Z2 :Paint Prime coat | 10d | 2013-12-02 | 2013-12-12 | HCFWF5Z2162, HCFWF5Z2167 | 96d | 0d | B3 | 09 | MC | C | FI |
| HCFWF5Z2164 |  | F5 Z2 :Paint putty coat | 10d | 2013-12-14 | 2013-12-24 | HCFWF5Z2158 | 96d | 59d | B3 | 09 | MC | C | FI |
| HCFWF5Z2170 |  | F5 Z2 :Gybsum Board Ceiling | 14d | 2014-03-08 | 2014-03-23 | HCFWF5Z2164, HCFWF4Z2120 | 37d | 0d | B3 | 09 | MC | C | FI |
|  | MS | **Mecellanuos** |  | 2014-03-04 | 2014-04-19 |  |  |  |  |  |  |  |  |
| HCFWF5Z2166 |  | F5 Z2 :Metal Works | 10d | 2014-03-04 | 2014-03-15 | HCFWF5Z1168, HCFWF5Z2158, HCFWF4Z2116 | 38d | 0d | B3 | 05 | MC | C | FI |
| HCFWF5Z2163 |  | F5 Z2 :Steel Fire Rated Doors | 10d | 2014-03-16 | 2014-03-26 | HCFWF5Z2158, HCFWF4Z2113 | 38d | 0d | B3 | 08 | MC | C | FI |
| HCFWF5Z2169 |  | F5 Z2 :Wooden Doors | 10d | 2014-03-16 | 2014-03-26 | HCFWF5Z2172 SS, HCFWF4Z2119 | 48d | 0d | B3 | 08 | MC | C | FI |
| HCFWF5Z2172 |  | F5 Z2 :Steel Doors | 10d | 2014-03-16 | 2014-03-26 | HCFWF5Z2163 SS, HCFWF5Z2166, HCFWF4Z2122 | 38d | 0d | B3 | 08 | MC | C | FI |
| HCFWF5Z2175 |  | F5 Z2 :Handrails & Railling | 12d | 2014-04-06 | 2014-04-19 | HCFWF5Z2166 SS, HCFWF4Z2125 | 26d | 0d | B3 | 05 | MC | C | FI |
|  | Z3 | **Zone 3** |  | 2013-07-23 | 2014-05-05 |  |  |  |  |  |  |  |  |
|  | FL | **Floor Finishes** |  | 2013-12-23 | 2014-03-17 |  |  |  |  |  |  |  |  |
| HCFWF5Z3201 |  | F5 Z3 :Foam Concrete Under Floorings | 16d | 2013-12-23 | 2014-01-12 | HCFWF5Z3159 | 0d |  | B3 | 07 | MC | C | FI |
| HCFWF5Z3177 |  | F5 Z3 :Trawelled smooth Concrete screed | 8d | 2014-01-13 | 2014-01-22 | HCFWF5Z3201 | 0d |  | B3 | 03 | MC | C | FI |
| HCFWF5Z3197 |  | F5 Z3 :Epoxy Screed Finish | 10d | 2014-01-23 | 2014-02-03 | HCFWF5Z3177 | 102d | 89d | B3 |  | MC | C | FI |
| HCFWF5Z3117 |  | F5 Z3 :Ceramic Floor Tiles | 10d | 2014-02-20 | 2014-03-03 | HEPSAFI0210, HCFWF5Z3178 SS | 78d | 65d |  |  |  |  |  |
| HCFWF5Z3178 |  | F5 Z3 :Rubber Flooring | 10d | 2014-02-20 | 2014-03-03 | HCFWF5Z3187 | 22d | 0d | B3 | 09 | MC | C | FI |
| HCFWF5Z3208 |  | F5 Z3 :Carpet Tile Flooring | 10d | 2014-02-20 | 2014-03-03 | HCFWF5Z3178 SS, HEPSAFI0210 | 78d | 65d | B3 | 09 | MC | C | FI |
| HCFWF5Z3231 |  | F5 Z3 :Stone Flooring All types | 12d | 2014-02-20 | 2014-03-05 | HCFWF5Z3178 SS | 22d | 0d | B3 | 09 | MC | C | FI |
| HCFWF5Z3154 |  | F5 Z3 :Rubber Skirting | 2d | 2014-03-04 | 2014-03-05 | HCFWF5Z3178, HCFWF5Z2155 | 58d | 0d | B3 |  | MC | C | FI |
| HCFWF5Z3200 |  | F5 Z3 :Aluminum & Stainless Steel Skirting | 10d | 2014-03-04 | 2014-03-15 | HCFWF5Z3154 SS | 68d | 55d | B3 | 09 | MC | C | FI |
| HCFWF5Z3174 |  | F5 Z3 :Stone Base Skirting | 10d | 2014-03-06 | 2014-03-17 | HCFWF5Z3231 | 66d | 53d | B3 | 09 | MC | C | FI |

| ID | WBS | Activity | Duration | Start | Finish | Predecessors | Total float | Free float | Bill No. | Division No. | Responsibility | Phase Code | Trade |
| --- | --- | --- | --- | --- | --- | --- | --- | --- | --- | --- | --- | --- | --- |
|  | WL | **Wall Finishes** |  | 2013-07-23 | 2014-04-01 |  |  |  |  |  |  |  |  |
| HCFWF5Z3205 |  | F5 Z3 :Gybsum Board Partitions | 10d | 2013-07-23 | 2013-08-03 | HCFWF5Z2173 SS, HCSW5FZ3090 | 84d | 19d | B3 | 10 | MC | C | FI |
| HCFWF5Z31206 |  | F5 Z3 :Block Works | 10d | 2013-08-18 | 2013-08-28 | HCFWF5Z21157 SS, HCSW5FZ3090, HCFWF4Z31166 | 86d | 0d | B3 | 04 | MC | C | FI |
| HCFWF5Z3206 |  | F5 Z3 :Block Works | 10d | 2013-08-18 | 2013-08-28 | HCFWF5Z2157 SS, HCFWF5Z3205 SS, HCSW5FZ3090, HCFWF4Z3166 | 70d | 0d | B3 | 04 | MC | C | FI |
| HCFWF5Z3182 |  | F5 Z3 :Plaster First Layer | 8d | 2013-11-25 | 2013-12-03 | HCFWF5Z3206, HCFWF4Z3129 | 0d |  | B3 | 09 | MC | C | FI |
| HCFWF5Z3183 |  | F5 Z3 :Plaster Second Layer | 8d | 2013-12-04 | 2013-12-12 | HCFWF5Z3182 | 0d |  | B3 | 09 | MC | C | FI |
| HCFWF5Z3159 |  | F5 Z3 :Plaster Final Layer | 8d | 2013-12-14 | 2013-12-22 | HCFWF5Z3183 | 0d |  | B3 | 09 | MC | C | FI |
| HCFWF5Z3180 |  | F5 Z3 :Paint Prime coat | 12d | 2013-12-23 | 2014-01-07 | HCFWF5Z3159 | 58d | 47d | B3 | 09 | MC | C | FI |
| HCFWF5Z3198 |  | F5 Z3 :Stainless steel Wire Cloth Finish For Elev Lobby | 10d | 2014-03-05 | 2014-03-16 | HCFWF5Z3211 SS | 67d | 54d | B3 | 05 | MC | C | FI |
| HCFWF5Z3211 |  | F5 Z3 :Paint putty coat | 12d | 2014-03-05 | 2014-03-18 | HCFWF5Z3180, HCFWF4Z3171 | 11d | 0d | B3 | 09 | MC | C | FI |
| HCFWF5Z3179 |  | F5 Z3 :Stone Cladding | 10d | 2014-03-15 | 2014-03-25 | HCFWF5Z3207 SS | 59d | 46d | B3 | 04 | MC | C | FI |
| HCFWF5Z3207 |  | F5 Z3 :Glass Wall Cladding | 16d | 2014-03-15 | 2014-04-01 | HCFWF5Z3159, HCFWF4Z3172 | 43d | 0d | B3 | 09 | MC | C | FI |
|  | CL | **Ceiling Finishes** |  | 2014-01-23 | 2014-05-03 |  |  |  |  |  |  |  |  |
| HCFWF5Z3185 |  | F5 Z3 :Plaster First Layer | 8d | 2014-01-23 | 2014-02-01 | HCFWF5Z3177, HCFWF4Z3152 | 0d |  | B3 | 09 | MC | C | FI |
| HCFWF5Z3216 |  | F5 Z3 :Plaster Second Layer | 8d | 2014-02-02 | 2014-02-10 | HCFWF5Z3185 | 0d |  | B3 | 09 | MC | C | FI |
| HCFWF5Z3187 |  | F5 Z3 :Plaster Final Layer | 8d | 2014-02-11 | 2014-02-19 | HCFWF5Z3216 | 0d |  | B3 | 09 | MC | C | FI |
| HCFWF5Z3188 |  | F5 Z3 :Paint Prime coat | 10d | 2014-03-19 | 2014-03-30 | HCFWF5Z3180, HCFWF5Z3187, HCFWF5Z3211 | 11d | 0d | B3 | 09 | MC | C | FI |
| HCFWF5Z3164 |  | F5 Z3 :Paint putty coat | 10d | 2014-03-31 | 2014-04-10 | HCFWF5Z3188 | 11d | 4d | B3 | 09 | MC | C | FI |
| HCFWF5Z3236 |  | F5 Z3 :Acoustical Ceiling | 10d | 2014-03-31 | 2014-04-10 | HCFWF5Z3188 | 21d | 14d | B3 | 09 | MC | C | FI |
| HCFWF5Z3190 |  | F5 Z3 :Gybsum Board Ceiling | 14d | 2014-04-16 | 2014-05-03 | HCFWF5Z3164, HCFWF5Z3236 SS, HCFWF4Z3155 | 7d | 0d | B3 | 09 | MC | C | FI |
|  | MS | **Mecellanuos** |  | 2014-03-31 | 2014-05-05 |  |  |  |  |  |  |  |  |
| HCFWF5Z3193 |  | F5 Z3 :Steel Fire Rated Doors | 10d | 2014-03-31 | 2014-04-10 | HCFWF5Z3188, HCFWF4Z3158 | 25d | 2d | B3 | 08 | MC | C | FI |
| HCFWF5Z3210 |  | F5 Z3 :Glass Doors | 10d | 2014-03-31 | 2014-04-10 | HCFWF5Z3221 SS | 45d | 32d | B3 | 08 | MC | C | FI |
| HCFWF5Z3221 |  | F5 Z3 :Metal Works | 10d | 2014-03-31 | 2014-04-10 | HCFWF5Z3188, HCFWF4Z3181, HCFWF4Z3181 FF | 15d | 0d | B3 | 05 | MC | C | FI |
| HCFWF5Z3192 |  | F5 Z3 :Steel Doors | 10d | 2014-04-12 | 2014-04-22 | HCFWF5Z3193 SS, HCFWF5Z3221, HCFWF4Z3157 | 15d | 0d | B3 | 08 | MC | C | FI |
| HCFWF5Z3195 |  | F5 Z3 :Wooden Doors | 10d | 2014-04-12 | 2014-04-22 | HCFWF5Z3192 SS, HCFWF4Z3160 | 15d | 0d | B3 | 08 | MC | C | FI |
| HCFWF5Z3169 |  | F5 Z3 :Stone Decoration For Benches | 10d | 2014-04-16 | 2014-04-27 | HCFWF5Z3226 SS, HCFWF5Z3188 | 31d | 18d | B3 | 04 | MC | C | FI |
| HCFWF5Z3226 |  | F5 Z3 :Handrails & Railling | 15d | 2014-04-16 | 2014-05-04 | HCFWF5Z3221 SS, HCFWF4Z3186 | 16d | 0d | B3 | 05 | MC | C | FI |
| HCFWF5Z3202 |  | F5 Z3 :Mirror | 10d | 2014-04-23 | 2014-05-05 | HCFWF5Z3226 SS, HCFWF5Z3195 | 25d | 0d | B3 | 08 | MC | C | FI |
| HCFWF5Z3203 |  | F5 Z3 :Toilet & corian vanity tops | 10d | 2014-04-23 | 2014-05-05 | HCFWF5Z3202 SS, HEPSAFI0270 | 25d | 12d | B3 | 10 | MC | C | FI |

| ID | WBS | Activity | Duration | Start | Finish | Predecessors | Total float | Free float | Bill No. | Division No. | Responsibility | Phase Code | Trade |
| --- | --- | --- | --- | --- | --- | --- | --- | --- | --- | --- | --- | --- | --- |
|  | Z4 | **Zone 4** |  | 2013-09-01 | 2014-03-08 |  |  |  |  |  |  |  |  |
|  | FL | **Floor Finishes** |  | 2013-10-12 | 2014-03-08 |  |  |  |  |  |  |  |  |
| HCFWF5Z4216 |  | F5 Z4 :Foam Concrete Under Floorings | 16d | 2013-10-12 | 2013-11-04 | HCFWF5Z4281 | 61.5d | 0d | B3 | 07 | MC | C | FI |
| HCFWF5Z4277 |  | F5 Z4 :Trawelled smooth Concrete screed | 8d | 2013-11-04 | 2013-11-14 | HCFWF5Z4216 | 61.5d | 0d | B3 | 03 | MC | C | FI |
| HCFWF5Z4293 |  | F5 Z4 :Stone Flooring | 12d | 2013-11-14 | 2013-11-28 | HCFWF5Z4277 | 61.5d | 0d | B3 | 09 | MC | C | FI |
| HCFWF5Z2179 |  | F5 Z4 :Rubber Flooring | 10d | 2013-12-22 | 2014-01-05 | HCFWF5Z4292, HCFWF5Z4293 SS | 108.25d | 0d | B3 | 09 | MC | C | FI |
| HCFWF5Z2196 |  | F5 Z4 :Carpet Tiles | 10d | 2013-12-22 | 2014-01-05 | HCFWF5Z2179 SS, HEPSAFI0210 | 126.25d | 113.25d | B3 |  | MC | C | FI |
| HCFWF5Z4180 |  | F5 Z4 :Rubber Skirting | 2d | 2014-03-06 | 2014-03-08 | HCFWF5Z2179, HCFWF5Z3154 | 58d | 0d | B3 |  | MC | C | FI |
|  | WL | **Wall Finishes** |  | 2013-09-01 | 2014-01-16 |  |  |  |  |  |  |  |  |
| HCFWF5Z4082 |  | F5 Z4 :Block Works | 10d | 2013-09-01 | 2013-09-11 | HCSW5FZ4090, HCFWF4Z4132 | 38d | 0d | B3 | 04 | MC | C | FI |
| HCFWF5Z4298 |  | F5 Z4 :Gybsum Board Partitions | 10d | 2013-09-01 | 2013-09-11 | HCFWF5Z4082 SS, HCSW5FZ4090 | 218d | 205d | B3 | 10 | MC | C | FI |
| HCFWGFZ4082 |  | F5 Z4 :GF Z4 :Block Works | 10d | 2013-09-01 | 2013-09-11 | HCSW5FZ4090, HCFWF4Z41132 | 61d | 0d | B3 | 04 | MC | C | FI |
| HCFWF5Z4284 |  | F5 Z4 :Plaster First Layer | 8.75d | 2013-09-12 | 2013-09-22 | HCFWF5Z4082, HCFWF4Z4131 | 38d | 0d | B3 | 09 | MC | C | FI |
| HCFWF5Z4285 |  | F5 Z4 :Plaster Second Layer | 8d | 2013-09-22 | 2013-10-01 | HCFWF5Z4284 | 38d | 0d | B3 | 09 | MC | C | FI |
| HCFWF5Z4281 |  | F5 Z4 :Plaster Final Layer | 8.75d | 2013-10-01 | 2013-10-12 | HCFWF5Z4285 | 38d | 0d | B3 | 09 | MC | C | FI |
| HCFWF5Z4287 |  | F5 Z4 :Paint Prime coat | 12d | 2013-10-12 | 2013-10-30 | HCFWF5Z4281 | 122.5d | 0d | B3 | 09 | MC | C | FI |
| HCFWF5Z4278 |  | F5 Z4 :Paint putty coat | 12d | 2013-10-30 | 2013-11-14 | HCFWF5Z4287, HCFWF4Z4128 | 156.5d | 14.5d | B3 | 09 | MC | C | FI |
| HCFWF5Z4299 |  | F5 Z4 :Glass Wall Cladding | 16d | 2013-12-28 | 2014-01-16 | HCFWF5Z4281, HCFWF4Z4249 | 101d | 0d | B3 | 09 | MC | C | FI |
|  | CL | **Ceiling Finishes** |  | 2013-11-14 | 2014-02-09 |  |  |  |  |  |  |  |  |
| HCFWF5Z4290 |  | F5 Z4 :Plaster First Layer | 8.75d | 2013-11-14 | 2013-11-25 | HCFWF5Z4277, HCFWF4Z4140, HCFWF5Z4281 | 78.25d | 0d | B3 | 09 | MC | C | FI |
| HCFWF5Z4286 |  | F5 Z4 :Plaster Second Layer | 8d | 2013-11-25 | 2013-12-04 | HCFWF5Z4290 | 78.25d | 0d | B3 | 09 | MC | C | FI |
| HCFWF5Z4292 |  | F5 Z4 :Plaster Final Layer | 15.5d | 2013-12-04 | 2013-12-22 | HCFWF5Z4286 | 78.25d | 0d | B3 | 09 | MC | C | FI |
| HCFWF5Z4283 |  | F5 Z4 :Paint Prime coat | 10d | 2013-12-22 | 2014-01-05 | HCFWF5Z4287, HCFWF5Z4292 | 78.25d | 0d | B3 | 09 | MC | C | FI |
| HCFWF5Z4289 |  | F5 Z4 :Paint putty coat | 10d | 2014-01-05 | 2014-01-18 | HCFWF5Z4283 | 78.25d | 5.25d | B3 | 09 | MC | C | FI |
| HCFWF5Z4295 |  | F5 Z4 :Gybsum Board Ceiling | 14d | 2014-01-25 | 2014-02-09 | HCFWF5Z4289, HCFWF4Z2145 | 73d | 0d | B3 | 09 | MC | C | FI |

| ID | WBS | Activity | Duration | Start | Finish | Predecessors | Total float | Free float | Bill No. | Division No. | Responsibility | Phase Code | Trade |
| --- | --- | --- | --- | --- | --- | --- | --- | --- | --- | --- | --- | --- | --- |
|  | MS | **Mecellanuos** |  | 2014-01-05 | 2014-02-12 |  |  |  |  |  |  |  |  |
| HCFWF5Z2200 |  | F5 Z4 :Handrails & Railling | 15d | 2014-01-05 | 2014-01-23 | HCFWF5Z4291 SS | 111.25d | 98.25d | B3 | 05 | MC | C | FI |
| HCFWF5Z4288 |  | F5 Z4 :Steel Fire Rated Doors | 10d | 2014-01-05 | 2014-01-18 | HCFWF5Z4283, HCFWF4Z2138, HCFWB1Z4025 | 106.25d | 7.25d | B3 | 08 | MC | C | FI |
| HCFWF5Z4291 |  | F5 Z4 :Metal Works | 10d | 2014-01-05 | 2014-01-18 | HCFWF5Z4283, HCFWB1Z4023, HCFWF4Z4141 | 96.25d | 0d | B3 | 05 | MC | C | FI |
| HCFWF5Z4297 |  | F5 Z4 :Steel Doors | 10d | 2014-01-18 | 2014-01-29 | HCFWF5Z4288 SS, HCFWF5Z4291 | 96.25d | 12.25d | B3 | 08 | MC | C | FI |
| HCFWF5Z4294 |  | F5 Z4 :Wooden Doors | 10d | 2014-02-02 | 2014-02-12 | HCFWF5Z4297 SS, HCFWB1Z4026 | 84d | 46d | B3 | 08 | MC | C | FI |
|  | Z5 | **Zone 5** |  | 2013-08-27 | 2014-03-23 |  |  |  |  |  |  |  |  |
|  | FL | **Floor Finishes** |  | 2013-11-04 | 2014-03-10 |  |  |  |  |  |  |  |  |
| HCFWF5Z5201 |  | F5 Z5 :Foam Concrete Under Floorings | 16d | 2013-11-04 | 2013-11-23 | HCFWF5Z5212 | 37.5d | 0d | B3 | 07 | MC | C | FI |
| HCFWF5Z5202 |  | F5 Z5 :Trawelled smooth Concrete screed | 8d | 2013-11-24 | 2013-12-02 | HCFWF5Z5201 | 37.5d | 0d | B3 | 03 | MC | C | FI |
| HCFWF5Z5199 |  | F5 Z5 :Epoxy Screed Finish | 10d | 2013-12-03 | 2013-12-14 | HCFWF5Z5202 | 143d | 130d | B3 |  | MC | C | FI |
| HCFWF5Z5207 |  | F5 Z5 :Rubber Flooring | 10d | 2014-01-21 | 2014-02-01 | HCFWF5Z5211 | 36d | 0d | B3 | 09 | MC | C | FI |
| HCFWF5Z5209 |  | F5 Z5 :Aluminum Floor Tiles | 10d | 2014-01-21 | 2014-02-01 | HCFWF5Z5228 SS | 78d | 0d | B3 | 09 | MC | C | FI |
| HCFWF5Z5226 |  | F5 Z5 :Stone Flooring All types | 12d | 2014-01-21 | 2014-02-03 | HCFWF5Z5207 SS | 36d | 0d | B3 | 09 | MC | C | FI |
| HCFWF5Z5228 |  | F5 Z5 :Quary Tiles | 10d | 2014-01-21 | 2014-02-01 | HCFWF5Z5232 SS | 38d | 0d | B3 |  | MC | C | FI |
| HCFWF5Z5232 |  | F5 Z5 :Carpet Tile Flooring | 10d | 2014-01-21 | 2014-02-01 | HCFWF5Z5207 SS, HEPSAFI0210 | 38d | 0d | B3 | 09 | MC | C | FI |
| HCFWF5Z5238 |  | F5 Z5 :Wood Flooring | 10d | 2014-01-21 | 2014-02-01 | HCFWF5Z5209 SS | 104d | 91d | B3 | 09 | MC | C | FI |
| HCFWF5Z5248 |  | F5 Z5 :Ceramic Floor Tiles | 10d | 2014-01-21 | 2014-02-01 | HCFWF5Z5207 SS, HEPSAFI0210 | 104d | 91d |  |  |  |  |  |
| HCFWF5Z5231 |  | F5 Z5 :Aluminum & Stainless Steel Skirting | 10d | 2014-02-02 | 2014-02-12 | HCFWF5Z5209 | 78d | 2d | B3 | 09 | MC | C | FI |
| HCFWF5Z5210 |  | F5 Z5 :Stone Base Skirting | 10d | 2014-02-04 | 2014-02-15 | HCFWF5Z5231 SS, HCFWF5Z5226 | 76d | 18d | B3 | 09 | MC | C | FI |
| HCFWF5Z5180 |  | F5 Z5 :Rubber Skirting | 2d | 2014-03-09 | 2014-03-10 | HCFWF5Z5207, HCFWF5Z5210, HCFWF5Z4180 | 58d | 0d | B3 |  | MC | C | FI |
|  | WL | **Wall Finishes** |  | 2013-08-27 | 2014-01-16 |  |  |  |  |  |  |  |  |
| HCFWF5Z5204 |  | F5 Z5 :Gybsum Board Partitions | 10d | 2013-08-27 | 2013-09-07 | HCFWF5Z3205 SS, HCSW5FZ5090 | 57d | 4d | B3 | 10 | MC | C | FI |
| HCFWF5Z51203 |  | F5 Z5 :Block Works | 10d | 2013-09-01 | 2013-09-11 | HCSW5FZ5090, HCFWF4Z51163 | 71d | 0d | B3 | 04 | MC | C | FI |
| HCFWF5Z5203 |  | F5 Z5 :Block Works | 10d | 2013-09-01 | 2013-09-11 | HCFWF5Z5204 SS, HCSW5FZ5090, HCFWF4Z5163 | 53d | 0d | B3 | 04 | MC | C | FI |
| HCFWF5Z5237 |  | F5 Z5 :Acoustical Painted Walls | 10d | 2013-09-12 | 2013-09-23 | HCFWF5Z5203 | 192d | 85d | B3 | 09 | MC | C | FI |
| HCFWF5Z5185 |  | F5 Z5 :Plaster First Layer | 8.75d | 2013-09-30 | 2013-10-10 | HCFWF5Z5203, HCFWF4Z5172 | 37.5d | 0d | B3 | 09 | MC | C | FI |
| HCFWF5Z5206 |  | F5 Z5 :Plaster Second Layer | 8d | 2013-10-10 | 2013-10-24 | HCFWF5Z5185 | 37.5d | 0d | B3 | 09 | MC | C | FI |
| HCFWF5Z5212 |  | F5 Z5 :Plaster Final Layer | 8.75d | 2013-10-24 | 2013-11-03 | HCFWF5Z5206 | 37.5d | 0d | B3 | 09 | MC | C | FI |
| HCFWF5Z5208 |  | F5 Z5 :Paint Prime coat | 12d | 2013-11-04 | 2013-11-18 | HCFWF5Z5212 | 111d | 0d | B3 | 09 | MC | C | FI |
| HCFWF5Z5179 |  | F5 Z5 :Paint putty coat | 12d | 2013-11-19 | 2013-12-02 | HCFWF5Z5208 | 153d | 0d | B3 | 09 | MC | C | FI |
| HCFWF5Z5205 |  | F5 Z5 :Stone Wall Cladding | 10d | 2013-11-19 | 2013-11-30 | HCFWF5Z5179 SS | 155d | 142d | B3 | 04 | MC | C | FI |
| HCFWF5Z5233 |  | F5 Z5 :Stainless steel Wire Cloth Finish For Elev Lobby | 10d | 2013-12-28 | 2014-01-08 | HCFWF5Z5236 SS | 123d | 110d | B3 | 05 | MC | C | FI |
| HCFWF5Z5236 |  | F5 Z5 :Glass Wall Cladding | 16d | 2013-12-28 | 2014-01-16 | HCFWF5Z5212, HCFWF5Z5237 SS, HCFWF4Z5196 | 107d | 0d | B3 | 09 | MC | C | FI |

| ID | WBS | Activity | Type | Duration | Start | Finish | Predecessors | Total float | Free float | Bill No. | Division No. | Responsibility | Phase Code | Trade |
| --- | --- | --- | --- | --- | --- | --- | --- | --- | --- | --- | --- | --- | --- | --- |
|  | CL | **Ceiling Finishes** |  |  | 2013-12-10 | 2014-03-23 |  |  |  |  |  |  |  |  |
| HCFWF5Z5184 |  | F5 Z5 :Plaster First Layer |  | 8.75d | 2013-12-10 | 2013-12-21 | HCFWF5Z5202, HCFWF4Z5171, HCFWF5Z5212 | 30.75d | 0d | B3 | 09 | MC | C | FI |
| HCFWF5Z5190 |  | F5 Z5 :Plaster Second Layer |  | 8d | 2013-12-21 | 2013-12-31 | HCFWF5Z5184 | 30.75d | 0d | B3 | 09 | MC | C | FI |
| HCFWF5Z5211 |  | F5 Z5 :Plaster Final Layer |  | 15.5d | 2013-12-31 | 2014-01-20 | HCFWF5Z5190 | 30.75d | 0d | B3 | 09 | MC | C | FI |
| HCFWF5Z5217 |  | F5 Z5 :Paint Prime coat |  | 10d | 2014-01-21 | 2014-02-01 | HCFWF5Z5208, HCFWF5Z5211 | 60d | 0d | B3 | 09 | MC | C | FI |
| HCFWF5Z5200 |  | F5 Z5 :Acoustical Ceiling |  | 10d | 2014-02-02 | 2014-02-12 | HCFWF5Z5217 | 70d | 28.5d | B3 | 09 | MC | C | FI |
| HCFWF5Z5213 |  | F5 Z5 :Paint putty coat |  | 10d | 2014-02-02 | 2014-02-12 | HCFWF5Z5217 | 60d | 18.5d | B3 | 09 | MC | C | FI |
| HCFWF5Z5189 |  | F5 Z5 :Gybsum Board Ceiling |  | 14d | 2014-03-06 | 2014-03-23 | HCFWF5Z5213, HCFWF5Z5200 SS, HCFWF4Z5154, HCFWF4Z5154 FF | 41.5d | 0d | B3 | 09 | MC | C | FI |
|  | MS | **Mecellanuos** |  |  | 2014-02-13 | 2014-03-20 |  |  |  |  |  |  |  |  |
| HCFWF5Z5216 |  | F5 Z5 :Metal Works |  | 10d | 2014-02-13 | 2014-02-25 | HCFWF5Z5208, HCFWF4Z5176 | 53.5d | 0d | B3 | 05 | MC | C | FI |
| HCFWF5Z5222 |  | F5 Z5 :Steel Fire Rated Doors |  | 10d | 2014-02-13 | 2014-02-25 | HCFWF5Z5208, HCFWF4Z5182 | 63.5d | 10d | B3 | 08 | MC | C | FI |
| HCFWF5Z5194 |  | F5 Z5 :Stone Decoration For Benches |  | 10d | 2014-02-25 | 2014-03-09 | HCFWF5Z5221 SS | 73.5d | 60.5d | B3 | 04 | MC | C | FI |
| HCFWF5Z5195 |  | F5 Z5 :Wooden Doors |  | 10d | 2014-02-25 | 2014-03-09 | HCFWF5Z5218 SS | 63.5d | 0d | B3 | 08 | MC | C | FI |
| HCFWF5Z5218 |  | F5 Z5 :Steel Doors |  | 10d | 2014-02-25 | 2014-03-09 | HCFWF5Z5222 SS, HCFWF5Z5216, HCFWF4Z5178 | 53.5d | 0d | B3 | 08 | MC | C | FI |
| HCFWF5Z5221 |  | F5 Z5 :Handrails & Railling |  | 15d | 2014-02-25 | 2014-03-15 | HCFWF5Z5216 SS, HCFWF4Z5181 | 58.5d | 0d | B3 | 05 | MC | C | FI |
| HCFWF5Z5223 |  | F5 Z5 :Toilet & corian vanity tops |  | 10d | 2014-03-09 | 2014-03-20 | HCFWF5Z5227 SS, HEPSAFI0270 | 63.5d | 50.5d | B3 | 10 | MC | C | FI |
| HCFWF5Z5227 |  | F5 Z5 :Mirror |  | 10d | 2014-03-09 | 2014-03-20 | HCFWF5Z5221 SS, HCFWF5Z5195 | 63.5d | 0d | B3 | 08 | MC | C | FI |
|  | F6 | **Sixth Floor** |  |  | 2013-04-06 | 2014-06-04 |  |  |  |  |  |  |  |  |
| HCFWF60000 |  | Start Finishing Works Sixth Floor | milestone | 0d | 2013-04-06 | 2013-04-06 | HCSW6FZ1090 | 147d | 20d | B3 |  | MC | C | FI |
| HCFWF60001 |  | End Finishing Works Sixth Floor | milestone | 0d | 2014-06-04 | 2014-06-04 | HCFWF60000, HCFWF6Z1209, HCFWF6Z1186, HCFWF6Z2203, HCFWF6Z2214, HCFWF6Z3251, HCFWF6Z3194, HCFWF6Z4228, HCFWF6Z2239, HCFWF6Z5214, HCFWF6Z5253, HCFWF6Z1240, HCFWF6Z3125, HCFWF6Z5280, HCFWF6Z1280, HCMEF6Z1605, HCMEF6Z2630, HCMEF6Z2610, HCMEF6Z2645, HCMEF6Z2685, HCMEF6Z3635, HCMEF6Z3615, HCMEF6Z3650, HCMEF6Z3690, HCMEF6Z4640, HCMEF6Z4620, HCMEF6Z4655, HCMEF6Z4695, HCMEF6Z5625, HCMEF6Z5660, HCMEF6Z5685, HCMEF6Z5700 | 1d |  | B3 |  | MC | C | FI |
|  | Z1 | **Zone 1** |  |  | 2013-04-24 | 2014-05-05 |  |  |  |  |  |  |  |  |
|  | FL | **Floor Finishes** |  |  | 2013-08-26 | 2014-03-12 |  |  |  |  |  |  |  |  |
| HCFWF6Z1181 |  | F6 Z1 :Foam Concrete Under Floorings |  | 16d | 2013-08-26 | 2013-09-14 | HCFWF6Z1187 | 100d | 0d | B3 | 07 | MC | C | FI |
| HCFWF6Z1182 |  | F6 Z1 :Trawelled smooth Concrete screed |  | 8d | 2013-09-14 | 2013-09-23 | HCFWF6Z1181 | 100d | 29d | B3 | 03 | MC | C | FI |
| HCFWF6Z1193 |  | F6 Z1 :Rubber Flooring |  | 10d | 2013-12-02 | 2013-12-12 | HCFWF6Z1214 | 71d | 0d | B3 | 09 | MC | C | FI |
| HCFWF6Z1201 |  | F6 Z1 :Stone Flooring |  | 12d | 2013-12-02 | 2013-12-15 | HCFWF6Z1193 SS | 71d | 0d | B3 | 09 | MC | C | FI |
| HCFWF6Z1239 |  | F6 Z1 :Stone Base Skirting |  | 10d | 2013-12-16 | 2013-12-28 | HCFWF6Z1201 | 128d | 70d | B3 | 09 | MC | C | FI |
| HCFWF6Z1170 |  | F6 Z1 :Carpet Floor Tiles |  | 8d | 2013-12-17 | 2013-12-26 | HCFWF6Z1193 SS, HEPSAFI0210 | 61d | 3d | B3 | 09 | MC | C | FI |
| HCFWF6Z1240 |  | F6 Z1 :Ceramic Floor Tiles |  | 10d | 2013-12-17 | 2013-12-29 | HCFWF6Z1193 SS, HEPSAFI0210 | 131d | 130d |  |  |  |  |  |
| HCFWF6Z1224 |  | F6 Z1 :Rubber Skirting |  | 2d | 2014-03-11 | 2014-03-12 | HCFWF6Z1193, HCFWF6Z1239 SS, HCFWF5Z5180 | 58d | 0d | B3 |  | MC | C | FI |

| ID | WBS | Activity | Duration | Start | Finish | Predecessors | Total float | Free float | Bill No. | Division No. | Responsibility | Phase Code | Trade |
| --- | --- | --- | --- | --- | --- | --- | --- | --- | --- | --- | --- | --- | --- |
|  | WL | **Wall Finishes** |  | 2013-04-24 | 2014-05-05 |  |  |  |  |  |  |  |  |
| HCFWF6Z11183 |  | F6 Z1 :Block Works | 10d | 2013-04-24 | 2013-05-06 | HCSW6FZ1090, HCFWF5Z11153 | 131d | 4d | B3 | 04 | MC | C | FI |
| HCFWF6Z1183 |  | F6 Z1 :Block Works | 10d | 2013-04-29 | 2013-05-11 | HCSW6FZ1090, HCFWF5Z1153, HCFWF60000 | 127d | 0d | B3 | 04 | MC | C | FI |
| HCFWF6Z1229 |  | F6 Z1 :Gybsum Board Partitions | 10d | 2013-04-29 | 2013-05-11 | HCFWF6Z1183 SS | 184d | 48d | B3 | 10 | MC | C | FI |
| HCFWF6Z1155 |  | F6 Z1 :Plaster First Layer | 8.75d | 2013-07-24 | 2013-08-03 | HCFWF6Z1183, HCFWF5Z1157 | 100d | 0d | B3 | 09 | MC | C | FI |
| HCFWF6Z1196 |  | F6 Z1 :Plaster Second Layer | 8d | 2013-08-03 | 2013-08-15 | HCFWF6Z1155 | 100d | 0d | B3 | 09 | MC | C | FI |
| HCFWF6Z1187 |  | F6 Z1 :Plaster Final Layer | 8.75d | 2013-08-15 | 2013-08-26 | HCFWF6Z1196 | 100d | 0d | B3 | 09 | MC | C | FI |
| HCFWF6Z1175 |  | F6 Z1 :Stone Cladding | 10d | 2013-08-26 | 2013-09-07 | HCFWF6Z1187 | 204.5d | 179.5d | B3 | 04 | MC | C | FI |
| HCFWF6Z1188 |  | F6 Z1 :Paint Prime coat | 12d | 2013-08-26 | 2013-09-09 | HCFWF6Z1187, HCFWF5Z1158 | 170.5d | 66.5d | B3 | 09 | MC | C | FI |
| HCFWF6Z1206 |  | F6 Z1 :Glass Wall Cladding | 16d | 2014-04-02 | 2014-04-20 | HCFWF6Z1175 SS, HCFWF5Z1176 | 25d | 0d | B3 | 09 | MC | C | FI |
| HCFWF6Z1209 |  | F6 Z1 :Paint putty coat | 12d | 2014-04-21 | 2014-05-05 | HCFWF6Z1188, HCFWF6Z1206, HCFWF5Z1174, HCMEF6Z5645 | 25d | 24d | B3 | 09 | MC | C | FI |
|  | CL | **Ceiling Finishes** |  | 2013-10-31 | 2014-04-21 |  |  |  |  |  |  |  |  |
| HCFWF6Z1192 |  | F6 Z1 :Plaster First Layer | 8.75d | 2013-10-31 | 2013-11-12 | HCFWF6Z1182, HCFWF5Z1179 | 71d | 0d | B3 | 09 | MC | C | FI |
| HCFWF6Z1203 |  | F6 Z1 :Plaster Second Layer | 8d | 2013-11-12 | 2013-11-21 | HCFWF6Z1192 | 71d | 0d | B3 | 09 | MC | C | FI |
| HCFWF6Z1214 |  | F6 Z1 :Plaster Final Layer | 8.75d | 2013-11-21 | 2013-12-01 | HCFWF6Z1203 | 71d | 0d | B3 | 09 | MC | C | FI |
| HCFWF6Z1160 |  | F6 Z1 :Paint Prime coat | 10d | 2013-12-02 | 2013-12-12 | HCFWF6Z1188, HCFWF6Z1214 | 104d | 0d | B3 | 09 | MC | C | FI |
| HCFWF6Z1186 |  | F6 Z1 :Paint putty coat | 10d | 2013-12-14 | 2013-12-24 | HCFWF6Z1160 | 110d | 74d | B3 | 09 | MC | C | FI |
| HCFWF6Z1202 |  | F6 Z1 :Gybsum Board Ceiling | 14d | 2014-03-25 | 2014-04-09 | HCFWF6Z1186, HCFWF5Z1172 | 36d | 0d | B3 | 09 | MC | C | FI |
| HCFWF6Z1207 |  | F6 Z1 :Acoustical Ceiling | 10d | 2014-03-25 | 2014-04-05 | HCFWF6Z1202 SS | 40d | 4d | B3 | 09 | MC | C | FI |
| HCFWF6Z1280 |  | F6 Z1 :Spicial Metal Ceiling | 14d | 2014-04-06 | 2014-04-21 | HCFWF5Z1180, HCFWF6Z1207 SS | 36d | 35d |  |  |  |  |  |
|  | MS | **Miscellaneous** |  | 2014-03-04 | 2014-05-05 |  |  |  |  |  |  |  |  |
| HCFWF6Z1198 |  | F6 Z1 :Metal Works | 10d | 2014-03-04 | 2014-03-15 | HCFWF6Z1160, HCFWF5Z1168, HCFWF5Z1168 FF | 38d | 0d | B3 | 05 | MC | C | FI |
| HCFWF6Z1219 |  | F6 Z1 :Steel Fire Rated Doors | 10d | 2014-03-04 | 2014-03-15 | HCFWF6Z1160, HCFWF5Z1184 | 58d | 10d | B3 | 08 | MC | C | FI |
| HCFWF6Z1165 |  | F6 Z1 :Steel Doors | 10d | 2014-03-16 | 2014-03-26 | HCFWF6Z1219 SS, HCFWF6Z1198, HCFWF5Z1140 | 48d | 5d | B3 | 08 | MC | C | FI |
| HCFWF6Z1197 |  | F6 Z1 :Wooden Doors | 10d | 2014-03-22 | 2014-04-01 | HCFWF6Z1165 SS, HCFWF5Z1167 | 43d | 15d | B3 | 08 | MC | C | FI |
| HCFWF6Z1191 |  | F6 Z1 :Handrails & Railling | 13d | 2014-04-20 | 2014-05-05 | HCFWF6Z1198 SS, HCFWF5Z1161 | 28d | 0d | B3 | 05 | MC | C | FI |
| HCFWF6Z1208 |  | F6 Z1 :Mirrors | 10d | 2014-04-20 | 2014-04-30 | HCFWF6Z1191 SS, HCFWF6Z1197 | 28d | 0d | B3 | 08 | MC | C | FI |
| HCFWF6Z1234 |  | F6 Z1 :Toilet & corian vanity tops | 10d | 2014-04-20 | 2014-04-30 | HCFWF6Z1208 SS, HEPSAFI0270 | 28d | 15d | B3 | 10 | MC | C | FI |

| ID | WBS | Activity | Duration | Start | Finish | Predecessors | Total float | Free float | Bill No. | Division No. | Responsibility | Phase Code | Trade |
| --- | --- | --- | --- | --- | --- | --- | --- | --- | --- | --- | --- | --- | --- |
|  | Z2 | **Zone 2** |  | 2013-06-22 | 2014-06-01 |  |  |  |  |  |  |  |  |
|  | FL | **Floor Finishes** |  | 2013-11-03 | 2014-03-15 |  |  |  |  |  |  |  |  |
| HCFWF6Z2201 |  | F6 Z2 :Foam Concrete Under Floorings | 16d | 2013-11-03 | 2013-11-21 | HCFWF6Z2206 | 58d | 0d | B3 | 07 | MC | C | FI |
| HCFWF6Z2202 |  | F6 Z2 :Trawelled smooth Concrete screed | 8d | 2013-11-23 | 2013-12-01 | HCFWF6Z2201 | 58d | 0d | B3 | 03 | MC | C | FI |
| HCFWF6Z2218 |  | F6 Z2 :Stone Flooring | 12d | 2013-12-02 | 2013-12-15 | HCFWF6Z2202 | 71d | 0d | B3 | 09 | MC | C | FI |
| HCFWF6Z2204 |  | F6 Z2 :Rubber Flooring | 10d | 2013-12-31 | 2014-01-12 | HCFWF6Z2217, HCFWF6Z2218 SS | 58d | 0d | B3 | 09 | MC | C | FI |
| HCFWF6Z2221 |  | F6 Z2 :Carpet Tiles | 8d | 2013-12-31 | 2014-01-09 | HCFWF6Z2204 SS, HEPSAFI0210, HCFWF6Z1170 | 58d |  | B3 |  | MC | C | FI |
| HCFWF6Z2205 |  | F6 Z2 :Rubber Skirting | 2d | 2014-03-13 | 2014-03-15 | HCFWF6Z2204, HCFWF6Z1224 | 58d | 14d | B3 |  | MC | C | FI |
|  | WL | **Wall Finishes** |  | 2013-06-22 | 2014-06-01 |  |  |  |  |  |  |  |  |
| HCFWF6Z21207 |  | F6 Z2 :Block Works | 10d | 2013-06-22 | 2013-07-02 | HCFWF6Z11183 SS, HCSW6FZ2090, HCFWF5Z21157 | 132d | 4d | B3 | 04 | MC | C | FI |
| HCFWF6Z2207 |  | F6 Z2 :Block Works | 10d | 2013-06-26 | 2013-07-07 | HCFWF6Z1183 SS, HCSW6FZ2090, HCFWF5Z2157 | 128d | 0d | B3 | 04 | MC | C | FI |
| HCFWF6Z2223 |  | F6 Z2 :Gybsum Board Partitions | 10d | 2013-06-26 | 2013-07-07 | HCFWF6Z2207 SS, HCFWF6Z1229 SS | 136d | 31d | B3 | 10 | MC | C | FI |
| HCFWF6Z2209 |  | F6 Z2 :Plaster First Layer | 8d | 2013-10-01 | 2013-10-09 | HCFWF6Z2207, HCFWF5Z2156 | 58d | 0d | B3 | 09 | MC | C | FI |
| HCFWF6Z2210 |  | F6 Z2 :Plaster Second Layer | 8d | 2013-10-10 | 2013-10-23 | HCFWF6Z2209 | 58d | 0d | B3 | 09 | MC | C | FI |
| HCFWF6Z2206 |  | F6 Z2 :Plaster Final Layer | 8d | 2013-10-24 | 2013-11-02 | HCFWF6Z2210 | 58d | 0d | B3 | 09 | MC | C | FI |
| HCFWF6Z2212 |  | F6 Z2 :Paint Prime coat | 12d | 2013-11-03 | 2013-11-17 | HCFWF6Z2206, HCFWF5Z2162 | 110d | 0d | B3 | 09 | MC | C | FI |
| HCFWF6Z2224 |  | F6 Z2 :Glass Wall Cladding | 16d | 2014-04-02 | 2014-04-20 | HCFWF6Z2206, HCFWF5Z2174 | 37d | 24d | B3 | 09 | MC | C | FI |
| HCFWF6Z2203 |  | F6 Z2 :Paint putty coat | 12d | 2014-05-17 | 2014-06-01 | HCFWF6Z2212, HCFWF5Z2153, HCMEF6Z2670 | 4d | 3d | B3 | 09 | MC | C | FI |
|  | CL | **Ceiling Finishes** |  | 2013-11-18 | 2014-04-08 |  |  |  |  |  |  |  |  |
| HCFWF6Z2208 |  | F6 Z2 :Paint Prime coat | 10d | 2013-11-18 | 2013-11-28 | HCFWF6Z2212 | 122d | 0d | B3 | 09 | MC | C | FI |
| HCFWF6Z2214 |  | F6 Z2 :Paint putty coat | 10d | 2013-11-30 | 2013-12-10 | HCFWF6Z2208 | 122d | 85d | B3 | 09 | MC | C | FI |
| HCFWF6Z2215 |  | F6 Z2 :Plaster First Layer | 8d | 2013-12-02 | 2013-12-10 | HCFWF6Z2202, HCFWF5Z2167, HCFWF6Z2206 | 58d | 0d | B3 | 09 | MC | C | FI |
| HCFWF6Z2211 |  | F6 Z2 :Plaster Second Layer | 8d | 2013-12-11 | 2013-12-19 | HCFWF6Z2215 | 58d | 0d | B3 | 09 | MC | C | FI |
| HCFWF6Z2217 |  | F6 Z2 :Plaster Final Layer | 8d | 2013-12-21 | 2013-12-30 | HCFWF6Z2211 | 58d | 0d | B3 | 09 | MC | C | FI |
| HCFWF6Z2220 |  | F6 Z2 :Gybsum Board Ceiling | 14d | 2014-03-24 | 2014-04-08 | HCFWF6Z2214, HCFWF5Z2170 | 37d | 0d | B3 | 09 | MC | C | FI |

| ID | WBS | Activity | Duration | Start | Finish | Predecessors | Total float | Free float | Bill No. | Division No. | Responsibility | Phase Code | Trade |
| --- | --- | --- | --- | --- | --- | --- | --- | --- | --- | --- | --- | --- | --- |
|  | MS | **Mecellanuos** |  | 2014-03-16 | 2014-05-04 |  |  |  |  |  |  |  |  |
| HCFWF6Z2216 |  | F6 Z2 :Metal Works | 10d | 2014-03-16 | 2014-03-26 | HCFWF6Z1198, HCFWF5Z2166 | 38d | 0d | B3 | 05 | MC | C | FI |
| HCFWF6Z2213 |  | F6 Z2 :Steel Fire Rated Doors | 10d | 2014-03-27 | 2014-04-07 | HCFWF6Z2208, HCFWF5Z2163 | 38d | 0d | B3 | 08 | MC | C | FI |
| HCFWF6Z2219 |  | F6 Z2 :Wooden Doors | 10d | 2014-03-27 | 2014-04-07 | HCFWF6Z2222 SS, HCFWF5Z2169 | 48d | 35d | B3 | 08 | MC | C | FI |
| HCFWF6Z2222 |  | F6 Z2 :Steel Doors | 10d | 2014-03-27 | 2014-04-07 | HCFWF6Z2213 SS, HCFWF6Z2216, HCFWF5Z2172 | 38d | 0d | B3 | 08 | MC | C | FI |
| HCFWF6Z2225 |  | F6 Z2 :Handrails & Railling | 12d | 2014-04-20 | 2014-05-04 | HCFWF6Z2216 SS, HCFWF5Z2175 | 26d | 13d | B3 | 05 | MC | C | FI |
|  | Z3 | **Zone 3 - Executive Board Rooms** |  | 2013-08-01 | 2014-05-21 |  |  |  |  |  |  |  |  |
|  | FL | **Floor Finishes** |  | 2014-01-23 | 2014-04-14 |  |  |  |  |  |  |  |  |
| HCFWF6Z3241 |  | F6 Z3 :Foam Concrete Under Floorings | 16d | 2014-01-23 | 2014-02-10 | HCFWF6Z3189 | 0d |  | B3 | 07 | MC | C | FI |
| HCFWF6Z3212 |  | F6 Z3 :Trawelled smooth Concrete screed | 8d | 2014-02-11 | 2014-02-19 | HCFWF6Z3241 | 0d |  | B3 | 03 | MC | C | FI |
| HCFWF6Z3232 |  | F6 Z3 :Epoxy Screed Finish | 10d | 2014-02-20 | 2014-03-03 | HCFWF6Z3212 | 78d | 65d | B3 |  | MC | C | FI |
| HCFWF6Z3125 |  | F6 Z3 :Ceramic Floor Tiles | 10d | 2014-03-20 | 2014-03-31 | HCFWF6Z3213 SS, HEPSAFI0210 | 54d | 53d |  |  |  |  |  |
| HCFWF6Z3213 |  | F6 Z3 :Rubber Flooring | 10d | 2014-03-20 | 2014-03-31 | HCFWF6Z3222 | 0d |  | B3 | 09 | MC | C | FI |
| HCFWF6Z3243 |  | F6 Z3 :Carpet Tile Flooring | 8d | 2014-03-20 | 2014-03-29 | HCFWF6Z3213 SS, HEPSAFI0210, HCFWF6Z2221 | 0d |  | B3 | 09 | MC | C | FI |
| HCFWF6Z3271 |  | F6 Z3 :Stone Flooring All types | 12d | 2014-03-20 | 2014-04-02 | HCFWF6Z3213 SS | 12d | 0d | B3 | 09 | MC | C | FI |
| HCFWF6Z3184 |  | F6 Z3 :Rubber Skirting | 2d | 2014-04-01 | 2014-04-02 | HCFWF6Z3213, HCFWF6Z2205 | 44d | 0d | B3 |  | MC | C | FI |
| HCFWF6Z3235 |  | F6 Z3 :Aluminum & Stainless Steel Skirting | 10d | 2014-04-01 | 2014-04-12 | HCFWF6Z3184 SS | 44d | 31d | B3 | 09 | MC | C | FI |
| HCFWF6Z3204 |  | F6 Z3 :Stone Base Skirting | 10d | 2014-04-03 | 2014-04-14 | HCFWF6Z3271 | 42d | 29d | B3 | 09 | MC | C | FI |
|  | WL | **Wall Finishes** |  | 2013-08-01 | 2014-04-20 |  |  |  |  |  |  |  |  |
| HCFWF6Z3240 |  | F6 Z3 :Gybsum Board Partitions | 10d | 2013-08-01 | 2013-08-15 | HCFWF6Z2223 SS, HCSW6FZ3090 | 105d | 21d | B3 | 10 | MC | C | FI |
| HCFWF6Z31246 |  | F6 Z3 :Block Works | 10d | 2013-08-29 | 2013-09-09 | HCFWF6Z21207 SS, HCSW6FZ3090, HCFWF5Z31206 | 91d | 0d | B3 | 04 | MC | C | FI |
| HCFWF6Z3246 |  | F6 Z3 :Block Works | 10d | 2013-08-29 | 2013-09-09 | HCFWF6Z2207 SS, HCFWF6Z3240 SS, HCSW6FZ3090, HCFWF5Z3206 | 84d | 0d | B3 | 04 | MC | C | FI |
| HCFWF6Z3217 |  | F6 Z3 :Plaster First Layer | 8d | 2013-12-23 | 2014-01-02 | HCFWF6Z3246, HCFWF5Z3159 | 0d |  | B3 | 09 | MC | C | FI |
| HCFWF6Z3218 |  | F6 Z3 :Plaster Second Layer | 8d | 2014-01-04 | 2014-01-12 | HCFWF6Z3217 | 0d |  | B3 | 09 | MC | C | FI |
| HCFWF6Z3189 |  | F6 Z3 :Plaster Final Layer | 8d | 2014-01-13 | 2014-01-22 | HCFWF6Z3218 | 0d |  | B3 | 09 | MC | C | FI |
| HCFWF6Z3215 |  | F6 Z3 :Paint Prime coat | 12d | 2014-01-23 | 2014-02-05 | HCFWF6Z3189 | 48d | 35d | B3 | 09 | MC | C | FI |
| HCFWF6Z3233 |  | F6 Z3 :Stainless steel Wire Cloth Finish For Elev Lobby | 10d | 2014-03-19 | 2014-03-30 | HCFWF6Z3251 SS | 55d | 42d | B3 | 05 | MC | C | FI |
| HCFWF6Z3251 |  | F6 Z3 :Paint putty coat | 12d | 2014-03-19 | 2014-04-01 | HCFWF6Z3215, HCFWF5Z3211 | 13d | 0d | B3 | 09 | MC | C | FI |
| HCFWF6Z3209 |  | F6 Z3 :Stone Cladding | 10d | 2014-04-02 | 2014-04-13 | HCFWF6Z3242 SS | 43d | 30d | B3 | 04 | MC | C | FI |
| HCFWF6Z3242 |  | F6 Z3 :Glass Wall Cladding | 16d | 2014-04-02 | 2014-04-20 | HCFWF6Z3189, HCFWF5Z3207 | 43d | 0d | B3 | 09 | MC | C | FI |

| ID | WBS | Activity | Duration | Start | Finish | Predecessors | Total float | Free float | Bill No. | Division No. | Responsibility | Phase Code | Trade |
| --- | --- | --- | --- | --- | --- | --- | --- | --- | --- | --- | --- | --- | --- |
|  | CL | **Ceiling Finishes** |  | 2014-02-20 | 2014-05-19 |  |  |  |  |  |  |  |  |
| HCFWF6Z3220 |  | F6 Z3 :Plaster First Layer | 8d | 2014-02-20 | 2014-03-01 | HCFWF6Z3212, HCFWF5Z3187 | 0d |  | B3 | 09 | MC | C | FI |
| HCFWF6Z3256 |  | F6 Z3 :Plaster Second Layer | 8d | 2014-03-02 | 2014-03-10 | HCFWF6Z3220 | 0d |  | B3 | 09 | MC | C | FI |
| HCFWF6Z3222 |  | F6 Z3 :Plaster Final Layer | 8d | 2014-03-11 | 2014-03-19 | HCFWF6Z3256 | 0d |  | B3 | 09 | MC | C | FI |
| HCFWF6Z3223 |  | F6 Z3 :Paint Prime coat | 10d | 2014-04-02 | 2014-04-13 | HCFWF6Z3215, HCFWF6Z3222, HCFWF6Z3251 | 13d | 0d | B3 | 09 | MC | C | FI |
| HCFWF6Z3194 |  | F6 Z3 :Paint putty coat | 10d | 2014-04-14 | 2014-04-24 | HCFWF6Z3223 | 13d | 6d | B3 | 09 | MC | C | FI |
| HCFWF6Z3276 |  | F6 Z3 :Acoustical Ceiling | 10d | 2014-04-14 | 2014-04-24 | HCFWF6Z3223 | 23d | 16d | B3 | 09 | MC | C | FI |
| HCFWF6Z3225 |  | F6 Z3 :Gybsum Board Ceiling | 14d | 2014-05-04 | 2014-05-19 | HCFWF6Z3194, HCFWF6Z3276 SS, HCFWF5Z3190 | 7d | 0d | B3 | 09 | MC | C | FI |
|  | MS | **Mecellanuos** |  | 2014-04-14 | 2014-05-21 |  |  |  |  |  |  |  |  |
| HCFWF6Z3228 |  | F6 Z3 :Steel Fire Rated Doors | 10d | 2014-04-14 | 2014-04-24 | HCFWF6Z3223, HCFWF5Z3193 | 23d | 10d | B3 | 08 | MC | C | FI |
| HCFWF6Z3245 |  | F6 Z3 :Glass Doors | 10d | 2014-04-14 | 2014-04-24 | HCFWF6Z3261 SS | 33d | 20d | B3 | 08 | MC | C | FI |
| HCFWF6Z3261 |  | F6 Z3 :Metal Works | 10d | 2014-04-14 | 2014-04-24 | HCFWF6Z3223, HCFWF5Z3221, HCFWF5Z3221 FF | 13d | 0d | B3 | 05 | MC | C | FI |
| HCFWF6Z3227 |  | F6 Z3 :Steel Doors | 10d | 2014-04-26 | 2014-05-07 | HCFWF6Z3228 SS, HCFWF6Z3261, HCFWF5Z3192 | 13d | 0d | B3 | 08 | MC | C | FI |
| HCFWF6Z3230 |  | F6 Z3 :Wooden Doors | 10d | 2014-04-26 | 2014-05-07 | HCFWF6Z3227 SS, HCFWF5Z3195 | 13d | 0d | B3 | 08 | MC | C | FI |
| HCFWF6Z3199 |  | F6 Z3 :Stone Decoration For Benches | 10d | 2014-05-05 | 2014-05-15 | HCFWF6Z3266 SS | 16d | 3d | B3 | 04 | MC | C | FI |
| HCFWF6Z3266 |  | F6 Z3 :Handrails & Railling | 15d | 2014-05-05 | 2014-05-21 | HCFWF6Z3261 SS, HCFWF5Z3226 | 16d | 0d | B3 | 05 | MC | C | FI |
| HCFWF6Z3237 |  | F6 Z3 :Mirror | 10d | 2014-05-08 | 2014-05-19 | HCFWF6Z3266 SS, HCFWF6Z3230 | 13d | 0d | B3 | 08 | MC | C | FI |
| HCFWF6Z3238 |  | F6 Z3 :Toilet & corian vanity tops | 10d | 2014-05-08 | 2014-05-19 | HCFWF6Z3237 SS, HEPSAFI0270 | 13d | 0d | B3 | 10 | MC | C | FI |
|  | Z4 | **Zone 4** |  | 2013-09-12 | 2014-04-19 |  |  |  |  |  |  |  |  |
|  | FL | **Floor Finishes** |  | 2013-11-17 | 2014-04-07 |  |  |  |  |  |  |  |  |
| HCFWF6Z4226 |  | F6 Z4 :Foam Concrete Under Floorings | 16d | 2013-11-17 | 2013-12-04 | HCFWF6Z4231 | 38d | 0d | B3 | 07 | MC | C | FI |
| HCFWF6Z4227 |  | F6 Z4 :Trawelled smooth Concrete screed | 8d | 2013-12-05 | 2013-12-14 | HCFWF6Z4226 | 38d | 0d | B3 | 03 | MC | C | FI |
| HCFWF6Z4243 |  | F6 Z4 :Stone Flooring | 12d | 2013-12-15 | 2013-12-29 | HCFWF6Z4227 | 60d | 0d | B3 | 09 | MC | C | FI |
| HCFWF6Z4229 |  | F6 Z4 :Rubber Flooring | 10d | 2014-01-15 | 2014-01-26 | HCFWF6Z2242, HCFWF6Z4243 SS | 63d | 57d | B3 | 09 | MC | C | FI |
| HCFWF6Z4246 |  | F6 Z4 :Carpet Tiles | 8d | 2014-03-30 | 2014-04-07 | HCFWF6Z4229 SS, HEPSAFI0210, HCFWF6Z3243 | 0d |  | B3 |  | MC | C | FI |
| HCFWF6Z4230 |  | F6 Z4 :Rubber Skirting | 2d | 2014-04-03 | 2014-04-05 | HCFWF6Z4229, HCFWF6Z3184 | 50d | 37d | B3 |  | MC | C | FI |

| ID | WBS | Activity | Duration | Start | Finish | Predecessors | Total float | Free float | Bill No. | Division No. | Responsibility | Phase Code | Trade |
| --- | --- | --- | --- | --- | --- | --- | --- | --- | --- | --- | --- | --- | --- |
|  | WL | **Wall Finishes** |  | 2013-09-12 | 2014-02-04 |  |  |  |  |  |  |  |  |
| HCFWF6Z2248 |  | F6 Z4 :Gybsum Board Partitions | 10d | 2013-09-12 | 2013-09-23 | HCFWF6Z4232 SS | 208d | 195d | B3 | 10 | MC | C | FI |
| HCFWF6Z41232 |  | F6 Z4 :Block Works | 10d | 2013-09-12 | 2013-09-23 | HCSW6FZ4090, HCFWGFZ4082 | 64d | 0d | B3 | 04 | MC | C | FI |
| HCFWF6Z4232 |  | F6 Z4 :Block Works | 10d | 2013-09-12 | 2013-09-23 | HCSW6FZ4090, HCFWF5Z4082 | 53.5d | 0d | B3 | 04 | MC | C | FI |
| HCFWF6Z4234 |  | F6 Z4 :Plaster First Layer | 8.75d | 2013-10-12 | 2013-10-27 | HCFWF6Z4232, HCFWF5Z4281 | 38d | 0d | B3 | 09 | MC | C | FI |
| HCFWF6Z2235 |  | F6 Z4 :Plaster Second Layer | 8d | 2013-10-27 | 2013-11-06 | HCFWF6Z4234 | 38d | 0d | B3 | 09 | MC | C | FI |
| HCFWF6Z4231 |  | F6 Z4 :Plaster Final Layer | 8.75d | 2013-11-06 | 2013-11-16 | HCFWF6Z2235 | 38d | 0d | B3 | 09 | MC | C | FI |
| HCFWF6Z2237 |  | F6 Z4 :Paint Prime coat | 12d | 2013-11-18 | 2013-12-01 | HCFWF6Z4231, HCFWF6Z2212 | 110d | 0d | B3 | 09 | MC | C | FI |
| HCFWF6Z4228 |  | F6 Z4 :Paint putty coat | 12d | 2013-12-02 | 2013-12-15 | HCFWF6Z2237, HCFWF5Z4278 | 142d | 141d | B3 | 09 | MC | C | FI |
| HCFWF6Z2249 |  | F6 Z4 :Glass Wall Cladding | 16d | 2014-01-18 | 2014-02-04 | HCFWF6Z4231, HCFWF5Z4299 | 101d | 88d | B3 | 09 | MC | C | FI |
|  | CL | **Ceiling Finishes** |  | 2013-12-15 | 2014-02-25 |  |  |  |  |  |  |  |  |
| HCFWF6Z2240 |  | F6 Z4 :Plaster First Layer | 8d | 2013-12-15 | 2013-12-23 | HCFWF6Z4227 | 38d | 0d | B3 | 09 | MC | C | FI |
| HCFWF6Z2236 |  | F6 Z4 :Plaster Second Layer | 8d | 2013-12-24 | 2014-01-04 | HCFWF6Z2240 | 38d | 0d | B3 | 09 | MC | C | FI |
| HCFWF6Z2242 |  | F6 Z4 :Plaster Final Layer | 8d | 2014-01-05 | 2014-01-13 | HCFWF6Z2236 | 38d | 0d | B3 | 09 | MC | C | FI |
| HCFWF6Z2233 |  | F6 Z4 :Paint Prime coat | 10d | 2014-01-15 | 2014-01-26 | HCFWF6Z2237, HCFWF6Z2242 | 75d | 0d | B3 | 09 | MC | C | FI |
| HCFWF6Z2239 |  | F6 Z4 :Paint putty coat | 10d | 2014-01-27 | 2014-02-06 | HCFWF6Z2233 | 75d | 2d | B3 | 09 | MC | C | FI |
| HCFWF6Z2245 |  | F6 Z4 :Gybsum Board Ceiling | 14d | 2014-02-10 | 2014-02-25 | HCFWF6Z2239, HCFWF5Z4295 | 73d | 0d | B3 | 09 | MC | C | FI |
|  | MS | **Mecellanuos** |  | 2014-01-27 | 2014-04-19 |  |  |  |  |  |  |  |  |
| HCFWF6Z2238 |  | F6 Z4 :Steel Fire Rated Doors | 10d | 2014-01-27 | 2014-02-06 | HCFWF6Z2233, HCFWF5Z4288 | 99d | 61d | B3 | 08 | MC | C | FI |
| HCFWF6Z2241 |  | F6 Z4 :Metal Works | 10d | 2014-03-27 | 2014-04-07 | HCFWF6Z2233, HCFWF6Z2216 | 38d | 0d | B3 | 05 | MC | C | FI |
| HCFWF6Z2250 |  | F6 Z4 :Handrails & Railling | 15d | 2014-03-27 | 2014-04-13 | HCFWF6Z2241 SS | 43d | 30d | B3 | 05 | MC | C | FI |
| HCFWF6Z2244 |  | F6 Z4 :Wooden Doors | 10d | 2014-04-08 | 2014-04-19 | HCFWF6Z2247 SS, HCFWF4Z2144, HCFWF5Z4294 | 38d | 25d | B3 | 08 | MC | C | FI |
| HCFWF6Z2247 |  | F6 Z4 :Steel Doors | 10d | 2014-04-08 | 2014-04-19 | HCFWF6Z2238 SS, HCFWF6Z2241, HCFWF6Z2222 | 38d | 0d | B3 | 08 | MC | C | FI |
|  | Z5 | **Zone 5** |  | 2013-09-03 | 2014-05-04 |  |  |  |  |  |  |  |  |
|  | FL | **Floor Finishes** |  | 2013-12-04 | 2014-05-04 |  |  |  |  |  |  |  |  |
| HCFWF6Z5241 |  | F6 Z5 :Foam Concrete Under Floorings | 16d | 2013-12-04 | 2013-12-23 | HCFWF6Z5252 | 44.25d | 0d | B3 | 07 | MC | C | FI |
| HCFWF6Z5242 |  | F6 Z5 :Trawelled smooth Concrete screed | 8d | 2013-12-23 | 2014-01-04 | HCFWF6Z5241 | 44.25d | 0d | B3 | 03 | MC | C | FI |
| HCFWF6Z5234 |  | F6 Z5 :Epoxy Screed Finish | 10d | 2014-01-04 | 2014-01-16 | HCFWF6Z5242 | 117.5d | 104.5d | B3 |  | MC | C | FI |
| HCFWF6Z5247 |  | F6 Z5 :Rubber Flooring | 10d | 2014-02-27 | 2014-03-11 | HCFWF6Z5251 | 30.75d | 0d | B3 | 09 | MC | C | FI |
| HCFWF6Z5266 |  | F6 Z5 :Stone Flooring All types | 12d | 2014-02-27 | 2014-03-13 | HCFWF6Z5247 SS | 30.75d |  | B3 | 09 | MC | C | FI |
| HCFWF6Z5280 |  | F6 Z5 :Ceramic Floor Tiles | 10d | 2014-02-27 | 2014-03-11 | HCFWF6Z5247 SS, HEPSAFI0210 | 71.75d | 70.75d |  |  |  |  |  |
| HCFWF6Z5244 |  | F6 Z5 :Aluminum Floor Tiles | 10d | 2014-04-08 | 2014-04-19 | HCFWF6Z5268 SS | 26d | 0d | B3 | 09 | MC | C | FI |
| HCFWF6Z5268 |  | F6 Z5 :Quary Tiles | 9d | 2014-04-08 | 2014-04-17 | HCFWF6Z5272 SS | 0d |  | B3 |  | MC | C | FI |
| HCFWF6Z5272 |  | F6 Z5 :Carpet Tile Flooring | 9d | 2014-04-08 | 2014-04-17 | HCFWF6Z5247 SS, HEPSAFI0210, HCFWF6Z4246 | 0d |  | B3 | 09 | MC | C | FI |
| HCFWF6Z5278 |  | F6 Z5 :Wood Flooring | 10d | 2014-04-08 | 2014-04-19 | HCFWF6Z5244 SS | 38d | 25d | B3 | 09 | MC | C | FI |
| HCFWF6Z5245 |  | F6 Z5 :Stone Base Skirting | 10d | 2014-04-20 | 2014-04-30 | HCFWF6Z5271 SS, HCFWF6Z5266 | 26d | 0d | B3 | 09 | MC | C | FI |
| HCFWF6Z5271 |  | F6 Z5 :Aluminum & Stainless Steel Skirting | 10d | 2014-04-20 | 2014-04-30 | HCFWF6Z5244 | 26d | 0d | B3 | 09 | MC | C | FI |
| HCFWF6Z5215 |  | F6 Z5 :Rubber Skirting | 2d | 2014-05-03 | 2014-05-04 | HCFWF6Z5247, HCFWF6Z5245 | 26d | 13d | B3 |  | MC | C | FI |

| ID | WBS | Activity | Duration | Start | Finish | Predecessors | Total float | Free float | Bill No. | Division No. | Responsibility | Phase Code | Trade |
| --- | --- | --- | --- | --- | --- | --- | --- | --- | --- | --- | --- | --- | --- |
|  | WL | **Wall Finishes** |  | 2013-09-03 | 2014-02-04 |  |  |  |  |  |  |  |  |
| HCFWF6Z5239 |  | F6 Z5 :Gybsum Board Partitions | 10d | 2013-09-03 | 2013-09-14 | HCFWF6Z3240 SS, HCSW6FZ5090 | 83d | 8d | B3 | 10 | MC | C | FI |
| HCFWF6Z51243 |  | F6 Z5 :Block Works | 10d | 2013-09-12 | 2013-09-23 | HCSW6FZ5090, HCFWF5Z51203 | 75d | 0d | B3 | 04 | MC | C | FI |
| HCFWF6Z5243 |  | F6 Z5 :Block Works | 10d | 2013-09-12 | 2013-09-23 | HCFWF6Z5239 SS, HCSW6FZ5090, HCFWF5Z5203 | 75d | 0d | B3 | 04 | MC | C | FI |
| HCFWF6Z5277 |  | F6 Z5 :Acoustical Painted Walls | 10d | 2013-09-24 | 2013-10-05 | HCFWF6Z5243 | 198d | 91d | B3 | 09 | MC | C | FI |
| HCFWF6Z5220 |  | F6 Z5 :Plaster First Layer | 8.75d | 2013-11-04 | 2013-11-14 | HCFWF6Z5243, HCFWF5Z5212 | 44.25d | 0d | B3 | 09 | MC | C | FI |
| HCFWF6Z5246 |  | F6 Z5 :Plaster Second Layer | 8d | 2013-11-14 | 2013-11-24 | HCFWF6Z5220 | 44.25d | 0d | B3 | 09 | MC | C | FI |
| HCFWF6Z5252 |  | F6 Z5 :Plaster Final Layer | 8.75d | 2013-11-24 | 2013-12-04 | HCFWF6Z5246 | 44.25d | 0d | B3 | 09 | MC | C | FI |
| HCFWF6Z5248 |  | F6 Z5 :Paint Prime coat | 12d | 2013-12-04 | 2013-12-18 | HCFWF6Z5252 | 99.5d | 0d | B3 | 09 | MC | C | FI |
| HCFWF6Z5214 |  | F6 Z5 :Paint putty coat | 12d | 2013-12-18 | 2014-01-04 | HCFWF6Z5248 | 127.5d | 0d | B3 | 09 | MC | C | FI |
| HCFWF6Z5240 |  | F6 Z5 :Stone Wall Cladding | 10d | 2013-12-18 | 2013-12-31 | HCFWF6Z5214 SS | 129.5d | 116.5d | B3 | 04 | MC | C | FI |
| HCFWF6Z5273 |  | F6 Z5 :Stainless steel Wire Cloth Finish For Elev Lobby | 10d | 2014-01-18 | 2014-01-28 | HCFWF6Z5276 SS | 107d | 94d | B3 | 05 | MC | C | FI |
| HCFWF6Z5276 |  | F6 Z5 :Glass Wall Cladding | 16d | 2014-01-18 | 2014-02-04 | HCFWF6Z5252, HCFWF6Z5277 SS, HCFWF5Z5236 | 107d | 0d | B3 | 09 | MC | C | FI |
|  | CL | **Ceiling Finishes** |  | 2014-01-21 | 2014-04-08 |  |  |  |  |  |  |  |  |
| HCFWF6Z5219 |  | F6 Z5 :Plaster First Layer | 8.75d | 2014-01-21 | 2014-01-30 | HCFWF6Z5242, HCFWF5Z5211 | 30.75d | 0d | B3 | 09 | MC | C | FI |
| HCFWF6Z5225 |  | F6 Z5 :Plaster Second Layer | 8d | 2014-01-30 | 2014-02-09 | HCFWF6Z5219 | 30.75d | 0d | B3 | 09 | MC | C | FI |
| HCFWF6Z5251 |  | F6 Z5 :Plaster Final Layer | 15.5d | 2014-02-09 | 2014-02-27 | HCFWF6Z5225 | 30.75d | 0d | B3 | 09 | MC | C | FI |
| HCFWF6Z5257 |  | F6 Z5 :Paint Prime coat | 10d | 2014-02-27 | 2014-03-11 | HCFWF6Z5248, HCFWF6Z5251 | 41.75d | 0d | B3 | 09 | MC | C | FI |
| HCFWF6Z5235 |  | F6 Z5 :Acoustical Ceiling | 10d | 2014-03-11 | 2014-03-23 | HCFWF6Z5257 | 51.75d | 10.25d | B3 | 09 | MC | C | FI |
| HCFWF6Z5253 |  | F6 Z5 :Paint putty coat | 10d | 2014-03-11 | 2014-03-23 | HCFWF6Z5257 | 41.75d | 0.25d | B3 | 09 | MC | C | FI |
| HCFWF6Z5224 |  | F6 Z5 :Gybsum Board Ceiling | 14d | 2014-03-23 | 2014-04-08 | HCFWF6Z5253, HCFWF6Z5235 SS, HCFWF5Z5189 | 41.5d | 0d | B3 | 09 | MC | C | FI |
|  | MS | **Mecellanuos** |  | 2014-03-11 | 2014-04-15 |  |  |  |  |  |  |  |  |
| HCFWF6Z5256 |  | F6 Z5 :Metal Works | 10d | 2014-03-11 | 2014-03-23 | HCFWF6Z5257, HCFWF5Z5216 | 41.75d | 0d | B3 | 05 | MC | C | FI |
| HCFWF6Z5262 |  | F6 Z5 :Steel Fire Rated Doors | 10d | 2014-03-11 | 2014-03-23 | HCFWF6Z5257, HCFWF5Z5222 | 51.75d | 10d | B3 | 08 | MC | C | FI |
| HCFWF6Z5229 |  | F6 Z5 :Stone Decoration For Benches | 10d | 2014-03-15 | 2014-03-26 | HCFWF6Z5261 SS | 58.5d | 45.5d | B3 | 04 | MC | C | FI |
| HCFWF6Z5261 |  | F6 Z5 :Handrails & Railling | 15d | 2014-03-15 | 2014-04-01 | HCFWF6Z5256 SS, HCFWF5Z5221 | 58.5d | 0d | B3 | 05 | MC | C | FI |
| HCFWF6Z5230 |  | F6 Z5 :Wooden Doors | 10d | 2014-03-23 | 2014-04-03 | HCFWF6Z5258 SS | 41.75d | 0d | B3 | 08 | MC | C | FI |
| HCFWF6Z5258 |  | F6 Z5 :Steel Doors | 10d | 2014-03-23 | 2014-04-03 | HCFWF6Z5262 SS, HCFWF6Z5256, HCFWF5Z5218 | 41.75d | 0d | B3 | 08 | MC | C | FI |
| HCFWF6Z5263 |  | F6 Z5 :Toilet & corian vanity tops | 10d | 2014-04-03 | 2014-04-15 | HCFWF6Z5267 SS, HEPSAFI0270 | 41.75d | 28.75d | B3 | 10 | MC | C | FI |
| HCFWF6Z5267 |  | F6 Z5 :Mirror | 10d | 2014-04-03 | 2014-04-15 | HCFWF6Z5261 SS, HCFWF6Z5230 | 41.75d | 0d | B3 | 08 | MC | C | FI |

| ID | WBS | Activity | Type | Duration | Start | Finish | Predecessors | Total float | Free float | Bill No. | Responsibility | Phase Code | Trade | Division No. |
| --- | --- | --- | --- | --- | --- | --- | --- | --- | --- | --- | --- | --- | --- | --- |
|  | F7 | **Seventh Floor** |  |  | 2013-09-18 | 2014-04-21 |  |  |  |  |  |  |  |  |
| HCFWF70000 |  | F7 :Start Finishing Works Seventh Floor | milestone | 0d | 2013-09-18 | 2013-09-18 | HCSW7FZ1090, HCSW7FZ2090, HCSW7FZ3090, HCSW7FZ4090, HCSW7FZ5090 | 213d | 177d | B3 | MC | C | FI |  |
| HCFWF70001 |  | F7 :End Finishing Works Seventh Floor | milestone | 0d | 2014-04-21 | 2014-04-21 | HCFWF70000, HCFWF7AZ130, HCFWF7AZ050, HCMEF7Z1795 | 36d |  | B3 | MC | C | FI |  |
|  | AL | **All Zones** |  |  | 2013-09-25 | 2014-02-04 |  |  |  |  |  |  |  |  |
| HCFWF7AZ010 |  | F7 :Block Works |  | 14d | 2013-09-25 | 2013-10-10 | HCSW7FZ1090, HCSW7FZ2090, HCSW7FZ3090, HCSW7FZ4090, HCSW7FZ5090, HCSW7FZ1100, HCSW7FZ2100, HCSW7FZ3100, HCSW7FZ4100, HCSW7FZ5100 | 10d | 0d | B3 | MC | C | FI | 04 |
| HCFWF7AZ020 |  | F7 :Plaster First Layer |  | 15.5d | 2013-10-12 | 2013-11-03 | HCFWF7AZ010 | 64d | 0d | B3 | MC | C | FI | 09 |
| HCFWF7AZ030 |  | F7 :Plaster Second Layer |  | 16d | 2013-11-03 | 2013-11-23 | HCFWF7AZ020 | 64d | 0d | B3 | MC | C | FI | 09 |
| HCFWF7AZ040 |  | F7 :Plaster Final Layer |  | 15.5d | 2013-11-23 | 2013-12-10 | HCFWF7AZ030 | 64d | 0d | B3 | MC | C | FI | 09 |
| HCFWF7AZ070 |  | F7 :Paint prime coat |  | 10d | 2013-12-11 | 2013-12-22 | HCFWF7AZ040 | 101d | 0d | B3 | MC | C | FI | 09 |
| HCFWF7AZ080 |  | F7 :Paint putty coat |  | 10d | 2013-12-23 | 2014-01-05 | HCFWF7AZ070 | 101d | 0d | B3 | MC | C | FI | 09 |
| HCFWF7AZ090 |  | F7 :Acoustic Wall Panels |  | 10d | 2013-12-23 | 2014-01-05 | HCFWF7AZ070, HCFWF7AZ010 | 111d | 0d | B3 | MC | C | FI |  |
| HCFWF7AZ050 |  | F7 :Decorative Stone Works |  | 10d | 2014-01-06 | 2014-01-18 | HCFWF7AZ080 | 116d | 80d | B3 | MC | C | FI | 04 |
| HCFWF7AZ060 |  | F7 :Acoustic Wall Panels |  | 10d | 2014-01-06 | 2014-01-18 | HCFWF7AZ080 | 101d | 0d | B3 | MC | C | FI |  |
| HCFWF7AZ130 |  | F7 :Steel Post |  | 15d | 2014-01-06 | 2014-01-23 | HCFWF7AZ090 | 111d | 75d | B3 | MC | C | FI |  |
| HCFWF7AZ120 |  | F7 :Greean Area |  | 15d | 2014-01-19 | 2014-02-04 | HCFWF7AZ060, HCFWF7AZ090 | 101d |  | B3 | MC | C | FI |  |
|  | RF | **Roof Floor** |  |  | 2013-10-12 | 2014-01-07 |  |  |  |  |  |  |  |  |
| HCFWRFAZ010 |  | RF :Parapet Walls |  | 10d | 2013-10-12 | 2013-10-27 | HCFWF7AZ010 | 124d | 0d |  |  |  |  |  |
| HCFWRFAZ020 |  | RF :Plaster First layers for parapets |  | 3d | 2013-10-28 | 2013-10-30 | HCFWRFAZ010 | 124d | 0d |  |  |  |  |  |
| HCFWRFAZ030 |  | RF :Plaster Second Layer For parapets |  | 3d | 2013-10-31 | 2013-11-03 | HCFWRFAZ020 | 124d | 0d |  |  |  |  |  |
| HCFWRFAZ040 |  | RF :Plaster Final Layer For parapets |  | 3d | 2013-11-04 | 2013-11-07 | HCFWRFAZ030 | 124d | 0d |  |  |  |  |  |
| HCFWRFAZ050 |  | RF :Stone Sills for parapets |  | 3d | 2013-11-09 | 2013-11-11 | HCFWRFAZ040 | 124d | 0d |  |  |  |  |  |
| HCFWRFAZ060 |  | RF :Foundation Base for Equipments on Roof |  | 21d | 2013-11-12 | 2013-12-05 | HCFWRFAZ050 | 124d | 0d |  |  |  |  |  |
| HCFWRFAZ070 |  | RF :Water Proofing |  | 3d | 2013-12-07 | 2013-12-09 | HCFWRFAZ060 | 124d | 0d |  |  |  |  |  |
| HCFWRFAZ080 |  | RF :Thermal Insulation |  | 3d | 2013-12-10 | 2013-12-12 | HCFWRFAZ070 | 124d | 0d |  |  |  |  |  |
| HCFWRFAZ090 |  | RF :Roof Flooring |  | 5d | 2013-12-14 | 2013-12-18 | HCFWRFAZ080 | 124d | 0d |  |  |  |  |  |
| HCFWRFAZ100 |  | RF :Wood Decking |  | 15d | 2013-12-19 | 2014-01-07 | HCFWRFAZ090 | 124d |  |  |  |  |  |  |

| ID | WBS | Activity | Type | Duration | Start | Finish | Predecessors | Total float | Free float | Constraint | Calendar | Resources | Cost | Bill No. | Responsibility | Phase Code | Trade | Division No. |
| --- | --- | --- | --- | --- | --- | --- | --- | --- | --- | --- | --- | --- | --- | --- | --- | --- | --- | --- |
|  | 4 | **MEP works** |  |  | 2012-09-24 | 2014-07-23 |  |  |  |  |  |  |  |  |  |  |  |  |
|  | 3 | **Authorities Requirements** |  |  | 2014-06-17 | 2014-07-23 |  |  |  |  |  |  |  |  |  |  |  |  |
|  | 2 | **Electricity Authority Requirements** |  |  | 2014-06-17 | 2014-06-17 |  |  |  |  |  |  |  |  |  |  |  |  |
| CIDEEL000 |  | PERMANENT POWER | milestone | 0d | 2014-06-17 | 2014-06-17 | H0000 | 0d |  | as late as possible | HCRA - 1 - Normal Calendar |  |  | B5 | MEP | C | MEP |  |
|  | 3 | **Water Authority Requirements** |  |  | 2014-07-23 | 2014-07-23 |  |  |  |  |  |  |  |  |  |  |  |  |
| ATWTPR000 |  | CONNECT THE PROJECT TO WATER NETWORK | milestone | 0d | 2014-07-23 | 2014-07-23 | H0000, HHAWAFAZ0020 | 0.12d | 0d | as late as possible | HCRA - 1 - Normal Calendar |  |  | B5 | MEP | C | MEP |  |
|  | 1 | **Building Electromechanical Works** |  |  | 2012-09-24 | 2014-06-05 |  |  |  |  |  |  |  |  |  |  |  |  |
|  | BS | **Basement Floors** |  |  | 2012-09-24 | 2014-03-24 |  |  |  |  |  |  |  |  |  |  |  |  |
|  | B4 | **Basement 4** |  |  | 2012-09-24 | 2014-01-21 |  |  |  |  |  |  |  |  |  |  |  |  |
| HCMEB4000 |  | Start Basement 4 Floor EM Works | milestone | 0d | 2012-10-13 | 2012-10-13 | HCMEB4Z1120 | 66d | 2d |  |  |  |  | B5 | MEP | C | MEP |  |
| HCMEB40000 |  | End Basement 4 Floor EM Works | milestone | 0d | 2014-01-02 | 2014-01-02 | HCMEB4Z1050, HCMEB4Z1080, HCMEB4Z1330, HCMEB4Z1360 | 128d |  |  |  |  |  | B5 | MEP | C | MEP |  |
|  | 4 | **Zone 1** |  |  | 2012-10-11 | 2014-01-02 |  |  |  |  |  |  |  |  |  |  |  |  |
|  | 7 | **Drainage** |  |  | 2012-10-15 | 2013-05-10 |  |  |  |  |  |  |  |  |  |  |  |  |
| HCMEB4Z1030 |  | B4 Z1 :All Vertical Piping Works |  | 10d | 2012-10-15 | 2012-10-26 | HCMEB4000 | 58.88d | 0d |  | HCRA - Global | EFFORT [10 h]; Mechnical Skilled Labours [15 h] | 356.25 | B5 | MEP | C | MEP | 22 |
| HCMEB4Z1040 |  | B4 Z1 :All Horizantal Piping Works |  | 30d | 2012-10-29 | 2012-12-07 | HCMEB4Z1030 | 58.88d | 0d |  | HCRA - Global | EFFORT [30 h]; Mechnical Skilled Labours [45 h] | 1,068.75 | B5 | MEP | C | MEP | 22 |
| HCMEB4Z1050 |  | B4 Z1 :Mechanical Final Fix |  | 20d | 2013-04-15 | 2013-05-10 | HCMEB4Z1040 FS+90d | 58.88d | 15d |  | HCRA - Global | EFFORT [20 h]; Mechnical Skilled Labours [30 h] | 712.5 | B5 | MEP | C | MEP | 22 |
|  | 020 | **Electrical Works** |  |  | 2012-10-11 | 2014-01-01 |  |  |  |  |  |  |  |  |  |  |  |  |
| HCMEB4Z1120 |  | B4 Z1 :Blocks Start Date for All Parts | milestone | 0d | 2012-10-11 | 2012-10-11 | HCFWB4Z1007 | 70d | 0d |  | HCRA - 1 - Normal Calendar |  |  | B5 | MEP | C | MEP | 26 |
| HCMEB4Z1180 |  | B4 Z1 :Electrical Coduits & Boards F.F for All Systems |  | 12d | 2012-10-11 | 2012-10-29 | HCMEB4Z1120 | 177d | 58d |  | HCRA - Global | EFFORT [12 h]; Electrical Skilled Labours [24 h] | 450 | B5 | MEP | C | MEP | 26 |
| HCMEB4Z1140 |  | B4 Z1 :Plastering Finish Date for All Parts | milestone | 0d | 2012-11-17 | 2012-11-17 | HCFWB4Z1010 | 254.38d | 111.38d |  | HCRA - 1 - Normal Calendar |  |  | B5 | MEP | C | MEP | 26 |
| HCMEB4Z1130 |  | B4 Z1 :Tiling Finish Date for All Parts | milestone | 0d | 2013-02-27 | 2013-02-27 | HCFWB4Z1005 | 83.25d | 51.38d |  | HCRA - 1 - Normal Calendar |  |  | B5 | MEP | C | MEP | 26 |
| HCMEB4Z1190 |  | B4 Z1 :Electrical Boards Seconed Fix |  | 12d | 2013-03-28 | 2013-04-15 | HCMEB4Z1180 FS+50d, HCMEB4Z1140, HEPSAME1310 | 119d | 0d |  | HCRA - Global | EFFORT [12 h]; Electrical Skilled Labours [24 h] | 450 | B5 | MEP | C | MEP | 26 |
| HCMEB4Z1210 |  | B4 Z1 :Electrcial Wiring |  | 20d | 2013-04-29 | 2013-05-24 | HCMEB4Z1130, HEPSAME1440 | 26.88d | 25d |  | HCRA - Global | EFFORT [20 h]; Electrical Skilled Labours [40 h] | 750 | B5 | MEP | C | MEP | 26 |
| HCMEB4Z1200 |  | B4 Z1 :Cable Tray Installation |  | 10d | 2013-09-25 | 2013-10-09 | HCMEB4Z1140, HEPSAME1300 | 0d |  |  | HCRA - Global | EFFORT [10 h]; Electrical Skilled Labours [20 h] | 375 | B5 | MEP | C | MEP | 26 |
| HCMEB4Z1220 |  | B4 Z1 :Cable Laying |  | 10d | 2013-10-09 | 2013-10-23 | HCMEB4Z1200, HEPSAME1290 | 0d |  |  | HCRA - Global | EFFORT [10 h]; Electrical Skilled Labours [20 h] | 375 | B5 | MEP | C | MEP | 26 |
| HCMEB4Z1150 |  | B4 Z1 :Gypsum Boards Finish Date for All Parts | milestone | 0d | 2013-10-23 | 2013-10-23 | HCFWB4Z1018 | 179d | 47d |  | HCRA - 1 - Normal Calendar |  |  | B5 | MEP | C | MEP | 26 |
| HCMEB4Z1230 |  | B4 Z1 :Electrical Final Fix for All Systems & Boards (Vertical Elements) |  | 10d | 2013-12-04 | 2013-12-18 | HCMEB4Z1220 FS+30d, HCMEB4Z1210 FS+22d, HCMEB4Z1190 FS+30d, HCMEB4Z1140 FS+60d | 111d | 0d |  | HCRA - Global | EFFORT [10 h]; Electrical Skilled Labours [20 h] | 375 | B5 | MEP | C | MEP | 26 |
| HCMEB4Z1240 |  | B4 Z1 :Electrical Final Fix for All Systems (Horizantel Elements) |  | 10d | 2013-12-18 | 2014-01-01 | HCMEB4Z1230, HCMEB4Z1210, HCMEB4Z1150 | 111d | 14d |  | HCRA - Global | EFFORT [10 h]; Electrical Skilled Labours [20 h] | 375 | B5 | MEP | C | MEP | 26 |

| ID | WBS | Activity | Type | Duration | Start | Finish | Predecessors | Total float | Free float | Calendar | Resources | Cost | Bill No. | Division No. | Responsibility | Phase Code | Trade |
| --- | --- | --- | --- | --- | --- | --- | --- | --- | --- | --- | --- | --- | --- | --- | --- | --- | --- |
|  | 2 | **Fire Fighting** |  |  | 2012-10-15 | 2013-11-18 |  |  |  |  |  |  |  |  |  |  |  |
| HCMEB4Z1060 |  | B4 Z1 :Horizontal F.F Piping Work |  | 20d | 2012-10-15 | 2012-11-09 | HCMEB4000 | 208.88d | 0d | HCRA - Global | EFFORT [20 h]; Mechnical Skilled Labours [30 h] | 712.5 | B5 | 21 | MEP | C | MEP |
| HCMEB4Z1070 |  | B4 Z1 :Fire Hose Cabinets |  | 10d | 2012-11-12 | 2012-11-23 | HCMEB4Z1060 | 208.88d | 175.88d | HCRA - Global | EFFORT [10 h]; Mechnical Skilled Labours [15 h] | 356.25 | B5 | 21 | MEP | C | MEP |
| HCMEB4Z1080 |  | B4 Z1 :Sprinklers Final Fix |  | 10d | 2013-11-04 | 2013-11-18 | HCMEB4Z1070 FS+70d, HEPSAME1050 | 33d | 0d | HCRA - Global | EFFORT [10 h]; Mechnical Skilled Labours [15 h] | 356.25 | B5 | 21 | MEP | C | MEP |
|  | 1 | **Air Conditioning** |  |  | 2013-07-11 | 2014-01-02 |  |  |  |  |  |  |  |  |  |  |  |
| HCMEB4Z1290 |  | B4 Z1 :Duct Installation& Dusct Accecories Installation, Fan coil Unit |  | 8d | 2013-07-11 | 2013-07-23 | HCMEB4000, HEPSAME1130 | 12d | 0d | HCRA - Global | EFFORT [20 h]; Mechnical Skilled Labours [30 h] | 712.5 | B5 | 23 | MEP | C | MEP |
| HCMEB4Z1300 |  | B4 Z1 :Duct Insulation Work |  | 15d | 2013-07-23 | 2013-08-13 | HCMEB4Z1290 | 12d | 0d | HCRA - Global | EFFORT [15 h]; Mechnical Skilled Labours [22.5 h] | 534.38 | B5 | 23 | MEP | C | MEP |
| HCMEB4Z1310 |  | B4 Z1 :Exhaust Fans |  | 15d | 2013-08-13 | 2013-09-03 | HCMEB4Z1300 | 12d |  | HCRA - Global | EFFORT [15 h]; Mechnical Skilled Labours [22.5 h] | 534.38 | B5 | 23 | MEP | C | MEP |
| HCMEB4Z1320 |  | B4 Z1 :Grills & Diffusers |  | 13d | 2013-11-28 | 2013-12-17 | HCMEB4Z1310 FS+50d, HEPSAME1170, HEPSAME1160 | 0d |  | HCRA - Global | EFFORT [10 h]; Mechnical Skilled Labours [15 h] | 356.25 | B5 | 23 | MEP | C | MEP |
| HCMEB4Z1330 |  | B4 Z1 :Mechanical final Fix |  | 12d | 2013-12-17 | 2014-01-02 | HCMEB4Z1320 | 0d |  | HCRA - Global | EFFORT [10 h]; Mechnical Skilled Labours [15 h] | 356.25 | B5 | 23 | MEP | C | MEP |
|  | 3 | **Water Network** |  |  | 2012-10-15 | 2013-05-10 |  |  |  |  |  |  |  |  |  |  |  |
| HCMEB4Z1340 |  | B4 Z1 :All Vertical Piping Works |  | 10d | 2012-10-15 | 2012-10-26 | HCMEB4Z1030 SS | 58.88d | 0d | HCRA - Global | EFFORT [10 h]; Mechnical Skilled Labours [15 h] | 356.25 | B5 | 22 | MEP | C | MEP |
| HCMEB4Z1350 |  | B4 Z1 :All Horizantal Piping Works |  | 30d | 2012-10-29 | 2012-12-07 | HCMEB4Z1340 | 58.88d | 0d | HCRA - Global | EFFORT [30 h]; Mechnical Skilled Labours [45 h] | 1,068.75 | B5 | 22 | MEP | C | MEP |
| HCMEB4Z1360 |  | B4 Z1 :Mechanical Final Fix |  | 20d | 2013-04-15 | 2013-05-10 | HCMEB4Z1350 FS+90d | 58.88d | 15d | HCRA - Global | EFFORT [20 h]; Mechnical Skilled Labours [30 h] | 712.5 | B5 | 22 | MEP | C | MEP |
|  | 1 | **Zone 2** |  |  | 2012-10-07 | 2014-01-01 |  |  |  |  |  |  |  |  |  |  |  |
|  | 7 | **Drainage** |  |  | 2012-10-15 | 2013-05-10 |  |  |  |  |  |  |  |  |  |  |  |
| HCMEB4Z2035 |  | B4 Z2 :All Vertical Piping Works |  | 10d | 2012-10-15 | 2012-10-26 | HCMEB4Z1030 SS | 78.88d | 0d | HCRA - Global | EFFORT [10 h]; Mechnical Skilled Labours [15 h] | 356.25 | B5 | 22 | MEP | C | MEP |
| HCMEB4Z2045 |  | B4 Z2 :All Horizantal Piping Works |  | 30d | 2012-10-29 | 2012-12-07 | HCMEB4Z2035 | 78.88d | 0d | HCRA - Global | EFFORT [30 h]; Mechnical Skilled Labours [45 h] | 1,068.75 | B5 | 22 | MEP | C | MEP |
| HCMEB4Z2055 |  | B4 Z2 :Mechanical Final Fix |  | 20d | 2013-04-15 | 2013-05-10 | HCMEB4Z2045 FS+90d | 78.88d | 15d | HCRA - Global | EFFORT [20 h]; Mechnical Skilled Labours [30 h] | 712.5 | B5 | 22 | MEP | C | MEP |
|  | 020 | **Electrical Works** |  |  | 2012-10-07 | 2014-01-01 |  |  |  |  |  |  |  |  |  |  |  |
| HCMEB4Z2125 |  | B4 Z2 :Blocks Start Date for All Parts | milestone | 0d | 2012-10-07 | 2012-10-07 | HCFWB4Z2000 | 224.12d | 0.12d | HCRA - 1 - Normal Calendar |  |  | B5 | 26 | MEP | C | MEP |
| HCMEB4Z2185 |  | B4 Z2 :Electrical Coduits & Boards F.F for All Systems |  | 12d | 2012-10-08 | 2012-10-23 | HCMEB4Z2125, HCSWSSZ2240 | 189.88d | 61.88d | HCRA - Global | EFFORT [12 h]; Electrical Skilled Labours [24 h] | 450 | B5 | 26 | MEP | C | MEP |
| HCMEB4Z2145 |  | B4 Z2 :Plastering Finish Date for All Parts | milestone | 0d | 2012-11-17 | 2012-11-17 | HCFWB4Z2007 | 265.38d | 111.38d | HCRA - 1 - Normal Calendar |  |  | B5 | 26 | MEP | C | MEP |
| HCMEB4Z2135 |  | B4 Z2 :Tiling Finish Date for All Parts | milestone | 0d | 2013-02-27 | 2013-02-27 | HCFWB4Z2005 | 83.25d | 51.38d | HCRA - 1 - Normal Calendar |  |  | B5 | 26 | MEP | C | MEP |
| HCMEB4Z2195 |  | B4 Z2 :Electrical Boards Seconed Fix |  | 12d | 2013-03-28 | 2013-04-15 | HCMEB4Z2185 FS+50d, HCMEB4Z2145, HEPSAME1310 | 128d | 0d | HCRA - Global | EFFORT [12 h]; Electrical Skilled Labours [24 h] | 450 | B5 | 26 | MEP | C | MEP |
| HCMEB4Z2215 |  | B4 Z2 :Electrcial Wiring |  | 20d | 2013-04-29 | 2013-05-24 | HCMEB4Z2135, HEPSAME1440 | 26.88d | 0d | HCRA - Global | EFFORT [20 h]; Electrical Skilled Labours [40 h] | 750 | B5 | 26 | MEP | C | MEP |
| HCMEB4Z2205 |  | B4 Z2 :Cable Tray Installation |  | 10d | 2013-09-25 | 2013-10-09 | HCMEB4Z2145, HCMEB4Z2145 FF, HEPSAME1300 | 11d | 0d | HCRA - Global | EFFORT [10 h]; Electrical Skilled Labours [20 h] | 375 | B5 | 26 | MEP | C | MEP |
| HCMEB4Z2225 |  | B4 Z2 :Cable Laying |  | 10d | 2013-10-09 | 2013-10-23 | HCMEB4Z2205, HEPSAME1290 | 11d | 0d | HCRA - Global | EFFORT [10 h]; Electrical Skilled Labours [20 h] | 375 | B5 | 26 | MEP | C | MEP |
| HCMEB4Z2155 |  | B4 Z2 :Gypsum Boards Finish Date for All Parts | milestone | 0d | 2013-10-22 | 2013-10-22 | HCFWB4Z2018 | 180d | 48d | HCRA - 1 - Normal Calendar |  |  | B5 | 26 | MEP | C | MEP |
| HCMEB4Z2235 |  | B4 Z2 :Electrical Final Fix for All Systems & Boards (Vertical Elements) |  | 10d | 2013-12-04 | 2013-12-18 | HCMEB4Z2225 FS+30d, HCMEB4Z2215 FS+22d, HCMEB4Z2195 FS+30d, HCMEB4Z2145 FS+60d | 111d | 0d | HCRA - Global | EFFORT [10 h]; Electrical Skilled Labours [20 h] | 375 | B5 | 26 | MEP | C | MEP |
| HCMEB4Z2245 |  | B4 Z2 :Electrical Final Fix for All Systems (Horizantel Elements) |  | 10d | 2013-12-18 | 2014-01-01 | HCMEB4Z2235, HCMEB4Z2215, HCMEB4Z2155 | 111d | 14d | HCRA - Global | EFFORT [10 h]; Electrical Skilled Labours [20 h] | 375 | B5 | 26 | MEP | C | MEP |

| ID | WBS | Activity | Type | Duration | Start | Finish | Predecessors | Total float | Free float | Calendar | Resources | Cost | Bill No. | Division No. | Responsibility | Phase Code | Trade |
| --- | --- | --- | --- | --- | --- | --- | --- | --- | --- | --- | --- | --- | --- | --- | --- | --- | --- |
|  | 2 | **Fire Fighting** |  |  | 2012-10-08 | 2013-11-18 |  |  |  |  |  |  |  |  |  |  |  |
| HCMEB4Z2065 |  | B4 Z2 :Horizontal F.F Piping Work |  | 20d | 2012-10-08 | 2012-11-02 | HCMEB4Z2125 | 223.88d | 0d | HCRA - Global | EFFORT [20 h]; Mechnical Skilled Labours [30 h] | 712.5 | B5 | 21 | MEP | C | MEP |
| HCMEB4Z2075 |  | B4 Z2 :Fire Hose Cabinets |  | 10d | 2012-11-05 | 2012-11-16 | HCMEB4Z2065 | 223.88d | 180.88d | HCRA - Global | EFFORT [10 h]; Mechnical Skilled Labours [15 h] | 356.25 | B5 | 21 | MEP | C | MEP |
| HCMEB4Z2085 |  | B4 Z2 :Sprinklers Final Fix |  | 10d | 2013-11-04 | 2013-11-18 | HCMEB4Z2075 FS+70d, HEPSAME1050 | 43d | 0d | HCRA - Global | EFFORT [10 h]; Mechnical Skilled Labours [15 h] | 356.25 | B5 | 21 | MEP | C | MEP |
|  | 1 | **Air Conditioning** |  |  | 2013-07-11 | 2013-12-26 |  |  |  |  |  |  |  |  |  |  |  |
| HCMEB4Z2295 |  | B4 Z2 :Duct Installation& Dusct Accecories Installation, Fan coil Unit |  | 8d | 2013-07-11 | 2013-07-23 | HCMEB4Z2125, HEPSAME1130 | 15.12d | 0d | HCRA - Global | EFFORT [20 h]; Mechnical Skilled Labours [30 h] | 712.5 | B5 | 23 | MEP | C | MEP |
| HCMEB4Z2305 |  | B4 Z2 :Duct Insulation Work |  | 15d | 2013-07-23 | 2013-08-13 | HCMEB4Z2295 | 15.12d | 0d | HCRA - Global | EFFORT [15 h]; Mechnical Skilled Labours [22.5 h] | 534.38 | B5 | 23 | MEP | C | MEP |
| HCMEB4Z2315 |  | B4 Z2 :Exhaust Fans |  | 15d | 2013-08-13 | 2013-09-03 | HCMEB4Z2305 | 15.12d | 12d | HCRA - Global | EFFORT [15 h]; Mechnical Skilled Labours [22.5 h] | 534.38 | B5 | 23 | MEP | C | MEP |
| HCMEB4Z2325 |  | B4 Z2 :Grills & Diffusers |  | 10d | 2013-11-28 | 2013-12-12 | HCMEB4Z2315 FS+50d, HEPSAME1170, HEPSAME1160 | 3.12d | 0d | HCRA - Global | EFFORT [10 h]; Mechnical Skilled Labours [15 h] | 356.25 | B5 | 23 | MEP | C | MEP |
| HCMEB4Z2335 |  | B4 Z2 :Mechanical final Fix |  | 10d | 2013-12-12 | 2013-12-26 | HCMEB4Z2325 | 3.12d | 0d | HCRA - Global | EFFORT [10 h]; Mechnical Skilled Labours [15 h] | 356.25 | B5 | 23 | MEP | C | MEP |
|  | 3 | **Water Network** |  |  | 2012-10-15 | 2013-05-10 |  |  |  |  |  |  |  |  |  |  |  |
| HCMEB4Z2345 |  | B4 Z2 :All Vertical Piping Works |  | 10d | 2012-10-15 | 2012-10-26 | HCMEB4Z2035 SS | 78.88d | 0d | HCRA - Global | EFFORT [10 h]; Mechnical Skilled Labours [15 h] | 356.25 | B5 | 22 | MEP | C | MEP |
| HCMEB4Z2355 |  | B4 Z2 :All Horizantal Piping Works |  | 30d | 2012-10-29 | 2012-12-07 | HCMEB4Z2345 | 78.88d | 0d | HCRA - Global | EFFORT [30 h]; Mechnical Skilled Labours [45 h] | 1,068.75 | B5 | 22 | MEP | C | MEP |
| HCMEB4Z2365 |  | B4 Z2 :Mechanical Final Fix |  | 20d | 2013-04-15 | 2013-05-10 | HCMEB4Z2355 FS+90d | 78.88d | 15d | HCRA - Global | EFFORT [20 h]; Mechnical Skilled Labours [30 h] | 712.5 | B5 | 22 | MEP | C | MEP |
|  | 2 | **Zone 3** |  |  | 2012-10-15 | 2014-01-21 |  |  |  |  |  |  |  |  |  |  |  |
|  | 7 | **Drainage** |  |  | 2012-10-15 | 2013-05-10 |  |  |  |  |  |  |  |  |  |  |  |
| HCMEB4Z3040 |  | B4 Z3 :All Vertical Piping Works |  | 10d | 2012-10-15 | 2012-10-26 | HCMEB4Z2035 SS | 78.88d | 0d | HCRA - Global | EFFORT [10 h]; Mechnical Skilled Labours [15 h] | 356.25 | B5 | 22 | MEP | C | MEP |
| HCMEB4Z3050 |  | B4 Z3 :All Horizantal Piping Works |  | 30d | 2012-10-29 | 2012-12-07 | HCMEB4Z3040 | 78.88d | 0d | HCRA - Global | EFFORT [30 h]; Mechnical Skilled Labours [45 h] | 1,068.75 | B5 | 22 | MEP | C | MEP |
| HCMEB4Z3060 |  | B4 Z3 :Mechanical Final Fix |  | 20d | 2013-04-15 | 2013-05-10 | HCMEB4Z3050 FS+90d | 78.88d | 15d | HCRA - Global | EFFORT [20 h]; Mechnical Skilled Labours [30 h] | 712.5 | B5 | 22 | MEP | C | MEP |
|  | 020 | **Electrical Works** |  |  | 2012-10-31 | 2014-01-21 |  |  |  |  |  |  |  |  |  |  |  |
| HCMEB4Z3130 |  | B4 Z3 :Blocks Start Date for All Parts | milestone | 0d | 2012-10-31 | 2012-10-31 | HCFWB4Z3009 | 219d | 0d | HCRA - 1 - Normal Calendar |  |  | B5 | 26 | MEP | C | MEP |
| HCMEB4Z3190 |  | B4 Z3 :Electrical Coduits & Boards F.F for All Systems |  | 12d | 2012-10-31 | 2012-11-16 | HCMEB4Z3130 | 184d | 44d | HCRA - Global | EFFORT [12 h]; Electrical Skilled Labours [24 h] | 450 | B5 | 26 | MEP | C | MEP |
| HCMEB4Z3150 |  | B4 Z3 :Plastering Finish Date for All Parts | milestone | 0d | 2013-01-14 | 2013-01-14 | HCFWB4Z3012 | 231.62d | 63.62d | HCRA - 1 - Normal Calendar |  |  | B5 | 26 | MEP | C | MEP |
| HCMEB4Z3200 |  | B4 Z3 :Electrical Boards Seconed Fix |  | 12d | 2013-03-28 | 2013-04-15 | HCMEB4Z3190 FS+50d, HCMEB4Z3150, HEPSAME1310 | 140d | 0d | HCRA - Global | EFFORT [12 h]; Electrical Skilled Labours [24 h] | 450 | B5 | 26 | MEP | C | MEP |
| HCMEB4Z3210 |  | B4 Z3 :Cable Tray Installation |  | 10d | 2013-09-25 | 2013-10-09 | HCMEB4Z3150, HCMEB4Z2145, HEPSAME1300 | 21d | 0d | HCRA - Global | EFFORT [10 h]; Electrical Skilled Labours [20 h] | 375 | B5 | 26 | MEP | C | MEP |
| HCMEB4Z3230 |  | B4 Z3 :Cable Laying |  | 10d | 2013-10-09 | 2013-10-23 | HCMEB4Z3210, HEPSAME1290 | 21d | 0d | HCRA - Global | EFFORT [10 h]; Electrical Skilled Labours [20 h] | 375 | B5 | 26 | MEP | C | MEP |
| HCMEB4Z3160 |  | B4 Z3 :Gypsum Boards Finish Date for All Parts | milestone | 0d | 2013-10-22 | 2013-10-22 | HCFWB4Z3021 | 180d | 64d | HCRA - 1 - Normal Calendar |  |  | B5 | 26 | MEP | C | MEP |
| HCMEB4Z3140 |  | B4 Z3 :Tiling Finish Date for All Parts | milestone | 0d | 2013-11-12 | 2013-11-12 | HCFWB4Z3007 | 42d | 0d | HCRA - 1 - Normal Calendar |  |  | B5 | 26 | MEP | C | MEP |
| HCMEB4Z3220 |  | B4 Z3 :Electrcial Wiring |  | 8d | 2013-11-12 | 2013-11-22 | HCMEB4Z3140, HEPSAME1440 | 37d | 0d | HCRA - Global | EFFORT [20 h]; Electrical Skilled Labours [40 h] | 750 | B5 | 26 | MEP | C | MEP |
| HCMEB4Z3240 |  | B4 Z3 :Electrical Final Fix for All Systems & Boards (Vertical Elements) |  | 10d | 2013-12-24 | 2014-01-07 | HCMEB4Z3230 FS+30d, HCMEB4Z3220 FS+22d, HCMEB4Z3200 FS+30d, HCMEB4Z3150 FS+60d | 97d | 0d | HCRA - Global | EFFORT [10 h]; Electrical Skilled Labours [20 h] | 375 | B5 | 26 | MEP | C | MEP |
| HCMEB4Z3250 |  | B4 Z3 :Electrical Final Fix for All Systems (Horizantel Elements) |  | 10d | 2014-01-07 | 2014-01-21 | HCMEB4Z3240, HCMEB4Z3220, HCMEB4Z3160 | 97d | 0d | HCRA - Global | EFFORT [10 h]; Electrical Skilled Labours [20 h] | 375 | B5 | 26 | MEP | C | MEP |

| ID | WBS | Activity | Type | Duration | Start | Finish | Predecessors | Total float | Free float | Calendar | Resources | Cost | Bill No. | Division No. | Responsibility | Phase Code | Trade |
| --- | --- | --- | --- | --- | --- | --- | --- | --- | --- | --- | --- | --- | --- | --- | --- | --- | --- |
|  | 2 | **Fire Fighting** |  |  | 2012-10-31 | 2013-11-18 |  |  |  |  |  |  |  |  |  |  |  |
| HCMEB4Z3070 |  | B4 Z3 :Horizontal F.F Piping Work |  | 20d | 2012-10-31 | 2012-11-28 | HCMEB4Z3130 | 206d | 0d | HCRA - Global | EFFORT [20 h]; Mechnical Skilled Labours [30 h] | 712.5 | B5 | 21 | MEP | C | MEP |
| HCMEB4Z3080 |  | B4 Z3 :Fire Hose Cabinets |  | 10d | 2012-11-28 | 2012-12-12 | HCMEB4Z3070 | 206d | 163d | HCRA - Global | EFFORT [10 h]; Mechnical Skilled Labours [15 h] | 356.25 | B5 | 21 | MEP | C | MEP |
| HCMEB4Z3090 |  | B4 Z3 :Sprinklers Final Fix |  | 10d | 2013-11-04 | 2013-11-18 | HCMEB4Z3080 FS+70d, HEPSAME1050 | 43d | 0d | HCRA - Global | EFFORT [10 h]; Mechnical Skilled Labours [15 h] | 356.25 | B5 | 21 | MEP | C | MEP |
|  | 1 | **Air Conditioning** |  |  | 2013-07-11 | 2013-12-26 |  |  |  |  |  |  |  |  |  |  |  |
| HCMEB4Z3300 |  | B4 Z3 :Duct Installation& Dusct Accecories Installation, Fan coil Unit |  | 10d | 2013-07-11 | 2013-07-25 | HCMEB4Z3130, HEPSAME1130 | 25d | 0d | HCRA - Global | EFFORT [20 h]; Mechnical Skilled Labours [30 h] | 712.5 | B5 | 23 | MEP | C | MEP |
| HCMEB4Z3310 |  | B4 Z3 :Duct Insulation Work |  | 15d | 2013-07-25 | 2013-08-15 | HCMEB4Z3300 | 25d | 0d | HCRA - Global | EFFORT [15 h]; Mechnical Skilled Labours [22.5 h] | 534.38 | B5 | 23 | MEP | C | MEP |
| HCMEB4Z3320 |  | B4 Z3 :Exhaust Fans |  | 15d | 2013-08-15 | 2013-09-05 | HCMEB4Z3310 | 25d | 10d | HCRA - Global | EFFORT [15 h]; Mechnical Skilled Labours [22.5 h] | 534.38 | B5 | 23 | MEP | C | MEP |
| HCMEB4Z3330 |  | B4 Z3 :Grills & Diffusers |  | 10d | 2013-11-28 | 2013-12-12 | HCMEB4Z3320 FS+50d, HEPSAME1170, HEPSAME1160 | 15d | 0d | HCRA - Global | EFFORT [10 h]; Mechnical Skilled Labours [15 h] | 356.25 | B5 | 23 | MEP | C | MEP |
| HCMEB4Z3340 |  | B4 Z3 :Mechanical final Fix |  | 10d | 2013-12-12 | 2013-12-26 | HCMEB4Z3330 | 15d | 0d | HCRA - Global | EFFORT [10 h]; Mechnical Skilled Labours [15 h] | 356.25 | B5 | 23 | MEP | C | MEP |
|  | 3 | **Water Network** |  |  | 2012-10-15 | 2013-05-10 |  |  |  |  |  |  |  |  |  |  |  |
| HCMEB4Z3350 |  | B4 Z3 :All Vertical Piping Works |  | 10d | 2012-10-15 | 2012-10-26 | HCMEB4Z3040 SS | 78.88d | 0d | HCRA - Global | EFFORT [10 h]; Mechnical Skilled Labours [15 h] | 356.25 | B5 | 22 | MEP | C | MEP |
| HCMEB4Z3360 |  | B4 Z3 :All Horizantal Piping Works |  | 30d | 2012-10-29 | 2012-12-07 | HCMEB4Z3350 | 78.88d | 0d | HCRA - Global | EFFORT [30 h]; Mechnical Skilled Labours [45 h] | 1,068.75 | B5 | 22 | MEP | C | MEP |
| HCMEB4Z3370 |  | B4 Z3 :Mechanical Final Fix |  | 20d | 2013-04-15 | 2013-05-10 | HCMEB4Z3360 FS+90d | 78.88d | 15d | HCRA - Global | EFFORT [20 h]; Mechnical Skilled Labours [30 h] | 712.5 | B5 | 22 | MEP | C | MEP |
|  | 4 | **Conveying System** |  |  |  |  |  |  |  |  |  |  |  |  |  |  |  |
|  | 3 | **Zone 4** |  |  | 2012-10-15 | 2014-01-01 |  |  |  |  |  |  |  |  |  |  |  |
|  | 7 | **Drainage** |  |  | 2012-10-15 | 2013-05-10 |  |  |  |  |  |  |  |  |  |  |  |
| HCMEB4Z4045 |  | B4 Z4 :All Vertical Piping Works |  | 10d | 2012-10-15 | 2012-10-26 | HCMEB4Z3040 SS | 138.88d | 0d | HCRA - Global | EFFORT [10 h]; Mechnical Skilled Labours [15 h] | 356.25 | B5 | 22 | MEP | C | MEP |
| HCMEB4Z4055 |  | B4 Z4 :All Horizantal Piping Works |  | 30d | 2012-10-29 | 2012-12-07 | HCMEB4Z4045 | 158.88d | 0d | HCRA - Global | EFFORT [30 h]; Mechnical Skilled Labours [45 h] | 1,068.75 | B5 | 22 | MEP | C | MEP |
| HCMEB4Z4065 |  | B4 Z4 :Mechanical Final Fix |  | 20d | 2013-04-15 | 2013-05-10 | HCMEB4Z4055 FS+90d | 158.88d | 15d | HCRA - Global | EFFORT [20 h]; Mechnical Skilled Labours [30 h] | 712.5 | B5 | 22 | MEP | C | MEP |
|  | 020 | **Electrical Works** |  |  | 2012-11-07 | 2014-01-01 |  |  |  |  |  |  |  |  |  |  |  |
| HCMEB4Z4135 |  | B4 Z4 :Blocks Start Date for All Parts | milestone | 0d | 2012-11-07 | 2012-11-07 | HCFWB4Z4007 | 254d | 0d | HCRA - 1 - Normal Calendar |  |  | B5 | 26 | MEP | C | MEP |
| HCMEB4Z4195 |  | B4 Z4 :Electrical Coduits & Boards F.F for All Systems |  | 12d | 2012-11-07 | 2012-11-23 | HCMEB4Z4135 | 215d | 39d | HCRA - Global | EFFORT [12 h]; Electrical Skilled Labours [24 h] | 450 | B5 | 26 | MEP | C | MEP |
| HCMEB4Z4155 |  | B4 Z4 :Plastering Finish Date for All Parts | milestone | 0d | 2013-01-14 | 2013-01-14 | HCFWB4Z4010 | 217d | 63d | HCRA - 1 - Normal Calendar |  |  | B5 | 26 | MEP | C | MEP |
| HCMEB4Z4205 |  | B4 Z4 :Electrical Boards Seconed Fix |  | 12d | 2013-03-28 | 2013-04-15 | HCMEB4Z4195 FS+50d, HCMEB4Z4155, HEPSAME1310 | 176d | 0d | HCRA - Global | EFFORT [12 h]; Electrical Skilled Labours [24 h] | 450 | B5 | 26 | MEP | C | MEP |
| HCMEB4Z4145 |  | B4 Z4 :Tiling Finish Date for All Parts | milestone | 0d | 2013-04-03 | 2013-04-03 | HCFWB4Z4005, HCMEB4Z4155 | 149.62d | 21.75d | HCRA - 1 - Normal Calendar |  |  | B5 | 26 | MEP | C | MEP |
| HCMEB4Z4225 |  | B4 Z4 :Electrcial Wiring |  | 20d | 2013-04-29 | 2013-05-24 | HCMEB4Z4145, HEPSAME1440, HCMEB4Z4155 | 106.88d | 0d | HCRA - Global | EFFORT [20 h]; Electrical Skilled Labours [40 h] | 750 | B5 | 26 | MEP | C | MEP |
| HCMEB4Z4215 |  | B4 Z4 :Cable Tray Installation |  | 10d | 2013-09-25 | 2013-10-09 | HCMEB4Z4155, HCMEB4Z2145, HEPSAME1300 | 45d | 0d | HCRA - Global | EFFORT [10 h]; Electrical Skilled Labours [20 h] | 375 | B5 | 26 | MEP | C | MEP |
| HCMEB4Z4235 |  | B4 Z4 :Cable Laying |  | 10d | 2013-10-09 | 2013-10-23 | HCMEB4Z4215, HEPSAME1290 | 45d | 0d | HCRA - Global | EFFORT [10 h]; Electrical Skilled Labours [20 h] | 375 | B5 | 26 | MEP | C | MEP |
| HCMEB4Z4165 |  | B4 Z4 :Gypsum Boards Finish Date for All Parts | milestone | 0d | 2013-10-22 | 2013-10-22 | HCFWB4Z4018 | 180d | 48d | HCRA - 1 - Normal Calendar |  |  | B5 | 26 | MEP | C | MEP |
| HCMEB4Z4245 |  | B4 Z4 :Electrical Final Fix for All Systems & Boards (Vertical Elements) |  | 10d | 2013-12-04 | 2013-12-18 | HCMEB4Z4235 FS+30d, HCMEB4Z4225 FS+22d, HCMEB4Z4205 FS+30d, HCMEB4Z4155 FS+60d | 111d | 0d | HCRA - Global | EFFORT [10 h]; Electrical Skilled Labours [20 h] | 375 | B5 | 26 | MEP | C | MEP |
| HCMEB4Z4255 |  | B4 Z4 :Electrical Final Fix for All Systems (Horizantel Elements) |  | 10d | 2013-12-18 | 2014-01-01 | HCMEB4Z4245, HCMEB4Z4225, HCMEB4Z4165 | 111d | 14d | HCRA - Global | EFFORT [10 h]; Electrical Skilled Labours [20 h] | 375 | B5 | 26 | MEP | C | MEP |

| ID | WBS | Activity | Type | Duration | Start | Finish | Predecessors | Total float | Free float | Calendar | Resources | Cost | Bill No. | Division No. | Responsibility | Phase Code | Trade |
| --- | --- | --- | --- | --- | --- | --- | --- | --- | --- | --- | --- | --- | --- | --- | --- | --- | --- |
|  | 2 | **Fire Fighting** |  |  | 2012-11-07 | 2013-11-18 |  |  |  |  |  |  |  |  |  |  |  |
| HCMEB4Z4075 |  | B4 Z4 :Horizontal F.F Piping Work |  | 20d | 2012-11-07 | 2012-12-05 | HCMEB4Z4135 | 241d | 0d | HCRA - Global | EFFORT [20 h]; Mechnical Skilled Labours [30 h] | 712.5 | B5 | 21 | MEP | C | MEP |
| HCMEB4Z4085 |  | B4 Z4 :Fire Hose Cabinets |  | 10d | 2012-12-05 | 2012-12-19 | HCMEB4Z4075 | 241d | 158d | HCRA - Global | EFFORT [10 h]; Mechnical Skilled Labours [15 h] | 356.25 | B5 | 21 | MEP | C | MEP |
| HCMEB4Z4095 |  | B4 Z4 :Sprinklers Final Fix |  | 10d | 2013-11-04 | 2013-11-18 | HCMEB4Z4085 FS+70d, HEPSAME1050 | 83d | 0d | HCRA - Global | EFFORT [10 h]; Mechnical Skilled Labours [15 h] | 356.25 | B5 | 21 | MEP | C | MEP |
|  | 1 | **Air Conditioning** |  |  | 2013-07-11 | 2013-12-26 |  |  |  |  |  |  |  |  |  |  |  |
| HCMEB4Z4305 |  | B4 Z4 :Duct Installation& Dusct Accecories Installation, Fan coil Unit |  | 14d | 2013-07-11 | 2013-07-31 | HCMEB4Z4135, HEPSAME1130 | 37d | 0d | HCRA - Global | EFFORT [20 h]; Mechnical Skilled Labours [30 h] | 712.5 | B5 | 23 | MEP | C | MEP |
| HCMEB4Z4315 |  | B4 Z4 :Duct Insulation Work |  | 15d | 2013-07-31 | 2013-08-21 | HCMEB4Z4305 | 61d | 0d | HCRA - Global | EFFORT [15 h]; Mechnical Skilled Labours [22.5 h] | 534.38 | B5 | 23 | MEP | C | MEP |
| HCMEB4Z4325 |  | B4 Z4 :Exhaust Fans |  | 15d | 2013-08-21 | 2013-09-11 | HCMEB4Z4315 | 61d | 6d | HCRA - Global | EFFORT [15 h]; Mechnical Skilled Labours [22.5 h] | 534.38 | B5 | 23 | MEP | C | MEP |
| HCMEB4Z4335 |  | B4 Z4 :Grills & Diffusers |  | 10d | 2013-11-28 | 2013-12-12 | HCMEB4Z4325 FS+50d, HEPSAME1170, HEPSAME1160 | 55d | 0d | HCRA - Global | EFFORT [10 h]; Mechnical Skilled Labours [15 h] | 356.25 | B5 | 23 | MEP | C | MEP |
| HCMEB4Z4345 |  | B4 Z4 :Mechanical final Fix |  | 10d | 2013-12-12 | 2013-12-26 | HCMEB4Z4335 | 55d | 0d | HCRA - Global | EFFORT [10 h]; Mechnical Skilled Labours [15 h] | 356.25 | B5 | 23 | MEP | C | MEP |
|  | 3 | **Water Network** |  |  | 2012-10-15 | 2013-05-10 |  |  |  |  |  |  |  |  |  |  |  |
| HCMEB4Z4355 |  | B4 Z4 :All Vertical Piping Works |  | 10d | 2012-10-15 | 2012-10-26 | HCMEB4Z4045 SS | 158.88d | 0d | HCRA - Global | EFFORT [10 h]; Mechnical Skilled Labours [15 h] | 356.25 | B5 | 22 | MEP | C | MEP |
| HCMEB4Z4365 |  | B4 Z4 :All Horizantal Piping Works |  | 30d | 2012-10-29 | 2012-12-07 | HCMEB4Z4355 | 158.88d | 0d | HCRA - Global | EFFORT [30 h]; Mechnical Skilled Labours [45 h] | 1,068.75 | B5 | 22 | MEP | C | MEP |
| HCMEB4Z4375 |  | B4 Z4 :Mechanical Final Fix |  | 20d | 2013-04-15 | 2013-05-10 | HCMEB4Z4365 FS+90d | 158.88d | 15d | HCRA - Global | EFFORT [20 h]; Mechnical Skilled Labours [30 h] | 712.5 | B5 | 22 | MEP | C | MEP |
|  | 5 | **Zone 5** |  |  | 2012-09-24 | 2014-01-01 |  |  |  |  |  |  |  |  |  |  |  |
| HCMEB4Z5290 |  | B4 Z4 :SOG Steel Work Finish Date | milestone | 0d | 2012-09-24 | 2012-09-24 | HCSWSSZ5240 | 288d | 0d | HCRA - 1 - Normal Calendar |  |  | B5 |  | MEP | C | MEP |
| HCMEB4Z5300 |  | B4 Z4 :Electrical First Fix (Conducting) |  | 6d | 2012-09-24 | 2012-10-01 | HCMEB4Z5290 | 288d | 58.12d | HCRA - 1 - Normal Calendar | EFFORT [6 h]; Electrical Skilled Labours [12 h] | 225 | B5 |  | MEP | C | MEP |
|  | 7 | **Drainage** |  |  | 2012-10-15 | 2013-05-10 |  |  |  |  |  |  |  |  |  |  |  |
| HCMEB4Z5050 |  | B4 Z4 :All Vertical Piping Works |  | 10d | 2012-10-15 | 2012-10-26 | HCMEB4Z4045 SS | 138.88d | 0d | HCRA - Global | EFFORT [10 h]; Mechnical Skilled Labours [15 h] | 356.25 | B5 | 22 | MEP | C | MEP |
| HCMEB4Z5060 |  | B4 Z4 :All Horizantal Piping Works |  | 30d | 2012-10-29 | 2012-12-07 | HCMEB4Z5050 | 147d | 0d | HCRA - Global | EFFORT [30 h]; Mechnical Skilled Labours [45 h] | 1,068.75 | B5 | 22 | MEP | C | MEP |
| HCMEB4Z5070 |  | B4 Z4 :Mechanical Final Fix |  | 20d | 2013-04-15 | 2013-05-10 | HCMEB4Z5060 FS+90d | 147d | 15d | HCRA - Global | EFFORT [20 h]; Mechnical Skilled Labours [30 h] | 712.5 | B5 | 22 | MEP | C | MEP |
|  | 020 | **Electrical Works** |  |  | 2012-12-09 | 2014-01-01 |  |  |  |  |  |  |  |  |  |  |  |
| HCMEB4Z5140 |  | B4 Z4 :Blocks Start Date for All Parts | milestone | 0d | 2012-12-09 | 2012-12-09 | HCFWB4Z5012 | 228d | 0.12d | HCRA - 1 - Normal Calendar |  |  | B5 | 26 | MEP | C | MEP |
| HCMEB4Z5200 |  | B4 Z4 :Electrical Coduits & Boards F.F for All Systems |  | 12d | 2012-12-10 | 2012-12-25 | HCMEB4Z5140, HCMEB4Z5300 | 192.88d | 16.88d | HCRA - Global | EFFORT [12 h]; Electrical Skilled Labours [24 h] | 450 | B5 | 26 | MEP | C | MEP |
| HCMEB4Z5160 |  | B4 Z4 :Plastering Finish Date for All Parts | milestone | 0d | 2013-01-14 | 2013-01-14 | HCFWB4Z5009 | 246d | 60.62d | HCRA - 1 - Normal Calendar |  |  | B5 | 26 | MEP | C | MEP |
| HCMEB4Z5150 |  | B4 Z4 :Tiling Finish Date for All Parts | milestone | 0d | 2013-03-26 | 2013-03-26 | HCFWB4Z5005, HCMEB4Z5160 | 185.38d | 28.5d | HCRA - 1 - Normal Calendar |  |  | B5 | 26 | MEP | C | MEP |
| HCMEB4Z5210 |  | B4 Z4 :Electrical Boards Seconed Fix |  | 12d | 2013-03-28 | 2013-04-15 | HCMEB4Z5200 FS+50d, HCMEB4Z5160, HEPSAME1310 | 176d | 0d | HCRA - Global | EFFORT [12 h]; Electrical Skilled Labours [24 h] | 450 | B5 | 26 | MEP | C | MEP |
| HCMEB4Z5230 |  | B4 Z4 :Electrcial Wiring |  | 20d | 2013-04-29 | 2013-05-24 | HCMEB4Z5150, HEPSAME1440, HCMEB4Z5150 FF | 130.88d | 20.5d | HCRA - Global | EFFORT [20 h]; Electrical Skilled Labours [40 h] | 750 | B5 | 26 | MEP | C | MEP |
| HCMEB4Z5220 |  | B4 Z4 :Cable Tray Installation |  | 10d | 2013-09-25 | 2013-10-09 | HCMEB4Z5160, HCMEB4Z2145, HEPSAME1300 | 45d | 0d | HCRA - Global | EFFORT [10 h]; Electrical Skilled Labours [20 h] | 375 | B5 | 26 | MEP | C | MEP |
| HCMEB4Z5240 |  | B4 Z4 :Cable Laying |  | 10d | 2013-10-09 | 2013-10-23 | HCMEB4Z5220, HEPSAME1290 | 45d | 0d | HCRA - Global | EFFORT [10 h]; Electrical Skilled Labours [20 h] | 375 | B5 | 26 | MEP | C | MEP |
| HCMEB4Z5250 |  | B4 Z4 :Electrical Final Fix for All Systems & Boards (Vertical Elements) |  | 10d | 2013-12-04 | 2013-12-18 | HCMEB4Z5240 FS+30d, HCMEB4Z5230 FS+22d, HCMEB4Z5210 FS+30d, HCMEB4Z5160 FS+60d | 111d | 0d | HCRA - Global | EFFORT [10 h]; Electrical Skilled Labours [20 h] | 375 | B5 | 26 | MEP | C | MEP |
| HCMEB4Z5260 |  | B4 Z4 :Electrical Final Fix for All Systems (Horizantel Elements) |  | 10d | 2013-12-18 | 2014-01-01 | HCMEB4Z5250, HCMEB4Z5230 | 111d | 14d | HCRA - Global | EFFORT [10 h]; Electrical Skilled Labours [20 h] | 375 | B5 | 26 | MEP | C | MEP |

| ID | WBS | Activity | Type | Duration | Start | Finish | Predecessors | Total float | Free float | Calendar | Resources | Cost | Bill No. | Division No. | Responsibility | Phase Code | Trade |
| --- | --- | --- | --- | --- | --- | --- | --- | --- | --- | --- | --- | --- | --- | --- | --- | --- | --- |
|  | 2 | **Fire Fighting** |  |  | 2012-12-10 | 2013-11-18 |  |  |  |  |  |  |  |  |  |  |  |
| HCMEB4Z5080 |  | B4 Z4 :Horizontal F.F Piping Work |  | 20d | 2012-12-10 | 2013-01-04 | HCMEB4Z5140 | 218.88d | 0d | HCRA - Global | EFFORT [20 h]; Mechnical Skilled Labours [30 h] | 712.5 | B5 | 21 | MEP | C | MEP |
| HCMEB4Z5090 |  | B4 Z4 :Fire Hose Cabinets |  | 10d | 2013-01-07 | 2013-01-18 | HCMEB4Z5080 | 218.88d | 135.88d | HCRA - Global | EFFORT [10 h]; Mechnical Skilled Labours [15 h] | 356.25 | B5 | 21 | MEP | C | MEP |
| HCMEB4Z5100 |  | B4 Z4 :Sprinklers Final Fix |  | 10d | 2013-11-04 | 2013-11-18 | HCMEB4Z5090 FS+70d, HEPSAME1050 | 83d | 0d | HCRA - Global | EFFORT [10 h]; Mechnical Skilled Labours [15 h] | 356.25 | B5 | 21 | MEP | C | MEP |
|  | 1 | **Air Conditioning** |  |  | 2013-07-11 | 2013-12-26 |  |  |  |  |  |  |  |  |  |  |  |
| HCMEB4Z5310 |  | B4 Z4 :Duct Installation& Dusct Accecories Installation, Fan coil Unit |  | 14d | 2013-07-11 | 2013-07-31 | HCMEB4Z5140, HEPSAME1130 | 37d | 0d | HCRA - Global | EFFORT [20 h]; Mechnical Skilled Labours [30 h] | 712.5 | B5 | 23 | MEP | C | MEP |
| HCMEB4Z5320 |  | B4 Z4 :Duct Insulation Work |  | 15d | 2013-07-31 | 2013-08-21 | HCMEB4Z5310 | 61d | 0d | HCRA - Global | EFFORT [15 h]; Mechnical Skilled Labours [22.5 h] | 534.38 | B5 | 23 | MEP | C | MEP |
| HCMEB4Z5330 |  | B4 Z4 :Exhaust Fans |  | 15d | 2013-08-21 | 2013-09-11 | HCMEB4Z5320 | 61d | 6d | HCRA - Global | EFFORT [15 h]; Mechnical Skilled Labours [22.5 h] | 534.38 | B5 | 23 | MEP | C | MEP |
| HCMEB4Z5340 |  | B4 Z4 :Grills & Diffusers |  | 10d | 2013-11-28 | 2013-12-12 | HCMEB4Z5330 FS+50d, HEPSAME1170, HEPSAME1160 | 55d | 0d | HCRA - Global | EFFORT [10 h]; Mechnical Skilled Labours [15 h] | 356.25 | B5 | 23 | MEP | C | MEP |
| HCMEB4Z5350 |  | B4 Z4 :Mechanical final Fix |  | 10d | 2013-12-12 | 2013-12-26 | HCMEB4Z5340 | 55d | 0d | HCRA - Global | EFFORT [10 h]; Mechnical Skilled Labours [15 h] | 356.25 | B5 | 23 | MEP | C | MEP |
|  | 3 | **Water Network** |  |  | 2012-10-15 | 2013-05-10 |  |  |  |  |  |  |  |  |  |  |  |
| HCMEB4Z5360 |  | B4 Z4 :All Vertical Piping Works |  | 10d | 2012-10-15 | 2012-10-26 | HCMEB4Z5050 SS | 138.88d | 0d | HCRA - Global | EFFORT [10 h]; Mechnical Skilled Labours [15 h] | 356.25 | B5 | 22 | MEP | C | MEP |
| HCMEB4Z5370 |  | B4 Z4 :All Horizantal Piping Works |  | 30d | 2012-10-29 | 2012-12-07 | HCMEB4Z5360 | 138.88d | 0d | HCRA - Global | EFFORT [30 h]; Mechnical Skilled Labours [45 h] | 1,068.75 | B5 | 22 | MEP | C | MEP |
| HCMEB4Z5380 |  | B4 Z4 :Mechanical Final Fix |  | 20d | 2013-04-15 | 2013-05-10 | HCMEB4Z5370 FS+90d | 138.88d | 90d | HCRA - Global | EFFORT [20 h]; Mechnical Skilled Labours [30 h] | 712.5 | B5 | 22 | MEP | C | MEP |
|  | 6 | **Zone 6** |  |  | 2012-10-13 | 2014-01-01 |  |  |  |  |  |  |  |  |  |  |  |
| HCMEB4Z6295 |  | B4 Z6 :SOG Steel Work Finish Date | milestone | 0d | 2012-10-13 | 2012-10-13 | HCSWSSZ6240 | 272d | 0d | HCRA - 1 - Normal Calendar |  |  | B5 |  | MEP | C | MEP |
| HCMEB4Z6315 |  | B4 Z6 :Electrical First Fix (Conducting) |  | 6d | 2012-10-13 | 2012-10-20 | HCMEB4Z6295 | 272d | 42.12d | HCRA - 1 - Normal Calendar | EFFORT [6 h]; Electrical Skilled Labours [12 h] | 225 | B5 |  | MEP | C | MEP |
|  | 7 | **Drainage** |  |  | 2012-10-15 | 2013-05-10 |  |  |  |  |  |  |  |  |  |  |  |
| HCMEB4Z6055 |  | B4 Z6 :All Vertical Piping Works |  | 10d | 2012-10-15 | 2012-10-26 | HCMEB4Z5050 SS | 188.88d | 0d | HCRA - Global | EFFORT [10 h]; Mechnical Skilled Labours [15 h] | 356.25 | B5 | 22 | MEP | C | MEP |
| HCMEB4Z6065 |  | B4 Z6 :All Horizantal Piping Works |  | 30d | 2012-10-29 | 2012-12-07 | HCMEB4Z6055 | 188.88d | 0d | HCRA - Global | EFFORT [30 h]; Mechnical Skilled Labours [45 h] | 1,068.75 | B5 | 22 | MEP | C | MEP |
| HCMEB4Z6075 |  | B4 Z6 :Mechanical Final Fix |  | 20d | 2013-04-15 | 2013-05-10 | HCMEB4Z6065 FS+90d | 188.88d | 15d | HCRA - Global | EFFORT [20 h]; Mechnical Skilled Labours [30 h] | 712.5 | B5 | 22 | MEP | C | MEP |
|  | 020 | **Electrical Works** |  |  | 2012-12-09 | 2014-01-01 |  |  |  |  |  |  |  |  |  |  |  |
| HCMEB4Z6145 |  | B4 Z6 :Blocks Start Date for All Parts | milestone | 0d | 2012-12-09 | 2012-12-09 | HCFWB4Z6007 | 228d | 0.12d | HCRA - 1 - Normal Calendar |  |  | B5 | 26 | MEP | C | MEP |
| HCMEB4Z6205 |  | B4 Z6 :Electrical Coduits & Boards F.F for All Systems |  | 12d | 2012-12-10 | 2012-12-25 | HCMEB4Z6145, HCMEB4Z6315 | 192.88d | 16.88d | HCRA - Global | EFFORT [12 h]; Electrical Skilled Labours [24 h] | 450 | B5 | 26 | MEP | C | MEP |
| HCMEB4Z6165 |  | B4 Z6 :Plastering Finish Date for All Parts | milestone | 0d | 2013-01-14 | 2013-01-14 | HCFWB4Z6010 | 246d | 63d | HCRA - 1 - Normal Calendar |  |  | B5 | 26 | MEP | C | MEP |
| HCMEB4Z6215 |  | B4 Z6 :Electrical Boards Seconed Fix |  | 12d | 2013-03-28 | 2013-04-15 | HCMEB4Z6205 FS+50d, HCMEB4Z6165, HEPSAME1310 | 176d | 0d | HCRA - Global | EFFORT [12 h]; Electrical Skilled Labours [24 h] | 450 | B5 | 26 | MEP | C | MEP |
| HCMEB4Z6155 |  | B4 Z6 :Tiling Finish Date for All Parts | milestone | 0d | 2013-04-03 | 2013-04-03 | HCFWB4Z6005, HCMEB4Z6165 | 178.62d | 21.75d | HCRA - 1 - Normal Calendar |  |  | B5 | 26 | MEP | C | MEP |
| HCMEB4Z6235 |  | B4 Z6 :Electrcial Wiring |  | 20d | 2013-04-29 | 2013-05-24 | HCMEB4Z6155, HEPSAME1440, HCMEB4Z6155 FF | 130.88d | 26.25d | HCRA - Global | EFFORT [20 h]; Electrical Skilled Labours [40 h] | 750 | B5 | 26 | MEP | C | MEP |
| HCMEB4Z6225 |  | B4 Z6 :Cable Tray Installation |  | 10d | 2013-09-25 | 2013-10-09 | HCMEB4Z6165, HEPSAME1300 | 45d | 0d | HCRA - Global | EFFORT [10 h]; Electrical Skilled Labours [20 h] | 375 | B5 | 26 | MEP | C | MEP |
| HCMEB4Z6245 |  | B4 Z6 :Cable Laying |  | 10d | 2013-10-09 | 2013-10-23 | HCMEB4Z6225, HEPSAME1290 | 45d | 0d | HCRA - Global | EFFORT [10 h]; Electrical Skilled Labours [20 h] | 375 | B5 | 26 | MEP | C | MEP |
| HCMEB4Z6255 |  | B4 Z6 :Electrical Final Fix for All Systems & Boards (Vertical Elements) |  | 10d | 2013-12-04 | 2013-12-18 | HCMEB4Z6245 FS+30d, HCMEB4Z6235 FS+22d, HCMEB4Z6215 FS+30d, HCMEB4Z6165 FS+60d | 111d | 0d | HCRA - Global | EFFORT [10 h]; Electrical Skilled Labours [20 h] | 375 | B5 | 26 | MEP | C | MEP |
| HCMEB4Z6265 |  | B4 Z6 :Electrical Final Fix for All Systems (Horizantel Elements) |  | 10d | 2013-12-18 | 2014-01-01 | HCMEB4Z6255, HCMEB4Z6235, HCFWB4Z6017 | 111d | 14d | HCRA - Global | EFFORT [10 h]; Electrical Skilled Labours [20 h] | 375 | B5 | 26 | MEP | C | MEP |

| ID | WBS | Activity | Type | Duration | Start | Finish | Predecessors | Total float | Free float | Calendar | Resources | Cost | Bill No. | Division No. | Responsibility | Phase Code | Trade |
| --- | --- | --- | --- | --- | --- | --- | --- | --- | --- | --- | --- | --- | --- | --- | --- | --- | --- |
|  | 2 | **Fire Fighting** |  |  | 2012-12-10 | 2013-11-18 |  |  |  |  |  |  |  |  |  |  |  |
| HCMEB4Z6095 |  | B4 Z6 :Horizontal F.F Piping Work |  | 20d | 2012-12-10 | 2013-01-04 | HCMEB4Z6145 | 218.88d | 0d | HCRA - Global | EFFORT [20 h]; Mechnical Skilled Labours [30 h] | 712.5 | B5 | 21 | MEP | C | MEP |
| HCMEB4Z6105 |  | B4 Z6 :Fire Hose Cabinets |  | 10d | 2013-01-07 | 2013-01-18 | HCMEB4Z6095 | 218.88d | 135.88d | HCRA - Global | EFFORT [10 h]; Mechnical Skilled Labours [15 h] | 356.25 | B5 | 21 | MEP | C | MEP |
| HCMEB4Z6325 |  | B4 Z6 :Sprinklers Final Fix |  | 10d | 2013-11-04 | 2013-11-18 | HCMEB4Z6105 FS+70d, HEPSAME1050 | 83d | 0d | HCRA - Global | EFFORT [10 h]; Mechnical Skilled Labours [15 h] | 356.25 | B5 | 21 | MEP | C | MEP |
|  | 1 | **Air Conditioning** |  |  | 2013-07-11 | 2013-12-26 |  |  |  |  |  |  |  |  |  |  |  |
| HCMEB4Z6335 |  | B4 Z6 :Duct Installation& Dusct Accecories Installation, Fan coil Unit |  | 14d | 2013-07-11 | 2013-07-31 | HCMEB4Z6145, HEPSAME1130 | 37d | 0d | HCRA - Global | EFFORT [20 h]; Mechnical Skilled Labours [30 h] | 712.5 | B5 | 23 | MEP | C | MEP |
| HCMEB4Z6345 |  | B4 Z6 :Duct Insulation Work |  | 15d | 2013-07-31 | 2013-08-21 | HCMEB4Z6335 | 61d | 0d | HCRA - Global | EFFORT [15 h]; Mechnical Skilled Labours [22.5 h] | 534.38 | B5 | 23 | MEP | C | MEP |
| HCMEB4Z6365 |  | B4 Z6 :Exhaust Fans |  | 15d | 2013-08-21 | 2013-09-11 | HCMEB4Z6345 | 61d | 6d | HCRA - Global | EFFORT [15 h]; Mechnical Skilled Labours [22.5 h] | 534.38 | B5 | 23 | MEP | C | MEP |
| HCMEB4Z6375 |  | B4 Z6 :Grills & Diffusers |  | 10d | 2013-11-28 | 2013-12-12 | HCMEB4Z6365 FS+50d, HEPSAME1170, HEPSAME1160 | 55d | 0d | HCRA - Global | EFFORT [10 h]; Mechnical Skilled Labours [15 h] | 356.25 | B5 | 23 | MEP | C | MEP |
| HCMEB4Z6385 |  | B4 Z6 :Mechanical final Fix |  | 10d | 2013-12-12 | 2013-12-26 | HCMEB4Z6375 | 55d | 0d | HCRA - Global | EFFORT [10 h]; Mechnical Skilled Labours [15 h] | 356.25 | B5 | 23 | MEP | C | MEP |
|  | 3 | **Water Network** |  |  | 2012-10-15 | 2013-05-10 |  |  |  |  |  |  |  |  |  |  |  |
| HCMEB4Z6390 |  | B4 Z6 :All Vertical Piping Works |  | 10d | 2012-10-15 | 2012-10-26 | HCMEB4Z6055 SS | 198.88d | 0d | HCRA - Global | EFFORT [10 h]; Mechnical Skilled Labours [15 h] | 356.25 | B5 | 22 | MEP | C | MEP |
| HCMEB4Z6395 |  | B4 Z6 :All Horizantal Piping Works |  | 30d | 2012-10-29 | 2012-12-07 | HCMEB4Z6390 | 198.88d | 0d | HCRA - Global | EFFORT [30 h]; Mechnical Skilled Labours [45 h] | 1,068.75 | B5 | 22 | MEP | C | MEP |
| HCMEB4Z6400 |  | B4 Z6 :Mechanical Final Fix |  | 20d | 2013-04-15 | 2013-05-10 | HCMEB4Z6395 FS+90d | 198.88d | 15d | HCRA - Global | EFFORT [20 h]; Mechnical Skilled Labours [30 h] | 712.5 | B5 | 22 | MEP | C | MEP |
|  | B3 | **Basement 3** |  |  | 2012-11-18 | 2014-01-31 |  |  |  |  |  |  |  |  |  |  |  |
| HCMEB3000 |  | Start Basement 3 Floor EM Works | milestone | 0d | 2012-12-03 | 2012-12-03 | HCMEB3Z2130 | 50d | 0d |  |  |  | B5 |  | MEP | C | MEP |
| HCMEB30000 |  | End Basement 3 Floor EM Works | milestone | 0d | 2014-01-16 | 2014-01-16 | HCMEB3Z1055, HCMEB3Z1085, HCMEB3Z1335, HCMEB3Z1365 | 117d |  |  |  |  | B5 |  | MEP | C | MEP |
|  | 4 | **Zone 1** |  |  | 2012-11-18 | 2014-01-16 |  |  |  |  |  |  |  |  |  |  |  |
|  | 7 | **Drainage** |  |  | 2012-12-03 | 2013-06-28 |  |  |  |  |  |  |  |  |  |  |  |
| HCMEB3Z1035 |  | B3 Z1 :All Vertical Piping Works |  | 10d | 2012-12-03 | 2012-12-14 | HCMEB3000, HCMEB3Z1125 | 43.88d | 0d | HCRA - Global | EFFORT [10 h]; Mechnical Skilled Labours [15 h] | 356.25 | B5 | 22 | MEP | C | MEP |
| HCMEB3Z1045 |  | B3 Z1 :All Horizantal Piping Works |  | 30d | 2012-12-17 | 2013-01-25 | HCMEB3Z1035 | 43.88d | 0d | HCRA - Global | EFFORT [30 h]; Mechnical Skilled Labours [45 h] | 1,068.75 | B5 | 22 | MEP | C | MEP |
| HCMEB3Z1055 |  | B3 Z1 :Mechanical Final Fix |  | 20d | 2013-06-03 | 2013-06-28 | HCMEB3Z1045 FS+90d, HCMEB4Z1050 | 43.88d | 0d | HCRA - Global | EFFORT [20 h]; Mechnical Skilled Labours [30 h] | 712.5 | B5 | 22 | MEP | C | MEP |
|  | 020 | **Electrical Works** |  |  | 2012-11-18 | 2014-01-15 |  |  |  |  |  |  |  |  |  |  |  |
| HCMEB3Z1125 |  | B3 Z1 :Blocks Start Date for All Parts | milestone | 0d | 2012-11-18 | 2012-11-18 | HCFWB3Z1012 | 62d | 0.12d | HCRA - 1 - Normal Calendar |  |  | B5 | 26 | MEP | C | MEP |
| HCMEB3Z1185 |  | B3 Z1 :Electrical Coduits & Boards F.F for All Systems |  | 12d | 2012-11-19 | 2012-12-04 | HCMEB3Z1125 | 162.88d | 43.88d | HCRA - Global | EFFORT [12 h]; Electrical Skilled Labours [24 h] | 450 | B5 | 26 | MEP | C | MEP |
| HCMEB3Z1145 |  | B3 Z1 :Plastering Finish Date for All Parts | milestone | 0d | 2012-12-18 | 2012-12-18 | HCFWB3Z1009 | 241.5d | 100.38d | HCRA - 1 - Normal Calendar |  |  | B5 | 26 | MEP | C | MEP |
| HCMEB3Z1195 |  | B3 Z1 :Electrical Boards Seconed Fix |  | 12d | 2013-04-15 | 2013-05-01 | HCMEB3Z1185 FS+50d, HCMEB3Z1145, HCMEB4Z1190 | 119d | 0d | HCRA - Global | EFFORT [12 h]; Electrical Skilled Labours [24 h] | 450 | B5 | 26 | MEP | C | MEP |
| HCMEB3Z1135 |  | B3 Z1 :Tiling Finish Date for All Parts | milestone | 0d | 2013-06-29 | 2013-06-29 | HCFWB3Z1005 | 3d | 1.12d | HCRA - 1 - Normal Calendar |  |  | B5 | 26 | MEP | C | MEP |
| HCMEB3Z1215 |  | B3 Z1 :Electrcial Wiring |  | 20d | 2013-07-01 | 2013-07-26 | HCMEB3Z1135, HCMEB4Z1210 | 1.88d | 0d | HCRA - Global | EFFORT [20 h]; Electrical Skilled Labours [40 h] | 750 | B5 | 26 | MEP | C | MEP |
| HCMEB3Z1205 |  | B3 Z1 :Cable Tray Installation |  | 10d | 2013-10-09 | 2013-10-23 | HCMEB3Z1145, HCMEB4Z1200 | 0d |  | HCRA - Global | EFFORT [10 h]; Electrical Skilled Labours [20 h] | 375 | B5 | 26 | MEP | C | MEP |
| HCMEB3Z1225 |  | B3 Z1 :Cable Laying |  | 10d | 2013-10-23 | 2013-11-06 | HCMEB3Z1205, HCMEB4Z1220 | 0d |  | HCRA - Global | EFFORT [10 h]; Electrical Skilled Labours [20 h] | 375 | B5 | 26 | MEP | C | MEP |
| HCMEB3Z1155 |  | B3 Z1 :Gypsum Boards Finish Date for All Parts | milestone | 0d | 2013-11-10 | 2013-11-10 | HCFWB3Z1018 | 164d | 43.12d | HCRA - 1 - Normal Calendar |  |  | B5 | 26 | MEP | C | MEP |
| HCMEB3Z1235 |  | B3 Z1 :Electrical Final Fix for All Systems & Boards (Vertical Elements) |  | 10d | 2013-12-18 | 2014-01-01 | HCMEB3Z1225 FS+30d, HCMEB3Z1215 FS+22d, HCMEB3Z1195 FS+30d, HCMEB3Z1145 FS+60d | 101d | 0d | HCRA - Global | EFFORT [10 h]; Electrical Skilled Labours [20 h] | 375 | B5 | 26 | MEP | C | MEP |
| HCMEB3Z1245 |  | B3 Z1 :Electrical Final Fix for All Systems (Horizantel Elements) |  | 10d | 2014-01-01 | 2014-01-15 | HCMEB3Z1235, HCMEB3Z1215, HCMEB3Z1155 | 101d | 55d | HCRA - Global | EFFORT [10 h]; Electrical Skilled Labours [20 h] | 375 | B5 | 26 | MEP | C | MEP |

| ID | WBS | Activity | Type | Duration | Start | Finish | Predecessors | Total float | Free float | Calendar | Resources | Cost | Bill No. | Division No. | Responsibility | Phase Code | Trade |
| --- | --- | --- | --- | --- | --- | --- | --- | --- | --- | --- | --- | --- | --- | --- | --- | --- | --- |
|  | 2 | **Fire Fighting** |  |  | 2012-11-19 | 2013-12-02 |  |  |  |  |  |  |  |  |  |  |  |
| HCMEB3Z1065 |  | B3 Z1 :Horizontal F.F Piping Work |  | 20d | 2012-11-19 | 2012-12-14 | HCMEB3Z1125 | 193.88d | 0d | HCRA - Global | EFFORT [20 h]; Mechnical Skilled Labours [30 h] | 712.5 | B5 | 21 | MEP | C | MEP |
| HCMEB3Z1075 |  | B3 Z1 :Fire Hose Cabinets |  | 10d | 2012-12-17 | 2012-12-28 | HCMEB3Z1065 | 193.88d | 160.88d | HCRA - Global | EFFORT [10 h]; Mechnical Skilled Labours [15 h] | 356.25 | B5 | 21 | MEP | C | MEP |
| HCMEB3Z1085 |  | B3 Z1 :Sprinklers Final Fix |  | 10d | 2013-11-18 | 2013-12-02 | HCMEB3Z1075 FS+70d, HCMEB4Z1080 | 33d | 0d | HCRA - Global | EFFORT [10 h]; Mechnical Skilled Labours [15 h] | 356.25 | B5 | 21 | MEP | C | MEP |
|  | 1 | **Air Conditioning** |  |  | 2013-07-23 | 2014-01-16 |  |  |  |  |  |  |  |  |  |  |  |
| HCMEB3Z1295 |  | B3 Z1 :Duct Installation& Dusct Accecories Installation, Fan coil Unit |  | 8d | 2013-07-23 | 2013-08-02 | HCMEB3Z1125, HCMEB4Z1290 | 19d | 0d | HCRA - Global | EFFORT [20 h]; Mechnical Skilled Labours [30 h] | 712.5 | B5 | 23 | MEP | C | MEP |
| HCMEB3Z1305 |  | B3 Z1 :Duct Insulation Work |  | 15d | 2013-08-02 | 2013-08-23 | HCMEB3Z1295 | 19d | 0d | HCRA - Global | EFFORT [15 h]; Mechnical Skilled Labours [22.5 h] | 534.38 | B5 | 23 | MEP | C | MEP |
| HCMEB3Z1315 |  | B3 Z1 :Exhaust Fans |  | 15d | 2013-08-23 | 2013-09-13 | HCMEB3Z1305 | 19d | 17d | HCRA - Global | EFFORT [15 h]; Mechnical Skilled Labours [22.5 h] | 534.38 | B5 | 23 | MEP | C | MEP |
| HCMEB3Z1325 |  | B3 Z1 :Grills & Diffusers |  | 10d | 2013-12-17 | 2013-12-31 | HCMEB3Z1315 FS+50d, HCMEB4Z1320 | 2d | 0d | HCRA - Global | EFFORT [10 h]; Mechnical Skilled Labours [15 h] | 356.25 | B5 | 23 | MEP | C | MEP |
| HCMEB3Z1335 |  | B3 Z1 :Mechanical final Fix |  | 10d | 2014-01-02 | 2014-01-16 | HCMEB3Z1325, HCMEB4Z1330 | 0d |  | HCRA - Global | EFFORT [10 h]; Mechnical Skilled Labours [15 h] | 356.25 | B5 | 23 | MEP | C | MEP |
|  | 3 | **Water Network** |  |  | 2012-12-03 | 2013-06-28 |  |  |  |  |  |  |  |  |  |  |  |
| HCMEB3Z1345 |  | B3 Z1 :All Vertical Piping Works |  | 10d | 2012-12-03 | 2012-12-14 | HCMEB3Z1035 SS | 43.88d | 0d | HCRA - Global | EFFORT [10 h]; Mechnical Skilled Labours [15 h] | 356.25 | B5 | 22 | MEP | C | MEP |
| HCMEB3Z1355 |  | B3 Z1 :All Horizantal Piping Works |  | 30d | 2012-12-17 | 2013-01-25 | HCMEB3Z1345 | 43.88d | 0d | HCRA - Global | EFFORT [30 h]; Mechnical Skilled Labours [45 h] | 1,068.75 | B5 | 22 | MEP | C | MEP |
| HCMEB3Z1365 |  | B3 Z1 :Mechanical Final Fix |  | 20d | 2013-06-03 | 2013-06-28 | HCMEB3Z1355 FS+90d, HCMEB4Z1360 | 43.88d | 0d | HCRA - Global | EFFORT [20 h]; Mechnical Skilled Labours [30 h] | 712.5 | B5 | 22 | MEP | C | MEP |
|  | 1 | **Zone 2** |  |  | 2012-12-02 | 2014-01-15 |  |  |  |  |  |  |  |  |  |  |  |
|  | 7 | **Drainage** |  |  | 2012-12-03 | 2013-06-28 |  |  |  |  |  |  |  |  |  |  |  |
| HCMEB3Z2040 |  | B3 Z2 :All Vertical Piping Works |  | 10d | 2012-12-03 | 2012-12-14 | HCMEB3Z1035 SS | 63.88d | 0d | HCRA - Global | EFFORT [10 h]; Mechnical Skilled Labours [15 h] | 356.25 | B5 | 22 | MEP | C | MEP |
| HCMEB3Z2050 |  | B3 Z2 :All Horizantal Piping Works |  | 30d | 2012-12-17 | 2013-01-25 | HCMEB3Z2040 | 63.88d | 0d | HCRA - Global | EFFORT [30 h]; Mechnical Skilled Labours [45 h] | 1,068.75 | B5 | 22 | MEP | C | MEP |
| HCMEB3Z2060 |  | B3 Z2 :Mechanical Final Fix |  | 20d | 2013-06-03 | 2013-06-28 | HCMEB3Z2050 FS+90d, HCMEB4Z2055 | 63.88d | 0d | HCRA - Global | EFFORT [20 h]; Mechnical Skilled Labours [30 h] | 712.5 | B5 | 22 | MEP | C | MEP |
|  | 020 | **Electrical Works** |  |  | 2012-12-02 | 2014-01-15 |  |  |  |  |  |  |  |  |  |  |  |
| HCMEB3Z2130 |  | B3 Z2 :Blocks Start Date for All Parts | milestone | 0d | 2012-12-02 | 2012-12-02 | HCFWB3Z2012 | 50d | 0.12d | HCRA - 1 - Normal Calendar |  |  | B5 | 26 | MEP | C | MEP |
| HCMEB3Z2190 |  | B3 Z2 :Electrical Coduits & Boards F.F for All Systems |  | 12d | 2012-12-03 | 2012-12-18 | HCMEB3Z2130 | 161.88d | 33.88d | HCRA - Global | EFFORT [12 h]; Electrical Skilled Labours [24 h] | 450 | B5 | 26 | MEP | C | MEP |
| HCMEB3Z2150 |  | B3 Z2 :Plastering Finish Date for All Parts | milestone | 0d | 2013-01-02 | 2013-01-02 | HCFWB3Z2009 | 241.38d | 88.38d | HCRA - 1 - Normal Calendar |  |  | B5 | 26 | MEP | C | MEP |
| HCMEB3Z2140 |  | B3 Z2 :Tiling Finish Date for All Parts | milestone | 0d | 2013-04-06 | 2013-04-06 | HCFWB3Z2005 | 75d | 43.12d | HCRA - 1 - Normal Calendar |  |  | B5 | 26 | MEP | C | MEP |
| HCMEB3Z2200 |  | B3 Z2 :Electrical Boards Seconed Fix |  | 12d | 2013-04-15 | 2013-05-01 | HCMEB3Z2190 FS+50d, HCMEB3Z2150, HCMEB4Z2195 | 128d | 0d | HCRA - Global | EFFORT [12 h]; Electrical Skilled Labours [24 h] | 450 | B5 | 26 | MEP | C | MEP |
| HCMEB3Z2220 |  | B3 Z2 :Electrcial Wiring |  | 20d | 2013-05-27 | 2013-06-21 | HCMEB3Z2140, HCMEB4Z2215 | 26.88d | 0d | HCRA - Global | EFFORT [20 h]; Electrical Skilled Labours [40 h] | 750 | B5 | 26 | MEP | C | MEP |
| HCMEB3Z2210 |  | B3 Z2 :Cable Tray Installation |  | 10d | 2013-10-09 | 2013-10-23 | HCMEB3Z2150, HCMEB4Z2205 | 11d | 0d | HCRA - Global | EFFORT [10 h]; Electrical Skilled Labours [20 h] | 375 | B5 | 26 | MEP | C | MEP |
| HCMEB3Z2230 |  | B3 Z2 :Cable Laying |  | 10d | 2013-10-23 | 2013-11-06 | HCMEB3Z2210, HCMEB4Z2225 | 11d | 0d | HCRA - Global | EFFORT [10 h]; Electrical Skilled Labours [20 h] | 375 | B5 | 26 | MEP | C | MEP |
| HCMEB3Z2160 |  | B3 Z2 :Gypsum Boards Finish Date for All Parts | milestone | 0d | 2013-11-09 | 2013-11-09 | HCFWB3Z2018 | 165d | 44.12d | HCRA - 1 - Normal Calendar |  |  | B5 | 26 | MEP | C | MEP |
| HCMEB3Z2240 |  | B3 Z2 :Electrical Final Fix for All Systems & Boards (Vertical Elements) |  | 10d | 2013-12-18 | 2014-01-01 | HCMEB3Z2230 FS+30d, HCMEB3Z2220 FS+22d, HCMEB3Z2200 FS+30d, HCMEB3Z2150 FS+60d | 101d | 0d | HCRA - Global | EFFORT [10 h]; Electrical Skilled Labours [20 h] | 375 | B5 | 26 | MEP | C | MEP |
| HCMEB3Z2250 |  | B3 Z2 :Electrical Final Fix for All Systems (Horizantel Elements) |  | 10d | 2014-01-01 | 2014-01-15 | HCMEB3Z2240, HCMEB3Z2220, HCMEB3Z2160 | 101d | 55d | HCRA - Global | EFFORT [10 h]; Electrical Skilled Labours [20 h] | 375 | B5 | 26 | MEP | C | MEP |

| ID | WBS | Activity | Type | Duration | Start | Finish | Predecessors | Total float | Free float | Calendar | Resources | Cost | Bill No. | Division No. | Responsibility | Phase Code | Trade |
| --- | --- | --- | --- | --- | --- | --- | --- | --- | --- | --- | --- | --- | --- | --- | --- | --- | --- |
|  | 2 | **Fire Fighting** |  |  | 2012-12-03 | 2013-12-02 |  |  |  |  |  |  |  |  |  |  |  |
| HCMEB3Z2070 |  | B3 Z2 :Horizontal F.F Piping Work |  | 20d | 2012-12-03 | 2012-12-28 | HCMEB3Z2130 | 193.88d | 0d | HCRA - Global | EFFORT [20 h]; Mechnical Skilled Labours [30 h] | 712.5 | B5 | 21 | MEP | C | MEP |
| HCMEB3Z2080 |  | B3 Z2 :Fire Hose Cabinets |  | 10d | 2012-12-31 | 2013-01-11 | HCMEB3Z2070 | 193.88d | 150.88d | HCRA - Global | EFFORT [10 h]; Mechnical Skilled Labours [15 h] | 356.25 | B5 | 21 | MEP | C | MEP |
| HCMEB3Z2090 |  | B3 Z2 :Sprinklers Final Fix |  | 10d | 2013-11-18 | 2013-12-02 | HCMEB3Z2080 FS+70d, HCMEB4Z2085 | 43d | 0d | HCRA - Global | EFFORT [10 h]; Mechnical Skilled Labours [15 h] | 356.25 | B5 | 21 | MEP | C | MEP |
|  | 1 | **Air Conditioning** |  |  | 2013-07-23 | 2014-01-09 |  |  |  |  |  |  |  |  |  |  |  |
| HCMEB3Z2300 |  | B3 Z2 :Duct Installation& Dusct Accecories Installation, Fan coil Unit |  | 8d | 2013-07-23 | 2013-08-02 | HCMEB3Z2130, HCMEB4Z2295 | 17.12d | 0d | HCRA - Global | EFFORT [20 h]; Mechnical Skilled Labours [30 h] | 712.5 | B5 | 23 | MEP | C | MEP |
| HCMEB3Z2310 |  | B3 Z2 :Duct Insulation Work |  | 15d | 2013-08-02 | 2013-08-23 | HCMEB3Z2300 | 17.12d | 0d | HCRA - Global | EFFORT [15 h]; Mechnical Skilled Labours [22.5 h] | 534.38 | B5 | 23 | MEP | C | MEP |
| HCMEB3Z2320 |  | B3 Z2 :Exhaust Fans |  | 15d | 2013-08-23 | 2013-09-13 | HCMEB3Z2310 | 17.12d | 14d | HCRA - Global | EFFORT [15 h]; Mechnical Skilled Labours [22.5 h] | 534.38 | B5 | 23 | MEP | C | MEP |
| HCMEB3Z2330 |  | B3 Z2 :Grills & Diffusers |  | 10d | 2013-12-12 | 2013-12-26 | HCMEB3Z2320 FS+50d, HCMEB4Z2325 | 3.12d | 0d | HCRA - Global | EFFORT [10 h]; Mechnical Skilled Labours [15 h] | 356.25 | B5 | 23 | MEP | C | MEP |
| HCMEB3Z2340 |  | B3 Z2 :Mechanical final Fix |  | 10d | 2013-12-26 | 2014-01-09 | HCMEB3Z2330, HCMEB4Z2335 | 3.12d | 0d | HCRA - Global | EFFORT [10 h]; Mechnical Skilled Labours [15 h] | 356.25 | B5 | 23 | MEP | C | MEP |
|  | 3 | **Water Network** |  |  | 2012-12-03 | 2013-06-28 |  |  |  |  |  |  |  |  |  |  |  |
| HCMEB3Z2350 |  | B3 Z2 :All Vertical Piping Works |  | 10d | 2012-12-03 | 2012-12-14 | HCMEB3Z2040 SS | 63.88d | 0d | HCRA - Global | EFFORT [10 h]; Mechnical Skilled Labours [15 h] | 356.25 | B5 | 22 | MEP | C | MEP |
| HCMEB3Z2360 |  | B3 Z2 :All Horizantal Piping Works |  | 30d | 2012-12-17 | 2013-01-25 | HCMEB3Z2350 | 63.88d | 0d | HCRA - Global | EFFORT [30 h]; Mechnical Skilled Labours [45 h] | 1,068.75 | B5 | 22 | MEP | C | MEP |
| HCMEB3Z2370 |  | B3 Z2 :Mechanical Final Fix |  | 20d | 2013-06-03 | 2013-06-28 | HCMEB3Z2360 FS+90d, HCMEB4Z2365 | 63.88d | 0d | HCRA - Global | EFFORT [20 h]; Mechnical Skilled Labours [30 h] | 712.5 | B5 | 22 | MEP | C | MEP |
|  | 2 | **Zone 3** |  |  | 2012-12-03 | 2014-01-31 |  |  |  |  |  |  |  |  |  |  |  |
|  | 7 | **Drainage** |  |  | 2012-12-03 | 2013-06-28 |  |  |  |  |  |  |  |  |  |  |  |
| HCMEB3Z3045 |  | B3 Z3 :B3 Z3 :All Vertical Piping Works |  | 10d | 2012-12-03 | 2012-12-14 | HCMEB3Z2040 SS | 63.88d | 0d | HCRA - Global | EFFORT [10 h]; Mechnical Skilled Labours [15 h] | 356.25 | B5 | 22 | MEP | C | MEP |
| HCMEB3Z3055 |  | B3 Z3 :B3 Z3 :All Horizantal Piping Works |  | 30d | 2012-12-17 | 2013-01-25 | HCMEB3Z3045 | 63.88d | 0d | HCRA - Global | EFFORT [30 h]; Mechnical Skilled Labours [45 h] | 1,068.75 | B5 | 22 | MEP | C | MEP |
| HCMEB3Z3065 |  | B3 Z3 :B3 Z3 :Mechanical Final Fix |  | 20d | 2013-06-03 | 2013-06-28 | HCMEB3Z3055 FS+90d, HCMEB4Z3060 | 63.88d | 0d | HCRA - Global | EFFORT [20 h]; Mechnical Skilled Labours [30 h] | 712.5 | B5 | 22 | MEP | C | MEP |
|  | 020 | **Electrical Works** |  |  | 2012-12-09 | 2014-01-31 |  |  |  |  |  |  |  |  |  |  |  |
| HCMEB3Z3135 |  | B3 Z3 :B3 Z3 :Blocks Start Date for All Parts | milestone | 0d | 2012-12-09 | 2012-12-09 | HCFWB3Z3015 | 201d | 0.12d | HCRA - 1 - Normal Calendar |  |  | B5 | 26 | MEP | C | MEP |
| HCMEB3Z3195 |  | B3 Z3 :B3 Z3 :Electrical Coduits & Boards F.F for All Systems |  | 12d | 2012-12-10 | 2012-12-25 | HCMEB3Z3135 | 168.88d | 28.88d | HCRA - Global | EFFORT [12 h]; Electrical Skilled Labours [24 h] | 450 | B5 | 26 | MEP | C | MEP |
| HCMEB3Z3155 |  | B3 Z3 :B3 Z3 :Plastering Finish Date for All Parts | milestone | 0d | 2013-03-02 | 2013-03-02 | HCFWB3Z3011 | 206.62d | 38.62d | HCRA - 1 - Normal Calendar |  |  | B5 | 26 | MEP | C | MEP |
| HCMEB3Z3205 |  | B3 Z3 :B3 Z3 :Electrical Boards Seconed Fix |  | 12d | 2013-04-15 | 2013-05-01 | HCMEB3Z3195 FS+50d, HCMEB3Z3155, HCMEB4Z3200 | 140d | 22.12d | HCRA - Global | EFFORT [12 h]; Electrical Skilled Labours [24 h] | 450 | B5 | 26 | MEP | C | MEP |
| HCMEB3Z3145 |  | B3 Z3 :B3 Z3 :Tiling Finish Date for All Parts | milestone | 0d | 2013-06-05 | 2013-06-05 | HCFWB3Z3007 | 189d | 145.12d | HCRA - 1 - Normal Calendar |  |  | B5 | 26 | MEP | C | MEP |
| HCMEB3Z3215 |  | B3 Z3 :B3 Z3 :Cable Tray Installation |  | 10d | 2013-10-09 | 2013-10-23 | HCMEB3Z3155, HCMEB4Z3210 | 21d | 0d | HCRA - Global | EFFORT [10 h]; Electrical Skilled Labours [20 h] | 375 | B5 | 26 | MEP | C | MEP |
| HCMEB3Z3235 |  | B3 Z3 :B3 Z3 :Cable Laying |  | 10d | 2013-10-23 | 2013-11-06 | HCMEB3Z3215, HCMEB4Z3230 | 21d | 0d | HCRA - Global | EFFORT [10 h]; Electrical Skilled Labours [20 h] | 375 | B5 | 26 | MEP | C | MEP |
| HCMEB3Z3165 |  | B3 Z3 :B3 Z3 :Gypsum Boards Finish Date for All Parts | milestone | 0d | 2013-11-09 | 2013-11-09 | HCFWB3Z3021 | 165d | 57.12d | HCRA - 1 - Normal Calendar |  |  | B5 | 26 | MEP | C | MEP |
| HCMEB3Z3225 |  | B3 Z3 :B3 Z3 :Electrcial Wiring |  | 8d | 2013-11-22 | 2013-12-04 | HCMEB3Z3145, HCMEB4Z3220 | 37d | 0d | HCRA - Global | EFFORT [20 h]; Electrical Skilled Labours [40 h] | 750 | B5 | 26 | MEP | C | MEP |
| HCMEB3Z3245 |  | B3 Z3 :B3 Z3 :Electrical Final Fix for All Systems & Boards (Vertical Elements) |  | 10d | 2014-01-03 | 2014-01-17 | HCMEB3Z3235 FS+30d, HCMEB3Z3225 FS+22d, HCMEB3Z3205 FS+30d, HCMEB3Z3155 FS+60d | 89d | 0d | HCRA - Global | EFFORT [10 h]; Electrical Skilled Labours [20 h] | 375 | B5 | 26 | MEP | C | MEP |
| HCMEB3Z3255 |  | B3 Z3 :B3 Z3 :Electrical Final Fix for All Systems (Horizantel Elements) |  | 10d | 2014-01-17 | 2014-01-31 | HCMEB3Z3245, HCMEB3Z3225, HCMEB3Z3165 | 89d | 43d | HCRA - Global | EFFORT [10 h]; Electrical Skilled Labours [20 h] | 375 | B5 | 26 | MEP | C | MEP |

| ID | WBS | Activity | Type | Duration | Start | Finish | Predecessors | Total float | Free float | Calendar | Resources | Cost | Bill No. | Division No. | Responsibility | Phase Code | Trade |
| --- | --- | --- | --- | --- | --- | --- | --- | --- | --- | --- | --- | --- | --- | --- | --- | --- | --- |
|  | 2 | **Fire Fighting** |  |  | 2012-12-10 | 2013-12-02 |  |  |  |  |  |  |  |  |  |  |  |
| HCMEB3Z3075 |  | B3 Z3 :B3 Z3 :Horizontal F.F Piping Work |  | 20d | 2012-12-10 | 2013-01-04 | HCMEB3Z3135 | 188.88d | 0d | HCRA - Global | EFFORT [20 h]; Mechnical Skilled Labours [30 h] | 712.5 | B5 | 21 | MEP | C | MEP |
| HCMEB3Z3085 |  | B3 Z3 :B3 Z3 :Fire Hose Cabinets |  | 10d | 2013-01-07 | 2013-01-18 | HCMEB3Z3075 | 188.88d | 145.88d | HCRA - Global | EFFORT [10 h]; Mechnical Skilled Labours [15 h] | 356.25 | B5 | 21 | MEP | C | MEP |
| HCMEB3Z3095 |  | B3 Z3 :B3 Z3 :Sprinklers Final Fix |  | 10d | 2013-11-18 | 2013-12-02 | HCMEB3Z3085 FS+70d, HCMEB4Z3090 | 43d | 0d | HCRA - Global | EFFORT [10 h]; Mechnical Skilled Labours [15 h] | 356.25 | B5 | 21 | MEP | C | MEP |
|  | 1 | **Air Conditioning** |  |  | 2013-07-25 | 2014-01-09 |  |  |  |  |  |  |  |  |  |  |  |
| HCMEB3Z3305 |  | B3 Z3 :B3 Z3 :Duct Installation& Dusct Accecories Installation, Fan coil Unit |  | 10d | 2013-07-25 | 2013-08-08 | HCMEB3Z3135, HCMEB4Z3300 | 25d | 0d | HCRA - Global | EFFORT [20 h]; Mechnical Skilled Labours [30 h] | 712.5 | B5 | 23 | MEP | C | MEP |
| HCMEB3Z3315 |  | B3 Z3 :B3 Z3 :Duct Insulation Work |  | 15d | 2013-08-08 | 2013-08-29 | HCMEB3Z3305 | 25d | 0d | HCRA - Global | EFFORT [15 h]; Mechnical Skilled Labours [22.5 h] | 534.38 | B5 | 23 | MEP | C | MEP |
| HCMEB3Z3325 |  | B3 Z3 :B3 Z3 :Exhaust Fans |  | 15d | 2013-08-29 | 2013-09-19 | HCMEB3Z3315 | 25d | 10d | HCRA - Global | EFFORT [15 h]; Mechnical Skilled Labours [22.5 h] | 534.38 | B5 | 23 | MEP | C | MEP |
| HCMEB3Z3335 |  | B3 Z3 :B3 Z3 :Grills & Diffusers |  | 10d | 2013-12-12 | 2013-12-26 | HCMEB3Z3325 FS+50d, HCMEB4Z3330 | 15d | 0d | HCRA - Global | EFFORT [10 h]; Mechnical Skilled Labours [15 h] | 356.25 | B5 | 23 | MEP | C | MEP |
| HCMEB3Z3345 |  | B3 Z3 :B3 Z3 :Mechanical final Fix |  | 10d | 2013-12-26 | 2014-01-09 | HCMEB3Z3335, HCMEB4Z3340 | 15d | 0d | HCRA - Global | EFFORT [10 h]; Mechnical Skilled Labours [15 h] | 356.25 | B5 | 23 | MEP | C | MEP |
|  | 3 | **Water Network** |  |  | 2012-12-03 | 2013-06-28 |  |  |  |  |  |  |  |  |  |  |  |
| HCMEB3Z3355 |  | B3 Z3 :B3 Z3 :All Vertical Piping Works |  | 10d | 2012-12-03 | 2012-12-14 | HCMEB3Z3045 SS | 63.88d | 0d | HCRA - Global | EFFORT [10 h]; Mechnical Skilled Labours [15 h] | 356.25 | B5 | 22 | MEP | C | MEP |
| HCMEB3Z3365 |  | B3 Z3 :B3 Z3 :All Horizantal Piping Works |  | 30d | 2012-12-17 | 2013-01-25 | HCMEB3Z3355 | 63.88d | 0d | HCRA - Global | EFFORT [30 h]; Mechnical Skilled Labours [45 h] | 1,068.75 | B5 | 22 | MEP | C | MEP |
| HCMEB3Z3375 |  | B3 Z3 :B3 Z3 :Mechanical Final Fix |  | 20d | 2013-06-03 | 2013-06-28 | HCMEB3Z3365 FS+90d, HCMEB4Z3370 | 63.88d | 0d | HCRA - Global | EFFORT [20 h]; Mechnical Skilled Labours [30 h] | 712.5 | B5 | 22 | MEP | C | MEP |
|  | 4 | **Conveying System** |  |  |  |  |  |  |  |  |  |  |  |  |  |  |  |
|  | 3 | **Zone 4** |  |  | 2012-12-03 | 2014-01-15 |  |  |  |  |  |  |  |  |  |  |  |
|  | 7 | **Drainage** |  |  | 2012-12-03 | 2013-06-28 |  |  |  |  |  |  |  |  |  |  |  |
| HCMEB3Z4050 |  | B3 Z4 :All Vertical Piping Works |  | 10d | 2012-12-03 | 2012-12-14 | HCMEB3Z3045 SS | 132d | 0d | HCRA - Global | EFFORT [10 h]; Mechnical Skilled Labours [15 h] | 356.25 | B5 | 22 | MEP | C | MEP |
| HCMEB3Z4060 |  | B3 Z4 :All Horizantal Piping Works |  | 30d | 2012-12-17 | 2013-01-25 | HCMEB3Z4050 | 143.88d | 0d | HCRA - Global | EFFORT [30 h]; Mechnical Skilled Labours [45 h] | 1,068.75 | B5 | 22 | MEP | C | MEP |
| HCMEB3Z4070 |  | B3 Z4 :Mechanical Final Fix |  | 20d | 2013-06-03 | 2013-06-28 | HCMEB3Z4060 FS+90d, HCMEB4Z4065 | 143.88d | 0d | HCRA - Global | EFFORT [20 h]; Mechnical Skilled Labours [30 h] | 712.5 | B5 | 22 | MEP | C | MEP |
|  | 020 | **Electrical Works** |  |  | 2013-01-07 | 2014-01-15 |  |  |  |  |  |  |  |  |  |  |  |
| HCMEB3Z4140 |  | B3 Z4 :Blocks Start Date for All Parts | milestone | 0d | 2013-01-07 | 2013-01-07 | HCFWB3Z4012 | 219.12d | 0d | HCRA - 1 - Normal Calendar |  |  | B5 | 26 | MEP | C | MEP |
| HCMEB3Z4200 |  | B3 Z4 :Electrical Coduits & Boards F.F for All Systems |  | 12d | 2013-01-07 | 2013-01-23 | HCMEB3Z4140 | 184d | 8d | HCRA - Global | EFFORT [12 h]; Electrical Skilled Labours [24 h] | 450 | B5 | 26 | MEP | C | MEP |
| HCMEB3Z4160 |  | B3 Z4 :Plastering Finish Date for All Parts | milestone | 0d | 2013-03-02 | 2013-03-02 | HCFWB3Z4009 | 243d | 38d | HCRA - 1 - Normal Calendar |  |  | B5 | 26 | MEP | C | MEP |
| HCMEB3Z4210 |  | B3 Z4 :Electrical Boards Seconed Fix |  | 12d | 2013-04-15 | 2013-05-01 | HCMEB3Z4200 FS+50d, HCMEB3Z4160, HCMEB4Z4205 | 176d | 1d | HCRA - Global | EFFORT [12 h]; Electrical Skilled Labours [24 h] | 450 | B5 | 26 | MEP | C | MEP |
| HCMEB3Z4150 |  | B3 Z4 :Tiling Finish Date for All Parts | milestone | 0d | 2013-05-20 | 2013-05-20 | HCFWB3Z4004 | 133.62d | 5.75d | HCRA - 1 - Normal Calendar |  |  | B5 | 26 | MEP | C | MEP |
| HCMEB3Z4230 |  | B3 Z4 :Electrcial Wiring |  | 20d | 2013-05-27 | 2013-06-21 | HCMEB3Z4150, HCMEB4Z4225 | 106.88d | 20d | HCRA - Global | EFFORT [20 h]; Electrical Skilled Labours [40 h] | 750 | B5 | 26 | MEP | C | MEP |
| HCMEB3Z4220 |  | B3 Z4 :Cable Tray Installation |  | 10d | 2013-10-09 | 2013-10-23 | HCMEB3Z4160, HCMEB4Z4215 | 45d | 0d | HCRA - Global | EFFORT [10 h]; Electrical Skilled Labours [20 h] | 375 | B5 | 26 | MEP | C | MEP |
| HCMEB3Z4240 |  | B3 Z4 :Cable Laying |  | 10d | 2013-10-23 | 2013-11-06 | HCMEB3Z4220, HCMEB4Z4235 | 45d | 0d | HCRA - Global | EFFORT [10 h]; Electrical Skilled Labours [20 h] | 375 | B5 | 26 | MEP | C | MEP |
| HCMEB3Z4170 |  | B3 Z4 :Gypsum Boards Finish Date for All Parts | milestone | 0d | 2013-11-09 | 2013-11-09 | HCFWB3Z4018 | 165d | 44.12d | HCRA - 1 - Normal Calendar |  |  | B5 | 26 | MEP | C | MEP |
| HCMEB3Z4250 |  | B3 Z4 :Electrical Final Fix for All Systems & Boards (Vertical Elements) |  | 10d | 2013-12-18 | 2014-01-01 | HCMEB3Z4240 FS+30d, HCMEB3Z4230 FS+22d, HCMEB3Z4210 FS+30d, HCMEB3Z4160 FS+60d | 101d | 0d | HCRA - Global | EFFORT [10 h]; Electrical Skilled Labours [20 h] | 375 | B5 | 26 | MEP | C | MEP |
| HCMEB3Z4260 |  | B3 Z4 :Electrical Final Fix for All Systems (Horizantel Elements) |  | 10d | 2014-01-01 | 2014-01-15 | HCMEB3Z4250, HCMEB3Z4230, HCMEB3Z4170 | 101d | 55d | HCRA - Global | EFFORT [10 h]; Electrical Skilled Labours [20 h] | 375 | B5 | 26 | MEP | C | MEP |

| ID | WBS | Activity | Type | Duration | Start | Finish | Predecessors | Total float | Free float | Calendar | Resources | Cost | Bill No. | Division No. | Responsibility | Phase Code | Trade |
| --- | --- | --- | --- | --- | --- | --- | --- | --- | --- | --- | --- | --- | --- | --- | --- | --- | --- |
|  | 2 | **Fire Fighting** |  |  | 2013-01-07 | 2013-12-02 |  |  |  |  |  |  |  |  |  |  |  |
| HCMEB3Z4080 |  | B3 Z4 :Horizontal F.F Piping Work |  | 20d | 2013-01-07 | 2013-02-04 | HCMEB3Z4140 | 208d | 0d | HCRA - Global | EFFORT [20 h]; Mechnical Skilled Labours [30 h] | 712.5 | B5 | 21 | MEP | C | MEP |
| HCMEB3Z4090 |  | B3 Z4 :Fire Hose Cabinets |  | 10d | 2013-02-04 | 2013-02-18 | HCMEB3Z4080 | 208d | 125d | HCRA - Global | EFFORT [10 h]; Mechnical Skilled Labours [15 h] | 356.25 | B5 | 21 | MEP | C | MEP |
| HCMEB3Z4100 |  | B3 Z4 :Sprinklers Final Fix |  | 10d | 2013-11-18 | 2013-12-02 | HCMEB3Z4090 FS+70d, HCMEB4Z4095 | 83d | 0d | HCRA - Global | EFFORT [10 h]; Mechnical Skilled Labours [15 h] | 356.25 | B5 | 21 | MEP | C | MEP |
|  | 1 | **Air Conditioning** |  |  | 2013-07-31 | 2014-01-09 |  |  |  |  |  |  |  |  |  |  |  |
| HCMEB3Z4310 |  | B3 Z4 :Duct Installation& Dusct Accecories Installation, Fan coil Unit |  | 14d | 2013-07-31 | 2013-08-20 | HCMEB3Z4140, HCMEB4Z4305 | 37d | 0d | HCRA - Global | EFFORT [20 h]; Mechnical Skilled Labours [30 h] | 712.5 | B5 | 23 | MEP | C | MEP |
| HCMEB3Z4320 |  | B3 Z4 :Duct Insulation Work |  | 15d | 2013-08-20 | 2013-09-10 | HCMEB3Z4310 | 57d | 0d | HCRA - Global | EFFORT [15 h]; Mechnical Skilled Labours [22.5 h] | 534.38 | B5 | 23 | MEP | C | MEP |
| HCMEB3Z4330 |  | B3 Z4 :Exhaust Fans |  | 15d | 2013-09-10 | 2013-10-01 | HCMEB3Z4320 | 57d | 2d | HCRA - Global | EFFORT [15 h]; Mechnical Skilled Labours [22.5 h] | 534.38 | B5 | 23 | MEP | C | MEP |
| HCMEB3Z4340 |  | B3 Z4 :Grills & Diffusers |  | 10d | 2013-12-12 | 2013-12-26 | HCMEB3Z4330 FS+50d, HCMEB4Z4335 | 55d | 0d | HCRA - Global | EFFORT [10 h]; Mechnical Skilled Labours [15 h] | 356.25 | B5 | 23 | MEP | C | MEP |
| HCMEB3Z4350 |  | B3 Z4 :Mechanical final Fix |  | 10d | 2013-12-26 | 2014-01-09 | HCMEB3Z4340, HCMEB4Z4345 | 55d | 2d | HCRA - Global | EFFORT [10 h]; Mechnical Skilled Labours [15 h] | 356.25 | B5 | 23 | MEP | C | MEP |
|  | 3 | **Water Network** |  |  | 2012-12-03 | 2013-06-28 |  |  |  |  |  |  |  |  |  |  |  |
| HCMEB3Z4360 |  | B3 Z4 :All Vertical Piping Works |  | 10d | 2012-12-03 | 2012-12-14 | HCMEB3Z4050 SS | 143.88d | 0d | HCRA - Global | EFFORT [10 h]; Mechnical Skilled Labours [15 h] | 356.25 | B5 | 22 | MEP | C | MEP |
| HCMEB3Z4370 |  | B3 Z4 :All Horizantal Piping Works |  | 30d | 2012-12-17 | 2013-01-25 | HCMEB3Z4360 | 143.88d | 0d | HCRA - Global | EFFORT [30 h]; Mechnical Skilled Labours [45 h] | 1,068.75 | B5 | 22 | MEP | C | MEP |
| HCMEB3Z4380 |  | B3 Z4 :Mechanical Final Fix |  | 20d | 2013-06-03 | 2013-06-28 | HCMEB3Z4370 FS+90d, HCMEB4Z4375 | 143.88d | 0d | HCRA - Global | EFFORT [20 h]; Mechnical Skilled Labours [30 h] | 712.5 | B5 | 22 | MEP | C | MEP |
|  | 5 | **Zone 5** |  |  | 2012-12-03 | 2014-01-15 |  |  |  |  |  |  |  |  |  |  |  |
|  | 7 | **Drainage** |  |  | 2012-12-03 | 2013-06-28 |  |  |  |  |  |  |  |  |  |  |  |
| HCMEB3Z5055 |  | B3 Z5 :All Vertical Piping Works |  | 10d | 2012-12-03 | 2012-12-14 | HCMEB3Z4050 SS | 132d | 0d | HCRA - Global | EFFORT [10 h]; Mechnical Skilled Labours [15 h] | 356.25 | B5 | 22 | MEP | C | MEP |
| HCMEB3Z5065 |  | B3 Z5 :All Horizantal Piping Works |  | 30d | 2012-12-17 | 2013-01-25 | HCMEB3Z5055 | 132d | 0d | HCRA - Global | EFFORT [30 h]; Mechnical Skilled Labours [45 h] | 1,068.75 | B5 | 22 | MEP | C | MEP |
| HCMEB3Z5075 |  | B3 Z5 :Mechanical Final Fix |  | 20d | 2013-06-03 | 2013-06-28 | HCMEB3Z5065 FS+90d, HCMEB4Z5070 | 132d | 0d | HCRA - Global | EFFORT [20 h]; Mechnical Skilled Labours [30 h] | 712.5 | B5 | 22 | MEP | C | MEP |
|  | 020 | **Electrical Works** |  |  | 2012-12-20 | 2014-01-15 |  |  |  |  |  |  |  |  |  |  |  |
| HCMEB3Z5145 |  | B3 Z5 :Blocks Start Date for All Parts | milestone | 0d | 2012-12-20 | 2012-12-20 | HCFWB3Z5012 | 233.12d | 0d | HCRA - 1 - Normal Calendar |  |  | B5 | 26 | MEP | C | MEP |
| HCMEB3Z5205 |  | B3 Z5 :Electrical Coduits & Boards F.F for All Systems |  | 12d | 2012-12-20 | 2013-01-07 | HCMEB3Z5145 | 196d | 20d | HCRA - Global | EFFORT [12 h]; Electrical Skilled Labours [24 h] | 450 | B5 | 26 | MEP | C | MEP |
| HCMEB3Z5165 |  | B3 Z5 :Plastering Finish Date for All Parts | milestone | 0d | 2013-04-13 | 2013-04-13 | HCFWB3Z5009 | 207d | 2d | HCRA - 1 - Normal Calendar |  |  | B5 | 26 | MEP | C | MEP |
| HCMEB3Z5215 |  | B3 Z5 :Electrical Boards Seconed Fix |  | 12d | 2013-04-15 | 2013-05-01 | HCMEB3Z5205 FS+50d, HCMEB3Z5165, HCMEB4Z5210 | 176d | 51d | HCRA - Global | EFFORT [12 h]; Electrical Skilled Labours [24 h] | 450 | B5 | 26 | MEP | C | MEP |
| HCMEB3Z5155 |  | B3 Z5 :Tiling Finish Date for All Parts | milestone | 0d | 2013-06-24 | 2013-06-24 | HCFWB3Z5005 | 132.38d | 0d | HCRA - 1 - Normal Calendar |  |  | B5 | 26 | MEP | C | MEP |
| HCMEB3Z5235 |  | B3 Z5 :Electrcial Wiring |  | 20d | 2013-06-24 | 2013-07-22 | HCMEB3Z5155, HCMEB4Z5230 | 110.38d | 45d | HCRA - Global | EFFORT [20 h]; Electrical Skilled Labours [40 h] | 750 | B5 | 26 | MEP | C | MEP |
| HCMEB3Z5175 |  | B3 Z5 :Gypsum Boards Finish Date for All Parts | milestone | 0d | 2013-07-15 | 2013-07-15 | HCFWB3Z5017 | 265.38d | 144.5d | HCRA - 1 - Normal Calendar |  |  | B5 | 26 | MEP | C | MEP |
| HCMEB3Z5225 |  | B3 Z5 :Cable Tray Installation |  | 10d | 2013-10-09 | 2013-10-23 | HCMEB3Z5165, HCMEB4Z5220 | 45d | 0d | HCRA - Global | EFFORT [10 h]; Electrical Skilled Labours [20 h] | 375 | B5 | 26 | MEP | C | MEP |
| HCMEB3Z5245 |  | B3 Z5 :Cable Laying |  | 10d | 2013-10-23 | 2013-11-06 | HCMEB3Z5225, HCMEB4Z5240 | 45d | 0d | HCRA - Global | EFFORT [10 h]; Electrical Skilled Labours [20 h] | 375 | B5 | 26 | MEP | C | MEP |
| HCMEB3Z5255 |  | B3 Z5 :Electrical Final Fix for All Systems & Boards (Vertical Elements) |  | 10d | 2013-12-18 | 2014-01-01 | HCMEB3Z5245 FS+30d, HCMEB3Z5235 FS+22d, HCMEB3Z5215 FS+30d, HCMEB3Z5165 FS+60d | 101d | 0d | HCRA - Global | EFFORT [10 h]; Electrical Skilled Labours [20 h] | 375 | B5 | 26 | MEP | C | MEP |
| HCMEB3Z5265 |  | B3 Z5 :Electrical Final Fix for All Systems (Horizantel Elements) |  | 10d | 2014-01-01 | 2014-01-15 | HCMEB3Z5255, HCMEB3Z5235, HCMEB3Z5175 | 101d | 55d | HCRA - Global | EFFORT [10 h]; Electrical Skilled Labours [20 h] | 375 | B5 | 26 | MEP | C | MEP |

| ID | WBS | Activity | Type | Duration | Start | Finish | Predecessors | Total float | Free float | Calendar | Resources | Cost | Bill No. | Division No. | Responsibility | Phase Code | Trade |
| --- | --- | --- | --- | --- | --- | --- | --- | --- | --- | --- | --- | --- | --- | --- | --- | --- | --- |
|  | 2 | **Fire Fighting** |  |  | 2012-12-20 | 2013-12-02 |  |  |  |  |  |  |  |  |  |  |  |
| HCMEB3Z5085 |  | B3 Z5 :Horizontal F.F Piping Work |  | 20d | 2012-12-20 | 2013-01-17 | HCMEB3Z5145 | 220d | 0d | HCRA - Global | EFFORT [20 h]; Mechnical Skilled Labours [30 h] | 712.5 | B5 | 21 | MEP | C | MEP |
| HCMEB3Z5095 |  | B3 Z5 :Fire Hose Cabinets |  | 10d | 2013-01-17 | 2013-01-31 | HCMEB3Z5085 | 220d | 137d | HCRA - Global | EFFORT [10 h]; Mechnical Skilled Labours [15 h] | 356.25 | B5 | 21 | MEP | C | MEP |
| HCMEB3Z5105 |  | B3 Z5 :Sprinklers Final Fix |  | 10d | 2013-11-18 | 2013-12-02 | HCMEB3Z5095 FS+70d, HCMEB4Z5100 | 83d | 0d | HCRA - Global | EFFORT [10 h]; Mechnical Skilled Labours [15 h] | 356.25 | B5 | 21 | MEP | C | MEP |
|  | 1 | **Air Conditioning** |  |  | 2013-07-31 | 2014-01-09 |  |  |  |  |  |  |  |  |  |  |  |
| HCMEB3Z5315 |  | B3 Z5 :Duct Installation& Dusct Accecories Installation, Fan coil Unit |  | 14d | 2013-07-31 | 2013-08-20 | HCMEB3Z5145, HCMEB4Z5310 | 37d | 0d | HCRA - Global | EFFORT [20 h]; Mechnical Skilled Labours [30 h] | 712.5 | B5 | 23 | MEP | C | MEP |
| HCMEB3Z5325 |  | B3 Z5 :Duct Insulation Work |  | 15d | 2013-08-20 | 2013-09-10 | HCMEB3Z5315 | 57d | 0d | HCRA - Global | EFFORT [15 h]; Mechnical Skilled Labours [22.5 h] | 534.38 | B5 | 23 | MEP | C | MEP |
| HCMEB3Z5335 |  | B3 Z5 :Exhaust Fans |  | 15d | 2013-09-10 | 2013-10-01 | HCMEB3Z5325 | 57d | 2d | HCRA - Global | EFFORT [15 h]; Mechnical Skilled Labours [22.5 h] | 534.38 | B5 | 23 | MEP | C | MEP |
| HCMEB3Z5345 |  | B3 Z5 :Grills & Diffusers |  | 10d | 2013-12-12 | 2013-12-26 | HCMEB3Z5335 FS+50d, HCMEB4Z5340, HCMEB4Z5340 FF | 55d | 0d | HCRA - Global | EFFORT [10 h]; Mechnical Skilled Labours [15 h] | 356.25 | B5 | 23 | MEP | C | MEP |
| HCMEB3Z5355 |  | B3 Z5 :Mechanical final Fix |  | 10d | 2013-12-26 | 2014-01-09 | HCMEB3Z5345, HCMEB4Z5350 | 55d | 2d | HCRA - Global | EFFORT [10 h]; Mechnical Skilled Labours [15 h] | 356.25 | B5 | 23 | MEP | C | MEP |
|  | 3 | **Water Network** |  |  | 2012-12-03 | 2013-06-28 |  |  |  |  |  |  |  |  |  |  |  |
| HCMEB3Z5365 |  | B3 Z5 :All Vertical Piping Works |  | 10d | 2012-12-03 | 2012-12-14 | HCMEB3Z5055 SS | 243.88d | 0d | HCRA - Global | EFFORT [10 h]; Mechnical Skilled Labours [15 h] | 356.25 | B5 | 22 | MEP | C | MEP |
| HCMEB3Z5375 |  | B3 Z5 :All Horizantal Piping Works |  | 30d | 2012-12-17 | 2013-01-25 | HCMEB3Z5365 | 243.88d | 0d | HCRA - Global | EFFORT [30 h]; Mechnical Skilled Labours [45 h] | 1,068.75 | B5 | 22 | MEP | C | MEP |
| HCMEB3Z5385 |  | B3 Z5 :Mechanical Final Fix |  | 20d | 2013-06-03 | 2013-06-28 | HCMEB3Z5375 FS+90d | 243.88d | 197.88d | HCRA - Global | EFFORT [20 h]; Mechnical Skilled Labours [30 h] | 712.5 | B5 | 22 | MEP | C | MEP |
|  | 6 | **Zone 6** |  |  | 2012-12-03 | 2014-01-15 |  |  |  |  |  |  |  |  |  |  |  |
|  | 7 | **Drainage** |  |  | 2012-12-03 | 2013-06-28 |  |  |  |  |  |  |  |  |  |  |  |
| HCMEB3Z6060 |  | B3 Z6 :All Vertical Piping Works |  | 10d | 2012-12-03 | 2012-12-14 | HCMEB3Z5055 SS | 173.88d | 0d | HCRA - Global | EFFORT [10 h]; Mechnical Skilled Labours [15 h] | 356.25 | B5 | 22 | MEP | C | MEP |
| HCMEB3Z6070 |  | B3 Z6 :All Horizantal Piping Works |  | 30d | 2012-12-17 | 2013-01-25 | HCMEB3Z6060 | 173.88d | 0d | HCRA - Global | EFFORT [30 h]; Mechnical Skilled Labours [45 h] | 1,068.75 | B5 | 22 | MEP | C | MEP |
| HCMEB3Z6080 |  | B3 Z6 :Mechanical Final Fix |  | 20d | 2013-06-03 | 2013-06-28 | HCMEB3Z6070 FS+90d, HCMEB4Z6075 | 173.88d | 0d | HCRA - Global | EFFORT [20 h]; Mechnical Skilled Labours [30 h] | 712.5 | B5 | 22 | MEP | C | MEP |
|  | 020 | **Electrical Works** |  |  | 2013-01-09 | 2014-01-15 |  |  |  |  |  |  |  |  |  |  |  |
| HCMEB3Z6150 |  | B3 Z6 :Blocks Start Date for All Parts | milestone | 0d | 2013-01-09 | 2013-01-09 | HCFWB3Z6011 | 217.12d | 0d | HCRA - 1 - Normal Calendar |  |  | B5 | 26 | MEP | C | MEP |
| HCMEB3Z6210 |  | B3 Z6 :Electrical Coduits & Boards F.F for All Systems |  | 12d | 2013-01-09 | 2013-01-25 | HCMEB3Z6150 | 182d | 6d | HCRA - Global | EFFORT [12 h]; Electrical Skilled Labours [24 h] | 450 | B5 | 26 | MEP | C | MEP |
| HCMEB3Z6170 |  | B3 Z6 :Plastering Finish Date for All Parts | milestone | 0d | 2013-04-13 | 2013-04-13 | HCFWB3Z6009 | 207d | 2d | HCRA - 1 - Normal Calendar |  |  | B5 | 26 | MEP | C | MEP |
| HCMEB3Z6220 |  | B3 Z6 :Electrical Boards Seconed Fix |  | 12d | 2013-04-15 | 2013-05-01 | HCMEB3Z6210 FS+50d, HCMEB3Z6170, HCMEB4Z6215 | 176d | 51d | HCRA - Global | EFFORT [12 h]; Electrical Skilled Labours [24 h] | 450 | B5 | 26 | MEP | C | MEP |
| HCMEB3Z6160 |  | B3 Z6 :Tiling Finish Date for All Parts | milestone | 0d | 2013-07-02 | 2013-07-02 | HCFWB3Z6005 | 125.62d | 0d | HCRA - 1 - Normal Calendar |  |  | B5 | 26 | MEP | C | MEP |
| HCMEB3Z6240 |  | B3 Z6 :Electrcial Wiring |  | 20d | 2013-07-02 | 2013-07-30 | HCMEB3Z6160, HCMEB4Z6235 | 104.62d | 45d | HCRA - Global | EFFORT [20 h]; Electrical Skilled Labours [40 h] | 750 | B5 | 26 | MEP | C | MEP |
| HCMEB3Z6180 |  | B3 Z6 :Gypsum Boards Finish Date for All Parts | milestone | 0d | 2013-07-23 | 2013-07-23 | HCFWB3Z6017 | 258.62d | 137.75d | HCRA - 1 - Normal Calendar |  |  | B5 | 26 | MEP | C | MEP |
| HCMEB3Z6230 |  | B3 Z6 :Cable Tray Installation |  | 10d | 2013-10-09 | 2013-10-23 | HCMEB3Z6170, HCMEB4Z6225 | 45d | 0d | HCRA - Global | EFFORT [10 h]; Electrical Skilled Labours [20 h] | 375 | B5 | 26 | MEP | C | MEP |
| HCMEB3Z6250 |  | B3 Z6 :Cable Laying |  | 10d | 2013-10-23 | 2013-11-06 | HCMEB3Z6230, HCMEB4Z6245 | 45d | 0d | HCRA - Global | EFFORT [10 h]; Electrical Skilled Labours [20 h] | 375 | B5 | 26 | MEP | C | MEP |
| HCMEB3Z6260 |  | B3 Z6 :Electrical Final Fix for All Systems & Boards (Vertical Elements) |  | 10d | 2013-12-18 | 2014-01-01 | HCMEB3Z6250 FS+30d, HCMEB3Z6240 FS+22d, HCMEB3Z6220 FS+30d, HCMEB3Z6170 FS+60d | 101d | 0d | HCRA - Global | EFFORT [10 h]; Electrical Skilled Labours [20 h] | 375 | B5 | 26 | MEP | C | MEP |
| HCMEB3Z6270 |  | B3 Z6 :Electrical Final Fix for All Systems (Horizantel Elements) |  | 10d | 2014-01-01 | 2014-01-15 | HCMEB3Z6260, HCMEB3Z6240, HCMEB3Z6180 | 101d | 55d | HCRA - Global | EFFORT [10 h]; Electrical Skilled Labours [20 h] | 375 | B5 | 26 | MEP | C | MEP |

| ID | WBS | Activity | Type | Duration | Start | Finish | Predecessors | Total float | Free float | Calendar | Resources | Cost | Bill No. | Division No. | Responsibility | Phase Code | Trade |
| --- | --- | --- | --- | --- | --- | --- | --- | --- | --- | --- | --- | --- | --- | --- | --- | --- | --- |
|  | 2 | **Fire Fighting** |  |  | 2013-01-09 | 2013-12-02 |  |  |  |  |  |  |  |  |  |  |  |
| HCMEB3Z6100 |  | B3 Z6 :Horizontal F.F Piping Work |  | 20d | 2013-01-09 | 2013-02-06 | HCMEB3Z6150 | 206d | 0d | HCRA - Global | EFFORT [20 h]; Mechnical Skilled Labours [30 h] | 712.5 | B5 | 21 | MEP | C | MEP |
| HCMEB3Z6110 |  | B3 Z6 :Fire Hose Cabinets |  | 10d | 2013-02-06 | 2013-02-20 | HCMEB3Z6100 | 206d | 123d | HCRA - Global | EFFORT [10 h]; Mechnical Skilled Labours [15 h] | 356.25 | B5 | 21 | MEP | C | MEP |
| HCMEB3Z6330 |  | B3 Z6 :Sprinklers Final Fix |  | 10d | 2013-11-18 | 2013-12-02 | HCMEB3Z6110 FS+70d, HCMEB4Z6325 | 83d | 0d | HCRA - Global | EFFORT [10 h]; Mechnical Skilled Labours [15 h] | 356.25 | B5 | 21 | MEP | C | MEP |
|  | 1 | **Air Conditioning** |  |  | 2013-07-31 | 2014-01-09 |  |  |  |  |  |  |  |  |  |  |  |
| HCMEB3Z6340 |  | B3 Z6 :Duct Installation& Dusct Accecories Installation, Fan coil Unit |  | 14d | 2013-07-31 | 2013-08-20 | HCMEB3Z6150, HCMEB4Z6335 | 37d | 0d | HCRA - Global | EFFORT [20 h]; Mechnical Skilled Labours [30 h] | 712.5 | B5 | 23 | MEP | C | MEP |
| HCMEB3Z6350 |  | B3 Z6 :Duct Insulation Work |  | 15d | 2013-08-20 | 2013-09-10 | HCMEB3Z6340 | 57d | 0d | HCRA - Global | EFFORT [15 h]; Mechnical Skilled Labours [22.5 h] | 534.38 | B5 | 23 | MEP | C | MEP |
| HCMEB3Z6370 |  | B3 Z6 :Exhaust Fans |  | 15d | 2013-09-10 | 2013-10-01 | HCMEB3Z6350 | 57d | 2d | HCRA - Global | EFFORT [15 h]; Mechnical Skilled Labours [22.5 h] | 534.38 | B5 | 23 | MEP | C | MEP |
| HCMEB3Z6380 |  | B3 Z6 :Grills & Diffusers |  | 10d | 2013-12-12 | 2013-12-26 | HCMEB3Z6370 FS+50d, HCMEB4Z6375 | 55d | 0d | HCRA - Global | EFFORT [10 h]; Mechnical Skilled Labours [15 h] | 356.25 | B5 | 23 | MEP | C | MEP |
| HCMEB3Z6405 |  | B3 Z6 :Mechanical final Fix |  | 10d | 2013-12-26 | 2014-01-09 | HCMEB3Z6380, HCMEB4Z6385 | 55d | 2d | HCRA - Global | EFFORT [10 h]; Mechnical Skilled Labours [15 h] | 356.25 | B5 | 23 | MEP | C | MEP |
|  | 3 | **Water Network** |  |  | 2012-12-03 | 2013-06-28 |  |  |  |  |  |  |  |  |  |  |  |
| HCMEB3Z6410 |  | B3 Z6 :All Vertical Piping Works |  | 10d | 2012-12-03 | 2012-12-14 | HCMEB3Z6060 SS | 183.88d | 0d | HCRA - Global | EFFORT [10 h]; Mechnical Skilled Labours [15 h] | 356.25 | B5 | 22 | MEP | C | MEP |
| HCMEB3Z6415 |  | B3 Z6 :All Horizantal Piping Works |  | 30d | 2012-12-17 | 2013-01-25 | HCMEB3Z6410 | 183.88d | 0d | HCRA - Global | EFFORT [30 h]; Mechnical Skilled Labours [45 h] | 1,068.75 | B5 | 22 | MEP | C | MEP |
| HCMEB3Z6420 |  | B3 Z6 :Mechanical Final Fix |  | 20d | 2013-06-03 | 2013-06-28 | HCMEB3Z6415 FS+90d, HCMEB4Z6400 | 183.88d | 0d | HCRA - Global | EFFORT [20 h]; Mechnical Skilled Labours [30 h] | 712.5 | B5 | 22 | MEP | C | MEP |
|  | B2 | **Basement 2** |  |  | 2012-12-30 | 2014-02-12 |  |  |  |  |  |  |  |  |  |  |  |
| HCMEB2000 |  | Start Basement 2 Floor EM Works | milestone | 0d | 2012-12-31 | 2012-12-31 | HCMEB2Z1130 | 50d | 0d |  |  |  | B5 |  | MEP | C | MEP |
| HCMEB20000 |  | End Basement 2 Floor EM Works | milestone | 0d | 2014-01-30 | 2014-01-30 | HCMEB2Z1060, HCMEB2Z1090, HCMEB2Z1340, HCMEB2Z1370 | 105d |  |  |  |  | B5 |  | MEP | C | MEP |
|  | 4 | **Zone 1** |  |  | 2012-12-30 | 2014-01-30 |  |  |  |  |  |  |  |  |  |  |  |
|  | 7 | **Drainage** |  |  | 2012-12-31 | 2013-07-26 |  |  |  |  |  |  |  |  |  |  |  |
| HCMEB2Z1040 |  | B2 Z1 :All Vertical Piping Works |  | 10d | 2012-12-31 | 2013-01-11 | HCMEB2000 | 43.88d | 0d | HCRA - Global | EFFORT [10 h]; Mechnical Skilled Labours [15 h] | 356.25 | B5 | 22 | MEP | C | MEP |
| HCMEB2Z1050 |  | B2 Z1 :All Horizantal Piping Works |  | 30d | 2013-01-14 | 2013-02-22 | HCMEB2Z1040 | 43.88d | 0d | HCRA - Global | EFFORT [30 h]; Mechnical Skilled Labours [45 h] | 1,068.75 | B5 | 22 | MEP | C | MEP |
| HCMEB2Z1060 |  | B2 Z1 :Mechanical Final Fix |  | 20d | 2013-07-01 | 2013-07-26 | HCMEB2Z1050 FS+90d, HCMEB3Z1055 | 43.88d | 15d | HCRA - Global | EFFORT [20 h]; Mechnical Skilled Labours [30 h] | 712.5 | B5 | 22 | MEP | C | MEP |
|  | 020 | **Electrical Works** |  |  | 2012-12-30 | 2014-01-29 |  |  |  |  |  |  |  |  |  |  |  |
| HCMEB2Z1130 |  | B2 Z1 :Blocks Start Date for All Parts | milestone | 0d | 2012-12-30 | 2012-12-30 | HCFWB2Z1012 | 51d | 0.12d | HCRA - 1 - Normal Calendar |  |  | B5 | 26 | MEP | C | MEP |
| HCMEB2Z1190 |  | B2 Z1 :Electrical Coduits & Boards F.F for All Systems |  | 12d | 2012-12-31 | 2013-01-15 | HCMEB2Z1130 | 144.88d | 25.88d | HCRA - Global | EFFORT [12 h]; Electrical Skilled Labours [24 h] | 450 | B5 | 26 | MEP | C | MEP |
| HCMEB2Z1150 |  | B2 Z1 :Plastering Finish Date for All Parts | milestone | 0d | 2013-01-31 | 2013-01-31 | HCFWB2Z1009 | 220.38d | 77.38d | HCRA - 1 - Normal Calendar |  |  | B5 | 26 | MEP | C | MEP |
| HCMEB2Z1200 |  | B2 Z1 :Electrical Boards Seconed Fix |  | 12d | 2013-05-01 | 2013-05-17 | HCMEB2Z1190 FS+50d, HCMEB2Z1150, HCMEB3Z1195 | 119d | 0d | HCRA - Global | EFFORT [12 h]; Electrical Skilled Labours [24 h] | 450 | B5 | 26 | MEP | C | MEP |
| HCMEB2Z1140 |  | B2 Z1 :Tiling Finish Date for All Parts | milestone | 0d | 2013-07-24 | 2013-07-24 | HCFWB2Z1005 | 5d | 3.12d | HCRA - 1 - Normal Calendar |  |  | B5 | 26 | MEP | C | MEP |
| HCMEB2Z1220 |  | B2 Z1 :Electrcial Wiring |  | 20d | 2013-07-29 | 2013-08-23 | HCMEB2Z1140, HCMEB3Z1215 | 1.88d | 0d | HCRA - Global | EFFORT [20 h]; Electrical Skilled Labours [40 h] | 750 | B5 | 26 | MEP | C | MEP |
| HCMEB2Z1210 |  | B2 Z1 :Cable Tray Installation |  | 10d | 2013-10-23 | 2013-11-06 | HCMEB2Z1150, HCMEB3Z1205 | 0d |  | HCRA - Global | EFFORT [10 h]; Electrical Skilled Labours [20 h] | 375 | B5 | 26 | MEP | C | MEP |
| HCMEB2Z1230 |  | B2 Z1 :Cable Laying |  | 10d | 2013-11-06 | 2013-11-20 | HCMEB2Z1210, HCMEB3Z1225 | 0d |  | HCRA - Global | EFFORT [10 h]; Electrical Skilled Labours [20 h] | 375 | B5 | 26 | MEP | C | MEP |
| HCMEB2Z1160 |  | B2 Z1 :Gypsum Boards Finish Date for All Parts | milestone | 0d | 2013-11-26 | 2013-11-26 | HCFWB2Z1018 | 150d | 41d | HCRA - 1 - Normal Calendar |  |  | B5 | 26 | MEP | C | MEP |
| HCMEB2Z1240 |  | B2 Z1 :Electrical Final Fix for All Systems & Boards (Vertical Elements) |  | 10d | 2014-01-01 | 2014-01-15 | HCMEB2Z1230 FS+30d, HCMEB2Z1220 FS+22d, HCMEB2Z1200 FS+30d, HCMEB2Z1150 FS+60d | 91d | 0d | HCRA - Global | EFFORT [10 h]; Electrical Skilled Labours [20 h] | 375 | B5 | 26 | MEP | C | MEP |
| HCMEB2Z1250 |  | B2 Z1 :Electrical Final Fix for All Systems (Horizantel Elements) |  | 10d | 2014-01-15 | 2014-01-29 | HCMEB2Z1240, HCMEB2Z1220, HCMEB2Z1160 | 91d | 81d | HCRA - Global | EFFORT [10 h]; Electrical Skilled Labours [20 h] | 375 | B5 | 26 | MEP | C | MEP |

| ID | WBS | Activity | Type | Duration | Start | Finish | Predecessors | Total float | Free float | Calendar | Resources | Cost | Bill No. | Division No. | Responsibility | Phase Code | Trade |
| --- | --- | --- | --- | --- | --- | --- | --- | --- | --- | --- | --- | --- | --- | --- | --- | --- | --- |
|  | 2 | **Fire Fighting** |  |  | 2012-12-31 | 2013-12-16 |  |  |  |  |  |  |  |  |  |  |  |
| HCMEB2Z1070 |  | B2 Z1 :Horizontal F.F Piping Work |  | 20d | 2012-12-31 | 2013-01-25 | HCMEB2Z1130 | 173.88d | 0d | HCRA - Global | EFFORT [20 h]; Mechnical Skilled Labours [30 h] | 712.5 | B5 | 21 | MEP | C | MEP |
| HCMEB2Z1080 |  | B2 Z1 :Fire Hose Cabinets |  | 10d | 2013-01-28 | 2013-02-08 | HCMEB2Z1070 | 173.88d | 140.88d | HCRA - Global | EFFORT [10 h]; Mechnical Skilled Labours [15 h] | 356.25 | B5 | 21 | MEP | C | MEP |
| HCMEB2Z1090 |  | B2 Z1 :Sprinklers Final Fix |  | 10d | 2013-12-02 | 2013-12-16 | HCMEB2Z1080 FS+70d, HCMEB3Z1085 | 33d | 0d | HCRA - Global | EFFORT [10 h]; Mechnical Skilled Labours [15 h] | 356.25 | B5 | 21 | MEP | C | MEP |
|  | 1 | **Air Conditioning** |  |  | 2013-08-02 | 2014-01-30 |  |  |  |  |  |  |  |  |  |  |  |
| HCMEB2Z1300 |  | B2 Z1 :Duct Installation& Dusct Accecories Installation, Fan coil Unit |  | 8d | 2013-08-02 | 2013-08-14 | HCMEB2Z1130, HCMEB3Z1295 | 21d | 0d | HCRA - Global | EFFORT [20 h]; Mechnical Skilled Labours [30 h] | 712.5 | B5 | 23 | MEP | C | MEP |
| HCMEB2Z1310 |  | B2 Z1 :Duct Insulation Work |  | 15d | 2013-08-14 | 2013-09-04 | HCMEB2Z1300 | 21d | 0d | HCRA - Global | EFFORT [15 h]; Mechnical Skilled Labours [22.5 h] | 534.38 | B5 | 23 | MEP | C | MEP |
| HCMEB2Z1320 |  | B2 Z1 :Exhaust Fans |  | 15d | 2013-09-04 | 2013-09-25 | HCMEB2Z1310 | 21d | 19d | HCRA - Global | EFFORT [15 h]; Mechnical Skilled Labours [22.5 h] | 534.38 | B5 | 23 | MEP | C | MEP |
| HCMEB2Z1330 |  | B2 Z1 :Grills & Diffusers |  | 10d | 2013-12-31 | 2014-01-14 | HCMEB2Z1320 FS+50d, HCMEB3Z1325 | 2d | 0d | HCRA - Global | EFFORT [10 h]; Mechnical Skilled Labours [15 h] | 356.25 | B5 | 23 | MEP | C | MEP |
| HCMEB2Z1340 |  | B2 Z1 :Mechanical final Fix |  | 10d | 2014-01-16 | 2014-01-30 | HCMEB2Z1330, HCMEB3Z1335 | 0d |  | HCRA - Global | EFFORT [10 h]; Mechnical Skilled Labours [15 h] | 356.25 | B5 | 23 | MEP | C | MEP |
|  | 3 | **Water Network** |  |  | 2012-12-31 | 2013-07-26 |  |  |  |  |  |  |  |  |  |  |  |
| HCMEB2Z1350 |  | B2 Z1 :All Vertical Piping Works |  | 10d | 2012-12-31 | 2013-01-11 | HCMEB2Z1040 SS | 43.88d | 0d | HCRA - Global | EFFORT [10 h]; Mechnical Skilled Labours [15 h] | 356.25 | B5 | 22 | MEP | C | MEP |
| HCMEB2Z1360 |  | B2 Z1 :All Horizantal Piping Works |  | 30d | 2013-01-14 | 2013-02-22 | HCMEB2Z1350 | 43.88d | 0d | HCRA - Global | EFFORT [30 h]; Mechnical Skilled Labours [45 h] | 1,068.75 | B5 | 22 | MEP | C | MEP |
| HCMEB2Z1370 |  | B2 Z1 :Mechanical Final Fix |  | 20d | 2013-07-01 | 2013-07-26 | HCMEB2Z1360 FS+90d, HCMEB3Z1365 | 43.88d | 15d | HCRA - Global | EFFORT [20 h]; Mechnical Skilled Labours [30 h] | 712.5 | B5 | 22 | MEP | C | MEP |
|  | 1 | **Zone 2** |  |  | 2012-12-31 | 2014-01-29 |  |  |  |  |  |  |  |  |  |  |  |
|  | 7 | **Drainage** |  |  | 2012-12-31 | 2013-07-26 |  |  |  |  |  |  |  |  |  |  |  |
| HCMEB2Z2045 |  | B2 Z2 :All Vertical Piping Works |  | 10d | 2012-12-31 | 2013-01-11 | HCMEB2Z1040 SS | 63.88d | 0d | HCRA - Global | EFFORT [10 h]; Mechnical Skilled Labours [15 h] | 356.25 | B5 | 22 | MEP | C | MEP |
| HCMEB2Z2055 |  | B2 Z2 :All Horizantal Piping Works |  | 30d | 2013-01-14 | 2013-02-22 | HCMEB2Z2045 | 63.88d | 0d | HCRA - Global | EFFORT [30 h]; Mechnical Skilled Labours [45 h] | 1,068.75 | B5 | 22 | MEP | C | MEP |
| HCMEB2Z2065 |  | B2 Z2 :Mechanical Final Fix |  | 20d | 2013-07-01 | 2013-07-26 | HCMEB2Z2055 FS+90d, HCMEB3Z2060 | 63.88d | 15d | HCRA - Global | EFFORT [20 h]; Mechnical Skilled Labours [30 h] | 712.5 | B5 | 22 | MEP | C | MEP |
|  | 020 | **Electrical Works** |  |  | 2013-02-03 | 2014-01-29 |  |  |  |  |  |  |  |  |  |  |  |
| HCMEB2Z2135 |  | B2 Z2 :Blocks Start Date for All Parts | milestone | 0d | 2013-02-03 | 2013-02-03 | HCFWB2Z2013 | 154d | 0.12d | HCRA - 1 - Normal Calendar |  |  | B5 | 26 | MEP | C | MEP |
| HCMEB2Z2195 |  | B2 Z2 :Electrical Coduits & Boards F.F for All Systems |  | 12d | 2013-02-04 | 2013-02-19 | HCMEB2Z2135 | 128.88d | 0.88d | HCRA - Global | EFFORT [12 h]; Electrical Skilled Labours [24 h] | 450 | B5 | 26 | MEP | C | MEP |
| HCMEB2Z2155 |  | B2 Z2 :Plastering Finish Date for All Parts | milestone | 0d | 2013-03-05 | 2013-03-05 | HCFWB2Z2010 | 203.38d | 49.38d | HCRA - 1 - Normal Calendar |  |  | B5 | 26 | MEP | C | MEP |
| HCMEB2Z2205 |  | B2 Z2 :Electrical Boards Seconed Fix |  | 12d | 2013-05-01 | 2013-05-17 | HCMEB2Z2195 FS+50d, HCMEB2Z2155, HCMEB3Z2200 | 128d | 8d | HCRA - Global | EFFORT [12 h]; Electrical Skilled Labours [24 h] | 450 | B5 | 26 | MEP | C | MEP |
| HCMEB2Z2145 |  | B2 Z2 :Tiling Finish Date for All Parts | milestone | 0d | 2013-06-16 | 2013-06-16 | HCFWB2Z2005 | 38.25d | 6.38d | HCRA - 1 - Normal Calendar |  |  | B5 | 26 | MEP | C | MEP |
| HCMEB2Z2225 |  | B2 Z2 :Electrcial Wiring |  | 20d | 2013-06-24 | 2013-07-19 | HCMEB2Z2145, HCMEB3Z2220 | 26.88d | 0d | HCRA - Global | EFFORT [20 h]; Electrical Skilled Labours [40 h] | 750 | B5 | 26 | MEP | C | MEP |
| HCMEB2Z2215 |  | B2 Z2 :Cable Tray Installation |  | 10d | 2013-10-23 | 2013-11-06 | HCMEB2Z2155, HCMEB3Z2210 | 11d | 0d | HCRA - Global | EFFORT [10 h]; Electrical Skilled Labours [20 h] | 375 | B5 | 26 | MEP | C | MEP |
| HCMEB2Z2235 |  | B2 Z2 :Cable Laying |  | 10d | 2013-11-06 | 2013-11-20 | HCMEB2Z2215, HCMEB3Z2230 | 11d | 0d | HCRA - Global | EFFORT [10 h]; Electrical Skilled Labours [20 h] | 375 | B5 | 26 | MEP | C | MEP |
| HCMEB2Z2165 |  | B2 Z2 :Gypsum Boards Finish Date for All Parts | milestone | 0d | 2013-11-25 | 2013-11-25 | HCFWB2Z2019 | 151d | 42d | HCRA - 1 - Normal Calendar |  |  | B5 | 26 | MEP | C | MEP |
| HCMEB2Z2245 |  | B2 Z2 :Electrical Final Fix for All Systems & Boards (Vertical Elements) |  | 10d | 2014-01-01 | 2014-01-15 | HCMEB2Z2235 FS+30d, HCMEB2Z2225 FS+22d, HCMEB2Z2205 FS+30d, HCMEB2Z2155 FS+60d | 91d | 0d | HCRA - Global | EFFORT [10 h]; Electrical Skilled Labours [20 h] | 375 | B5 | 26 | MEP | C | MEP |
| HCMEB2Z2255 |  | B2 Z2 :Electrical Final Fix for All Systems (Horizantel Elements) |  | 10d | 2014-01-15 | 2014-01-29 | HCMEB2Z2245, HCMEB2Z2225, HCMEB2Z2165 | 91d | 81d | HCRA - Global | EFFORT [10 h]; Electrical Skilled Labours [20 h] | 375 | B5 | 26 | MEP | C | MEP |

| ID | WBS | Activity | Type | Duration | Start | Finish | Predecessors | Total float | Free float | Calendar | Resources | Cost | Bill No. | Division No. | Responsibility | Phase Code | Trade |
| --- | --- | --- | --- | --- | --- | --- | --- | --- | --- | --- | --- | --- | --- | --- | --- | --- | --- |
|  | 2 | **Fire Fighting** |  |  | 2013-02-04 | 2013-12-16 |  |  |  |  |  |  |  |  |  |  |  |
| HCMEB2Z2075 |  | B2 Z2 :Horizontal F.F Piping Work |  | 20d | 2013-02-04 | 2013-03-01 | HCMEB2Z2135 | 158.88d | 0d | HCRA - Global | EFFORT [20 h]; Mechnical Skilled Labours [30 h] | 712.5 | B5 | 21 | MEP | C | MEP |
| HCMEB2Z2085 |  | B2 Z2 :Fire Hose Cabinets |  | 10d | 2013-03-04 | 2013-03-15 | HCMEB2Z2075 | 158.88d | 115.88d | HCRA - Global | EFFORT [10 h]; Mechnical Skilled Labours [15 h] | 356.25 | B5 | 21 | MEP | C | MEP |
| HCMEB2Z2095 |  | B2 Z2 :Sprinklers Final Fix |  | 10d | 2013-12-02 | 2013-12-16 | HCMEB2Z2085 FS+70d, HCMEB3Z2090 | 43d | 0d | HCRA - Global | EFFORT [10 h]; Mechnical Skilled Labours [15 h] | 356.25 | B5 | 21 | MEP | C | MEP |
|  | 1 | **Air Conditioning** |  |  | 2013-08-02 | 2014-01-23 |  |  |  |  |  |  |  |  |  |  |  |
| HCMEB2Z2305 |  | B2 Z2 :Duct Installation& Dusct Accecories Installation, Fan coil Unit |  | 8d | 2013-08-02 | 2013-08-14 | HCMEB2Z2135, HCMEB3Z2300 | 19.12d | 0d | HCRA - Global | EFFORT [20 h]; Mechnical Skilled Labours [30 h] | 712.5 | B5 | 23 | MEP | C | MEP |
| HCMEB2Z2315 |  | B2 Z2 :Duct Insulation Work |  | 15d | 2013-08-14 | 2013-09-04 | HCMEB2Z2305 | 19.12d | 0d | HCRA - Global | EFFORT [15 h]; Mechnical Skilled Labours [22.5 h] | 534.38 | B5 | 23 | MEP | C | MEP |
| HCMEB2Z2325 |  | B2 Z2 :Exhaust Fans |  | 15d | 2013-09-04 | 2013-09-25 | HCMEB2Z2315 | 19.12d | 16d | HCRA - Global | EFFORT [15 h]; Mechnical Skilled Labours [22.5 h] | 534.38 | B5 | 23 | MEP | C | MEP |
| HCMEB2Z2335 |  | B2 Z2 :Grills & Diffusers |  | 10d | 2013-12-26 | 2014-01-09 | HCMEB2Z2325 FS+50d, HCMEB3Z2330 | 3.12d | 0d | HCRA - Global | EFFORT [10 h]; Mechnical Skilled Labours [15 h] | 356.25 | B5 | 23 | MEP | C | MEP |
| HCMEB2Z2345 |  | B2 Z2 :Mechanical final Fix |  | 10d | 2014-01-09 | 2014-01-23 | HCMEB2Z2335, HCMEB3Z2340 | 3.12d | 0d | HCRA - Global | EFFORT [10 h]; Mechnical Skilled Labours [15 h] | 356.25 | B5 | 23 | MEP | C | MEP |
|  | 3 | **Water Network** |  |  | 2012-12-31 | 2013-07-26 |  |  |  |  |  |  |  |  |  |  |  |
| HCMEB2Z2355 |  | B2 Z2 :All Vertical Piping Works |  | 10d | 2012-12-31 | 2013-01-11 | HCMEB2Z2045 SS | 63.88d | 0d | HCRA - Global | EFFORT [10 h]; Mechnical Skilled Labours [15 h] | 356.25 | B5 | 22 | MEP | C | MEP |
| HCMEB2Z2365 |  | B2 Z2 :All Horizantal Piping Works |  | 30d | 2013-01-14 | 2013-02-22 | HCMEB2Z2355 | 63.88d | 0d | HCRA - Global | EFFORT [30 h]; Mechnical Skilled Labours [45 h] | 1,068.75 | B5 | 22 | MEP | C | MEP |
| HCMEB2Z2375 |  | B2 Z2 :Mechanical Final Fix |  | 20d | 2013-07-01 | 2013-07-26 | HCMEB2Z2365 FS+90d, HCMEB3Z2370 | 63.88d | 15d | HCRA - Global | EFFORT [20 h]; Mechnical Skilled Labours [30 h] | 712.5 | B5 | 22 | MEP | C | MEP |
|  | 2 | **Zone 3** |  |  | 2012-12-31 | 2014-02-12 |  |  |  |  |  |  |  |  |  |  |  |
|  | 7 | **Drainage** |  |  | 2012-12-31 | 2013-07-26 |  |  |  |  |  |  |  |  |  |  |  |
| HCMEB2Z3050 |  | B2 Z3 :All Vertical Piping Works |  | 10d | 2012-12-31 | 2013-01-11 | HCMEB2Z2045 SS | 63.88d | 0d | HCRA - Global | EFFORT [10 h]; Mechnical Skilled Labours [15 h] | 356.25 | B5 | 22 | MEP | C | MEP |
| HCMEB2Z3060 |  | B2 Z3 :All Horizantal Piping Works |  | 30d | 2013-01-14 | 2013-02-22 | HCMEB2Z3050 | 63.88d | 0d | HCRA - Global | EFFORT [30 h]; Mechnical Skilled Labours [45 h] | 1,068.75 | B5 | 22 | MEP | C | MEP |
| HCMEB2Z3070 |  | B2 Z3 :Mechanical Final Fix |  | 20d | 2013-07-01 | 2013-07-26 | HCMEB2Z3060 FS+90d, HCMEB3Z3065 | 63.88d | 15d | HCRA - Global | EFFORT [20 h]; Mechnical Skilled Labours [30 h] | 712.5 | B5 | 22 | MEP | C | MEP |
|  | 020 | **Electrical Works** |  |  | 2013-01-20 | 2014-02-12 |  |  |  |  |  |  |  |  |  |  |  |
| HCMEB2Z3140 |  | B2 Z3 :Blocks Start Date for All Parts | milestone | 0d | 2013-01-20 | 2013-01-20 | HCFWB2Z3015 | 181d | 0.12d | HCRA - 1 - Normal Calendar |  |  | B5 | 26 | MEP | C | MEP |
| HCMEB2Z3200 |  | B2 Z3 :Electrical Coduits & Boards F.F for All Systems |  | 12d | 2013-01-21 | 2013-02-05 | HCMEB2Z3140 | 150.88d | 33d | HCRA - Global | EFFORT [12 h]; Electrical Skilled Labours [24 h] | 450 | B5 | 26 | MEP | C | MEP |
| HCMEB2Z3160 |  | B2 Z3 :Plastering Finish Date for All Parts | milestone | 0d | 2013-06-01 | 2013-06-01 | HCFWB2Z3013 | 142.62d | 1.75d | HCRA - 1 - Normal Calendar |  |  | B5 | 26 | MEP | C | MEP |
| HCMEB2Z3210 |  | B2 Z3 :Electrical Boards Seconed Fix |  | 12d | 2013-06-03 | 2013-06-18 | HCMEB2Z3200 FS+50d, HCMEB2Z3160, HCMEB3Z3205 | 117.88d | 0d | HCRA - Global | EFFORT [12 h]; Electrical Skilled Labours [24 h] | 450 | B5 | 26 | MEP | C | MEP |
| HCMEB2Z3150 |  | B2 Z3 :Tiling Finish Date for All Parts | milestone | 0d | 2013-08-05 | 2013-08-05 | HCFWB2Z3007 | 145.12d | 103d | HCRA - 1 - Normal Calendar |  |  | B5 | 26 | MEP | C | MEP |
| HCMEB2Z3220 |  | B2 Z3 :Cable Tray Installation |  | 10d | 2013-10-23 | 2013-11-06 | HCMEB2Z3160, HCMEB3Z3215 | 21d | 0d | HCRA - Global | EFFORT [10 h]; Electrical Skilled Labours [20 h] | 375 | B5 | 26 | MEP | C | MEP |
| HCMEB2Z3240 |  | B2 Z3 :Cable Laying |  | 10d | 2013-11-06 | 2013-11-20 | HCMEB2Z3220, HCMEB3Z3235 | 21d | 0d | HCRA - Global | EFFORT [10 h]; Electrical Skilled Labours [20 h] | 375 | B5 | 26 | MEP | C | MEP |
| HCMEB2Z3170 |  | B2 Z3 :Gypsum Boards Finish Date for All Parts | milestone | 0d | 2013-11-25 | 2013-11-25 | HCFWB2Z3021 | 151d | 54d | HCRA - 1 - Normal Calendar |  |  | B5 | 26 | MEP | C | MEP |
| HCMEB2Z3230 |  | B2 Z3 :Electrcial Wiring |  | 8d | 2013-12-04 | 2013-12-16 | HCMEB2Z3150, HCMEB3Z3225 | 37d | 0d | HCRA - Global | EFFORT [20 h]; Electrical Skilled Labours [40 h] | 750 | B5 | 26 | MEP | C | MEP |
| HCMEB2Z3250 |  | B2 Z3 :Electrical Final Fix for All Systems & Boards (Vertical Elements) |  | 10d | 2014-01-15 | 2014-01-29 | HCMEB2Z3240 FS+30d, HCMEB2Z3230 FS+22d, HCMEB2Z3210 FS+30d, HCMEB2Z3160 FS+60d | 81d | 0d | HCRA - Global | EFFORT [10 h]; Electrical Skilled Labours [20 h] | 375 | B5 | 26 | MEP | C | MEP |
| HCMEB2Z3260 |  | B2 Z3 :Electrical Final Fix for All Systems (Horizantel Elements) |  | 10d | 2014-01-29 | 2014-02-12 | HCMEB2Z3250, HCMEB2Z3230, HCMEB2Z3170 | 81d | 71d | HCRA - Global | EFFORT [10 h]; Electrical Skilled Labours [20 h] | 375 | B5 | 26 | MEP | C | MEP |

| ID | WBS | Activity | Type | Duration | Start | Finish | Predecessors | Total float | Free float | Calendar | Resources | Cost | Bill No. | Division No. | Responsibility | Phase Code | Trade |
| --- | --- | --- | --- | --- | --- | --- | --- | --- | --- | --- | --- | --- | --- | --- | --- | --- | --- |
|  | 2 | **Fire Fighting** |  |  | 2013-01-21 | 2013-12-16 |  |  |  |  |  |  |  |  |  |  |  |
| HCMEB2Z3080 |  | B2 Z3 :Horizontal F.F Piping Work |  | 20d | 2013-01-21 | 2013-02-15 | HCMEB2Z3140 | 168.88d | 0d | HCRA - Global | EFFORT [20 h]; Mechnical Skilled Labours [30 h] | 712.5 | B5 | 21 | MEP | C | MEP |
| HCMEB2Z3090 |  | B2 Z3 :Fire Hose Cabinets |  | 10d | 2013-02-18 | 2013-03-01 | HCMEB2Z3080 | 168.88d | 125.88d | HCRA - Global | EFFORT [10 h]; Mechnical Skilled Labours [15 h] | 356.25 | B5 | 21 | MEP | C | MEP |
| HCMEB2Z3100 |  | B2 Z3 :Sprinklers Final Fix |  | 10d | 2013-12-02 | 2013-12-16 | HCMEB2Z3090 FS+70d, HCMEB3Z3095 | 43d | 0d | HCRA - Global | EFFORT [10 h]; Mechnical Skilled Labours [15 h] | 356.25 | B5 | 21 | MEP | C | MEP |
|  | 1 | **Air Conditioning** |  |  | 2013-08-08 | 2014-01-23 |  |  |  |  |  |  |  |  |  |  |  |
| HCMEB2Z3310 |  | B2 Z3 :Duct Installation& Dusct Accecories Installation, Fan coil Unit |  | 10d | 2013-08-08 | 2013-08-22 | HCMEB2Z3140, HCMEB3Z3305 | 25d | 0d | HCRA - Global | EFFORT [20 h]; Mechnical Skilled Labours [30 h] | 712.5 | B5 | 23 | MEP | C | MEP |
| HCMEB2Z3320 |  | B2 Z3 :Duct Insulation Work |  | 15d | 2013-08-22 | 2013-09-12 | HCMEB2Z3310 | 25d | 0d | HCRA - Global | EFFORT [15 h]; Mechnical Skilled Labours [22.5 h] | 534.38 | B5 | 23 | MEP | C | MEP |
| HCMEB2Z3330 |  | B2 Z3 :Exhaust Fans |  | 15d | 2013-09-12 | 2013-10-03 | HCMEB2Z3320 | 25d | 10d | HCRA - Global | EFFORT [15 h]; Mechnical Skilled Labours [22.5 h] | 534.38 | B5 | 23 | MEP | C | MEP |
| HCMEB2Z3340 |  | B2 Z3 :Grills & Diffusers |  | 10d | 2013-12-26 | 2014-01-09 | HCMEB2Z3330 FS+50d, HCMEB3Z3335 | 15d | 0d | HCRA - Global | EFFORT [10 h]; Mechnical Skilled Labours [15 h] | 356.25 | B5 | 23 | MEP | C | MEP |
| HCMEB2Z3350 |  | B2 Z3 :Mechanical final Fix |  | 10d | 2014-01-09 | 2014-01-23 | HCMEB2Z3340, HCMEB3Z3345 | 15d | 0d | HCRA - Global | EFFORT [10 h]; Mechnical Skilled Labours [15 h] | 356.25 | B5 | 23 | MEP | C | MEP |
|  | 3 | **Water Network** |  |  | 2012-12-31 | 2013-07-26 |  |  |  |  |  |  |  |  |  |  |  |
| HCMEB2Z3360 |  | B2 Z3 :All Vertical Piping Works |  | 10d | 2012-12-31 | 2013-01-11 | HCMEB2Z3050 SS | 63.88d | 0d | HCRA - Global | EFFORT [10 h]; Mechnical Skilled Labours [15 h] | 356.25 | B5 | 22 | MEP | C | MEP |
| HCMEB2Z3370 |  | B2 Z3 :All Horizantal Piping Works |  | 30d | 2013-01-14 | 2013-02-22 | HCMEB2Z3360 | 63.88d | 0d | HCRA - Global | EFFORT [30 h]; Mechnical Skilled Labours [45 h] | 1,068.75 | B5 | 22 | MEP | C | MEP |
| HCMEB2Z3380 |  | B2 Z3 :Mechanical Final Fix |  | 20d | 2013-07-01 | 2013-07-26 | HCMEB2Z3370 FS+90d, HCMEB3Z3375 | 63.88d | 15d | HCRA - Global | EFFORT [20 h]; Mechnical Skilled Labours [30 h] | 712.5 | B5 | 22 | MEP | C | MEP |
|  | 4 | **Conveying System** |  |  |  |  |  |  |  |  |  |  |  |  |  |  |  |
|  | 3 | **Zone 4** |  |  | 2012-12-31 | 2014-01-29 |  |  |  |  |  |  |  |  |  |  |  |
|  | 7 | **Drainage** |  |  | 2012-12-31 | 2013-07-26 |  |  |  |  |  |  |  |  |  |  |  |
| HCMEB2Z4055 |  | B2 Z4 :All Vertical Piping Works |  | 10d | 2012-12-31 | 2013-01-11 | HCMEB2Z3050 SS | 132d | 0d | HCRA - Global | EFFORT [10 h]; Mechnical Skilled Labours [15 h] | 356.25 | B5 | 22 | MEP | C | MEP |
| HCMEB2Z4065 |  | B2 Z4 :All Horizantal Piping Works |  | 30d | 2013-01-14 | 2013-02-22 | HCMEB2Z4055 | 143.88d | 0d | HCRA - Global | EFFORT [30 h]; Mechnical Skilled Labours [45 h] | 1,068.75 | B5 | 22 | MEP | C | MEP |
| HCMEB2Z4075 |  | B2 Z4 :Mechanical Final Fix |  | 20d | 2013-07-01 | 2013-07-26 | HCMEB2Z4065 FS+90d, HCMEB3Z4070 | 143.88d | 15d | HCRA - Global | EFFORT [20 h]; Mechnical Skilled Labours [30 h] | 712.5 | B5 | 22 | MEP | C | MEP |
|  | 020 | **Electrical Works** |  |  | 2013-02-05 | 2014-01-29 |  |  |  |  |  |  |  |  |  |  |  |
| HCMEB2Z4145 |  | B2 Z4 :Blocks Start Date for All Parts | milestone | 0d | 2013-02-05 | 2013-02-05 | HCFWB2Z4012 | 210d | 0d | HCRA - 1 - Normal Calendar |  |  | B5 | 26 | MEP | C | MEP |
| HCMEB2Z4205 |  | B2 Z4 :Electrical Coduits & Boards F.F for All Systems |  | 12d | 2013-02-05 | 2013-02-21 | HCMEB2Z4145 | 175d | 0d | HCRA - Global | EFFORT [12 h]; Electrical Skilled Labours [24 h] | 450 | B5 | 26 | MEP | C | MEP |
| HCMEB2Z4165 |  | B2 Z4 :Plastering Finish Date for All Parts | milestone | 0d | 2013-05-02 | 2013-05-02 | HCFWB2Z4009 | 202d | 0d | HCRA - 1 - Normal Calendar |  |  | B5 | 26 | MEP | C | MEP |
| HCMEB2Z4215 |  | B2 Z4 :Electrical Boards Seconed Fix |  | 12d | 2013-05-02 | 2013-05-20 | HCMEB2Z4205 FS+50d, HCMEB2Z4165, HCMEB3Z4210 | 175d | 56.75d | HCRA - Global | EFFORT [12 h]; Electrical Skilled Labours [24 h] | 450 | B5 | 26 | MEP | C | MEP |
| HCMEB2Z4155 |  | B2 Z4 :Tiling Finish Date for All Parts | milestone | 0d | 2013-07-21 | 2013-07-21 | HCFWB2Z4005 | 104.62d | 0.75d | HCRA - 1 - Normal Calendar |  |  | B5 | 26 | MEP | C | MEP |
| HCMEB2Z4235 |  | B2 Z4 :Electrcial Wiring |  | 20d | 2013-07-22 | 2013-08-16 | HCMEB2Z4155, HCMEB3Z4230 | 86.88d | 53.88d | HCRA - Global | EFFORT [20 h]; Electrical Skilled Labours [40 h] | 750 | B5 | 26 | MEP | C | MEP |
| HCMEB2Z4225 |  | B2 Z4 :Cable Tray Installation |  | 10d | 2013-10-23 | 2013-11-06 | HCMEB2Z4165, HCMEB3Z4220 | 45d | 0d | HCRA - Global | EFFORT [10 h]; Electrical Skilled Labours [20 h] | 375 | B5 | 26 | MEP | C | MEP |
| HCMEB2Z4245 |  | B2 Z4 :Cable Laying |  | 10d | 2013-11-06 | 2013-11-20 | HCMEB2Z4225, HCMEB3Z4240 | 45d | 0d | HCRA - Global | EFFORT [10 h]; Electrical Skilled Labours [20 h] | 375 | B5 | 26 | MEP | C | MEP |
| HCMEB2Z4175 |  | B2 Z4 :Gypsum Boards Finish Date for All Parts | milestone | 0d | 2013-11-25 | 2013-11-25 | HCFWB2Z4018 | 151d | 42d | HCRA - 1 - Normal Calendar |  |  | B5 | 26 | MEP | C | MEP |
| HCMEB2Z4255 |  | B2 Z4 :Electrical Final Fix for All Systems & Boards (Vertical Elements) |  | 10d | 2014-01-01 | 2014-01-15 | HCMEB2Z4245 FS+30d, HCMEB2Z4235 FS+22d, HCMEB2Z4215 FS+30d, HCMEB2Z4165 FS+60d | 91d | 0d | HCRA - Global | EFFORT [10 h]; Electrical Skilled Labours [20 h] | 375 | B5 | 26 | MEP | C | MEP |
| HCMEB2Z4265 |  | B2 Z4 :Electrical Final Fix for All Systems (Horizantel Elements) |  | 10d | 2014-01-15 | 2014-01-29 | HCMEB2Z4255, HCMEB2Z4235, HCMEB2Z4175 | 91d | 81d | HCRA - Global | EFFORT [10 h]; Electrical Skilled Labours [20 h] | 375 | B5 | 26 | MEP | C | MEP |

| ID | WBS | Activity | Type | Duration | Start | Finish | Predecessors | Total float | Free float | Calendar | Resources | Cost | Bill No. | Division No. | Responsibility | Phase Code | Trade |
| --- | --- | --- | --- | --- | --- | --- | --- | --- | --- | --- | --- | --- | --- | --- | --- | --- | --- |
|  | 2 | **Fire Fighting** |  |  | 2013-02-05 | 2013-12-16 |  |  |  |  |  |  |  |  |  |  |  |
| HCMEB2Z4085 |  | B2 Z4 :Horizontal F.F Piping Work |  | 20d | 2013-02-05 | 2013-03-05 | HCMEB2Z4145 | 197d | 0d | HCRA - Global | EFFORT [20 h]; Mechnical Skilled Labours [30 h] | 712.5 | B5 | 21 | MEP | C | MEP |
| HCMEB2Z4095 |  | B2 Z4 :Fire Hose Cabinets |  | 10d | 2013-03-05 | 2013-03-19 | HCMEB2Z4085 | 197d | 114d | HCRA - Global | EFFORT [10 h]; Mechnical Skilled Labours [15 h] | 356.25 | B5 | 21 | MEP | C | MEP |
| HCMEB2Z4105 |  | B2 Z4 :Sprinklers Final Fix |  | 10d | 2013-12-02 | 2013-12-16 | HCMEB2Z4095 FS+70d, HCMEB3Z4100 | 83d | 0d | HCRA - Global | EFFORT [10 h]; Mechnical Skilled Labours [15 h] | 356.25 | B5 | 21 | MEP | C | MEP |
|  | 1 | **Air Conditioning** |  |  | 2013-08-20 | 2014-01-27 |  |  |  |  |  |  |  |  |  |  |  |
| HCMEB2Z4315 |  | B2 Z4 :Duct Installation& Dusct Accecories Installation, Fan coil Unit |  | 14d | 2013-08-20 | 2013-09-09 | HCMEB2Z4145, HCMEB3Z4310 | 37d | 0d | HCRA - Global | EFFORT [20 h]; Mechnical Skilled Labours [30 h] | 712.5 | B5 | 23 | MEP | C | MEP |
| HCMEB2Z4325 |  | B2 Z4 :Duct Insulation Work |  | 15d | 2013-09-09 | 2013-09-30 | HCMEB2Z4315 | 53d | 0d | HCRA - Global | EFFORT [15 h]; Mechnical Skilled Labours [22.5 h] | 534.38 | B5 | 23 | MEP | C | MEP |
| HCMEB2Z4335 |  | B2 Z4 :Exhaust Fans |  | 15d | 2013-09-30 | 2013-10-21 | HCMEB2Z4325 | 53d | 0d | HCRA - Global | EFFORT [15 h]; Mechnical Skilled Labours [22.5 h] | 534.38 | B5 | 23 | MEP | C | MEP |
| HCMEB2Z4345 |  | B2 Z4 :Grills & Diffusers |  | 10d | 2013-12-30 | 2014-01-13 | HCMEB2Z4335 FS+50d, HCMEB3Z4340 | 53d | 0d | HCRA - Global | EFFORT [10 h]; Mechnical Skilled Labours [15 h] | 356.25 | B5 | 23 | MEP | C | MEP |
| HCMEB2Z4355 |  | B2 Z4 :Mechanical final Fix |  | 10d | 2014-01-13 | 2014-01-27 | HCMEB2Z4345, HCMEB3Z4350 | 53d | 4d | HCRA - Global | EFFORT [10 h]; Mechnical Skilled Labours [15 h] | 356.25 | B5 | 23 | MEP | C | MEP |
|  | 3 | **Water Network** |  |  | 2012-12-31 | 2013-07-26 |  |  |  |  |  |  |  |  |  |  |  |
| HCMEB2Z4365 |  | B2 Z4 :All Vertical Piping Works |  | 10d | 2012-12-31 | 2013-01-11 | HCMEB2Z4055 SS | 143.88d | 0d | HCRA - Global | EFFORT [10 h]; Mechnical Skilled Labours [15 h] | 356.25 | B5 | 22 | MEP | C | MEP |
| HCMEB2Z4375 |  | B2 Z4 :All Horizantal Piping Works |  | 30d | 2013-01-14 | 2013-02-22 | HCMEB2Z4365 | 143.88d | 0d | HCRA - Global | EFFORT [30 h]; Mechnical Skilled Labours [45 h] | 1,068.75 | B5 | 22 | MEP | C | MEP |
| HCMEB2Z4385 |  | B2 Z4 :Mechanical Final Fix |  | 20d | 2013-07-01 | 2013-07-26 | HCMEB2Z4375 FS+90d, HCMEB3Z4380 | 143.88d | 15d | HCRA - Global | EFFORT [20 h]; Mechnical Skilled Labours [30 h] | 712.5 | B5 | 22 | MEP | C | MEP |
|  | 5 | **Zone 5** |  |  | 2012-12-31 | 2014-01-29 |  |  |  |  |  |  |  |  |  |  |  |
|  | 7 | **Drainage** |  |  | 2012-12-31 | 2013-07-26 |  |  |  |  |  |  |  |  |  |  |  |
| HCMEB2Z5060 |  | B2 Z5 :All Vertical Piping Works |  | 10d | 2012-12-31 | 2013-01-11 | HCMEB2Z4055 SS | 132d | 0d | HCRA - Global | EFFORT [10 h]; Mechnical Skilled Labours [15 h] | 356.25 | B5 | 22 | MEP | C | MEP |
| HCMEB2Z5070 |  | B2 Z5 :All Horizantal Piping Works |  | 30d | 2013-01-14 | 2013-02-22 | HCMEB2Z5060 | 132d | 0d | HCRA - Global | EFFORT [30 h]; Mechnical Skilled Labours [45 h] | 1,068.75 | B5 | 22 | MEP | C | MEP |
| HCMEB2Z5080 |  | B2 Z5 :Mechanical Final Fix |  | 20d | 2013-07-01 | 2013-07-26 | HCMEB2Z5070 FS+90d, HCMEB3Z5075 | 132d | 15d | HCRA - Global | EFFORT [20 h]; Mechnical Skilled Labours [30 h] | 712.5 | B5 | 22 | MEP | C | MEP |
|  | 020 | **Electrical Works** |  |  | 2013-01-26 | 2014-01-29 |  |  |  |  |  |  |  |  |  |  |  |
| HCMEB2Z5150 |  | B2 Z5 :Blocks Start Date for All Parts | milestone | 0d | 2013-01-26 | 2013-01-26 | HCFWB2Z5012 | 219d | 1.12d | HCRA - 1 - Normal Calendar |  |  | B5 | 26 | MEP | C | MEP |
| HCMEB2Z5210 |  | B2 Z5 :Electrical Coduits & Boards F.F for All Systems |  | 12d | 2013-01-28 | 2013-02-12 | HCMEB2Z5150 | 181.88d | 56.88d | HCRA - Global | EFFORT [12 h]; Electrical Skilled Labours [24 h] | 450 | B5 | 26 | MEP | C | MEP |
| HCMEB2Z5170 |  | B2 Z5 :Plastering Finish Date for All Parts | milestone | 0d | 2013-07-11 | 2013-07-11 | HCFWB2Z5009 | 142d | 0d | HCRA - 1 - Normal Calendar |  |  | B5 | 26 | MEP | C | MEP |
| HCMEB2Z5220 |  | B2 Z5 :Electrical Boards Seconed Fix |  | 12d | 2013-07-11 | 2013-07-29 | HCMEB2Z5210 FS+50d, HCMEB2Z5170, HCMEB3Z5215 | 125d | 53d | HCRA - Global | EFFORT [12 h]; Electrical Skilled Labours [24 h] | 450 | B5 | 26 | MEP | C | MEP |
| HCMEB2Z5160 |  | B2 Z5 :Tiling Finish Date for All Parts | milestone | 0d | 2013-09-23 | 2013-09-23 | HCFWB2Z5005 | 77.38d | 0d | HCRA - 1 - Normal Calendar |  |  | B5 | 26 | MEP | C | MEP |
| HCMEB2Z5240 |  | B2 Z5 :Electrcial Wiring |  | 20d | 2013-09-23 | 2013-10-21 | HCMEB2Z5160, HCMEB3Z5235 | 65.38d | 30.38d | HCRA - Global | EFFORT [20 h]; Electrical Skilled Labours [40 h] | 750 | B5 | 26 | MEP | C | MEP |
| HCMEB2Z5180 |  | B2 Z5 :Gypsum Boards Finish Date for All Parts | milestone | 0d | 2013-10-14 | 2013-10-14 | HCFWB2Z5017 | 187.38d | 78.38d | HCRA - 1 - Normal Calendar |  |  | B5 | 26 | MEP | C | MEP |
| HCMEB2Z5230 |  | B2 Z5 :Cable Tray Installation |  | 10d | 2013-10-23 | 2013-11-06 | HCMEB2Z5170, HCMEB3Z5225 | 45d | 0d | HCRA - Global | EFFORT [10 h]; Electrical Skilled Labours [20 h] | 375 | B5 | 26 | MEP | C | MEP |
| HCMEB2Z5250 |  | B2 Z5 :Cable Laying |  | 10d | 2013-11-06 | 2013-11-20 | HCMEB2Z5230, HCMEB3Z5245 | 45d | 0d | HCRA - Global | EFFORT [10 h]; Electrical Skilled Labours [20 h] | 375 | B5 | 26 | MEP | C | MEP |
| HCMEB2Z5260 |  | B2 Z5 :Electrical Final Fix for All Systems & Boards (Vertical Elements) |  | 10d | 2014-01-01 | 2014-01-15 | HCMEB2Z5250 FS+30d, HCMEB2Z5240 FS+22d, HCMEB2Z5220 FS+30d, HCMEB2Z5170 FS+60d | 91d | 0d | HCRA - Global | EFFORT [10 h]; Electrical Skilled Labours [20 h] | 375 | B5 | 26 | MEP | C | MEP |
| HCMEB2Z5270 |  | B2 Z5 :Electrical Final Fix for All Systems (Horizantel Elements) |  | 10d | 2014-01-15 | 2014-01-29 | HCMEB2Z5260, HCMEB2Z5240, HCMEB2Z5180 | 91d | 81d | HCRA - Global | EFFORT [10 h]; Electrical Skilled Labours [20 h] | 375 | B5 | 26 | MEP | C | MEP |

| ID | WBS | Activity | Type | Duration | Start | Finish | Predecessors | Total float | Free float | Calendar | Resources | Cost | Bill No. | Division No. | Responsibility | Phase Code | Trade |
| --- | --- | --- | --- | --- | --- | --- | --- | --- | --- | --- | --- | --- | --- | --- | --- | --- | --- |
|  | 2 | **Fire Fighting** |  |  | 2013-01-28 | 2013-12-16 |  |  |  |  |  |  |  |  |  |  |  |
| HCMEB2Z5090 |  | B2 Z5 :Horizontal F.F Piping Work |  | 20d | 2013-01-28 | 2013-02-22 | HCMEB2Z5150 | 203.88d | 0d | HCRA - Global | EFFORT [20 h]; Mechnical Skilled Labours [30 h] | 712.5 | B5 | 21 | MEP | C | MEP |
| HCMEB2Z5100 |  | B2 Z5 :Fire Hose Cabinets |  | 10d | 2013-02-25 | 2013-03-08 | HCMEB2Z5090 | 203.88d | 120.88d | HCRA - Global | EFFORT [10 h]; Mechnical Skilled Labours [15 h] | 356.25 | B5 | 21 | MEP | C | MEP |
| HCMEB2Z5110 |  | B2 Z5 :Sprinklers Final Fix |  | 10d | 2013-12-02 | 2013-12-16 | HCMEB2Z5100 FS+70d, HCMEB3Z5105 | 83d | 0d | HCRA - Global | EFFORT [10 h]; Mechnical Skilled Labours [15 h] | 356.25 | B5 | 21 | MEP | C | MEP |
|  | 1 | **Air Conditioning** |  |  | 2013-08-20 | 2014-01-27 |  |  |  |  |  |  |  |  |  |  |  |
| HCMEB2Z5320 |  | B2 Z5 :Duct Installation& Dusct Accecories Installation, Fan coil Unit |  | 14d | 2013-08-20 | 2013-09-09 | HCMEB2Z5150, HCMEB3Z5315 | 37d | 0d | HCRA - Global | EFFORT [20 h]; Mechnical Skilled Labours [30 h] | 712.5 | B5 | 23 | MEP | C | MEP |
| HCMEB2Z5330 |  | B2 Z5 :Duct Insulation Work |  | 15d | 2013-09-09 | 2013-09-30 | HCMEB2Z5320 | 53d | 0d | HCRA - Global | EFFORT [15 h]; Mechnical Skilled Labours [22.5 h] | 534.38 | B5 | 23 | MEP | C | MEP |
| HCMEB2Z5340 |  | B2 Z5 :Exhaust Fans |  | 15d | 2013-09-30 | 2013-10-21 | HCMEB2Z5330 | 53d | 0d | HCRA - Global | EFFORT [15 h]; Mechnical Skilled Labours [22.5 h] | 534.38 | B5 | 23 | MEP | C | MEP |
| HCMEB2Z5350 |  | B2 Z5 :Grills & Diffusers |  | 10d | 2013-12-30 | 2014-01-13 | HCMEB2Z5340 FS+50d, HCMEB3Z5345, HCMEB3Z5345 FF | 53d | 0d | HCRA - Global | EFFORT [10 h]; Mechnical Skilled Labours [15 h] | 356.25 | B5 | 23 | MEP | C | MEP |
| HCMEB2Z5360 |  | B2 Z5 :Mechanical final Fix |  | 10d | 2014-01-13 | 2014-01-27 | HCMEB2Z5350, HCMEB3Z5355 | 53d | 4d | HCRA - Global | EFFORT [10 h]; Mechnical Skilled Labours [15 h] | 356.25 | B5 | 23 | MEP | C | MEP |
|  | 3 | **Water Network** |  |  | 2012-12-31 | 2013-07-26 |  |  |  |  |  |  |  |  |  |  |  |
| HCMEB2Z5370 |  | B2 Z5 :All Vertical Piping Works |  | 10d | 2012-12-31 | 2013-01-11 | HCMEB2Z5060 SS | 223.88d | 0d | HCRA - Global | EFFORT [10 h]; Mechnical Skilled Labours [15 h] | 356.25 | B5 | 22 | MEP | C | MEP |
| HCMEB2Z5380 |  | B2 Z5 :All Horizantal Piping Works |  | 30d | 2013-01-14 | 2013-02-22 | HCMEB2Z5370 | 223.88d | 0d | HCRA - Global | EFFORT [30 h]; Mechnical Skilled Labours [45 h] | 1,068.75 | B5 | 22 | MEP | C | MEP |
| HCMEB2Z5390 |  | B2 Z5 :Mechanical Final Fix |  | 20d | 2013-07-01 | 2013-07-26 | HCMEB2Z5380 FS+90d | 223.88d | 213.88d | HCRA - Global | EFFORT [20 h]; Mechnical Skilled Labours [30 h] | 712.5 | B5 | 22 | MEP | C | MEP |
|  | 6 | **Zone 6** |  |  | 2012-12-30 | 2014-01-29 |  |  |  |  |  |  |  |  |  |  |  |
|  | 7 | **Drainage** |  |  | 2012-12-31 | 2013-07-26 |  |  |  |  |  |  |  |  |  |  |  |
| HCMEB2Z6065 |  | B2 Z6 :All Vertical Piping Works |  | 10d | 2012-12-31 | 2013-01-11 | HCMEB2Z5060 SS | 173.88d | 0d | HCRA - Global | EFFORT [10 h]; Mechnical Skilled Labours [15 h] | 356.25 | B5 | 22 | MEP | C | MEP |
| HCMEB2Z6075 |  | B2 Z6 :All Horizantal Piping Works |  | 30d | 2013-01-14 | 2013-02-22 | HCMEB2Z6065 | 173.88d | 0d | HCRA - Global | EFFORT [30 h]; Mechnical Skilled Labours [45 h] | 1,068.75 | B5 | 22 | MEP | C | MEP |
| HCMEB2Z6085 |  | B2 Z6 :Mechanical Final Fix |  | 20d | 2013-07-01 | 2013-07-26 | HCMEB2Z6075 FS+90d, HCMEB3Z6080 | 173.88d | 15d | HCRA - Global | EFFORT [20 h]; Mechnical Skilled Labours [30 h] | 712.5 | B5 | 22 | MEP | C | MEP |
|  | 020 | **Electrical Works** |  |  | 2012-12-30 | 2014-01-29 |  |  |  |  |  |  |  |  |  |  |  |
| HCMEB2Z6155 |  | B2 Z6 :Blocks Start Date for All Parts | milestone | 0d | 2012-12-30 | 2012-12-30 | HCFWB2Z6012 | 241d | 0.12d | HCRA - 1 - Normal Calendar |  |  | B5 | 26 | MEP | C | MEP |
| HCMEB2Z6215 |  | B2 Z6 :Electrical Coduits & Boards F.F for All Systems |  | 12d | 2012-12-31 | 2013-01-15 | HCMEB2Z6155 | 201.88d | 76.88d | HCRA - Global | EFFORT [12 h]; Electrical Skilled Labours [24 h] | 450 | B5 | 26 | MEP | C | MEP |
| HCMEB2Z6175 |  | B2 Z6 :Plastering Finish Date for All Parts | milestone | 0d | 2013-07-11 | 2013-07-11 | HCFWB2Z6009 | 142d | 0d | HCRA - 1 - Normal Calendar |  |  | B5 | 26 | MEP | C | MEP |
| HCMEB2Z6225 |  | B2 Z6 :Electrical Boards Seconed Fix |  | 12d | 2013-07-11 | 2013-07-29 | HCMEB2Z6215 FS+50d, HCMEB2Z6175, HCMEB3Z6220 | 125d | 0d | HCRA - Global | EFFORT [12 h]; Electrical Skilled Labours [24 h] | 450 | B5 | 26 | MEP | C | MEP |
| HCMEB2Z6165 |  | B2 Z6 :Tiling Finish Date for All Parts | milestone | 0d | 2013-10-01 | 2013-10-01 | HCFWB2Z6005 | 70.62d | 0d | HCRA - 1 - Normal Calendar |  |  | B5 | 26 | MEP | C | MEP |
| HCMEB2Z6245 |  | B2 Z6 :Electrcial Wiring |  | 20d | 2013-10-01 | 2013-10-29 | HCMEB2Z6165, HCMEB3Z6240 | 59.62d | 0d | HCRA - Global | EFFORT [20 h]; Electrical Skilled Labours [40 h] | 750 | B5 | 26 | MEP | C | MEP |
| HCMEB2Z6235 |  | B2 Z6 :Cable Tray Installation |  | 10d | 2013-10-23 | 2013-11-06 | HCMEB2Z6175, HCMEB3Z6230 | 45d | 0d | HCRA - Global | EFFORT [10 h]; Electrical Skilled Labours [20 h] | 375 | B5 | 26 | MEP | C | MEP |
| HCMEB2Z6185 |  | B2 Z6 :Gypsum Boards Finish Date for All Parts | milestone | 0d | 2013-10-27 | 2013-10-27 | HCFWB2Z6017 | 176.62d | 67.62d | HCRA - 1 - Normal Calendar |  |  | B5 | 26 | MEP | C | MEP |
| HCMEB2Z6255 |  | B2 Z6 :Cable Laying |  | 10d | 2013-11-06 | 2013-11-20 | HCMEB2Z6235, HCMEB3Z6250 | 45d | 0d | HCRA - Global | EFFORT [10 h]; Electrical Skilled Labours [20 h] | 375 | B5 | 26 | MEP | C | MEP |
| HCMEB2Z6265 |  | B2 Z6 :Electrical Final Fix for All Systems & Boards (Vertical Elements) |  | 10d | 2014-01-01 | 2014-01-15 | HCMEB2Z6255 FS+30d, HCMEB2Z6245 FS+22d, HCMEB2Z6225 FS+30d, HCMEB2Z6175 FS+60d | 91d | 0d | HCRA - Global | EFFORT [10 h]; Electrical Skilled Labours [20 h] | 375 | B5 | 26 | MEP | C | MEP |
| HCMEB2Z6275 |  | B2 Z6 :Electrical Final Fix for All Systems (Horizantel Elements) |  | 10d | 2014-01-15 | 2014-01-29 | HCMEB2Z6265, HCMEB2Z6245, HCMEB2Z6185 | 91d | 81d | HCRA - Global | EFFORT [10 h]; Electrical Skilled Labours [20 h] | 375 | B5 | 26 | MEP | C | MEP |

| ID | WBS | Activity | Type | Duration | Start | Finish | Predecessors | Total float | Free float | Calendar | Resources | Cost | Bill No. | Division No. | Responsibility | Phase Code | Trade |
| --- | --- | --- | --- | --- | --- | --- | --- | --- | --- | --- | --- | --- | --- | --- | --- | --- | --- |
|  | 2 | **Fire Fighting** |  |  | 2012-12-31 | 2013-12-16 |  |  |  |  |  |  |  |  |  |  |  |
| HCMEB2Z6105 |  | B2 Z6 :Horizontal F.F Piping Work |  | 20d | 2012-12-31 | 2013-01-25 | HCMEB2Z6155 | 223.88d | 0d | HCRA - Global | EFFORT [20 h]; Mechnical Skilled Labours [30 h] | 712.5 | B5 | 21 | MEP | C | MEP |
| HCMEB2Z6115 |  | B2 Z6 :Fire Hose Cabinets |  | 10d | 2013-01-28 | 2013-02-08 | HCMEB2Z6105 | 223.88d | 140.88d | HCRA - Global | EFFORT [10 h]; Mechnical Skilled Labours [15 h] | 356.25 | B5 | 21 | MEP | C | MEP |
| HCMEB2Z6335 |  | B2 Z6 :Sprinklers Final Fix |  | 10d | 2013-12-02 | 2013-12-16 | HCMEB2Z6115 FS+70d, HCMEB3Z6330 | 83d | 0d | HCRA - Global | EFFORT [10 h]; Mechnical Skilled Labours [15 h] | 356.25 | B5 | 21 | MEP | C | MEP |
|  | 1 | **Air Conditioning** |  |  | 2013-08-20 | 2014-01-27 |  |  |  |  |  |  |  |  |  |  |  |
| HCMEB2Z6345 |  | B2 Z6 :Duct Installation& Dusct Accecories Installation, Fan coil Unit |  | 14d | 2013-08-20 | 2013-09-09 | HCMEB2Z6155, HCMEB3Z6340 | 37d | 0d | HCRA - Global | EFFORT [20 h]; Mechnical Skilled Labours [30 h] | 712.5 | B5 | 23 | MEP | C | MEP |
| HCMEB2Z6355 |  | B2 Z6 :Duct Insulation Work |  | 15d | 2013-09-09 | 2013-09-30 | HCMEB2Z6345 | 53d | 0d | HCRA - Global | EFFORT [15 h]; Mechnical Skilled Labours [22.5 h] | 534.38 | B5 | 23 | MEP | C | MEP |
| HCMEB2Z6375 |  | B2 Z6 :Exhaust Fans |  | 15d | 2013-09-30 | 2013-10-21 | HCMEB2Z6355 | 53d | 0d | HCRA - Global | EFFORT [15 h]; Mechnical Skilled Labours [22.5 h] | 534.38 | B5 | 23 | MEP | C | MEP |
| HCMEB2Z6385 |  | B2 Z6 :Grills & Diffusers |  | 10d | 2013-12-30 | 2014-01-13 | HCMEB2Z6375 FS+50d, HCMEB3Z6380 | 53d | 0d | HCRA - Global | EFFORT [10 h]; Mechnical Skilled Labours [15 h] | 356.25 | B5 | 23 | MEP | C | MEP |
| HCMEB2Z6425 |  | B2 Z6 :Mechanical final Fix |  | 10d | 2014-01-13 | 2014-01-27 | HCMEB2Z6385, HCMEB3Z6405 | 53d | 4d | HCRA - Global | EFFORT [10 h]; Mechnical Skilled Labours [15 h] | 356.25 | B5 | 23 | MEP | C | MEP |
|  | 3 | **Water Network** |  |  | 2012-12-31 | 2013-07-26 |  |  |  |  |  |  |  |  |  |  |  |
| HCMEB2Z6430 |  | B2 Z6 :All Vertical Piping Works |  | 10d | 2012-12-31 | 2013-01-11 | HCMEB2Z6065 SS | 183.88d | 0d | HCRA - Global | EFFORT [10 h]; Mechnical Skilled Labours [15 h] | 356.25 | B5 | 22 | MEP | C | MEP |
| HCMEB2Z6435 |  | B2 Z6 :All Horizantal Piping Works |  | 30d | 2013-01-14 | 2013-02-22 | HCMEB2Z6430 | 183.88d | 0d | HCRA - Global | EFFORT [30 h]; Mechnical Skilled Labours [45 h] | 1,068.75 | B5 | 22 | MEP | C | MEP |
| HCMEB2Z6440 |  | B2 Z6 :Mechanical Final Fix |  | 20d | 2013-07-01 | 2013-07-26 | HCMEB2Z6435 FS+90d, HCMEB3Z6420 | 183.88d | 15d | HCRA - Global | EFFORT [20 h]; Mechnical Skilled Labours [30 h] | 712.5 | B5 | 22 | MEP | C | MEP |
|  | B4111 | **Basement 1** |  |  | 2013-02-14 | 2014-03-24 |  |  |  |  |  |  |  |  |  |  |  |
| HCMEB1000 |  | Start Basement 1 Floor EM Works | milestone | 0d | 2013-02-16 | 2013-02-16 | HCMEB1Z1135 | 36d | 2d |  |  |  | B5 |  | MEP | C | MEP |
| HCMEB10000 |  | End Basement 1 Floor EM Works | milestone | 0d | 2014-02-15 | 2014-02-15 | HCMEB1Z1065, HCMEB1Z1095, HCMEB1Z1345, HCMEB1Z1375, HCMEB1Z6090, HCMEB1Z6445 | 93d |  |  |  |  | B5 |  | MEP | C | MEP |
|  | 4 | **Zone 1** |  |  | 2013-02-14 | 2014-02-13 |  |  |  |  |  |  |  |  |  |  |  |
|  | 7 | **Drainage** |  |  | 2013-02-18 | 2013-09-13 |  |  |  |  |  |  |  |  |  |  |  |
| HCMEB1Z1045 |  | B1 Z1 :All Vertical Piping Works |  | 10d | 2013-02-18 | 2013-03-01 | HCMEB1000 | 28.88d | 0d | HCRA - Global | EFFORT [10 h]; Mechnical Skilled Labours [15 h] | 356.25 | B5 | 22 | MEP | C | MEP |
| HCMEB1Z1055 |  | B1 Z1 :All Horizantal Piping Works |  | 30d | 2013-03-04 | 2013-04-12 | HCMEB1Z1045 | 28.88d | 0d | HCRA - Global | EFFORT [30 h]; Mechnical Skilled Labours [45 h] | 1,068.75 | B5 | 22 | MEP | C | MEP |
| HCMEB1Z1065 |  | B1 Z1 :Mechanical Final Fix |  | 20d | 2013-08-19 | 2013-09-13 | HCMEB1Z1055 FS+90d, HCMEB2Z1060 | 28.88d | 0d | HCRA - Global | EFFORT [20 h]; Mechnical Skilled Labours [30 h] | 712.5 | B5 | 22 | MEP | C | MEP |
|  | 020 | **Electrical Works** |  |  | 2013-02-14 | 2014-02-12 |  |  |  |  |  |  |  |  |  |  |  |
| HCMEB1Z1135 |  | B1 Z1 :Blocks Start Date for All Parts | milestone | 0d | 2013-02-14 | 2013-02-14 | HCFWB1Z1011 | 36d | 0d | HCRA - 1 - Normal Calendar |  |  | B5 | 26 | MEP | C | MEP |
| HCMEB1Z1195 |  | B1 Z1 :Electrical Coduits & Boards F.F for All Systems |  | 12d | 2013-02-14 | 2013-03-04 | HCMEB1Z1135 | 123d | 4d | HCRA - Global | EFFORT [12 h]; Electrical Skilled Labours [24 h] | 450 | B5 | 26 | MEP | C | MEP |
| HCMEB1Z1155 |  | B1 Z1 :Plastering Finish Date for All Parts | milestone | 0d | 2013-03-17 | 2013-03-17 | HCFWB1Z1008 | 196.38d | 52.5d | HCRA - 1 - Normal Calendar |  |  | B5 | 26 | MEP | C | MEP |
| HCMEB1Z1205 |  | B1 Z1 :Electrical Boards Seconed Fix |  | 12d | 2013-05-17 | 2013-06-04 | HCMEB1Z1195 FS+50d, HCMEB1Z1155, HCMEB2Z1200 | 119d | 0d | HCRA - Global | EFFORT [12 h]; Electrical Skilled Labours [24 h] | 450 | B5 | 26 | MEP | C | MEP |
| HCMEB1Z1145 |  | B1 Z1 :Tiling Finish Date for All Parts | milestone | 0d | 2013-06-04 | 2013-06-04 | HCFWB1Z1004 | 72.25d | 70.38d | HCRA - 1 - Normal Calendar |  |  | B5 | 26 | MEP | C | MEP |
| HCMEB1Z1225 |  | B1 Z1 :Electrcial Wiring |  | 20d | 2013-08-26 | 2013-09-20 | HCMEB1Z1145, HCMEB2Z1220 | 1.88d | 0d | HCRA - Global | EFFORT [20 h]; Electrical Skilled Labours [40 h] | 750 | B5 | 26 | MEP | C | MEP |
| HCMEB1Z1215 |  | B1 Z1 :Cable Tray Installation |  | 10d | 2013-11-06 | 2013-11-20 | HCMEB1Z1155, HCMEB2Z1210 | 0d |  | HCRA - Global | EFFORT [10 h]; Electrical Skilled Labours [20 h] | 375 | B5 | 26 | MEP | C | MEP |
| HCMEB1Z1235 |  | B1 Z1 :Cable Laying |  | 10d | 2013-11-20 | 2013-12-04 | HCMEB1Z1215, HCMEB2Z1230 | 0d |  | HCRA - Global | EFFORT [10 h]; Electrical Skilled Labours [20 h] | 375 | B5 | 26 | MEP | C | MEP |
| HCMEB1Z1165 |  | B1 Z1 :Gypsum Boards Finish Date for All Parts | milestone | 0d | 2013-12-12 | 2013-12-12 | HCFWB1Z1017 | 94d | 40d | HCRA - 1 - Normal Calendar |  |  | B5 | 26 | MEP | C | MEP |
| HCMEB1Z1245 |  | B1 Z1 :Electrical Final Fix for All Systems & Boards (Vertical Elements) |  | 10d | 2014-01-15 | 2014-01-29 | HCMEB1Z1235 FS+30d, HCMEB1Z1225 FS+22d, HCMEB1Z1205 FS+30d, HCMEB1Z1155 FS+60d | 45d | 0d | HCRA - Global | EFFORT [10 h]; Electrical Skilled Labours [20 h] | 375 | B5 | 26 | MEP | C | MEP |
| HCMEB1Z1255 |  | B1 Z1 :Electrical Final Fix for All Systems (Horizantel Elements) |  | 10d | 2014-01-29 | 2014-02-12 | HCMEB1Z1245, HCMEB1Z1225, HCMEB1Z1165 | 45d | 27.62d | HCRA - Global | EFFORT [10 h]; Electrical Skilled Labours [20 h] | 375 | B5 | 26 | MEP | C | MEP |

| ID | WBS | Activity | Type | Duration | Start | Finish | Predecessors | Total float | Free float | Calendar | Resources | Cost | Bill No. | Division No. | Responsibility | Phase Code | Trade |
| --- | --- | --- | --- | --- | --- | --- | --- | --- | --- | --- | --- | --- | --- | --- | --- | --- | --- |
|  | 2 | **Fire Fighting** |  |  | 2013-02-14 | 2013-12-30 |  |  |  |  |  |  |  |  |  |  |  |
| HCMEB1Z1075 |  | B1 Z1 :Horizontal F.F Piping Work |  | 20d | 2013-02-14 | 2013-03-14 | HCMEB1Z1135 | 150d | 0d | HCRA - Global | EFFORT [20 h]; Mechnical Skilled Labours [30 h] | 712.5 | B5 | 21 | MEP | C | MEP |
| HCMEB1Z1085 |  | B1 Z1 :Fire Hose Cabinets |  | 10d | 2013-03-14 | 2013-03-28 | HCMEB1Z1075 | 150d | 117d | HCRA - Global | EFFORT [10 h]; Mechnical Skilled Labours [15 h] | 356.25 | B5 | 21 | MEP | C | MEP |
| HCMEB1Z1095 |  | B1 Z1 :Sprinklers Final Fix |  | 10d | 2013-12-16 | 2013-12-30 | HCMEB1Z1085 FS+70d, HCMEB2Z1090 | 33d | 0d | HCRA - Global | EFFORT [10 h]; Mechnical Skilled Labours [15 h] | 356.25 | B5 | 21 | MEP | C | MEP |
|  | 1 | **Air Conditioning** |  |  | 2013-08-14 | 2014-02-13 |  |  |  |  |  |  |  |  |  |  |  |
| HCMEB1Z1305 |  | B1 Z1 :Duct Installation& Dusct Accecories Installation, Fan coil Unit |  | 8d | 2013-08-14 | 2013-08-26 | HCMEB1Z1135, HCMEB2Z1300 | 23d | 0d | HCRA - Global | EFFORT [20 h]; Mechnical Skilled Labours [30 h] | 712.5 | B5 | 23 | MEP | C | MEP |
| HCMEB1Z1315 |  | B1 Z1 :Duct Insulation Work |  | 15d | 2013-08-26 | 2013-09-16 | HCMEB1Z1305 | 23d | 0d | HCRA - Global | EFFORT [15 h]; Mechnical Skilled Labours [22.5 h] | 534.38 | B5 | 23 | MEP | C | MEP |
| HCMEB1Z1325 |  | B1 Z1 :Exhaust Fans |  | 15d | 2013-09-16 | 2013-10-07 | HCMEB1Z1315 | 23d | 21d | HCRA - Global | EFFORT [15 h]; Mechnical Skilled Labours [22.5 h] | 534.38 | B5 | 23 | MEP | C | MEP |
| HCMEB1Z1335 |  | B1 Z1 :Grills & Diffusers |  | 10d | 2014-01-14 | 2014-01-28 | HCMEB1Z1325 FS+50d, HCMEB2Z1330 | 2d | 0d | HCRA - Global | EFFORT [10 h]; Mechnical Skilled Labours [15 h] | 356.25 | B5 | 23 | MEP | C | MEP |
| HCMEB1Z1345 |  | B1 Z1 :Mechanical final Fix |  | 10d | 2014-01-30 | 2014-02-13 | HCMEB1Z1335, HCMEB2Z1340 | 0d |  | HCRA - Global | EFFORT [10 h]; Mechnical Skilled Labours [15 h] | 356.25 | B5 | 23 | MEP | C | MEP |
|  | 3 | **Water Network** |  |  | 2013-02-18 | 2013-09-13 |  |  |  |  |  |  |  |  |  |  |  |
| HCMEB1Z1355 |  | B1 Z1 :All Vertical Piping Works |  | 10d | 2013-02-18 | 2013-03-01 | HCMEB1Z1045 SS | 28.88d | 0d | HCRA - Global | EFFORT [10 h]; Mechnical Skilled Labours [15 h] | 356.25 | B5 | 22 | MEP | C | MEP |
| HCMEB1Z1365 |  | B1 Z1 :All Horizantal Piping Works |  | 30d | 2013-03-04 | 2013-04-12 | HCMEB1Z1355 | 28.88d | 0d | HCRA - Global | EFFORT [30 h]; Mechnical Skilled Labours [45 h] | 1,068.75 | B5 | 22 | MEP | C | MEP |
| HCMEB1Z1375 |  | B1 Z1 :Mechanical Final Fix |  | 20d | 2013-08-19 | 2013-09-13 | HCMEB1Z1365 FS+90d, HCMEB2Z1370 | 28.88d | 0d | HCRA - Global | EFFORT [20 h]; Mechnical Skilled Labours [30 h] | 712.5 | B5 | 22 | MEP | C | MEP |
|  | 1 | **Zone 2** |  |  | 2013-02-18 | 2014-02-12 |  |  |  |  |  |  |  |  |  |  |  |
|  | 7 | **Drainage** |  |  | 2013-02-18 | 2013-09-13 |  |  |  |  |  |  |  |  |  |  |  |
| HCMEB1Z2050 |  | B1 Z2 :All Vertical Piping Works |  | 10d | 2013-02-18 | 2013-03-01 | HCMEB1Z1045 SS | 48.88d | 0d | HCRA - Global | EFFORT [10 h]; Mechnical Skilled Labours [15 h] | 356.25 | B5 | 22 | MEP | C | MEP |
| HCMEB1Z2060 |  | B1 Z2 :All Horizantal Piping Works |  | 30d | 2013-03-04 | 2013-04-12 | HCMEB1Z2050 | 48.88d | 0d | HCRA - Global | EFFORT [30 h]; Mechnical Skilled Labours [45 h] | 1,068.75 | B5 | 22 | MEP | C | MEP |
| HCMEB1Z2070 |  | B1 Z2 :Mechanical Final Fix |  | 20d | 2013-08-19 | 2013-09-13 | HCMEB1Z2060 FS+90d, HCMEB2Z2065 | 48.88d | 0d | HCRA - Global | EFFORT [20 h]; Mechnical Skilled Labours [30 h] | 712.5 | B5 | 22 | MEP | C | MEP |
|  | 020 | **Electrical Works** |  |  | 2013-03-04 | 2014-02-12 |  |  |  |  |  |  |  |  |  |  |  |
| HCMEB1Z2140 |  | B1 Z2 :Blocks Start Date for All Parts | milestone | 0d | 2013-03-04 | 2013-03-04 | HCFWB1Z2011 | 144d | 0d | HCRA - 1 - Normal Calendar |  |  | B5 | 26 | MEP | C | MEP |
| HCMEB1Z2200 |  | B1 Z2 :Electrical Coduits & Boards F.F for All Systems |  | 12d | 2013-03-04 | 2013-03-20 | HCMEB1Z2140 | 120d | 0d | HCRA - Global | EFFORT [12 h]; Electrical Skilled Labours [24 h] | 450 | B5 | 26 | MEP | C | MEP |
| HCMEB1Z2160 |  | B1 Z2 :Plastering Finish Date for All Parts | milestone | 0d | 2013-04-09 | 2013-04-09 | HCFWB1Z2008 | 187.38d | 43.38d | HCRA - 1 - Normal Calendar |  |  | B5 | 26 | MEP | C | MEP |
| HCMEB1Z2210 |  | B1 Z2 :Electrical Boards Seconed Fix |  | 12d | 2013-05-29 | 2013-06-14 | HCMEB1Z2200 FS+50d, HCMEB1Z2160, HCMEB2Z2205 | 120d | 0d | HCRA - Global | EFFORT [12 h]; Electrical Skilled Labours [24 h] | 450 | B5 | 26 | MEP | C | MEP |
| HCMEB1Z2150 |  | B1 Z2 :Tiling Finish Date for All Parts | milestone | 0d | 2013-06-27 | 2013-06-27 | HCFWB1Z2004 | 52.25d | 20.38d | HCRA - 1 - Normal Calendar |  |  | B5 | 26 | MEP | C | MEP |
| HCMEB1Z2230 |  | B1 Z2 :Electrcial Wiring |  | 20d | 2013-07-22 | 2013-08-16 | HCMEB1Z2150, HCMEB2Z2225 | 26.88d | 0d | HCRA - Global | EFFORT [20 h]; Electrical Skilled Labours [40 h] | 750 | B5 | 26 | MEP | C | MEP |
| HCMEB1Z2220 |  | B1 Z2 :Cable Tray Installation |  | 10d | 2013-11-06 | 2013-11-20 | HCMEB1Z2160, HCMEB2Z2215 | 11d | 0d | HCRA - Global | EFFORT [10 h]; Electrical Skilled Labours [20 h] | 375 | B5 | 26 | MEP | C | MEP |
| HCMEB1Z2240 |  | B1 Z2 :Cable Laying |  | 10d | 2013-11-20 | 2013-12-04 | HCMEB1Z2220, HCMEB2Z2235 | 11d | 0d | HCRA - Global | EFFORT [10 h]; Electrical Skilled Labours [20 h] | 375 | B5 | 26 | MEP | C | MEP |
| HCMEB1Z2170 |  | B1 Z2 :Gypsum Boards Finish Date for All Parts | milestone | 0d | 2013-12-11 | 2013-12-11 | HCFWB1Z2017 | 95d | 41d | HCRA - 1 - Normal Calendar |  |  | B5 | 26 | MEP | C | MEP |
| HCMEB1Z2250 |  | B1 Z2 :Electrical Final Fix for All Systems & Boards (Vertical Elements) |  | 10d | 2014-01-15 | 2014-01-29 | HCMEB1Z2240 FS+30d, HCMEB1Z2230 FS+22d, HCMEB1Z2210 FS+30d, HCMEB1Z2160 FS+60d | 45d | 0d | HCRA - Global | EFFORT [10 h]; Electrical Skilled Labours [20 h] | 375 | B5 | 26 | MEP | C | MEP |
| HCMEB1Z2260 |  | B1 Z2 :Electrical Final Fix for All Systems (Horizantel Elements) |  | 10d | 2014-01-29 | 2014-02-12 | HCMEB1Z2250, HCMEB1Z2230, HCMEB1Z2170 | 45d | 27.62d | HCRA - Global | EFFORT [10 h]; Electrical Skilled Labours [20 h] | 375 | B5 | 26 | MEP | C | MEP |

| ID | WBS | Activity | Type | Duration | Start | Finish | Predecessors | Total float | Free float | Calendar | Resources | Cost | Bill No. | Division No. | Responsibility | Phase Code | Trade |
| --- | --- | --- | --- | --- | --- | --- | --- | --- | --- | --- | --- | --- | --- | --- | --- | --- | --- |
|  | 2 | **Fire Fighting** |  |  | 2013-03-04 | 2013-12-30 |  |  |  |  |  |  |  |  |  |  |  |
| HCMEB1Z2080 |  | B1 Z2 :Horizontal F.F Piping Work |  | 20d | 2013-03-04 | 2013-04-01 | HCMEB1Z2140 | 148d | 0d | HCRA - Global | EFFORT [20 h]; Mechnical Skilled Labours [30 h] | 712.5 | B5 | 21 | MEP | C | MEP |
| HCMEB1Z2090 |  | B1 Z2 :Fire Hose Cabinets |  | 10d | 2013-04-01 | 2013-04-15 | HCMEB1Z2080 | 148d | 105d | HCRA - Global | EFFORT [10 h]; Mechnical Skilled Labours [15 h] | 356.25 | B5 | 21 | MEP | C | MEP |
| HCMEB1Z2100 |  | B1 Z2 :Sprinklers Final Fix |  | 10d | 2013-12-16 | 2013-12-30 | HCMEB1Z2090 FS+70d, HCMEB2Z2095 | 43d | 0d | HCRA - Global | EFFORT [10 h]; Mechnical Skilled Labours [15 h] | 356.25 | B5 | 21 | MEP | C | MEP |
|  | 1 | **Air Conditioning** |  |  | 2013-08-14 | 2014-02-06 |  |  |  |  |  |  |  |  |  |  |  |
| HCMEB1Z2310 |  | B1 Z2 :Duct Installation& Dusct Accecories Installation, Fan coil Unit |  | 8d | 2013-08-14 | 2013-08-26 | HCMEB1Z2140, HCMEB2Z2305 | 21.12d | 0d | HCRA - Global | EFFORT [20 h]; Mechnical Skilled Labours [30 h] | 712.5 | B5 | 23 | MEP | C | MEP |
| HCMEB1Z2320 |  | B1 Z2 :Duct Insulation Work |  | 15d | 2013-08-26 | 2013-09-16 | HCMEB1Z2310 | 21.12d | 0d | HCRA - Global | EFFORT [15 h]; Mechnical Skilled Labours [22.5 h] | 534.38 | B5 | 23 | MEP | C | MEP |
| HCMEB1Z2330 |  | B1 Z2 :Exhaust Fans |  | 15d | 2013-09-16 | 2013-10-07 | HCMEB1Z2320 | 21.12d | 18d | HCRA - Global | EFFORT [15 h]; Mechnical Skilled Labours [22.5 h] | 534.38 | B5 | 23 | MEP | C | MEP |
| HCMEB1Z2340 |  | B1 Z2 :Grills & Diffusers |  | 10d | 2014-01-09 | 2014-01-23 | HCMEB1Z2330 FS+50d, HCMEB2Z2335 | 3.12d | 0d | HCRA - Global | EFFORT [10 h]; Mechnical Skilled Labours [15 h] | 356.25 | B5 | 23 | MEP | C | MEP |
| HCMEB1Z2350 |  | B1 Z2 :Mechanical final Fix |  | 10d | 2014-01-23 | 2014-02-06 | HCMEB1Z2340, HCMEB2Z2345 | 3.12d | 0d | HCRA - Global | EFFORT [10 h]; Mechnical Skilled Labours [15 h] | 356.25 | B5 | 23 | MEP | C | MEP |
|  | 3 | **Water Network** |  |  | 2013-02-18 | 2013-09-13 |  |  |  |  |  |  |  |  |  |  |  |
| HCMEB1Z2360 |  | B1 Z2 :All Vertical Piping Works |  | 10d | 2013-02-18 | 2013-03-01 | HCMEB1Z2050 SS | 48.88d | 0d | HCRA - Global | EFFORT [10 h]; Mechnical Skilled Labours [15 h] | 356.25 | B5 | 22 | MEP | C | MEP |
| HCMEB1Z2370 |  | B1 Z2 :All Horizantal Piping Works |  | 30d | 2013-03-04 | 2013-04-12 | HCMEB1Z2360 | 48.88d | 0d | HCRA - Global | EFFORT [30 h]; Mechnical Skilled Labours [45 h] | 1,068.75 | B5 | 22 | MEP | C | MEP |
| HCMEB1Z2380 |  | B1 Z2 :Mechanical Final Fix |  | 20d | 2013-08-19 | 2013-09-13 | HCMEB1Z2370 FS+90d, HCMEB2Z2375 | 48.88d | 0d | HCRA - Global | EFFORT [20 h]; Mechnical Skilled Labours [30 h] | 712.5 | B5 | 22 | MEP | C | MEP |
|  | 2 | **Zone 3** |  |  | 2013-02-18 | 2014-02-24 |  |  |  |  |  |  |  |  |  |  |  |
|  | 4 | **Conveying System** |  |  |  |  |  |  |  |  |  |  |  |  |  |  |  |
|  | 7 | **Drainage** |  |  | 2013-02-18 | 2013-09-13 |  |  |  |  |  |  |  |  |  |  |  |
| HCMEB1Z3055 |  | B1 Z3 :All Vertical Piping Works |  | 10d | 2013-02-18 | 2013-03-01 | HCMEB1Z2050 SS | 48.88d | 0d | HCRA - Global | EFFORT [10 h]; Mechnical Skilled Labours [15 h] | 356.25 | B5 | 22 | MEP | C | MEP |
| HCMEB1Z3065 |  | B1 Z3 :All Horizantal Piping Works |  | 30d | 2013-03-04 | 2013-04-12 | HCMEB1Z3055 | 48.88d | 0d | HCRA - Global | EFFORT [30 h]; Mechnical Skilled Labours [45 h] | 1,068.75 | B5 | 22 | MEP | C | MEP |
| HCMEB1Z3075 |  | B1 Z3 :Mechanical Final Fix |  | 20d | 2013-08-19 | 2013-09-13 | HCMEB1Z3065 FS+90d, HCMEB2Z3070 | 48.88d | 0d | HCRA - Global | EFFORT [20 h]; Mechnical Skilled Labours [30 h] | 712.5 | B5 | 22 | MEP | C | MEP |
|  | 020 | **Electrical Works** |  |  | 2013-03-09 | 2014-02-24 |  |  |  |  |  |  |  |  |  |  |  |
| HCMEB1Z3145 |  | B1 Z3 :Blocks Start Date for All Parts | milestone | 0d | 2013-03-09 | 2013-03-09 | HCFWB1Z3013 | 154d | 1.12d | HCRA - 1 - Normal Calendar |  |  | B5 | 26 | MEP | C | MEP |
| HCMEB1Z3205 |  | B1 Z3 :Electrical Coduits & Boards F.F for All Systems |  | 12d | 2013-03-11 | 2013-03-26 | HCMEB1Z3145 | 127.88d | 10d | HCRA - Global | EFFORT [12 h]; Electrical Skilled Labours [24 h] | 450 | B5 | 26 | MEP | C | MEP |
| HCMEB1Z3165 |  | B1 Z3 :Plastering Finish Date for All Parts | milestone | 0d | 2013-06-01 | 2013-06-01 | HCFWB1Z3016 | 155.12d | 15.12d | HCRA - 1 - Normal Calendar |  |  | B5 | 26 | MEP | C | MEP |
| HCMEB1Z3215 |  | B1 Z3 :Electrical Boards Seconed Fix |  | 12d | 2013-06-19 | 2013-07-04 | HCMEB1Z3205 FS+50d, HCMEB1Z3165, HCMEB2Z3210 | 117.88d | 56.88d | HCRA - Global | EFFORT [12 h]; Electrical Skilled Labours [24 h] | 450 | B5 | 26 | MEP | C | MEP |
| HCMEB1Z3155 |  | B1 Z3 :Tiling Finish Date for All Parts | milestone | 0d | 2013-08-14 | 2013-08-14 | HCFWB1Z3007 | 148.25d | 105.25d | HCRA - 1 - Normal Calendar |  |  | B5 | 26 | MEP | C | MEP |
| HCMEB1Z3225 |  | B1 Z3 :Cable Tray Installation |  | 10d | 2013-11-06 | 2013-11-20 | HCMEB1Z3165, HCMEB2Z3220 | 21d | 0d | HCRA - Global | EFFORT [10 h]; Electrical Skilled Labours [20 h] | 375 | B5 | 26 | MEP | C | MEP |
| HCMEB1Z3245 |  | B1 Z3 :Cable Laying |  | 10d | 2013-11-20 | 2013-12-04 | HCMEB1Z3225, HCMEB2Z3240 | 21d | 0d | HCRA - Global | EFFORT [10 h]; Electrical Skilled Labours [20 h] | 375 | B5 | 26 | MEP | C | MEP |
| HCMEB1Z3175 |  | B1 Z3 :Gypsum Boards Finish Date for All Parts | milestone | 0d | 2013-12-11 | 2013-12-11 | HCFWB1Z3028, HCFWB1Z3029 | 95d | 51d | HCRA - 1 - Normal Calendar |  |  | B5 | 26 | MEP | C | MEP |
| HCMEB1Z3235 |  | B1 Z3 :Electrcial Wiring |  | 8d | 2013-12-16 | 2013-12-26 | HCMEB1Z3155, HCMEB2Z3230 | 37d | 0d | HCRA - Global | EFFORT [20 h]; Electrical Skilled Labours [40 h] | 750 | B5 | 26 | MEP | C | MEP |
| HCMEB1Z3255 |  | B1 Z3 :Electrical Final Fix for All Systems & Boards (Vertical Elements) |  | 10d | 2014-01-27 | 2014-02-10 | HCMEB1Z3245 FS+30d, HCMEB1Z3235 FS+22d, HCMEB1Z3215 FS+30d, HCMEB1Z3165 FS+60d | 37d | 0d | HCRA - Global | EFFORT [10 h]; Electrical Skilled Labours [20 h] | 375 | B5 | 26 | MEP | C | MEP |
| HCMEB1Z3265 |  | B1 Z3 :Electrical Final Fix for All Systems (Horizantel Elements) |  | 10d | 2014-02-10 | 2014-02-24 | HCMEB1Z3255, HCMEB1Z3235, HCMEB1Z3175 | 37d | 19.62d | HCRA - Global | EFFORT [10 h]; Electrical Skilled Labours [20 h] | 375 | B5 | 26 | MEP | C | MEP |

| ID | WBS | Activity | Type | Duration | Start | Finish | Predecessors | Total float | Free float | Calendar | Resources | Cost | Bill No. | Division No. | Responsibility | Phase Code | Trade |
| --- | --- | --- | --- | --- | --- | --- | --- | --- | --- | --- | --- | --- | --- | --- | --- | --- | --- |
|  | 2 | **Fire Fighting** |  |  | 2013-03-11 | 2013-12-30 |  |  |  |  |  |  |  |  |  |  |  |
| HCMEB1Z3085 |  | B1 Z3 :Horizontal F.F Piping Work |  | 20d | 2013-03-11 | 2013-04-05 | HCMEB1Z3145 | 143.88d | 0d | HCRA - Global | EFFORT [20 h]; Mechnical Skilled Labours [30 h] | 712.5 | B5 | 21 | MEP | C | MEP |
| HCMEB1Z3095 |  | B1 Z3 :Fire Hose Cabinets |  | 10d | 2013-04-08 | 2013-04-19 | HCMEB1Z3085 | 143.88d | 100.88d | HCRA - Global | EFFORT [10 h]; Mechnical Skilled Labours [15 h] | 356.25 | B5 | 21 | MEP | C | MEP |
| HCMEB1Z3105 |  | B1 Z3 :Sprinklers Final Fix |  | 10d | 2013-12-16 | 2013-12-30 | HCMEB1Z3095 FS+70d, HCMEB2Z3100 | 43d | 0d | HCRA - Global | EFFORT [10 h]; Mechnical Skilled Labours [15 h] | 356.25 | B5 | 21 | MEP | C | MEP |
|  | 1 | **Air Conditioning** |  |  | 2013-08-22 | 2014-02-06 |  |  |  |  |  |  |  |  |  |  |  |
| HCMEB1Z3315 |  | B1 Z3 :Duct Installation& Dusct Accecories Installation, Fan coil Unit |  | 10d | 2013-08-22 | 2013-09-05 | HCMEB1Z3145, HCMEB2Z3310 | 25d | 0d | HCRA - Global | EFFORT [20 h]; Mechnical Skilled Labours [30 h] | 712.5 | B5 | 23 | MEP | C | MEP |
| HCMEB1Z3325 |  | B1 Z3 :Duct Insulation Work |  | 15d | 2013-09-05 | 2013-09-26 | HCMEB1Z3315 | 25d | 0d | HCRA - Global | EFFORT [15 h]; Mechnical Skilled Labours [22.5 h] | 534.38 | B5 | 23 | MEP | C | MEP |
| HCMEB1Z3335 |  | B1 Z3 :Exhaust Fans |  | 15d | 2013-09-26 | 2013-10-17 | HCMEB1Z3325 | 25d | 10d | HCRA - Global | EFFORT [15 h]; Mechnical Skilled Labours [22.5 h] | 534.38 | B5 | 23 | MEP | C | MEP |
| HCMEB1Z3345 |  | B1 Z3 :Grills & Diffusers |  | 10d | 2014-01-09 | 2014-01-23 | HCMEB1Z3335 FS+50d, HCMEB2Z3340 | 15d | 0d | HCRA - Global | EFFORT [10 h]; Mechnical Skilled Labours [15 h] | 356.25 | B5 | 23 | MEP | C | MEP |
| HCMEB1Z3355 |  | B1 Z3 :Mechanical final Fix |  | 10d | 2014-01-23 | 2014-02-06 | HCMEB1Z3345, HCMEB2Z3350 | 15d | 0d | HCRA - Global | EFFORT [10 h]; Mechnical Skilled Labours [15 h] | 356.25 | B5 | 23 | MEP | C | MEP |
|  | 3 | **Water Network** |  |  | 2013-02-18 | 2013-09-13 |  |  |  |  |  |  |  |  |  |  |  |
| HCMEB1Z3365 |  | B1 Z3 :All Vertical Piping Works |  | 10d | 2013-02-18 | 2013-03-01 | HCMEB1Z3055 SS | 48.88d | 0d | HCRA - Global | EFFORT [10 h]; Mechnical Skilled Labours [15 h] | 356.25 | B5 | 22 | MEP | C | MEP |
| HCMEB1Z3375 |  | B1 Z3 :All Horizantal Piping Works |  | 30d | 2013-03-04 | 2013-04-12 | HCMEB1Z3365 | 48.88d | 0d | HCRA - Global | EFFORT [30 h]; Mechnical Skilled Labours [45 h] | 1,068.75 | B5 | 22 | MEP | C | MEP |
| HCMEB1Z3385 |  | B1 Z3 :Mechanical Final Fix |  | 20d | 2013-08-19 | 2013-09-13 | HCMEB1Z3375 FS+90d, HCMEB2Z3380 | 48.88d | 0d | HCRA - Global | EFFORT [20 h]; Mechnical Skilled Labours [30 h] | 712.5 | B5 | 22 | MEP | C | MEP |
|  | 3 | **Zone 4** |  |  | 2013-02-18 | 2014-02-14 |  |  |  |  |  |  |  |  |  |  |  |
|  | 7 | **Drainage** |  |  | 2013-02-18 | 2013-09-13 |  |  |  |  |  |  |  |  |  |  |  |
| HCMEB1Z4060 |  | B1 Z4 :All Vertical Piping Works |  | 10d | 2013-02-18 | 2013-03-01 | HCMEB1Z3055 SS | 117d | 0d | HCRA - Global | EFFORT [10 h]; Mechnical Skilled Labours [15 h] | 356.25 | B5 | 22 | MEP | C | MEP |
| HCMEB1Z4070 |  | B1 Z4 :All Horizantal Piping Works |  | 30d | 2013-03-04 | 2013-04-12 | HCMEB1Z4060 | 128.88d | 0d | HCRA - Global | EFFORT [30 h]; Mechnical Skilled Labours [45 h] | 1,068.75 | B5 | 22 | MEP | C | MEP |
| HCMEB1Z4080 |  | B1 Z4 :Mechanical Final Fix |  | 20d | 2013-08-19 | 2013-09-13 | HCMEB1Z4070 FS+90d, HCMEB2Z4075 | 128.88d | 22d | HCRA - Global | EFFORT [20 h]; Mechnical Skilled Labours [30 h] | 712.5 | B5 | 22 | MEP | C | MEP |
|  | 020 | **Electrical Works** |  |  | 2013-03-26 | 2014-02-12 |  |  |  |  |  |  |  |  |  |  |  |
| HCMEB1Z4150 |  | B1 Z4 :Blocks Start Date for All Parts | milestone | 0d | 2013-03-26 | 2013-03-26 | HCFWB1Z4008 | 182d | 0d | HCRA - 1 - Normal Calendar |  |  | B5 | 26 | MEP | C | MEP |
| HCMEB1Z4210 |  | B1 Z4 :Electrical Coduits & Boards F.F for All Systems |  | 12d | 2013-03-26 | 2013-04-11 | HCMEB1Z4150 | 152d | 33.75d | HCRA - Global | EFFORT [12 h]; Electrical Skilled Labours [24 h] | 450 | B5 | 26 | MEP | C | MEP |
| HCMEB1Z4170 |  | B1 Z4 :Plastering Finish Date for All Parts | milestone | 0d | 2013-08-07 | 2013-08-07 | HCFWB1Z4011 | 130.25d | 0d | HCRA - 1 - Normal Calendar |  |  | B5 | 26 | MEP | C | MEP |
| HCMEB1Z4220 |  | B1 Z4 :Electrical Boards Seconed Fix |  | 12d | 2013-08-07 | 2013-08-23 | HCMEB1Z4210 FS+50d, HCMEB1Z4170, HCMEB2Z4215 | 118.25d | 1.25d | HCRA - Global | EFFORT [12 h]; Electrical Skilled Labours [24 h] | 450 | B5 | 26 | MEP | C | MEP |
| HCMEB1Z4160 |  | B1 Z4 :Tiling Finish Date for All Parts | milestone | 0d | 2013-10-31 | 2013-10-31 | HCFWB1Z4004 | 39d | 0d | HCRA - 1 - Normal Calendar |  |  | B5 | 26 | MEP | C | MEP |
| HCMEB1Z4240 |  | B1 Z4 :Electrcial Wiring |  | 20d | 2013-10-31 | 2013-11-28 | HCMEB1Z4160, HCMEB2Z4235 | 33d | 0d | HCRA - Global | EFFORT [20 h]; Electrical Skilled Labours [40 h] | 750 | B5 | 26 | MEP | C | MEP |
| HCMEB1Z4230 |  | B1 Z4 :Cable Tray Installation |  | 10d | 2013-11-06 | 2013-11-20 | HCMEB1Z4170, HCMEB2Z4225 | 45d | 0d | HCRA - Global | EFFORT [10 h]; Electrical Skilled Labours [20 h] | 375 | B5 | 26 | MEP | C | MEP |
| HCMEB1Z4250 |  | B1 Z4 :Cable Laying |  | 10d | 2013-11-20 | 2013-12-04 | HCMEB1Z4230, HCMEB2Z4245 | 45d | 0d | HCRA - Global | EFFORT [10 h]; Electrical Skilled Labours [20 h] | 375 | B5 | 26 | MEP | C | MEP |
| HCMEB1Z4180 |  | B1 Z4 :Gypsum Boards Finish Date for All Parts | milestone | 0d | 2014-01-06 | 2014-01-06 | HCFWB1Z4021, HCFWB1Z4022 | 74d | 20d | HCRA - 1 - Normal Calendar |  |  | B5 | 26 | MEP | C | MEP |
| HCMEB1Z4260 |  | B1 Z4 :Electrical Final Fix for All Systems & Boards (Vertical Elements) |  | 10d | 2014-01-15 | 2014-01-29 | HCMEB1Z4250 FS+30d, HCMEB1Z4240 FS+22d, HCMEB1Z4220 FS+30d, HCMEB1Z4170 FS+60d | 45d | 0d | HCRA - Global | EFFORT [10 h]; Electrical Skilled Labours [20 h] | 375 | B5 | 26 | MEP | C | MEP |
| HCMEB1Z4270 |  | B1 Z4 :Electrical Final Fix for All Systems (Horizantel Elements) |  | 10d | 2014-01-29 | 2014-02-12 | HCMEB1Z4260, HCMEB1Z4240, HCMEB1Z4180 | 45d | 27.62d | HCRA - Global | EFFORT [10 h]; Electrical Skilled Labours [20 h] | 375 | B5 | 26 | MEP | C | MEP |

| ID | WBS | Activity | Type | Duration | Start | Finish | Predecessors | Total float | Free float | Calendar | Resources | Cost | Bill No. | Division No. | Responsibility | Phase Code | Trade |
| --- | --- | --- | --- | --- | --- | --- | --- | --- | --- | --- | --- | --- | --- | --- | --- | --- | --- |
|  | 2 | **Fire Fighting** |  |  | 2013-03-26 | 2013-12-30 |  |  |  |  |  |  |  |  |  |  |  |
| HCMEB1Z4090 |  | B1 Z4 :Horizontal F.F Piping Work |  | 20d | 2013-03-26 | 2013-04-23 | HCMEB1Z4150 | 172d | 0d | HCRA - Global | EFFORT [20 h]; Mechnical Skilled Labours [30 h] | 712.5 | B5 | 21 | MEP | C | MEP |
| HCMEB1Z4100 |  | B1 Z4 :Fire Hose Cabinets |  | 10d | 2013-04-23 | 2013-05-07 | HCMEB1Z4090 | 172d | 89d | HCRA - Global | EFFORT [10 h]; Mechnical Skilled Labours [15 h] | 356.25 | B5 | 21 | MEP | C | MEP |
| HCMEB1Z4110 |  | B1 Z4 :Sprinklers Final Fix |  | 10d | 2013-12-16 | 2013-12-30 | HCMEB1Z4100 FS+70d, HCMEB2Z4105 | 83d | 0d | HCRA - Global | EFFORT [10 h]; Mechnical Skilled Labours [15 h] | 356.25 | B5 | 21 | MEP | C | MEP |
|  | 1 | **Air Conditioning** |  |  | 2013-09-09 | 2014-02-14 |  |  |  |  |  |  |  |  |  |  |  |
| HCMEB1Z4320 |  | B1 Z4 :Duct Installation& Dusct Accecories Installation, Fan coil Unit |  | 14d | 2013-09-09 | 2013-09-27 | HCMEB1Z4150, HCMEB2Z4315 | 37d | 0d | HCRA - Global | EFFORT [20 h]; Mechnical Skilled Labours [30 h] | 712.5 | B5 | 23 | MEP | C | MEP |
| HCMEB1Z4330 |  | B1 Z4 :Duct Insulation Work |  | 15d | 2013-09-27 | 2013-10-18 | HCMEB1Z4320 | 49d | 0d | HCRA - Global | EFFORT [15 h]; Mechnical Skilled Labours [22.5 h] | 534.38 | B5 | 23 | MEP | C | MEP |
| HCMEB1Z4340 |  | B1 Z4 :Exhaust Fans |  | 15d | 2013-10-18 | 2013-11-08 | HCMEB1Z4330 | 49d | 0d | HCRA - Global | EFFORT [15 h]; Mechnical Skilled Labours [22.5 h] | 534.38 | B5 | 23 | MEP | C | MEP |
| HCMEB1Z4350 |  | B1 Z4 :Grills & Diffusers |  | 10d | 2014-01-17 | 2014-01-31 | HCMEB1Z4340 FS+50d, HCMEB2Z4345 | 49d | 0d | HCRA - Global | EFFORT [10 h]; Mechnical Skilled Labours [15 h] | 356.25 | B5 | 23 | MEP | C | MEP |
| HCMEB1Z4360 |  | B1 Z4 :Mechanical final Fix |  | 10d | 2014-01-31 | 2014-02-14 | HCMEB1Z4350, HCMEB2Z4355 | 49d | 4d | HCRA - Global | EFFORT [10 h]; Mechnical Skilled Labours [15 h] | 356.25 | B5 | 23 | MEP | C | MEP |
|  | 3 | **Water Network** |  |  | 2013-02-18 | 2013-09-13 |  |  |  |  |  |  |  |  |  |  |  |
| HCMEB1Z4370 |  | B1 Z4 :All Vertical Piping Works |  | 10d | 2013-02-18 | 2013-03-01 | HCMEB1Z4060 SS | 128.88d | 0d | HCRA - Global | EFFORT [10 h]; Mechnical Skilled Labours [15 h] | 356.25 | B5 | 22 | MEP | C | MEP |
| HCMEB1Z4380 |  | B1 Z4 :All Horizantal Piping Works |  | 30d | 2013-03-04 | 2013-04-12 | HCMEB1Z4370 | 128.88d | 0d | HCRA - Global | EFFORT [30 h]; Mechnical Skilled Labours [45 h] | 1,068.75 | B5 | 22 | MEP | C | MEP |
| HCMEB1Z4390 |  | B1 Z4 :Mechanical Final Fix |  | 20d | 2013-08-19 | 2013-09-13 | HCMEB1Z4380 FS+90d, HCMEB2Z4385 | 128.88d | 22d | HCRA - Global | EFFORT [20 h]; Mechnical Skilled Labours [30 h] | 712.5 | B5 | 22 | MEP | C | MEP |
|  | 5 | **Zone 5** |  |  | 2013-02-18 | 2014-03-24 |  |  |  |  |  |  |  |  |  |  |  |
|  | 7 | **Drainage** |  |  | 2013-02-18 | 2013-09-13 |  |  |  |  |  |  |  |  |  |  |  |
| HCMEB1Z5065 |  | B1 Z5 :All Vertical Piping Works |  | 10d | 2013-02-18 | 2013-03-01 | HCMEB1Z4060 SS | 117d | 0d | HCRA - Global | EFFORT [10 h]; Mechnical Skilled Labours [15 h] | 356.25 | B5 | 22 | MEP | C | MEP |
| HCMEB1Z5075 |  | B1 Z5 :All Horizantal Piping Works |  | 30d | 2013-03-04 | 2013-04-12 | HCMEB1Z5065 | 117d | 0d | HCRA - Global | EFFORT [30 h]; Mechnical Skilled Labours [45 h] | 1,068.75 | B5 | 22 | MEP | C | MEP |
| HCMEB1Z5085 |  | B1 Z5 :Mechanical Final Fix |  | 20d | 2013-08-19 | 2013-09-13 | HCMEB1Z5075 FS+90d, HCMEB2Z5080 | 117d | 22d | HCRA - Global | EFFORT [20 h]; Mechnical Skilled Labours [30 h] | 712.5 | B5 | 22 | MEP | C | MEP |
|  | 020 | **Electrical Works** |  |  | 2013-03-07 | 2014-03-24 |  |  |  |  |  |  |  |  |  |  |  |
| HCMEB1Z5155 |  | B1 Z5 :Blocks Start Date for All Parts | milestone | 0d | 2013-03-07 | 2013-03-07 | HCFWB1Z5008 | 198d | 0d | HCRA - 1 - Normal Calendar |  |  | B5 | 26 | MEP | C | MEP |
| HCMEB1Z5215 |  | B1 Z5 :Electrical Coduits & Boards F.F for All Systems |  | 12d | 2013-03-07 | 2013-03-25 | HCMEB1Z5155 | 165d | 93d | HCRA - Global | EFFORT [12 h]; Electrical Skilled Labours [24 h] | 450 | B5 | 26 | MEP | C | MEP |
| HCMEB1Z5175 |  | B1 Z5 :Plastering Finish Date for All Parts | milestone | 0d | 2013-10-10 | 2013-10-10 | HCFWB1Z5011 | 75d | 0d | HCRA - 1 - Normal Calendar |  |  | B5 | 26 | MEP | C | MEP |
| HCMEB1Z5225 |  | B1 Z5 :Electrical Boards Seconed Fix |  | 12d | 2013-10-10 | 2013-10-28 | HCMEB1Z5215 FS+50d, HCMEB1Z5175, HCMEB2Z5220 | 72d | 21.12d | HCRA - Global | EFFORT [12 h]; Electrical Skilled Labours [24 h] | 450 | B5 | 26 | MEP | C | MEP |
| HCMEB1Z5235 |  | B1 Z5 :Cable Tray Installation |  | 10d | 2013-11-06 | 2013-11-20 | HCMEB1Z5175, HCMEB2Z5230 | 45d | 0d | HCRA - Global | EFFORT [10 h]; Electrical Skilled Labours [20 h] | 375 | B5 | 26 | MEP | C | MEP |
| HCMEB1Z5255 |  | B1 Z5 :Cable Laying |  | 10d | 2013-11-20 | 2013-12-04 | HCMEB1Z5235, HCMEB2Z5250 | 45d | 0d | HCRA - Global | EFFORT [10 h]; Electrical Skilled Labours [20 h] | 375 | B5 | 26 | MEP | C | MEP |
| HCMEB1Z5165 |  | B1 Z5 :Tiling Finish Date for All Parts | milestone | 0d | 2013-12-26 | 2013-12-26 | HCFWB1Z5005 | 20.38d | 0d | HCRA - 1 - Normal Calendar |  |  | B5 | 26 | MEP | C | MEP |
| HCMEB1Z5245 |  | B1 Z5 :Electrcial Wiring |  | 20d | 2013-12-26 | 2014-01-23 | HCMEB1Z5165, HCMEB2Z5240 | 17.38d | 0d | HCRA - Global | EFFORT [20 h]; Electrical Skilled Labours [40 h] | 750 | B5 | 26 | MEP | C | MEP |
| HCMEB1Z5185 |  | B1 Z5 :Gypsum Boards Finish Date for All Parts | milestone | 0d | 2014-02-18 | 2014-02-18 | HCFWB1Z5020, HCFWB1Z5021 | 37.38d | 17d | HCRA - 1 - Normal Calendar |  |  | B5 | 26 | MEP | C | MEP |
| HCMEB1Z5265 |  | B1 Z5 :Electrical Final Fix for All Systems & Boards (Vertical Elements) |  | 10d | 2014-02-24 | 2014-03-10 | HCMEB1Z5255 FS+30d, HCMEB1Z5245 FS+22d, HCMEB1Z5225 FS+30d, HCMEB1Z5175 FS+60d | 17.38d | 0d | HCRA - Global | EFFORT [10 h]; Electrical Skilled Labours [20 h] | 375 | B5 | 26 | MEP | C | MEP |
| HCMEB1Z5275 |  | B1 Z5 :Electrical Final Fix for All Systems (Horizantel Elements) |  | 10d | 2014-03-10 | 2014-03-24 | HCMEB1Z5265, HCMEB1Z5245, HCMEB1Z5185 | 17.38d | 0d | HCRA - Global | EFFORT [10 h]; Electrical Skilled Labours [20 h] | 375 | B5 | 26 | MEP | C | MEP |

| ID | WBS | Activity | Type | Duration | Start | Finish | Predecessors | Total float | Free float | Calendar | Resources | Cost | Bill No. | Division No. | Responsibility | Phase Code | Trade |
| --- | --- | --- | --- | --- | --- | --- | --- | --- | --- | --- | --- | --- | --- | --- | --- | --- | --- |
|  | 2 | **Fire Fighting** |  |  | 2013-03-07 | 2013-12-30 |  |  |  |  |  |  |  |  |  |  |  |
| HCMEB1Z5095 |  | B1 Z5 :Horizontal F.F Piping Work |  | 20d | 2013-03-07 | 2013-04-04 | HCMEB1Z5155 | 185d | 0d | HCRA - Global | EFFORT [20 h]; Mechnical Skilled Labours [30 h] | 712.5 | B5 | 21 | MEP | C | MEP |
| HCMEB1Z5105 |  | B1 Z5 :Fire Hose Cabinets |  | 10d | 2013-04-04 | 2013-04-18 | HCMEB1Z5095 | 185d | 102d | HCRA - Global | EFFORT [10 h]; Mechnical Skilled Labours [15 h] | 356.25 | B5 | 21 | MEP | C | MEP |
| HCMEB1Z5115 |  | B1 Z5 :Sprinklers Final Fix |  | 10d | 2013-12-16 | 2013-12-30 | HCMEB1Z5105 FS+70d, HCMEB2Z5110 | 83d | 14.12d | HCRA - Global | EFFORT [10 h]; Mechnical Skilled Labours [15 h] | 356.25 | B5 | 21 | MEP | C | MEP |
|  | 1 | **Air Conditioning** |  |  | 2013-09-09 | 2014-02-14 |  |  |  |  |  |  |  |  |  |  |  |
| HCMEB1Z5325 |  | B1 Z5 :Duct Installation& Dusct Accecories Installation, Fan coil Unit |  | 14d | 2013-09-09 | 2013-09-27 | HCMEB1Z5155, HCMEB2Z5320 | 37d | 0d | HCRA - Global | EFFORT [20 h]; Mechnical Skilled Labours [30 h] | 712.5 | B5 | 23 | MEP | C | MEP |
| HCMEB1Z5335 |  | B1 Z5 :Duct Insulation Work |  | 15d | 2013-09-27 | 2013-10-18 | HCMEB1Z5325 | 49d | 0d | HCRA - Global | EFFORT [15 h]; Mechnical Skilled Labours [22.5 h] | 534.38 | B5 | 23 | MEP | C | MEP |
| HCMEB1Z5345 |  | B1 Z5 :Exhaust Fans |  | 15d | 2013-10-18 | 2013-11-08 | HCMEB1Z5335 | 49d | 0d | HCRA - Global | EFFORT [15 h]; Mechnical Skilled Labours [22.5 h] | 534.38 | B5 | 23 | MEP | C | MEP |
| HCMEB1Z5355 |  | B1 Z5 :Grills & Diffusers |  | 10d | 2014-01-17 | 2014-01-31 | HCMEB1Z5345 FS+50d, HCMEB2Z5350, HCMEB2Z5350 FF | 49d | 0d | HCRA - Global | EFFORT [10 h]; Mechnical Skilled Labours [15 h] | 356.25 | B5 | 23 | MEP | C | MEP |
| HCMEB1Z5365 |  | B1 Z5 :Mechanical final Fix |  | 10d | 2014-01-31 | 2014-02-14 | HCMEB1Z5355, HCMEB2Z5360 | 49d | 4d | HCRA - Global | EFFORT [10 h]; Mechnical Skilled Labours [15 h] | 356.25 | B5 | 23 | MEP | C | MEP |
|  | 3 | **Water Network** |  |  | 2013-02-18 | 2013-09-13 |  |  |  |  |  |  |  |  |  |  |  |
| HCMEB1Z5375 |  | B1 Z5 :All Vertical Piping Works |  | 10d | 2013-02-18 | 2013-03-01 | HCMEB1Z5065 SS | 152.88d | 0d | HCRA - Global | EFFORT [10 h]; Mechnical Skilled Labours [15 h] | 356.25 | B5 | 22 | MEP | C | MEP |
| HCMEB1Z5385 |  | B1 Z5 :All Horizantal Piping Works |  | 30d | 2013-03-04 | 2013-04-12 | HCMEB1Z5375 | 152.88d | 0d | HCRA - Global | EFFORT [30 h]; Mechnical Skilled Labours [45 h] | 1,068.75 | B5 | 22 | MEP | C | MEP |
| HCMEB1Z5395 |  | B1 Z5 :Mechanical Final Fix |  | 20d | 2013-08-19 | 2013-09-13 | HCMEB1Z5385 FS+90d | 152.88d | 135.5d | HCRA - Global | EFFORT [20 h]; Mechnical Skilled Labours [30 h] | 712.5 | B5 | 22 | MEP | C | MEP |
|  | 6 | **Zone 6** |  |  | 2013-02-18 | 2014-02-14 |  |  |  |  |  |  |  |  |  |  |  |
|  | 7 | **Drainage** |  |  | 2013-02-18 | 2013-09-13 |  |  |  |  |  |  |  |  |  |  |  |
| HCMEB1Z6070 |  | B1 Z6 :B1 Z6 :All Vertical Piping Works |  | 10d | 2013-02-18 | 2013-03-01 | HCMEB1Z5065 SS | 158.88d | 0d | HCRA - Global | EFFORT [10 h]; Mechnical Skilled Labours [15 h] | 356.25 | B5 | 22 | MEP | C | MEP |
| HCMEB1Z6080 |  | B1 Z6 :B1 Z6 :All Horizantal Piping Works |  | 30d | 2013-03-04 | 2013-04-12 | HCMEB1Z6070 | 158.88d | 0d | HCRA - Global | EFFORT [30 h]; Mechnical Skilled Labours [45 h] | 1,068.75 | B5 | 22 | MEP | C | MEP |
| HCMEB1Z6090 |  | B1 Z6 :B1 Z6 :Mechanical Final Fix |  | 20d | 2013-08-19 | 2013-09-13 | HCMEB1Z6080 FS+90d, HCMEB2Z6085 | 158.88d | 110d | HCRA - Global | EFFORT [20 h]; Mechnical Skilled Labours [30 h] | 712.5 | B5 | 22 | MEP | C | MEP |
|  | 020 | **Electrical Works** |  |  | 2013-04-13 | 2014-02-12 |  |  |  |  |  |  |  |  |  |  |  |
| HCMEB1Z6160 |  | B1 Z6 :B1 Z6 :Blocks Start Date for All Parts | milestone | 0d | 2013-04-13 | 2013-04-13 | HCFWB1Z6008 | 167d | 1.12d | HCRA - 1 - Normal Calendar |  |  | B5 | 26 | MEP | C | MEP |
| HCMEB1Z6220 |  | B1 Z6 :B1 Z6 :Electrical Coduits & Boards F.F for All Systems |  | 12d | 2013-04-15 | 2013-04-30 | HCMEB1Z6160 | 138.88d | 13.88d | HCRA - Global | EFFORT [12 h]; Electrical Skilled Labours [24 h] | 450 | B5 | 26 | MEP | C | MEP |
| HCMEB1Z6180 |  | B1 Z6 :B1 Z6 :Plastering Finish Date for All Parts | milestone | 0d | 2013-05-14 | 2013-05-14 | HCFWB1Z6011 | 203.38d | 65.38d | HCRA - 1 - Normal Calendar |  |  | B5 | 26 | MEP | C | MEP |
| HCMEB1Z6170 |  | B1 Z6 :B1 Z6 :Tiling Finish Date for All Parts | milestone | 0d | 2013-06-24 | 2013-06-24 | HCFWB1Z6005 | 178.38d | 108.75d | HCRA - 1 - Normal Calendar |  |  | B5 | 26 | MEP | C | MEP |
| HCMEB1Z6230 |  | B1 Z6 :B1 Z6 :Electrical Boards Seconed Fix |  | 12d | 2013-07-29 | 2013-08-14 | HCMEB1Z6220 FS+50d, HCMEB1Z6180, HCMEB2Z6225 | 125d | 74.12d | HCRA - Global | EFFORT [12 h]; Electrical Skilled Labours [24 h] | 450 | B5 | 26 | MEP | C | MEP |
| HCMEB1Z6190 |  | B1 Z6 :B1 Z6 :Gypsum Boards Finish Date for All Parts | milestone | 0d | 2013-09-08 | 2013-09-08 | HCFWB1Z6022 | 175.25d | 121.25d | HCRA - 1 - Normal Calendar |  |  | B5 | 26 | MEP | C | MEP |
| HCMEB1Z6250 |  | B1 Z6 :B1 Z6 :Electrcial Wiring |  | 20d | 2013-10-29 | 2013-11-26 | HCMEB1Z6170, HCMEB2Z6245 | 59.62d | 14.62d | HCRA - Global | EFFORT [20 h]; Electrical Skilled Labours [40 h] | 750 | B5 | 26 | MEP | C | MEP |
| HCMEB1Z6240 |  | B1 Z6 :B1 Z6 :Cable Tray Installation |  | 10d | 2013-11-06 | 2013-11-20 | HCMEB1Z6180, HCMEB2Z6235 | 45d | 0d | HCRA - Global | EFFORT [10 h]; Electrical Skilled Labours [20 h] | 375 | B5 | 26 | MEP | C | MEP |
| HCMEB1Z6260 |  | B1 Z6 :B1 Z6 :Cable Laying |  | 10d | 2013-11-20 | 2013-12-04 | HCMEB1Z6240, HCMEB2Z6255 | 45d | 0d | HCRA - Global | EFFORT [10 h]; Electrical Skilled Labours [20 h] | 375 | B5 | 26 | MEP | C | MEP |
| HCMEB1Z6270 |  | B1 Z6 :B1 Z6 :Electrical Final Fix for All Systems & Boards (Vertical Elements) |  | 10d | 2014-01-15 | 2014-01-29 | HCMEB1Z6260 FS+30d, HCMEB1Z6250 FS+22d, HCMEB1Z6230 FS+30d, HCMEB1Z6180 FS+60d | 45d | 0d | HCRA - Global | EFFORT [10 h]; Electrical Skilled Labours [20 h] | 375 | B5 | 26 | MEP | C | MEP |
| HCMEB1Z6280 |  | B1 Z6 :B1 Z6 :Electrical Final Fix for All Systems (Horizantel Elements) |  | 10d | 2014-01-29 | 2014-02-12 | HCMEB1Z6270, HCMEB1Z6250, HCMEB1Z6190 | 45d | 27.62d | HCRA - Global | EFFORT [10 h]; Electrical Skilled Labours [20 h] | 375 | B5 | 26 | MEP | C | MEP |

| ID | WBS | Activity | Type | Duration | Start | Finish | Predecessors | Total float | Free float | Calendar | Resources | Cost | Bill No. | Division No. | Responsibility | Phase Code | Trade |
| --- | --- | --- | --- | --- | --- | --- | --- | --- | --- | --- | --- | --- | --- | --- | --- | --- | --- |
|  | 2 | **Fire Fighting** |  |  | 2013-04-15 | 2013-12-30 |  |  |  |  |  |  |  |  |  |  |  |
| HCMEB1Z6110 |  | B1 Z6 :B1 Z6 :Horizontal F.F Piping Work |  | 20d | 2013-04-15 | 2013-05-10 | HCMEB1Z6160 | 158.88d | 0d | HCRA - Global | EFFORT [20 h]; Mechnical Skilled Labours [30 h] | 712.5 | B5 | 21 | MEP | C | MEP |
| HCMEB1Z6120 |  | B1 Z6 :B1 Z6 :Fire Hose Cabinets |  | 10d | 2013-05-13 | 2013-05-24 | HCMEB1Z6110 | 158.88d | 75.88d | HCRA - Global | EFFORT [10 h]; Mechnical Skilled Labours [15 h] | 356.25 | B5 | 21 | MEP | C | MEP |
| HCMEB1Z6340 |  | B1 Z6 :B1 Z6 :Sprinklers Final Fix |  | 10d | 2013-12-16 | 2013-12-30 | HCMEB1Z6120 FS+70d, HCMEB2Z6335 | 83d | 14.12d | HCRA - Global | EFFORT [10 h]; Mechnical Skilled Labours [15 h] | 356.25 | B5 | 21 | MEP | C | MEP |
|  | 1 | **Air Conditioning** |  |  | 2013-09-09 | 2014-02-14 |  |  |  |  |  |  |  |  |  |  |  |
| HCMEB1Z6350 |  | B1 Z6 :B1 Z6 :Duct Installation& Dusct Accecories Installation, Fan coil Unit |  | 14d | 2013-09-09 | 2013-09-27 | HCMEB1Z6160, HCMEB2Z6345 | 37d | 0d | HCRA - Global | EFFORT [20 h]; Mechnical Skilled Labours [30 h] | 712.5 | B5 | 23 | MEP | C | MEP |
| HCMEB1Z6360 |  | B1 Z6 :B1 Z6 :Duct Insulation Work |  | 15d | 2013-09-27 | 2013-10-18 | HCMEB1Z6350 | 49d | 0d | HCRA - Global | EFFORT [15 h]; Mechnical Skilled Labours [22.5 h] | 534.38 | B5 | 23 | MEP | C | MEP |
| HCMEB1Z6380 |  | B1 Z6 :B1 Z6 :Exhaust Fans |  | 15d | 2013-10-18 | 2013-11-08 | HCMEB1Z6360 | 49d | 0d | HCRA - Global | EFFORT [15 h]; Mechnical Skilled Labours [22.5 h] | 534.38 | B5 | 23 | MEP | C | MEP |
| HCMEB1Z6390 |  | B1 Z6 :B1 Z6 :Grills & Diffusers |  | 10d | 2014-01-17 | 2014-01-31 | HCMEB1Z6380 FS+50d, HCMEB2Z6385 | 49d | 0d | HCRA - Global | EFFORT [10 h]; Mechnical Skilled Labours [15 h] | 356.25 | B5 | 23 | MEP | C | MEP |
| HCMEB1Z6445 |  | B1 Z6 :B1 Z6 :Mechanical final Fix |  | 10d | 2014-01-31 | 2014-02-14 | HCMEB1Z6390, HCMEB2Z6425 | 49d | 0.12d | HCRA - Global | EFFORT [10 h]; Mechnical Skilled Labours [15 h] | 356.25 | B5 | 23 | MEP | C | MEP |
|  | 3 | **Water Network** |  |  | 2013-02-18 | 2013-09-13 |  |  |  |  |  |  |  |  |  |  |  |
| HCMEB1Z6450 |  | B1 Z6 :B1 Z6 :All Vertical Piping Works |  | 10d | 2013-02-18 | 2013-03-01 | HCMEB1Z6070 SS | 168.88d | 0d | HCRA - Global | EFFORT [10 h]; Mechnical Skilled Labours [15 h] | 356.25 | B5 | 22 | MEP | C | MEP |
| HCMEB2Z6455 |  | B2 Z6 :All Horizantal Piping Works |  | 30d | 2013-03-04 | 2013-04-12 | HCMEB1Z6450 | 168.88d | 0d | HCRA - Global | EFFORT [30 h]; Mechnical Skilled Labours [45 h] | 1,068.75 | B5 | 22 | MEP | C | MEP |
| HCMEB2Z6460 |  | B2 Z6 :Mechanical Final Fix |  | 20d | 2013-08-19 | 2013-09-13 | HCMEB2Z6455 FS+90d, HCMEB2Z6440 | 168.88d | 22d | HCRA - Global | EFFORT [20 h]; Mechnical Skilled Labours [30 h] | 712.5 | B5 | 22 | MEP | C | MEP |
|  | 1 | **Upper Floors** |  |  | 2013-02-26 | 2014-06-05 |  |  |  |  |  |  |  |  |  |  |  |
|  | 6 | **Ground Floor** |  |  | 2013-02-26 | 2014-03-04 |  |  |  |  |  |  |  |  |  |  |  |
| HCMEGF000 |  | Start Ground Floor EM Works | milestone | 0d | 2013-02-27 | 2013-02-27 | HCFWGFZ1008 | 50d | 0d |  |  |  | B5 |  | MEP | C | MEP |
| HCMEGF0000 |  | End Ground Floor EM Works | milestone | 0d | 2014-02-27 | 2014-02-27 | HCMEGFZ1070, HCMEGFZ1100, HCMEGFZ1350, HCMEGFZ1380 | 81d |  |  |  |  | B5 |  | MEP | C | MEP |
|  | 4 | **Zone 1** |  |  | 2013-02-26 | 2014-03-04 |  |  |  |  |  |  |  |  |  |  |  |
|  | 7 | **Drainage** |  |  | 2013-02-27 | 2013-10-11 |  |  |  |  |  |  |  |  |  |  |  |
| HCMEGFZ1050 |  | GF Z1 :All Vertical Piping Works |  | 10d | 2013-02-27 | 2013-03-12 | HCMEGF000 | 41.88d | 0d | HCRA - Global | EFFORT [10 h]; Mechnical Skilled Labours [15 h] | 356.25 | B5 | 22 | MEP | C | MEP |
| HCMEGFZ1060 |  | GF Z1 :All Horizantal Piping Works |  | 30d | 2013-03-13 | 2013-04-23 | HCMEGFZ1050 | 41.88d | 13d | HCRA - Global | EFFORT [30 h]; Mechnical Skilled Labours [45 h] | 1,068.75 | B5 | 22 | MEP | C | MEP |
| HCMEGFZ1070 |  | GF Z1 :Mechanical Final Fix |  | 20d | 2013-09-16 | 2013-10-11 | HCMEGFZ1060 FS+90d, HCMEB1Z1065 | 28.88d | 0d | HCRA - Global | EFFORT [20 h]; Mechnical Skilled Labours [30 h] | 712.5 | B5 | 22 | MEP | C | MEP |
|  | 020 | **Electrical Works** |  |  | 2013-02-26 | 2014-03-04 |  |  |  |  |  |  |  |  |  |  |  |
| HCMEGFZ1140 |  | GF Z1 :Blocks Start Date for All Parts | milestone | 0d | 2013-02-26 | 2013-02-26 | HCFWGFZ1008 | 152d | 0d | HCRA - 1 - Normal Calendar |  |  | B5 | 26 | MEP | C | MEP |
| HCMEGFZ1200 |  | GF Z1 :Electrical Coduits & Boards F.F for All Systems |  | 12d | 2013-02-26 | 2013-03-14 | HCMEGFZ1140 | 127d | 8d | HCRA - Global | EFFORT [12 h]; Electrical Skilled Labours [24 h] | 450 | B5 | 26 | MEP | C | MEP |
| HCMEGFZ1160 |  | GF Z1 :Plastering Finish Date for All Parts | milestone | 0d | 2013-05-27 | 2013-05-27 | HCFWGFZ1019 | 150d | 7d | HCRA - 1 - Normal Calendar |  |  | B5 | 26 | MEP | C | MEP |
| HCMEGFZ1210 |  | GF Z1 :Electrical Boards Seconed Fix |  | 12d | 2013-06-04 | 2013-06-20 | HCMEGFZ1200 FS+50d, HCMEGFZ1160, HCMEB1Z1205 | 119d | 0d | HCRA - Global | EFFORT [12 h]; Electrical Skilled Labours [24 h] | 450 | B5 | 26 | MEP | C | MEP |
| HCMEGFZ1150 |  | GF Z1 :Tiling Finish Date for All Parts | milestone | 0d | 2013-06-10 | 2013-06-10 | HCFWGFZ1006 | 91d | 89.12d | HCRA - 1 - Normal Calendar |  |  | B5 | 26 | MEP | C | MEP |
| HCMEGFZ1230 |  | GF Z1 :Electrcial Wiring |  | 20d | 2013-09-23 | 2013-10-18 | HCMEGFZ1150, HCMEB1Z1225 | 1.88d | 0d | HCRA - Global | EFFORT [20 h]; Electrical Skilled Labours [40 h] | 750 | B5 | 26 | MEP | C | MEP |
| HCMEGFZ1220 |  | GF Z1 :Cable Tray Installation |  | 10d | 2013-11-20 | 2013-12-04 | HCMEGFZ1160, HCMEB1Z1215 | 0d |  | HCRA - Global | EFFORT [10 h]; Electrical Skilled Labours [20 h] | 375 | B5 | 26 | MEP | C | MEP |
| HCMEGFZ1240 |  | GF Z1 :Cable Laying |  | 14d | 2013-12-04 | 2013-12-24 | HCMEGFZ1220, HCMEB1Z1235 | 0d |  | HCRA - Global | EFFORT [10 h]; Electrical Skilled Labours [20 h] | 375 | B5 | 26 | MEP | C | MEP |
| HCMEGFZ1170 |  | GF Z1 :Gypsum Boards Finish Date for All Parts | milestone | 0d | 2013-12-30 | 2013-12-30 | HCFWGFZ1022 | 122d | 42d | HCRA - 1 - Normal Calendar |  |  | B5 | 26 | MEP | C | MEP |
| HCMEGFZ1250 |  | GF Z1 :Electrical Final Fix for All Systems & Boards (Vertical Elements) |  | 10d | 2014-02-04 | 2014-02-18 | HCMEGFZ1240 FS+30d, HCMEGFZ1230 FS+22d, HCMEGFZ1210 FS+30d, HCMEGFZ1160 FS+60d | 67d | 0d | HCRA - Global | EFFORT [10 h]; Electrical Skilled Labours [20 h] | 375 | B5 | 26 | MEP | C | MEP |
| HCMEGFZ1260 |  | GF Z1 :Electrical Final Fix for All Systems (Horizantel Elements) |  | 10d | 2014-02-18 | 2014-03-04 | HCMEGFZ1250, HCMEGFZ1230, HCMEGFZ1170 | 67d | 0d | HCRA - Global | EFFORT [10 h]; Electrical Skilled Labours [20 h] | 375 | B5 | 26 | MEP | C | MEP |

| ID | WBS | Activity | Type | Duration | Start | Finish | Predecessors | Total float | Free float | Calendar | Resources | Cost | Bill No. | Division No. | Responsibility | Phase Code | Trade |
| --- | --- | --- | --- | --- | --- | --- | --- | --- | --- | --- | --- | --- | --- | --- | --- | --- | --- |
|  | 2 | **Fire Fighting** |  |  | 2013-02-26 | 2014-01-13 |  |  |  |  |  |  |  |  |  |  |  |
| HCMEGFZ1080 |  | GF Z1 :Horizontal F.F Piping Work |  | 20d | 2013-02-26 | 2013-03-26 | HCMEGFZ1140 | 152d | 0d | HCRA - Global | EFFORT [20 h]; Mechnical Skilled Labours [30 h] | 712.5 | B5 | 21 | MEP | C | MEP |
| HCMEGFZ1090 |  | GF Z1 :Fire Hose Cabinets |  | 10d | 2013-03-26 | 2013-04-09 | HCMEGFZ1080 | 152d | 119d | HCRA - Global | EFFORT [10 h]; Mechnical Skilled Labours [15 h] | 356.25 | B5 | 21 | MEP | C | MEP |
| HCMEGFZ1100 |  | GF Z1 :Sprinklers Final Fix |  | 10d | 2013-12-30 | 2014-01-13 | HCMEGFZ1090 FS+70d, HCMEB1Z1095 | 33d | 0d | HCRA - Global | EFFORT [10 h]; Mechnical Skilled Labours [15 h] | 356.25 | B5 | 21 | MEP | C | MEP |
|  | 1 | **Air Conditioning** |  |  | 2013-08-26 | 2014-02-27 |  |  |  |  |  |  |  |  |  |  |  |
| HCMEGFZ1310 |  | GF Z1 :Duct Installation& Dusct Accecories Installation, Fan coil Unit |  | 10d | 2013-08-26 | 2013-09-09 | HCMEGFZ1140, HCMEB1Z1305 | 23d | 0d | HCRA - Global | EFFORT [20 h]; Mechnical Skilled Labours [30 h] | 712.5 | B5 | 23 | MEP | C | MEP |
| HCMEGFZ1320 |  | GF Z1 :Duct Insulation Work |  | 15d | 2013-09-09 | 2013-09-30 | HCMEGFZ1310 | 23d | 0d | HCRA - Global | EFFORT [15 h]; Mechnical Skilled Labours [22.5 h] | 534.38 | B5 | 23 | MEP | C | MEP |
| HCMEGFZ1330 |  | GF Z1 :Exhaust Fans |  | 15d | 2013-09-30 | 2013-10-21 | HCMEGFZ1320 | 23d | 21d | HCRA - Global | EFFORT [15 h]; Mechnical Skilled Labours [22.5 h] | 534.38 | B5 | 23 | MEP | C | MEP |
| HCMEGFZ1340 |  | GF Z1 :Grills & Diffusers |  | 10d | 2014-01-28 | 2014-02-11 | HCMEGFZ1330 FS+50d, HCMEB1Z1335 | 2d | 0d | HCRA - Global | EFFORT [10 h]; Mechnical Skilled Labours [15 h] | 356.25 | B5 | 23 | MEP | C | MEP |
| HCMEGFZ1350 |  | GF Z1 :Mechanical final Fix |  | 10d | 2014-02-13 | 2014-02-27 | HCMEGFZ1340, HCMEB1Z1345 | 0d |  | HCRA - Global | EFFORT [10 h]; Mechnical Skilled Labours [15 h] | 356.25 | B5 | 23 | MEP | C | MEP |
|  | 3 | **Water Network** |  |  | 2013-02-27 | 2013-10-11 |  |  |  |  |  |  |  |  |  |  |  |
| HCMEGFZ1360 |  | GF Z1 :All Vertical Piping Works |  | 10d | 2013-02-27 | 2013-03-12 | HCMEGFZ1050 SS | 41.88d | 0d | HCRA - Global | EFFORT [10 h]; Mechnical Skilled Labours [15 h] | 356.25 | B5 | 22 | MEP | C | MEP |
| HCMEGFZ1370 |  | GF Z1 :All Horizantal Piping Works |  | 30d | 2013-03-13 | 2013-04-23 | HCMEGFZ1360 | 41.88d | 13d | HCRA - Global | EFFORT [30 h]; Mechnical Skilled Labours [45 h] | 1,068.75 | B5 | 22 | MEP | C | MEP |
| HCMEGFZ1380 |  | GF Z1 :Mechanical Final Fix |  | 20d | 2013-09-16 | 2013-10-11 | HCMEGFZ1370 FS+90d, HCMEB1Z1375 | 28.88d | 0d | HCRA - Global | EFFORT [20 h]; Mechnical Skilled Labours [30 h] | 712.5 | B5 | 22 | MEP | C | MEP |
|  | 1 | **Zone 2** |  |  | 2013-02-27 | 2014-02-26 |  |  |  |  |  |  |  |  |  |  |  |
|  | 7 | **Drainage** |  |  | 2013-02-27 | 2013-10-11 |  |  |  |  |  |  |  |  |  |  |  |
| HCMEGFZ2055 |  | GF Z2 :All Vertical Piping Works |  | 10d | 2013-02-27 | 2013-03-12 | HCMEGFZ1050 SS | 61.88d | 0d | HCRA - Global | EFFORT [10 h]; Mechnical Skilled Labours [15 h] | 356.25 | B5 | 22 | MEP | C | MEP |
| HCMEGFZ2065 |  | GF Z2 :All Horizantal Piping Works |  | 30d | 2013-03-13 | 2013-04-23 | HCMEGFZ2055 | 61.88d | 13d | HCRA - Global | EFFORT [30 h]; Mechnical Skilled Labours [45 h] | 1,068.75 | B5 | 22 | MEP | C | MEP |
| HCMEGFZ2075 |  | GF Z2 :Mechanical Final Fix |  | 20d | 2013-09-16 | 2013-10-11 | HCMEGFZ2065 FS+90d, HCMEB1Z2070 | 48.88d | 0d | HCRA - Global | EFFORT [20 h]; Mechnical Skilled Labours [30 h] | 712.5 | B5 | 22 | MEP | C | MEP |
|  | 020 | **Electrical Works** |  |  | 2013-03-16 | 2014-02-26 |  |  |  |  |  |  |  |  |  |  |  |
| HCMEGFZ2145 |  | GF Z2 :Blocks Start Date for All Parts | milestone | 0d | 2013-03-16 | 2013-03-16 | HCFWGFZ2007 | 148d | 1.12d | HCRA - 1 - Normal Calendar |  |  | B5 | 26 | MEP | C | MEP |
| HCMEGFZ2205 |  | GF Z2 :Electrical Coduits & Boards F.F for All Systems |  | 12d | 2013-03-18 | 2013-04-02 | HCMEGFZ2145 | 122.88d | 2.88d | HCRA - Global | EFFORT [12 h]; Electrical Skilled Labours [24 h] | 450 | B5 | 26 | MEP | C | MEP |
| HCMEGFZ2165 |  | GF Z2 :Plastering Finish Date for All Parts | milestone | 0d | 2013-04-13 | 2013-04-13 | HCFWGFZ2011 | 197.12d | 53.12d | HCRA - 1 - Normal Calendar |  |  | B5 | 26 | MEP | C | MEP |
| HCMEGFZ2155 |  | GF Z2 :Tiling Finish Date for All Parts | milestone | 0d | 2013-05-16 | 2013-05-16 | HCFWGFZ2003 | 112d | 80.12d | HCRA - 1 - Normal Calendar |  |  | B5 | 26 | MEP | C | MEP |
| HCMEGFZ2215 |  | GF Z2 :Electrical Boards Seconed Fix |  | 12d | 2013-06-14 | 2013-07-02 | HCMEGFZ2205 FS+50d, HCMEGFZ2165, HCMEB1Z2210 | 120d | 23d | HCRA - Global | EFFORT [12 h]; Electrical Skilled Labours [24 h] | 450 | B5 | 26 | MEP | C | MEP |
| HCMEGFZ2235 |  | GF Z2 :Electrcial Wiring |  | 20d | 2013-08-19 | 2013-09-13 | HCMEGFZ2155, HCMEB1Z2230 | 26.88d | 0d | HCRA - Global | EFFORT [20 h]; Electrical Skilled Labours [40 h] | 750 | B5 | 26 | MEP | C | MEP |
| HCMEGFZ2225 |  | GF Z2 :Cable Tray Installation |  | 10d | 2013-11-20 | 2013-12-04 | HCMEGFZ2165, HCMEB1Z2220 | 11d | 0d | HCRA - Global | EFFORT [10 h]; Electrical Skilled Labours [20 h] | 375 | B5 | 26 | MEP | C | MEP |
| HCMEGFZ2245 |  | GF Z2 :Cable Laying |  | 10d | 2013-12-04 | 2013-12-18 | HCMEGFZ2225, HCMEB1Z2240 | 11d | 0d | HCRA - Global | EFFORT [10 h]; Electrical Skilled Labours [20 h] | 375 | B5 | 26 | MEP | C | MEP |
| HCMEGFZ2175 |  | GF Z2 :Gypsum Boards Finish Date for All Parts | milestone | 0d | 2013-12-29 | 2013-12-29 | HCFWGFZ2020 | 123d | 38d | HCRA - 1 - Normal Calendar |  |  | B5 | 26 | MEP | C | MEP |
| HCMEGFZ2255 |  | GF Z2 :Electrical Final Fix for All Systems & Boards (Vertical Elements) |  | 10d | 2014-01-29 | 2014-02-12 | HCMEGFZ2245 FS+30d, HCMEGFZ2235 FS+22d, HCMEGFZ2215 FS+30d, HCMEGFZ2165 FS+60d | 71d | 0d | HCRA - Global | EFFORT [10 h]; Electrical Skilled Labours [20 h] | 375 | B5 | 26 | MEP | C | MEP |
| HCMEGFZ2265 |  | GF Z2 :Electrical Final Fix for All Systems (Horizantel Elements) |  | 10d | 2014-02-12 | 2014-02-26 | HCMEGFZ2255, HCMEGFZ2235, HCMEGFZ2175 | 71d | 4d | HCRA - Global | EFFORT [10 h]; Electrical Skilled Labours [20 h] | 375 | B5 | 26 | MEP | C | MEP |

| ID | WBS | Activity | Type | Duration | Start | Finish | Predecessors | Total float | Free float | Calendar | Resources | Cost | Bill No. | Division No. | Responsibility | Phase Code | Trade |
| --- | --- | --- | --- | --- | --- | --- | --- | --- | --- | --- | --- | --- | --- | --- | --- | --- | --- |
|  | 2 | **Fire Fighting** |  |  | 2013-03-18 | 2014-01-13 |  |  |  |  |  |  |  |  |  |  |  |
| HCMEGFZ2085 |  | GF Z2 :Horizontal F.F Piping Work |  | 20d | 2013-03-18 | 2013-04-12 | HCMEGFZ2145 | 148.88d | 0d | HCRA - Global | EFFORT [20 h]; Mechnical Skilled Labours [30 h] | 712.5 | B5 | 21 | MEP | C | MEP |
| HCMEGFZ2095 |  | GF Z2 :Fire Hose Cabinets |  | 10d | 2013-04-15 | 2013-04-26 | HCMEGFZ2085 | 148.88d | 105.88d | HCRA - Global | EFFORT [10 h]; Mechnical Skilled Labours [15 h] | 356.25 | B5 | 21 | MEP | C | MEP |
| HCMEGFZ2105 |  | GF Z2 :Sprinklers Final Fix |  | 10d | 2013-12-30 | 2014-01-13 | HCMEGFZ2095 FS+70d, HCMEB1Z2100 | 43d | 0d | HCRA - Global | EFFORT [10 h]; Mechnical Skilled Labours [15 h] | 356.25 | B5 | 21 | MEP | C | MEP |
|  | 1 | **Air Conditioning** |  |  | 2013-08-26 | 2014-02-20 |  |  |  |  |  |  |  |  |  |  |  |
| HCMEGFZ2315 |  | GF Z2 :Duct Installation& Dusct Accecories Installation, Fan coil Unit |  | 8d | 2013-08-26 | 2013-09-05 | HCMEGFZ2145, HCMEB1Z2310 | 23.12d | 0d | HCRA - Global | EFFORT [20 h]; Mechnical Skilled Labours [30 h] | 712.5 | B5 | 23 | MEP | C | MEP |
| HCMEGFZ2325 |  | GF Z2 :Duct Insulation Work |  | 15d | 2013-09-05 | 2013-09-26 | HCMEGFZ2315 | 23.12d | 0d | HCRA - Global | EFFORT [15 h]; Mechnical Skilled Labours [22.5 h] | 534.38 | B5 | 23 | MEP | C | MEP |
| HCMEGFZ2335 |  | GF Z2 :Exhaust Fans |  | 15d | 2013-09-26 | 2013-10-17 | HCMEGFZ2325 | 23.12d | 20d | HCRA - Global | EFFORT [15 h]; Mechnical Skilled Labours [22.5 h] | 534.38 | B5 | 23 | MEP | C | MEP |
| HCMEGFZ2345 |  | GF Z2 :Grills & Diffusers |  | 10d | 2014-01-23 | 2014-02-06 | HCMEGFZ2335 FS+50d, HCMEB1Z2340 | 3.12d | 0d | HCRA - Global | EFFORT [10 h]; Mechnical Skilled Labours [15 h] | 356.25 | B5 | 23 | MEP | C | MEP |
| HCMEGFZ2355 |  | GF Z2 :Mechanical final Fix |  | 10d | 2014-02-06 | 2014-02-20 | HCMEGFZ2345, HCMEB1Z2350 | 3.12d | 0d | HCRA - Global | EFFORT [10 h]; Mechnical Skilled Labours [15 h] | 356.25 | B5 | 23 | MEP | C | MEP |
|  | 3 | **Water Network** |  |  | 2013-02-27 | 2013-10-11 |  |  |  |  |  |  |  |  |  |  |  |
| HCMEGFZ2365 |  | GF Z2 :All Vertical Piping Works |  | 10d | 2013-02-27 | 2013-03-12 | HCMEGFZ2055 SS | 61.88d | 0d | HCRA - Global | EFFORT [10 h]; Mechnical Skilled Labours [15 h] | 356.25 | B5 | 22 | MEP | C | MEP |
| HCMEGFZ2375 |  | GF Z2 :All Horizantal Piping Works |  | 30d | 2013-03-13 | 2013-04-23 | HCMEGFZ2365 | 61.88d | 13d | HCRA - Global | EFFORT [30 h]; Mechnical Skilled Labours [45 h] | 1,068.75 | B5 | 22 | MEP | C | MEP |
| HCMEGFZ2385 |  | GF Z2 :Mechanical Final Fix |  | 20d | 2013-09-16 | 2013-10-11 | HCMEGFZ2375 FS+90d, HCMEB1Z2380 | 48.88d | 0d | HCRA - Global | EFFORT [20 h]; Mechnical Skilled Labours [30 h] | 712.5 | B5 | 22 | MEP | C | MEP |
|  | 2 | **Zone 3** |  |  | 2013-02-27 | 2014-03-04 |  |  |  |  |  |  |  |  |  |  |  |
|  | 4 | **Conveying System** |  |  |  |  |  |  |  |  |  |  |  |  |  |  |  |
|  | 7 | **Drainage** |  |  | 2013-02-27 | 2013-10-11 |  |  |  |  |  |  |  |  |  |  |  |
| HCMEGFZ3060 |  | GF Z3 :All Vertical Piping Works |  | 10d | 2013-02-27 | 2013-03-12 | HCMEGFZ2055 SS | 61.88d | 0d | HCRA - Global | EFFORT [10 h]; Mechnical Skilled Labours [15 h] | 356.25 | B5 | 22 | MEP | C | MEP |
| HCMEGFZ3070 |  | GF Z3 :All Horizantal Piping Works |  | 30d | 2013-03-13 | 2013-04-23 | HCMEGFZ3060 | 61.88d | 13d | HCRA - Global | EFFORT [30 h]; Mechnical Skilled Labours [45 h] | 1,068.75 | B5 | 22 | MEP | C | MEP |
| HCMEGFZ3080 |  | GF Z3 :Mechanical Final Fix |  | 20d | 2013-09-16 | 2013-10-11 | HCMEGFZ3070 FS+90d, HCMEB1Z3075 | 48.88d | 0d | HCRA - Global | EFFORT [20 h]; Mechnical Skilled Labours [30 h] | 712.5 | B5 | 22 | MEP | C | MEP |
|  | 020 | **Electrical Works** |  |  | 2013-06-27 | 2014-03-04 |  |  |  |  |  |  |  |  |  |  |  |
| HCMEGFZ3150 |  | GF Z3 :Blocks Start Date for All Parts | milestone | 0d | 2013-06-27 | 2013-06-27 | HCFWGFZ3011, HCFWGFZ3010 | 72.12d | 0d | HCRA - 1 - Normal Calendar |  |  | B5 | 26 | MEP | C | MEP |
| HCMEGFZ3210 |  | GF Z3 :Electrical Coduits & Boards F.F for All Systems |  | 12d | 2013-06-27 | 2013-07-15 | HCMEGFZ3150 | 61d | 0d | HCRA - Global | EFFORT [12 h]; Electrical Skilled Labours [24 h] | 450 | B5 | 26 | MEP | C | MEP |
| HCMEGFZ3170 |  | GF Z3 :Plastering Finish Date for All Parts | milestone | 0d | 2013-07-25 | 2013-07-25 | HCFWGFZ3014 | 123d | 51d | HCRA - 1 - Normal Calendar |  |  | B5 | 26 | MEP | C | MEP |
| HCMEGFZ3220 |  | GF Z3 :Electrical Boards Seconed Fix |  | 12d | 2013-09-23 | 2013-10-09 | HCMEGFZ3210 FS+50d, HCMEGFZ3170, HCMEB1Z3215 | 61d | 0d | HCRA - Global | EFFORT [12 h]; Electrical Skilled Labours [24 h] | 450 | B5 | 26 | MEP | C | MEP |
| HCMEGFZ3160 |  | GF Z3 :Tiling Finish Date for All Parts | milestone | 0d | 2013-10-05 | 2013-10-05 | HCFWGFZ3003 | 114d | 70d | HCRA - 1 - Normal Calendar |  |  | B5 | 26 | MEP | C | MEP |
| HCMEGFZ3230 |  | GF Z3 :Cable Tray Installation |  | 10d | 2013-11-20 | 2013-12-04 | HCMEGFZ3170, HCMEB1Z3225 | 21d | 0d | HCRA - Global | EFFORT [10 h]; Electrical Skilled Labours [20 h] | 375 | B5 | 26 | MEP | C | MEP |
| HCMEGFZ3250 |  | GF Z3 :Cable Laying |  | 10d | 2013-12-04 | 2013-12-18 | HCMEGFZ3230, HCMEB1Z3245 | 21d | 0d | HCRA - Global | EFFORT [10 h]; Electrical Skilled Labours [20 h] | 375 | B5 | 26 | MEP | C | MEP |
| HCMEGFZ3240 |  | GF Z3 :Electrcial Wiring |  | 6d | 2013-12-26 | 2014-01-03 | HCMEGFZ3160, HCMEB1Z3235 | 37d | 0d | HCRA - Global | EFFORT [20 h]; Electrical Skilled Labours [40 h] | 750 | B5 | 26 | MEP | C | MEP |
| HCMEGFZ3180 |  | GF Z3 :Gypsum Boards Finish Date for All Parts | milestone | 0d | 2013-12-29 | 2013-12-29 | HCFWGFZ3025, HCFWGFZ3026 | 123d | 43d | HCRA - 1 - Normal Calendar |  |  | B5 | 26 | MEP | C | MEP |
| HCMEGFZ3260 |  | GF Z3 :Electrical Final Fix for All Systems & Boards (Vertical Elements) |  | 10d | 2014-02-04 | 2014-02-18 | HCMEGFZ3250 FS+30d, HCMEGFZ3240 FS+22d, HCMEGFZ3220 FS+30d, HCMEGFZ3170 FS+60d | 67d | 0d | HCRA - Global | EFFORT [10 h]; Electrical Skilled Labours [20 h] | 375 | B5 | 26 | MEP | C | MEP |
| HCMEGFZ3270 |  | GF Z3 :Electrical Final Fix for All Systems (Horizantel Elements) |  | 10d | 2014-02-18 | 2014-03-04 | HCMEGFZ3260, HCMEGFZ3240, HCMEGFZ3180 | 67d | 0d | HCRA - Global | EFFORT [10 h]; Electrical Skilled Labours [20 h] | 375 | B5 | 26 | MEP | C | MEP |

| ID | WBS | Activity | Type | Duration | Start | Finish | Predecessors | Total float | Free float | Calendar | Resources | Cost | Bill No. | Division No. | Responsibility | Phase Code | Trade |
| --- | --- | --- | --- | --- | --- | --- | --- | --- | --- | --- | --- | --- | --- | --- | --- | --- | --- |
|  | 2 | **Fire Fighting** |  |  | 2013-06-27 | 2014-01-13 |  |  |  |  |  |  |  |  |  |  |  |
| HCMEGFZ3090 |  | GF Z3 :Horizontal F.F Piping Work |  | 20d | 2013-06-27 | 2013-07-25 | HCMEGFZ3150 | 75d | 0d | HCRA - Global | EFFORT [20 h]; Mechnical Skilled Labours [30 h] | 712.5 | B5 | 21 | MEP | C | MEP |
| HCMEGFZ3100 |  | GF Z3 :Fire Hose Cabinets |  | 10d | 2013-07-25 | 2013-08-08 | HCMEGFZ3090 | 75d | 32d | HCRA - Global | EFFORT [10 h]; Mechnical Skilled Labours [15 h] | 356.25 | B5 | 21 | MEP | C | MEP |
| HCMEGFZ3110 |  | GF Z3 :Sprinklers Final Fix |  | 10d | 2013-12-30 | 2014-01-13 | HCMEGFZ3100 FS+70d, HCMEB1Z3105 | 43d | 0d | HCRA - Global | EFFORT [10 h]; Mechnical Skilled Labours [15 h] | 356.25 | B5 | 21 | MEP | C | MEP |
|  | 1 | **Air Conditioning** |  |  | 2013-09-05 | 2014-02-20 |  |  |  |  |  |  |  |  |  |  |  |
| HCMEGFZ3320 |  | GF Z3 :Duct Installation& Dusct Accecories Installation, Fan coil Unit |  | 8d | 2013-09-05 | 2013-09-17 | HCMEGFZ3150, HCMEB1Z3315 | 27d | 0d | HCRA - Global | EFFORT [20 h]; Mechnical Skilled Labours [30 h] | 712.5 | B5 | 23 | MEP | C | MEP |
| HCMEGFZ3330 |  | GF Z3 :Duct Insulation Work |  | 15d | 2013-09-17 | 2013-10-08 | HCMEGFZ3320 | 27d | 0d | HCRA - Global | EFFORT [15 h]; Mechnical Skilled Labours [22.5 h] | 534.38 | B5 | 23 | MEP | C | MEP |
| HCMEGFZ3340 |  | GF Z3 :Exhaust Fans |  | 15d | 2013-10-08 | 2013-10-29 | HCMEGFZ3330 | 27d | 12d | HCRA - Global | EFFORT [15 h]; Mechnical Skilled Labours [22.5 h] | 534.38 | B5 | 23 | MEP | C | MEP |
| HCMEGFZ3350 |  | GF Z3 :Grills & Diffusers |  | 10d | 2014-01-23 | 2014-02-06 | HCMEGFZ3340 FS+50d, HCMEB1Z3345 | 15d | 0d | HCRA - Global | EFFORT [10 h]; Mechnical Skilled Labours [15 h] | 356.25 | B5 | 23 | MEP | C | MEP |
| HCMEGFZ3360 |  | GF Z3 :Mechanical final Fix |  | 10d | 2014-02-06 | 2014-02-20 | HCMEGFZ3350, HCMEB1Z3355 | 15d | 0d | HCRA - Global | EFFORT [10 h]; Mechnical Skilled Labours [15 h] | 356.25 | B5 | 23 | MEP | C | MEP |
|  | 3 | **Water Network** |  |  | 2013-02-27 | 2013-10-11 |  |  |  |  |  |  |  |  |  |  |  |
| HCMEGFZ3370 |  | GF Z3 :All Vertical Piping Works |  | 10d | 2013-02-27 | 2013-03-12 | HCMEGFZ3060 SS | 61.88d | 0d | HCRA - Global | EFFORT [10 h]; Mechnical Skilled Labours [15 h] | 356.25 | B5 | 22 | MEP | C | MEP |
| HCMEGFZ3380 |  | GF Z3 :All Horizantal Piping Works |  | 30d | 2013-03-13 | 2013-04-23 | HCMEGFZ3370 | 61.88d | 13d | HCRA - Global | EFFORT [30 h]; Mechnical Skilled Labours [45 h] | 1,068.75 | B5 | 22 | MEP | C | MEP |
| HCMEGFZ3390 |  | GF Z3 :Mechanical Final Fix |  | 20d | 2013-09-16 | 2013-10-11 | HCMEGFZ3380 FS+90d, HCMEB1Z3385, HCMEB4Z5380 | 48.88d | 0d | HCRA - Global | EFFORT [20 h]; Mechnical Skilled Labours [30 h] | 712.5 | B5 | 22 | MEP | C | MEP |
|  | 050 | **First Floor** |  |  | 2013-03-12 | 2014-03-18 |  |  |  |  |  |  |  |  |  |  |  |
| HCMEF1000 |  | Start First Floor EM Works | milestone | 0d | 2013-03-13 | 2013-03-13 | HCFWF1Z1033 | 61d | 0d |  |  |  | B5 |  | MEP | C | MEP |
| HCMEF10000 |  | End First Floor EM Works | milestone | 0d | 2014-03-13 | 2014-03-13 | HCMEF1Z1075, HCMEF1Z1105, HCMEF1Z1355, HCMEF1Z1385 | 69d |  |  |  |  | B5 |  | MEP | C | MEP |
|  | 4 | **Zone 1** |  |  | 2013-03-12 | 2014-03-18 |  |  |  |  |  |  |  |  |  |  |  |
|  | 7 | **Drainage** |  |  | 2013-03-13 | 2013-11-08 |  |  |  |  |  |  |  |  |  |  |  |
| HCMEF1Z1055 |  | F1 Z1 :All Vertical Piping Works |  | 10d | 2013-03-13 | 2013-03-26 | HCMEF1000 | 51.88d | 0d | HCRA - Global | EFFORT [10 h]; Mechnical Skilled Labours [15 h] | 356.25 | B5 | 22 | MEP | C | MEP |
| HCMEF1Z1065 |  | F1 Z1 :All Horizantal Piping Works |  | 30d | 2013-03-27 | 2013-05-07 | HCMEF1Z1055 | 51.88d | 23d | HCRA - Global | EFFORT [30 h]; Mechnical Skilled Labours [45 h] | 1,068.75 | B5 | 22 | MEP | C | MEP |
| HCMEF1Z1075 |  | F1 Z1 :Mechanical Final Fix |  | 20d | 2013-10-14 | 2013-11-08 | HCMEF1Z1065 FS+90d, HCMEGFZ1070 | 28.88d | 0d | HCRA - Global | EFFORT [20 h]; Mechnical Skilled Labours [30 h] | 712.5 | B5 | 22 | MEP | C | MEP |
|  | 020 | **Electrical Works** |  |  | 2013-03-12 | 2014-03-18 |  |  |  |  |  |  |  |  |  |  |  |
| HCMEF1Z1145 |  | F1 Z1 :Blocks Start Date for All Parts | milestone | 0d | 2013-03-12 | 2013-03-12 | HCFWF1Z1033 | 155d | 0d | HCRA - 1 - Normal Calendar |  |  | B5 | 26 | MEP | C | MEP |
| HCMEF1Z1205 |  | F1 Z1 :Electrical Coduits & Boards F.F for All Systems |  | 12d | 2013-03-12 | 2013-03-28 | HCMEF1Z1145 | 129d | 10d | HCRA - Global | EFFORT [12 h]; Electrical Skilled Labours [24 h] | 450 | B5 | 26 | MEP | C | MEP |
| HCMEF1Z1165 |  | F1 Z1 :Plastering Finish Date for All Parts | milestone | 0d | 2013-04-27 | 2013-04-27 | HCFWF1Z1130 | 189d | 47d | HCRA - 1 - Normal Calendar |  |  | B5 | 26 | MEP | C | MEP |
| HCMEF1Z1215 |  | F1 Z1 :Electrical Boards Seconed Fix |  | 12d | 2013-06-20 | 2013-07-08 | HCMEF1Z1205 FS+50d, HCMEF1Z1165, HCMEGFZ1210 | 119d | 0d | HCRA - Global | EFFORT [12 h]; Electrical Skilled Labours [24 h] | 450 | B5 | 26 | MEP | C | MEP |
| HCMEF1Z1155 |  | F1 Z1 :Tiling Finish Date for All Parts | milestone | 0d | 2013-07-10 | 2013-07-10 | HCFWF1Z1051 | 89.38d | 87.5d | HCRA - 1 - Normal Calendar |  |  | B5 | 26 | MEP | C | MEP |
| HCMEF1Z1235 |  | F1 Z1 :Electrcial Wiring |  | 20d | 2013-10-21 | 2013-11-15 | HCMEF1Z1155, HCMEGFZ1230 | 1.88d | 0d | HCRA - Global | EFFORT [20 h]; Electrical Skilled Labours [40 h] | 750 | B5 | 26 | MEP | C | MEP |
| HCMEF1Z1225 |  | F1 Z1 :Cable Tray Installation |  | 10d | 2013-12-04 | 2013-12-18 | HCMEF1Z1165, HCMEGFZ1220 | 0d |  | HCRA - Global | EFFORT [10 h]; Electrical Skilled Labours [20 h] | 375 | B5 | 26 | MEP | C | MEP |
| HCMEF1Z1245 |  | F1 Z1 :Cable Laying |  | 10d | 2013-12-24 | 2014-01-07 | HCMEF1Z1225, HCMEGFZ1240 | 0d |  | HCRA - Global | EFFORT [10 h]; Electrical Skilled Labours [20 h] | 375 | B5 | 26 | MEP | C | MEP |
| HCMEF1Z1175 |  | F1 Z1 :Gypsum Boards Finish Date for All Parts | milestone | 0d | 2014-01-18 | 2014-01-18 | HCFWF1Z1052, HCFWF1Z1062 | 107d | 39d | HCRA - 1 - Normal Calendar |  |  | B5 | 26 | MEP | C | MEP |
| HCMEF1Z1255 |  | F1 Z1 :Electrical Final Fix for All Systems & Boards (Vertical Elements) |  | 10d | 2014-02-18 | 2014-03-04 | HCMEF1Z1245 FS+30d, HCMEF1Z1235 FS+22d, HCMEF1Z1215 FS+30d, HCMEF1Z1165 FS+60d | 57d | 0d | HCRA - Global | EFFORT [10 h]; Electrical Skilled Labours [20 h] | 375 | B5 | 26 | MEP | C | MEP |
| HCMEF1Z1265 |  | F1 Z1 :Electrical Final Fix for All Systems (Horizantel Elements) |  | 10d | 2014-03-04 | 2014-03-18 | HCMEF1Z1255, HCMEF1Z1235, HCMEF1Z1175 | 57d | 0d | HCRA - Global | EFFORT [10 h]; Electrical Skilled Labours [20 h] | 375 | B5 | 26 | MEP | C | MEP |

| ID | WBS | Activity | Type | Duration | Start | Finish | Predecessors | Total float | Free float | Calendar | Resources | Cost | Bill No. | Division No. | Responsibility | Phase Code | Trade |
| --- | --- | --- | --- | --- | --- | --- | --- | --- | --- | --- | --- | --- | --- | --- | --- | --- | --- |
|  | 2 | **Fire Fighting** |  |  | 2013-03-12 | 2014-01-27 |  |  |  |  |  |  |  |  |  |  |  |
| HCMEF1Z1085 |  | F1 Z1 :Horizontal F.F Piping Work |  | 20d | 2013-03-12 | 2013-04-09 | HCMEF1Z1145 | 152d | 0d | HCRA - Global | EFFORT [20 h]; Mechnical Skilled Labours [30 h] | 712.5 | B5 | 21 | MEP | C | MEP |
| HCMEF1Z1095 |  | F1 Z1 :Fire Hose Cabinets |  | 10d | 2013-04-09 | 2013-04-23 | HCMEF1Z1085 | 152d | 119d | HCRA - Global | EFFORT [10 h]; Mechnical Skilled Labours [15 h] | 356.25 | B5 | 21 | MEP | C | MEP |
| HCMEF1Z1105 |  | F1 Z1 :Sprinklers Final Fix |  | 10d | 2014-01-13 | 2014-01-27 | HCMEF1Z1095 FS+70d, HCMEGFZ1100 | 33d | 0d | HCRA - Global | EFFORT [10 h]; Mechnical Skilled Labours [15 h] | 356.25 | B5 | 21 | MEP | C | MEP |
|  | 1 | **Air Conditioning** |  |  | 2013-09-09 | 2014-03-13 |  |  |  |  |  |  |  |  |  |  |  |
| HCMEF1Z1315 |  | F1 Z1 :Duct Installation& Dusct Accecories Installation, Fan coil Unit |  | 10d | 2013-09-09 | 2013-09-23 | HCMEF1Z1145, HCMEGFZ1310 | 23d | 0d | HCRA - Global | EFFORT [20 h]; Mechnical Skilled Labours [30 h] | 712.5 | B5 | 23 | MEP | C | MEP |
| HCMEF1Z1325 |  | F1 Z1 :Duct Insulation Work |  | 15d | 2013-09-23 | 2013-10-14 | HCMEF1Z1315 | 23d | 0d | HCRA - Global | EFFORT [15 h]; Mechnical Skilled Labours [22.5 h] | 534.38 | B5 | 23 | MEP | C | MEP |
| HCMEF1Z1335 |  | F1 Z1 :Exhaust Fans |  | 15d | 2013-10-14 | 2013-11-04 | HCMEF1Z1325 | 23d | 21d | HCRA - Global | EFFORT [15 h]; Mechnical Skilled Labours [22.5 h] | 534.38 | B5 | 23 | MEP | C | MEP |
| HCMEF1Z1345 |  | F1 Z1 :Grills & Diffusers |  | 10d | 2014-02-11 | 2014-02-25 | HCMEF1Z1335 FS+50d, HCMEGFZ1340 | 2d | 0d | HCRA - Global | EFFORT [10 h]; Mechnical Skilled Labours [15 h] | 356.25 | B5 | 23 | MEP | C | MEP |
| HCMEF1Z1355 |  | F1 Z1 :Mechanical final Fix |  | 10d | 2014-02-27 | 2014-03-13 | HCMEF1Z1345, HCMEGFZ1350 | 0d |  | HCRA - Global | EFFORT [10 h]; Mechnical Skilled Labours [15 h] | 356.25 | B5 | 23 | MEP | C | MEP |
|  | 3 | **Water Network** |  |  | 2013-03-13 | 2013-11-08 |  |  |  |  |  |  |  |  |  |  |  |
| HCMEF1Z1365 |  | F1 Z1 :All Vertical Piping Works |  | 10d | 2013-03-13 | 2013-03-26 | HCMEF1Z1055 SS | 51.88d | 0d | HCRA - Global | EFFORT [10 h]; Mechnical Skilled Labours [15 h] | 356.25 | B5 | 22 | MEP | C | MEP |
| HCMEF1Z1375 |  | F1 Z1 :All Horizantal Piping Works |  | 30d | 2013-03-27 | 2013-05-07 | HCMEF1Z1365 | 51.88d | 23d | HCRA - Global | EFFORT [30 h]; Mechnical Skilled Labours [45 h] | 1,068.75 | B5 | 22 | MEP | C | MEP |
| HCMEF1Z1385 |  | F1 Z1 :Mechanical Final Fix |  | 20d | 2013-10-14 | 2013-11-08 | HCMEF1Z1375 FS+90d, HCMEGFZ1380 | 28.88d | 0d | HCRA - Global | EFFORT [20 h]; Mechnical Skilled Labours [30 h] | 712.5 | B5 | 22 | MEP | C | MEP |
|  | 1 | **Zone 2** |  |  | 2013-03-13 | 2014-03-12 |  |  |  |  |  |  |  |  |  |  |  |
|  | 7 | **Drainage** |  |  | 2013-03-13 | 2013-11-08 |  |  |  |  |  |  |  |  |  |  |  |
| HCMEF1Z2060 |  | F1 Z2 :All Vertical Piping Works |  | 10d | 2013-03-13 | 2013-03-26 | HCMEF1Z1055 SS | 71.88d | 0d | HCRA - Global | EFFORT [10 h]; Mechnical Skilled Labours [15 h] | 356.25 | B5 | 22 | MEP | C | MEP |
| HCMEF1Z2070 |  | F1 Z2 :All Horizantal Piping Works |  | 30d | 2013-03-27 | 2013-05-07 | HCMEF1Z2060 | 71.88d | 23d | HCRA - Global | EFFORT [30 h]; Mechnical Skilled Labours [45 h] | 1,068.75 | B5 | 22 | MEP | C | MEP |
| HCMEF1Z2080 |  | F1 Z2 :Mechanical Final Fix |  | 20d | 2013-10-14 | 2013-11-08 | HCMEF1Z2070 FS+90d, HCMEGFZ2075 | 48.88d | 0d | HCRA - Global | EFFORT [20 h]; Mechnical Skilled Labours [30 h] | 712.5 | B5 | 22 | MEP | C | MEP |
|  | 020 | **Electrical Works** |  |  | 2013-05-08 | 2014-03-12 |  |  |  |  |  |  |  |  |  |  |  |
| HCMEF1Z2150 |  | F1 Z2 :Blocks Start Date for All Parts | milestone | 0d | 2013-05-08 | 2013-05-08 | HCFWF1Z2032 | 115.12d | 0d | HCRA - 1 - Normal Calendar |  |  | B5 | 26 | MEP | C | MEP |
| HCMEF1Z2210 |  | F1 Z2 :Electrical Coduits & Boards F.F for All Systems |  | 12d | 2013-05-08 | 2013-05-24 | HCMEF1Z2150 | 97d | 0d | HCRA - Global | EFFORT [12 h]; Electrical Skilled Labours [24 h] | 450 | B5 | 26 | MEP | C | MEP |
| HCMEF1Z2170 |  | F1 Z2 :Plastering Finish Date for All Parts | milestone | 0d | 2013-06-06 | 2013-06-06 | HCFWF1Z2031 | 165d | 48.12d | HCRA - 1 - Normal Calendar |  |  | B5 | 26 | MEP | C | MEP |
| HCMEF1Z2160 |  | F1 Z2 :Tiling Finish Date for All Parts | milestone | 0d | 2013-07-18 | 2013-07-18 | HCFWF1Z2043 | 82d | 50.12d | HCRA - 1 - Normal Calendar |  |  | B5 | 26 | MEP | C | MEP |
| HCMEF1Z2220 |  | F1 Z2 :Electrical Boards Seconed Fix |  | 12d | 2013-08-02 | 2013-08-20 | HCMEF1Z2210 FS+50d, HCMEF1Z2170, HCMEGFZ2215 | 97d | 0d | HCRA - Global | EFFORT [12 h]; Electrical Skilled Labours [24 h] | 450 | B5 | 26 | MEP | C | MEP |
| HCMEF1Z2240 |  | F1 Z2 :Electrcial Wiring |  | 20d | 2013-09-16 | 2013-10-11 | HCMEF1Z2160, HCMEGFZ2235 | 26.88d | 0d | HCRA - Global | EFFORT [20 h]; Electrical Skilled Labours [40 h] | 750 | B5 | 26 | MEP | C | MEP |
| HCMEF1Z2230 |  | F1 Z2 :Cable Tray Installation |  | 10d | 2013-12-04 | 2013-12-18 | HCMEF1Z2170, HCMEGFZ2225 | 11d | 0d | HCRA - Global | EFFORT [10 h]; Electrical Skilled Labours [20 h] | 375 | B5 | 26 | MEP | C | MEP |
| HCMEF1Z2250 |  | F1 Z2 :Cable Laying |  | 10d | 2013-12-18 | 2014-01-01 | HCMEF1Z2230, HCMEGFZ2245 | 11d | 0d | HCRA - Global | EFFORT [10 h]; Electrical Skilled Labours [20 h] | 375 | B5 | 26 | MEP | C | MEP |
| HCMEF1Z2180 |  | F1 Z2 :Gypsum Boards Finish Date for All Parts | milestone | 0d | 2014-01-16 | 2014-01-16 | HCFWF1Z2045 | 108d | 35d | HCRA - 1 - Normal Calendar |  |  | B5 | 26 | MEP | C | MEP |
| HCMEF1Z2260 |  | F1 Z2 :Electrical Final Fix for All Systems & Boards (Vertical Elements) |  | 10d | 2014-02-12 | 2014-02-26 | HCMEF1Z2250 FS+30d, HCMEF1Z2240 FS+22d, HCMEF1Z2220 FS+30d, HCMEF1Z2170 FS+60d | 61d | 0d | HCRA - Global | EFFORT [10 h]; Electrical Skilled Labours [20 h] | 375 | B5 | 26 | MEP | C | MEP |
| HCMEF1Z2270 |  | F1 Z2 :Electrical Final Fix for All Systems (Horizantel Elements) |  | 10d | 2014-02-26 | 2014-03-12 | HCMEF1Z2260, HCMEF1Z2240, HCMEF1Z2180 | 61d | 4d | HCRA - Global | EFFORT [10 h]; Electrical Skilled Labours [20 h] | 375 | B5 | 26 | MEP | C | MEP |

| ID | WBS | Activity | Type | Duration | Start | Finish | Predecessors | Total float | Free float | Calendar | Resources | Cost | Bill No. | Division No. | Responsibility | Phase Code | Trade |
| --- | --- | --- | --- | --- | --- | --- | --- | --- | --- | --- | --- | --- | --- | --- | --- | --- | --- |
|  | 2 | **Fire Fighting** |  |  | 2013-05-08 | 2014-01-27 |  |  |  |  |  |  |  |  |  |  |  |
| HCMEF1Z2090 |  | F1 Z2 :Horizontal F.F Piping Work |  | 20d | 2013-05-08 | 2013-06-05 | HCMEF1Z2150 | 121d | 0d | HCRA - Global | EFFORT [20 h]; Mechnical Skilled Labours [30 h] | 712.5 | B5 | 21 | MEP | C | MEP |
| HCMEF1Z2100 |  | F1 Z2 :Fire Hose Cabinets |  | 10d | 2013-06-05 | 2013-06-19 | HCMEF1Z2090 | 121d | 78d | HCRA - Global | EFFORT [10 h]; Mechnical Skilled Labours [15 h] | 356.25 | B5 | 21 | MEP | C | MEP |
| HCMEF1Z2110 |  | F1 Z2 :Sprinklers Final Fix |  | 10d | 2014-01-13 | 2014-01-27 | HCMEF1Z2100 FS+70d, HCMEGFZ2105 | 43d | 0d | HCRA - Global | EFFORT [10 h]; Mechnical Skilled Labours [15 h] | 356.25 | B5 | 21 | MEP | C | MEP |
|  | 1 | **Air Conditioning** |  |  | 2013-09-05 | 2014-03-06 |  |  |  |  |  |  |  |  |  |  |  |
| HCMEF1Z2320 |  | F1 Z2 :Duct Installation& Dusct Accecories Installation, Fan coil Unit |  | 8d | 2013-09-05 | 2013-09-17 | HCMEF1Z2150, HCMEGFZ2315 | 25.12d | 0d | HCRA - Global | EFFORT [20 h]; Mechnical Skilled Labours [30 h] | 712.5 | B5 | 23 | MEP | C | MEP |
| HCMEF1Z2330 |  | F1 Z2 :Duct Insulation Work |  | 15d | 2013-09-17 | 2013-10-08 | HCMEF1Z2320 | 25.12d | 0d | HCRA - Global | EFFORT [15 h]; Mechnical Skilled Labours [22.5 h] | 534.38 | B5 | 23 | MEP | C | MEP |
| HCMEF1Z2340 |  | F1 Z2 :Exhaust Fans |  | 15d | 2013-10-08 | 2013-10-29 | HCMEF1Z2330 | 25.12d | 22d | HCRA - Global | EFFORT [15 h]; Mechnical Skilled Labours [22.5 h] | 534.38 | B5 | 23 | MEP | C | MEP |
| HCMEF1Z2350 |  | F1 Z2 :Grills & Diffusers |  | 10d | 2014-02-06 | 2014-02-20 | HCMEF1Z2340 FS+50d, HCMEGFZ2345 | 3.12d | 0d | HCRA - Global | EFFORT [10 h]; Mechnical Skilled Labours [15 h] | 356.25 | B5 | 23 | MEP | C | MEP |
| HCMEF1Z2360 |  | F1 Z2 :Mechanical final Fix |  | 10d | 2014-02-20 | 2014-03-06 | HCMEF1Z2350, HCMEGFZ2355 | 3.12d | 0d | HCRA - Global | EFFORT [10 h]; Mechnical Skilled Labours [15 h] | 356.25 | B5 | 23 | MEP | C | MEP |
|  | 3 | **Water Network** |  |  | 2013-03-13 | 2013-11-08 |  |  |  |  |  |  |  |  |  |  |  |
| HCMEF1Z2370 |  | F1 Z2 :All Vertical Piping Works |  | 10d | 2013-03-13 | 2013-03-26 | HCMEF1Z2060 SS | 71.88d | 0d | HCRA - Global | EFFORT [10 h]; Mechnical Skilled Labours [15 h] | 356.25 | B5 | 22 | MEP | C | MEP |
| HCMEF1Z2380 |  | F1 Z2 :All Horizantal Piping Works |  | 30d | 2013-03-27 | 2013-05-07 | HCMEF1Z2370 | 71.88d | 23d | HCRA - Global | EFFORT [30 h]; Mechnical Skilled Labours [45 h] | 1,068.75 | B5 | 22 | MEP | C | MEP |
| HCMEF1Z2390 |  | F1 Z2 :Mechanical Final Fix |  | 20d | 2013-10-14 | 2013-11-08 | HCMEF1Z2380 FS+90d, HCMEGFZ2385 | 48.88d | 0d | HCRA - Global | EFFORT [20 h]; Mechnical Skilled Labours [30 h] | 712.5 | B5 | 22 | MEP | C | MEP |
|  | 2 | **Zone 3** |  |  | 2013-03-13 | 2014-03-12 |  |  |  |  |  |  |  |  |  |  |  |
|  | 4 | **Conveying System** |  |  |  |  |  |  |  |  |  |  |  |  |  |  |  |
|  | 7 | **Drainage** |  |  | 2013-03-13 | 2013-11-08 |  |  |  |  |  |  |  |  |  |  |  |
| HCMEF1Z3065 |  | F1 Z3 :All Vertical Piping Works |  | 10d | 2013-03-13 | 2013-03-26 | HCMEF1Z2060 SS | 71.88d | 0d | HCRA - Global | EFFORT [10 h]; Mechnical Skilled Labours [15 h] | 356.25 | B5 | 22 | MEP | C | MEP |
| HCMEF1Z3075 |  | F1 Z3 :All Horizantal Piping Works |  | 30d | 2013-03-27 | 2013-05-07 | HCMEF1Z3065 | 71.88d | 23d | HCRA - Global | EFFORT [30 h]; Mechnical Skilled Labours [45 h] | 1,068.75 | B5 | 22 | MEP | C | MEP |
| HCMEF1Z3085 |  | F1 Z3 :Mechanical Final Fix |  | 20d | 2013-10-14 | 2013-11-08 | HCMEF1Z3075 FS+90d, HCMEGFZ3080 | 48.88d | 0d | HCRA - Global | EFFORT [20 h]; Mechnical Skilled Labours [30 h] | 712.5 | B5 | 22 | MEP | C | MEP |
|  | 020 | **Electrical Works** |  |  | 2013-07-09 | 2014-03-12 |  |  |  |  |  |  |  |  |  |  |  |
| HCMEF1Z3155 |  | F1 Z3 :Blocks Start Date for All Parts | milestone | 0d | 2013-07-09 | 2013-07-09 | HCFWF1Z3046, HCFWF1Z30046 | 78d | 0d | HCRA - 1 - Normal Calendar |  |  | B5 | 26 | MEP | C | MEP |
| HCMEF1Z3215 |  | F1 Z3 :Electrical Coduits & Boards F.F for All Systems |  | 12d | 2013-07-09 | 2013-07-25 | HCMEF1Z3155 | 65d | 4d | HCRA - Global | EFFORT [12 h]; Electrical Skilled Labours [24 h] | 450 | B5 | 26 | MEP | C | MEP |
| HCMEF1Z3175 |  | F1 Z3 :Plastering Finish Date for All Parts | milestone | 0d | 2013-08-26 | 2013-08-26 | HCFWF1Z3039 | 109d | 38d | HCRA - 1 - Normal Calendar |  |  | B5 | 26 | MEP | C | MEP |
| HCMEF1Z3225 |  | F1 Z3 :Electrical Boards Seconed Fix |  | 12d | 2013-10-09 | 2013-10-25 | HCMEF1Z3215 FS+50d, HCMEF1Z3175, HCMEGFZ3220 | 61d | 0d | HCRA - Global | EFFORT [12 h]; Electrical Skilled Labours [24 h] | 450 | B5 | 26 | MEP | C | MEP |
| HCMEF1Z3165 |  | F1 Z3 :Tiling Finish Date for All Parts | milestone | 0d | 2013-11-10 | 2013-11-10 | HCFWF1Z3071 | 90d | 44.12d | HCRA - 1 - Normal Calendar |  |  | B5 | 26 | MEP | C | MEP |
| HCMEF1Z3235 |  | F1 Z3 :Cable Tray Installation |  | 10d | 2013-12-04 | 2013-12-18 | HCMEF1Z3175, HCMEGFZ3230 | 21d | 0d | HCRA - Global | EFFORT [10 h]; Electrical Skilled Labours [20 h] | 375 | B5 | 26 | MEP | C | MEP |
| HCMEF1Z3255 |  | F1 Z3 :Cable Laying |  | 10d | 2013-12-18 | 2014-01-01 | HCMEF1Z3235, HCMEGFZ3250 | 21d | 0d | HCRA - Global | EFFORT [10 h]; Electrical Skilled Labours [20 h] | 375 | B5 | 26 | MEP | C | MEP |
| HCMEF1Z3245 |  | F1 Z3 :Electrcial Wiring |  | 6d | 2014-01-03 | 2014-01-13 | HCMEF1Z3165, HCMEGFZ3240 | 37d | 0d | HCRA - Global | EFFORT [20 h]; Electrical Skilled Labours [40 h] | 750 | B5 | 26 | MEP | C | MEP |
| HCMEF1Z3265 |  | F1 Z3 :Electrical Final Fix for All Systems & Boards (Vertical Elements) |  | 10d | 2014-02-12 | 2014-02-26 | HCMEF1Z3255 FS+30d, HCMEF1Z3245 FS+22d, HCMEF1Z3225 FS+30d, HCMEF1Z3175 FS+60d | 61d | 0d | HCRA - Global | EFFORT [10 h]; Electrical Skilled Labours [20 h] | 375 | B5 | 26 | MEP | C | MEP |
| HCMEF1Z3185 |  | F1 Z3 :Gypsum Boards Finish Date for All Parts | milestone | 0d | 2014-02-20 | 2014-02-20 | HCFWF1Z3050, HCFWF1Z3076 | 78d | 5d | HCRA - 1 - Normal Calendar |  |  | B5 | 26 | MEP | C | MEP |
| HCMEF1Z3275 |  | F1 Z3 :Electrical Final Fix for All Systems (Horizantel Elements) |  | 10d | 2014-02-26 | 2014-03-12 | HCMEF1Z3265, HCMEF1Z3245, HCMEF1Z3185 | 61d | 4d | HCRA - Global | EFFORT [10 h]; Electrical Skilled Labours [20 h] | 375 | B5 | 26 | MEP | C | MEP |

| ID | WBS | Activity | Type | Duration | Start | Finish | Predecessors | Total float | Free float | Calendar | Resources | Cost | Bill No. | Division No. | Responsibility | Phase Code | Trade |
| --- | --- | --- | --- | --- | --- | --- | --- | --- | --- | --- | --- | --- | --- | --- | --- | --- | --- |
|  | 2 | **Fire Fighting** |  |  | 2013-07-09 | 2014-01-27 |  |  |  |  |  |  |  |  |  |  |  |
| HCMEF1Z3095 |  | F1 Z3 :Horizontal F.F Piping Work |  | 20d | 2013-07-09 | 2013-08-06 | HCMEF1Z3155 | 77d | 0d | HCRA - Global | EFFORT [20 h]; Mechnical Skilled Labours [30 h] | 712.5 | B5 | 21 | MEP | C | MEP |
| HCMEF1Z3105 |  | F1 Z3 :Fire Hose Cabinets |  | 10d | 2013-08-06 | 2013-08-20 | HCMEF1Z3095 | 77d | 34d | HCRA - Global | EFFORT [10 h]; Mechnical Skilled Labours [15 h] | 356.25 | B5 | 21 | MEP | C | MEP |
| HCMEF1Z3115 |  | F1 Z3 :Sprinklers Final Fix |  | 10d | 2014-01-13 | 2014-01-27 | HCMEF1Z3105 FS+70d, HCMEGFZ3110 | 43d | 0d | HCRA - Global | EFFORT [10 h]; Mechnical Skilled Labours [15 h] | 356.25 | B5 | 21 | MEP | C | MEP |
|  | 1 | **Air Conditioning** |  |  | 2013-09-17 | 2014-03-06 |  |  |  |  |  |  |  |  |  |  |  |
| HCMEF1Z3325 |  | F1 Z3 :Duct Installation& Dusct Accecories Installation, Fan coil Unit |  | 8d | 2013-09-17 | 2013-09-27 | HCMEF1Z3155, HCMEGFZ3320 | 29d | 0d | HCRA - Global | EFFORT [20 h]; Mechnical Skilled Labours [30 h] | 712.5 | B5 | 23 | MEP | C | MEP |
| HCMEF1Z3335 |  | F1 Z3 :Duct Insulation Work |  | 15d | 2013-09-27 | 2013-10-18 | HCMEF1Z3325 | 29d | 0d | HCRA - Global | EFFORT [15 h]; Mechnical Skilled Labours [22.5 h] | 534.38 | B5 | 23 | MEP | C | MEP |
| HCMEF1Z3345 |  | F1 Z3 :Exhaust Fans |  | 15d | 2013-10-18 | 2013-11-08 | HCMEF1Z3335 | 29d | 14d | HCRA - Global | EFFORT [15 h]; Mechnical Skilled Labours [22.5 h] | 534.38 | B5 | 23 | MEP | C | MEP |
| HCMEF1Z3355 |  | F1 Z3 :Grills & Diffusers |  | 10d | 2014-02-06 | 2014-02-20 | HCMEF1Z3345 FS+50d, HCMEGFZ3350 | 15d | 0d | HCRA - Global | EFFORT [10 h]; Mechnical Skilled Labours [15 h] | 356.25 | B5 | 23 | MEP | C | MEP |
| HCMEF1Z3365 |  | F1 Z3 :Mechanical final Fix |  | 10d | 2014-02-20 | 2014-03-06 | HCMEF1Z3355, HCMEGFZ3360 | 15d | 0d | HCRA - Global | EFFORT [10 h]; Mechnical Skilled Labours [15 h] | 356.25 | B5 | 23 | MEP | C | MEP |
|  | 3 | **Water Network** |  |  | 2013-03-13 | 2013-11-08 |  |  |  |  |  |  |  |  |  |  |  |
| HCMEF1Z3375 |  | F1 Z3 :All Vertical Piping Works |  | 10d | 2013-03-13 | 2013-03-26 | HCMEF1Z3065 SS | 71.88d | 0d | HCRA - Global | EFFORT [10 h]; Mechnical Skilled Labours [15 h] | 356.25 | B5 | 22 | MEP | C | MEP |
| HCMEF1Z3385 |  | F1 Z3 :All Horizantal Piping Works |  | 30d | 2013-03-27 | 2013-05-07 | HCMEF1Z3375 | 71.88d | 23d | HCRA - Global | EFFORT [30 h]; Mechnical Skilled Labours [45 h] | 1,068.75 | B5 | 22 | MEP | C | MEP |
| HCMEF1Z3395 |  | F1 Z3 :Mechanical Final Fix |  | 20d | 2013-10-14 | 2013-11-08 | HCMEF1Z3385 FS+90d, HCMEGFZ3390 | 48.88d | 0d | HCRA - Global | EFFORT [20 h]; Mechnical Skilled Labours [30 h] | 712.5 | B5 | 22 | MEP | C | MEP |
|  | 1 | **Second Floor** |  |  | 2013-03-24 | 2014-05-15 |  |  |  |  |  |  |  |  |  |  |  |
| HCMEF2000 |  | Start Second Floor EM Works | milestone | 0d | 2013-03-25 | 2013-03-25 | HCFWF2Z1063, HCFWF2Z11063 | 74d | 0d |  |  |  | B5 |  | MEP | C | MEP |
| HCMEF20000 |  | End Second Floor EM Works | milestone | 0d | 2014-05-15 | 2014-05-15 | HCMEF2Z1080, HCMEF2Z1110, HCMEF2Z1360, HCMEF2Z1390, HCMEF6Z2670 | 16d |  |  |  |  | B5 |  | MEP | C | MEP |
|  | 4 | **Zone 1** |  |  | 2013-03-24 | 2014-04-01 |  |  |  |  |  |  |  |  |  |  |  |
|  | 7 | **Drainage** |  |  | 2013-03-25 | 2013-12-06 |  |  |  |  |  |  |  |  |  |  |  |
| HCMEF2Z1060 |  | F2 Z1 :All Vertical Piping Works |  | 10d | 2013-03-25 | 2013-04-05 | HCMEF2000 | 63.88d | 0d | HCRA - Global | EFFORT [10 h]; Mechnical Skilled Labours [15 h] | 356.25 | B5 | 22 | MEP | C | MEP |
| HCMEF2Z1070 |  | F2 Z1 :All Horizantal Piping Works |  | 30d | 2013-04-08 | 2013-05-17 | HCMEF2Z1060 | 63.88d | 35d | HCRA - Global | EFFORT [30 h]; Mechnical Skilled Labours [45 h] | 1,068.75 | B5 | 22 | MEP | C | MEP |
| HCMEF2Z1080 |  | F2 Z1 :Mechanical Final Fix |  | 20d | 2013-11-11 | 2013-12-06 | HCMEF2Z1070 FS+90d, HCMEF1Z1075 | 28.88d | 0d | HCRA - Global | EFFORT [20 h]; Mechnical Skilled Labours [30 h] | 712.5 | B5 | 22 | MEP | C | MEP |
|  | 020 | **Electrical Works** |  |  | 2013-03-24 | 2014-04-01 |  |  |  |  |  |  |  |  |  |  |  |
| HCMEF2Z1150 |  | F2 Z1 :Blocks Start Date for All Parts | milestone | 0d | 2013-03-24 | 2013-03-24 | HCFWF2Z1063, HCFWF2Z11063 | 159d | 0.12d | HCRA - 1 - Normal Calendar |  |  | B5 | 26 | MEP | C | MEP |
| HCMEF2Z1210 |  | F2 Z1 :Electrical Coduits & Boards F.F for All Systems |  | 12d | 2013-03-25 | 2013-04-09 | HCMEF2Z1150 | 132.88d | 13.88d | HCRA - Global | EFFORT [12 h]; Electrical Skilled Labours [24 h] | 450 | B5 | 26 | MEP | C | MEP |
| HCMEF2Z1170 |  | F2 Z1 :Plastering Finish Date for All Parts | milestone | 0d | 2013-04-23 | 2013-04-23 | HCFWF2Z1067 | 204.38d | 65.38d | HCRA - 1 - Normal Calendar |  |  | B5 | 26 | MEP | C | MEP |
| HCMEF2Z1220 |  | F2 Z1 :Electrical Boards Seconed Fix |  | 12d | 2013-07-08 | 2013-07-24 | HCMEF2Z1210 FS+50d, HCMEF2Z1170, HCMEF1Z1215 | 119d | 0d | HCRA - Global | EFFORT [12 h]; Electrical Skilled Labours [24 h] | 450 | B5 | 26 | MEP | C | MEP |
| HCMEF2Z1160 |  | F2 Z1 :Tiling Finish Date for All Parts | milestone | 0d | 2013-08-12 | 2013-08-12 | HCFWF2Z1081 | 85d | 83.12d | HCRA - 1 - Normal Calendar |  |  | B5 | 26 | MEP | C | MEP |
| HCMEF2Z1240 |  | F2 Z1 :Electrcial Wiring |  | 20d | 2013-11-18 | 2013-12-13 | HCMEF2Z1160, HCMEF1Z1235 | 1.88d | 0d | HCRA - Global | EFFORT [20 h]; Electrical Skilled Labours [40 h] | 750 | B5 | 26 | MEP | C | MEP |
| HCMEF2Z1230 |  | F2 Z1 :Cable Tray Installation |  | 10d | 2013-12-18 | 2014-01-01 | HCMEF2Z1170, HCMEF1Z1225 | 0d |  | HCRA - Global | EFFORT [10 h]; Electrical Skilled Labours [20 h] | 375 | B5 | 26 | MEP | C | MEP |
| HCMEF2Z1250 |  | F2 Z1 :Cable Laying |  | 10d | 2014-01-07 | 2014-01-21 | HCMEF2Z1230, HCMEF1Z1245 | 0d |  | HCRA - Global | EFFORT [10 h]; Electrical Skilled Labours [20 h] | 375 | B5 | 26 | MEP | C | MEP |
| HCMEF2Z1180 |  | F2 Z1 :Gypsum Boards Finish Date for All Parts | milestone | 0d | 2014-02-03 | 2014-02-03 | HCFWF2Z1082, HCFWF2Z1087 | 93d | 37d | HCRA - 1 - Normal Calendar |  |  | B5 | 26 | MEP | C | MEP |
| HCMEF2Z1260 |  | F2 Z1 :Electrical Final Fix for All Systems & Boards (Vertical Elements) |  | 10d | 2014-03-04 | 2014-03-18 | HCMEF2Z1250 FS+30d, HCMEF2Z1240 FS+22d, HCMEF2Z1220 FS+30d, HCMEF2Z1170 FS+60d | 47d | 0d | HCRA - Global | EFFORT [10 h]; Electrical Skilled Labours [20 h] | 375 | B5 | 26 | MEP | C | MEP |
| HCMEF2Z1270 |  | F2 Z1 :Electrical Final Fix for All Systems (Horizantel Elements) |  | 10d | 2014-03-18 | 2014-04-01 | HCMEF2Z1260, HCMEF2Z1240, HCMEF2Z1180 | 47d | 0d | HCRA - Global | EFFORT [10 h]; Electrical Skilled Labours [20 h] | 375 | B5 | 26 | MEP | C | MEP |

| ID | WBS | Activity | Type | Duration | Start | Finish | Predecessors | Total float | Free float | Calendar | Resources | Cost | Bill No. | Division No. | Responsibility | Phase Code | Trade |
| --- | --- | --- | --- | --- | --- | --- | --- | --- | --- | --- | --- | --- | --- | --- | --- | --- | --- |
|  | 2 | **Fire Fighting** |  |  | 2013-03-25 | 2014-02-10 |  |  |  |  |  |  |  |  |  |  |  |
| HCMEF2Z1090 |  | F2 Z1 :Horizontal F.F Piping Work |  | 20d | 2013-03-25 | 2013-04-19 | HCMEF2Z1150 | 153.88d | 0d | HCRA - Global | EFFORT [20 h]; Mechnical Skilled Labours [30 h] | 712.5 | B5 | 21 | MEP | C | MEP |
| HCMEF2Z1100 |  | F2 Z1 :Fire Hose Cabinets |  | 10d | 2013-04-22 | 2013-05-03 | HCMEF2Z1090 | 153.88d | 120.88d | HCRA - Global | EFFORT [10 h]; Mechnical Skilled Labours [15 h] | 356.25 | B5 | 21 | MEP | C | MEP |
| HCMEF2Z1110 |  | F2 Z1 :Sprinklers Final Fix |  | 10d | 2014-01-27 | 2014-02-10 | HCMEF2Z1100 FS+70d, HCMEF1Z1105 | 33d | 0d | HCRA - Global | EFFORT [10 h]; Mechnical Skilled Labours [15 h] | 356.25 | B5 | 21 | MEP | C | MEP |
|  | 1 | **Air Conditioning** |  |  | 2013-09-23 | 2014-03-27 |  |  |  |  |  |  |  |  |  |  |  |
| HCMEF2Z1320 |  | F2 Z1 :Duct Installation& Dusct Accecories Installation, Fan coil Unit |  | 10d | 2013-09-23 | 2013-10-07 | HCMEF2Z1150, HCMEF1Z1315 | 23d | 0d | HCRA - Global | EFFORT [20 h]; Mechnical Skilled Labours [30 h] | 712.5 | B5 | 23 | MEP | C | MEP |
| HCMEF2Z1330 |  | F2 Z1 :Duct Insulation Work |  | 15d | 2013-10-07 | 2013-10-28 | HCMEF2Z1320 | 23d | 0d | HCRA - Global | EFFORT [15 h]; Mechnical Skilled Labours [22.5 h] | 534.38 | B5 | 23 | MEP | C | MEP |
| HCMEF2Z1340 |  | F2 Z1 :Exhaust Fans |  | 15d | 2013-10-28 | 2013-11-18 | HCMEF2Z1330 | 23d | 21d | HCRA - Global | EFFORT [15 h]; Mechnical Skilled Labours [22.5 h] | 534.38 | B5 | 23 | MEP | C | MEP |
| HCMEF2Z1350 |  | F2 Z1 :Grills & Diffusers |  | 10d | 2014-02-25 | 2014-03-11 | HCMEF2Z1340 FS+50d, HCMEF1Z1345 | 2d | 0d | HCRA - Global | EFFORT [10 h]; Mechnical Skilled Labours [15 h] | 356.25 | B5 | 23 | MEP | C | MEP |
| HCMEF2Z1360 |  | F2 Z1 :Mechanical final Fix |  | 10d | 2014-03-13 | 2014-03-27 | HCMEF2Z1350, HCMEF1Z1355 | 0d |  | HCRA - Global | EFFORT [10 h]; Mechnical Skilled Labours [15 h] | 356.25 | B5 | 23 | MEP | C | MEP |
|  | 3 | **Water Network** |  |  | 2013-03-25 | 2013-12-06 |  |  |  |  |  |  |  |  |  |  |  |
| HCMEF2Z1370 |  | F2 Z1 :All Vertical Piping Works |  | 10d | 2013-03-25 | 2013-04-05 | HCMEF2Z1060 SS | 63.88d | 0d | HCRA - Global | EFFORT [10 h]; Mechnical Skilled Labours [15 h] | 356.25 | B5 | 22 | MEP | C | MEP |
| HCMEF2Z1380 |  | F2 Z1 :All Horizantal Piping Works |  | 30d | 2013-04-08 | 2013-05-17 | HCMEF2Z1370 | 63.88d | 35d | HCRA - Global | EFFORT [30 h]; Mechnical Skilled Labours [45 h] | 1,068.75 | B5 | 22 | MEP | C | MEP |
| HCMEF2Z1390 |  | F2 Z1 :Mechanical Final Fix |  | 20d | 2013-11-11 | 2013-12-06 | HCMEF2Z1380 FS+90d, HCMEF1Z1385 | 28.88d | 0d | HCRA - Global | EFFORT [20 h]; Mechnical Skilled Labours [30 h] | 712.5 | B5 | 22 | MEP | C | MEP |
|  | 1 | **Zone 2** |  |  | 2013-03-25 | 2014-03-26 |  |  |  |  |  |  |  |  |  |  |  |
|  | 7 | **Drainage** |  |  | 2013-03-25 | 2013-12-06 |  |  |  |  |  |  |  |  |  |  |  |
| HCMEF2Z2065 |  | F2 Z2 :All Vertical Piping Works |  | 10d | 2013-03-25 | 2013-04-05 | HCMEF2Z1060 SS | 83.88d | 0d | HCRA - Global | EFFORT [10 h]; Mechnical Skilled Labours [15 h] | 356.25 | B5 | 22 | MEP | C | MEP |
| HCMEF2Z2075 |  | F2 Z2 :All Horizantal Piping Works |  | 30d | 2013-04-08 | 2013-05-17 | HCMEF2Z2065 | 83.88d | 35d | HCRA - Global | EFFORT [30 h]; Mechnical Skilled Labours [45 h] | 1,068.75 | B5 | 22 | MEP | C | MEP |
| HCMEF2Z2085 |  | F2 Z2 :Mechanical Final Fix |  | 20d | 2013-11-11 | 2013-12-06 | HCMEF2Z2075 FS+90d, HCMEF1Z2080 | 48.88d | 0d | HCRA - Global | EFFORT [20 h]; Mechnical Skilled Labours [30 h] | 712.5 | B5 | 22 | MEP | C | MEP |
|  | 020 | **Electrical Works** |  |  | 2013-05-20 | 2014-03-26 |  |  |  |  |  |  |  |  |  |  |  |
| HCMEF2Z2155 |  | F2 Z2 :Blocks Start Date for All Parts | milestone | 0d | 2013-05-20 | 2013-05-20 | HCFWF2Z2057, HCFWF2Z21057 | 121d | 0d | HCRA - 1 - Normal Calendar |  |  | B5 | 26 | MEP | C | MEP |
| HCMEF2Z2215 |  | F2 Z2 :Electrical Coduits & Boards F.F for All Systems |  | 12d | 2013-05-20 | 2013-06-05 | HCMEF2Z2155 | 101d | 4d | HCRA - Global | EFFORT [12 h]; Electrical Skilled Labours [24 h] | 450 | B5 | 26 | MEP | C | MEP |
| HCMEF2Z2175 |  | F2 Z2 :Plastering Finish Date for All Parts | milestone | 0d | 2013-07-04 | 2013-07-04 | HCFWF2Z2056 | 154d | 40d | HCRA - 1 - Normal Calendar |  |  | B5 | 26 | MEP | C | MEP |
| HCMEF2Z2165 |  | F2 Z2 :Tiling Finish Date for All Parts | milestone | 0d | 2013-08-19 | 2013-08-19 | HCFWF2Z2068 | 79d | 47.12d | HCRA - 1 - Normal Calendar |  |  | B5 | 26 | MEP | C | MEP |
| HCMEF2Z2225 |  | F2 Z2 :Electrical Boards Seconed Fix |  | 12d | 2013-08-20 | 2013-09-05 | HCMEF2Z2215 FS+50d, HCMEF2Z2175, HCMEF1Z2220 | 97d | 0d | HCRA - Global | EFFORT [12 h]; Electrical Skilled Labours [24 h] | 450 | B5 | 26 | MEP | C | MEP |
| HCMEF2Z2245 |  | F2 Z2 :Electrcial Wiring |  | 20d | 2013-10-14 | 2013-11-08 | HCMEF2Z2165, HCMEF1Z2240 | 26.88d | 0d | HCRA - Global | EFFORT [20 h]; Electrical Skilled Labours [40 h] | 750 | B5 | 26 | MEP | C | MEP |
| HCMEF2Z2235 |  | F2 Z2 :Cable Tray Installation |  | 10d | 2013-12-18 | 2014-01-01 | HCMEF2Z2175, HCMEF1Z2230 | 11d | 0d | HCRA - Global | EFFORT [10 h]; Electrical Skilled Labours [20 h] | 375 | B5 | 26 | MEP | C | MEP |
| HCMEF2Z2255 |  | F2 Z2 :Cable Laying |  | 10d | 2014-01-01 | 2014-01-15 | HCMEF2Z2235, HCMEF1Z2250 | 11d | 0d | HCRA - Global | EFFORT [10 h]; Electrical Skilled Labours [20 h] | 375 | B5 | 26 | MEP | C | MEP |
| HCMEF2Z2185 |  | F2 Z2 :Gypsum Boards Finish Date for All Parts | milestone | 0d | 2014-02-02 | 2014-02-02 | HCFWF2Z2070 | 94d | 33d | HCRA - 1 - Normal Calendar |  |  | B5 | 26 | MEP | C | MEP |
| HCMEF2Z2265 |  | F2 Z2 :Electrical Final Fix for All Systems & Boards (Vertical Elements) |  | 10d | 2014-02-26 | 2014-03-12 | HCMEF2Z2255 FS+30d, HCMEF2Z2245 FS+22d, HCMEF2Z2225 FS+30d, HCMEF2Z2175 FS+60d | 51d | 0d | HCRA - Global | EFFORT [10 h]; Electrical Skilled Labours [20 h] | 375 | B5 | 26 | MEP | C | MEP |
| HCMEF2Z2275 |  | F2 Z2 :Electrical Final Fix for All Systems (Horizantel Elements) |  | 10d | 2014-03-12 | 2014-03-26 | HCMEF2Z2265, HCMEF2Z2245, HCMEF2Z2185 | 51d | 4d | HCRA - Global | EFFORT [10 h]; Electrical Skilled Labours [20 h] | 375 | B5 | 26 | MEP | C | MEP |

| ID | WBS | Activity | Type | Duration | Start | Finish | Predecessors | Total float | Free float | Calendar | Resources | Cost | Bill No. | Division No. | Responsibility | Phase Code | Trade |
| --- | --- | --- | --- | --- | --- | --- | --- | --- | --- | --- | --- | --- | --- | --- | --- | --- | --- |
|  | 2 | **Fire Fighting** |  |  | 2013-05-20 | 2014-02-10 |  |  |  |  |  |  |  |  |  |  |  |
| HCMEF2Z2095 |  | F2 Z2 :Horizontal F.F Piping Work |  | 20d | 2013-05-20 | 2013-06-17 | HCMEF2Z2155 | 123d | 0d | HCRA - Global | EFFORT [20 h]; Mechnical Skilled Labours [30 h] | 712.5 | B5 | 21 | MEP | C | MEP |
| HCMEF2Z2105 |  | F2 Z2 :Fire Hose Cabinets |  | 10d | 2013-06-17 | 2013-07-01 | HCMEF2Z2095 | 123d | 80d | HCRA - Global | EFFORT [10 h]; Mechnical Skilled Labours [15 h] | 356.25 | B5 | 21 | MEP | C | MEP |
| HCMEF2Z2115 |  | F2 Z2 :Sprinklers Final Fix |  | 10d | 2014-01-27 | 2014-02-10 | HCMEF2Z2105 FS+70d, HCMEF1Z2110 | 43d | 0d | HCRA - Global | EFFORT [10 h]; Mechnical Skilled Labours [15 h] | 356.25 | B5 | 21 | MEP | C | MEP |
|  | 1 | **Air Conditioning** |  |  | 2013-09-17 | 2014-03-20 |  |  |  |  |  |  |  |  |  |  |  |
| HCMEF2Z2325 |  | F2 Z2 :Duct Installation& Dusct Accecories Installation, Fan coil Unit |  | 8d | 2013-09-17 | 2013-09-27 | HCMEF2Z2155, HCMEF1Z2320 | 27.12d | 0d | HCRA - Global | EFFORT [20 h]; Mechnical Skilled Labours [30 h] | 712.5 | B5 | 23 | MEP | C | MEP |
| HCMEF2Z2335 |  | F2 Z2 :Duct Insulation Work |  | 15d | 2013-09-27 | 2013-10-18 | HCMEF2Z2325 | 27.12d | 0d | HCRA - Global | EFFORT [15 h]; Mechnical Skilled Labours [22.5 h] | 534.38 | B5 | 23 | MEP | C | MEP |
| HCMEF2Z2345 |  | F2 Z2 :Exhaust Fans |  | 15d | 2013-10-18 | 2013-11-08 | HCMEF2Z2335 | 27.12d | 24d | HCRA - Global | EFFORT [15 h]; Mechnical Skilled Labours [22.5 h] | 534.38 | B5 | 23 | MEP | C | MEP |
| HCMEF2Z2355 |  | F2 Z2 :Grills & Diffusers |  | 10d | 2014-02-20 | 2014-03-06 | HCMEF2Z2345 FS+50d, HCMEF1Z2350 | 3.12d | 0d | HCRA - Global | EFFORT [10 h]; Mechnical Skilled Labours [15 h] | 356.25 | B5 | 23 | MEP | C | MEP |
| HCMEF2Z2365 |  | F2 Z2 :Mechanical final Fix |  | 10d | 2014-03-06 | 2014-03-20 | HCMEF2Z2355, HCMEF1Z2360 | 3.12d | 0d | HCRA - Global | EFFORT [10 h]; Mechnical Skilled Labours [15 h] | 356.25 | B5 | 23 | MEP | C | MEP |
|  | 3 | **Water Network** |  |  | 2013-03-25 | 2013-12-06 |  |  |  |  |  |  |  |  |  |  |  |
| HCMEF2Z2375 |  | F2 Z2 :All Vertical Piping Works |  | 10d | 2013-03-25 | 2013-04-05 | HCMEF2Z2065 SS | 83.88d | 0d | HCRA - Global | EFFORT [10 h]; Mechnical Skilled Labours [15 h] | 356.25 | B5 | 22 | MEP | C | MEP |
| HCMEF2Z2385 |  | F2 Z2 :All Horizantal Piping Works |  | 30d | 2013-04-08 | 2013-05-17 | HCMEF2Z2375 | 83.88d | 35d | HCRA - Global | EFFORT [30 h]; Mechnical Skilled Labours [45 h] | 1,068.75 | B5 | 22 | MEP | C | MEP |
| HCMEF2Z2395 |  | F2 Z2 :Mechanical Final Fix |  | 20d | 2013-11-11 | 2013-12-06 | HCMEF2Z2385 FS+90d, HCMEF1Z2390 | 48.88d | 0d | HCRA - Global | EFFORT [20 h]; Mechnical Skilled Labours [30 h] | 712.5 | B5 | 22 | MEP | C | MEP |
|  | 2 | **Zone 3** |  |  | 2013-03-25 | 2014-03-26 |  |  |  |  |  |  |  |  |  |  |  |
|  | 4 | **Conveying System** |  |  |  |  |  |  |  |  |  |  |  |  |  |  |  |
|  | 7 | **Drainage** |  |  | 2013-03-25 | 2013-12-06 |  |  |  |  |  |  |  |  |  |  |  |
| HCMEF2Z3070 |  | F2 Z3 :All Vertical Piping Works |  | 10d | 2013-03-25 | 2013-04-05 | HCMEF2Z2065 SS | 83.88d | 0d | HCRA - Global | EFFORT [10 h]; Mechnical Skilled Labours [15 h] | 356.25 | B5 | 22 | MEP | C | MEP |
| HCMEF2Z3080 |  | F2 Z3 :All Horizantal Piping Works |  | 30d | 2013-04-08 | 2013-05-17 | HCMEF2Z3070 | 83.88d | 35d | HCRA - Global | EFFORT [30 h]; Mechnical Skilled Labours [45 h] | 1,068.75 | B5 | 22 | MEP | C | MEP |
| HCMEF2Z3090 |  | F2 Z3 :Mechanical Final Fix |  | 20d | 2013-11-11 | 2013-12-06 | HCMEF2Z3080 FS+90d, HCMEF1Z3085 | 48.88d | 0d | HCRA - Global | EFFORT [20 h]; Mechnical Skilled Labours [30 h] | 712.5 | B5 | 22 | MEP | C | MEP |
|  | 020 | **Electrical Works** |  |  | 2013-07-21 | 2014-03-26 |  |  |  |  |  |  |  |  |  |  |  |
| HCMEF2Z3160 |  | F2 Z3 :Blocks Start Date for All Parts | milestone | 0d | 2013-07-21 | 2013-07-21 | HCFWF2Z3086, HCFWGFZ3086 | 82d | 0.12d | HCRA - 1 - Normal Calendar |  |  | B5 | 26 | MEP | C | MEP |
| HCMEF2Z3220 |  | F2 Z3 :Electrical Coduits & Boards F.F for All Systems |  | 12d | 2013-07-22 | 2013-08-06 | HCMEF2Z3160 | 68.88d | 7.88d | HCRA - Global | EFFORT [12 h]; Electrical Skilled Labours [24 h] | 450 | B5 | 26 | MEP | C | MEP |
| HCMEF2Z3180 |  | F2 Z3 :Plastering Finish Date for All Parts | milestone | 0d | 2013-09-04 | 2013-09-04 | HCFWF2Z3077 | 113d | 43.12d | HCRA - 1 - Normal Calendar |  |  | B5 | 26 | MEP | C | MEP |
| HCMEF2Z3230 |  | F2 Z3 :Electrical Boards Seconed Fix |  | 12d | 2013-10-25 | 2013-11-12 | HCMEF2Z3220 FS+50d, HCMEF2Z3180, HCMEF1Z3225 | 61d | 0d | HCRA - Global | EFFORT [12 h]; Electrical Skilled Labours [24 h] | 450 | B5 | 26 | MEP | C | MEP |
| HCMEF2Z3170 |  | F2 Z3 :Tiling Finish Date for All Parts | milestone | 0d | 2013-12-08 | 2013-12-08 | HCFWF2Z3111 | 74d | 30d | HCRA - 1 - Normal Calendar |  |  | B5 | 26 | MEP | C | MEP |
| HCMEF2Z3240 |  | F2 Z3 :Cable Tray Installation |  | 10d | 2013-12-18 | 2014-01-01 | HCMEF2Z3180, HCMEF1Z3235 | 21d | 0d | HCRA - Global | EFFORT [10 h]; Electrical Skilled Labours [20 h] | 375 | B5 | 26 | MEP | C | MEP |
| HCMEF2Z3260 |  | F2 Z3 :Cable Laying |  | 10d | 2014-01-01 | 2014-01-15 | HCMEF2Z3240, HCMEF1Z3255 | 21d | 0d | HCRA - Global | EFFORT [10 h]; Electrical Skilled Labours [20 h] | 375 | B5 | 26 | MEP | C | MEP |
| HCMEF2Z3250 |  | F2 Z3 :Electrcial Wiring |  | 6d | 2014-01-13 | 2014-01-21 | HCMEF2Z3170, HCMEF1Z3245 | 37d | 0d | HCRA - Global | EFFORT [20 h]; Electrical Skilled Labours [40 h] | 750 | B5 | 26 | MEP | C | MEP |
| HCMEF2Z3270 |  | F2 Z3 :Electrical Final Fix for All Systems & Boards (Vertical Elements) |  | 10d | 2014-02-26 | 2014-03-12 | HCMEF2Z3260 FS+30d, HCMEF2Z3250 FS+22d, HCMEF2Z3230 FS+30d, HCMEF2Z3180 FS+60d | 51d | 0d | HCRA - Global | EFFORT [10 h]; Electrical Skilled Labours [20 h] | 375 | B5 | 26 | MEP | C | MEP |
| HCMEF2Z3190 |  | F2 Z3 :Gypsum Boards Finish Date for All Parts | milestone | 0d | 2014-03-09 | 2014-03-09 | HCFWF2Z3085, HCFWF2Z3116 | 64d | 3d | HCRA - 1 - Normal Calendar |  |  | B5 | 26 | MEP | C | MEP |
| HCMEF2Z3280 |  | F2 Z3 :Electrical Final Fix for All Systems (Horizantel Elements) |  | 10d | 2014-03-12 | 2014-03-26 | HCMEF2Z3270, HCMEF2Z3250, HCMEF2Z3190 | 51d | 4d | HCRA - Global | EFFORT [10 h]; Electrical Skilled Labours [20 h] | 375 | B5 | 26 | MEP | C | MEP |

| ID | WBS | Activity | Type | Duration | Start | Finish | Predecessors | Total float | Free float | Calendar | Resources | Cost | Bill No. | Division No. | Responsibility | Phase Code | Trade |
| --- | --- | --- | --- | --- | --- | --- | --- | --- | --- | --- | --- | --- | --- | --- | --- | --- | --- |
|  | 2 | **Fire Fighting** |  |  | 2013-07-22 | 2014-02-10 |  |  |  |  |  |  |  |  |  |  |  |
| HCMEF2Z3100 |  | F2 Z3 :Horizontal F.F Piping Work |  | 20d | 2013-07-22 | 2013-08-16 | HCMEF2Z3160 | 78.88d | 0d | HCRA - Global | EFFORT [20 h]; Mechnical Skilled Labours [30 h] | 712.5 | B5 | 21 | MEP | C | MEP |
| HCMEF2Z3110 |  | F2 Z3 :Fire Hose Cabinets |  | 10d | 2013-08-19 | 2013-08-30 | HCMEF2Z3100 | 78.88d | 35.88d | HCRA - Global | EFFORT [10 h]; Mechnical Skilled Labours [15 h] | 356.25 | B5 | 21 | MEP | C | MEP |
| HCMEF2Z3120 |  | F2 Z3 :Sprinklers Final Fix |  | 10d | 2014-01-27 | 2014-02-10 | HCMEF2Z3110 FS+70d, HCMEF1Z3115 | 43d | 0d | HCRA - Global | EFFORT [10 h]; Mechnical Skilled Labours [15 h] | 356.25 | B5 | 21 | MEP | C | MEP |
|  | 1 | **Air Conditioning** |  |  | 2013-09-27 | 2014-03-20 |  |  |  |  |  |  |  |  |  |  |  |
| HCMEF2Z3330 |  | F2 Z3 :Duct Installation& Dusct Accecories Installation, Fan coil Unit |  | 8d | 2013-09-27 | 2013-10-09 | HCMEF2Z3160, HCMEF1Z3325 | 31d | 0d | HCRA - Global | EFFORT [20 h]; Mechnical Skilled Labours [30 h] | 712.5 | B5 | 23 | MEP | C | MEP |
| HCMEF2Z3340 |  | F2 Z3 :Duct Insulation Work |  | 15d | 2013-10-09 | 2013-10-30 | HCMEF2Z3330 | 31d | 0d | HCRA - Global | EFFORT [15 h]; Mechnical Skilled Labours [22.5 h] | 534.38 | B5 | 23 | MEP | C | MEP |
| HCMEF2Z3350 |  | F2 Z3 :Exhaust Fans |  | 15d | 2013-10-30 | 2013-11-20 | HCMEF2Z3340 | 31d | 16d | HCRA - Global | EFFORT [15 h]; Mechnical Skilled Labours [22.5 h] | 534.38 | B5 | 23 | MEP | C | MEP |
| HCMEF2Z3360 |  | F2 Z3 :Grills & Diffusers |  | 10d | 2014-02-20 | 2014-03-06 | HCMEF2Z3350 FS+50d, HCMEF1Z3355 | 15d | 0d | HCRA - Global | EFFORT [10 h]; Mechnical Skilled Labours [15 h] | 356.25 | B5 | 23 | MEP | C | MEP |
| HCMEF2Z3370 |  | F2 Z3 :Mechanical final Fix |  | 10d | 2014-03-06 | 2014-03-20 | HCMEF2Z3360, HCMEF1Z3365 | 15d | 0d | HCRA - Global | EFFORT [10 h]; Mechnical Skilled Labours [15 h] | 356.25 | B5 | 23 | MEP | C | MEP |
|  | 3 | **Water Network** |  |  | 2013-03-25 | 2013-12-06 |  |  |  |  |  |  |  |  |  |  |  |
| HCMEF2Z3380 |  | F2 Z3 :All Vertical Piping Works |  | 10d | 2013-03-25 | 2013-04-05 | HCMEF2Z3070 SS | 83.88d | 0d | HCRA - Global | EFFORT [10 h]; Mechnical Skilled Labours [15 h] | 356.25 | B5 | 22 | MEP | C | MEP |
| HCMEF2Z3390 |  | F2 Z3 :All Horizantal Piping Works |  | 30d | 2013-04-08 | 2013-05-17 | HCMEF2Z3380 | 83.88d | 35d | HCRA - Global | EFFORT [30 h]; Mechnical Skilled Labours [45 h] | 1,068.75 | B5 | 22 | MEP | C | MEP |
| HCMEF2Z3400 |  | F2 Z3 :Mechanical Final Fix |  | 20d | 2013-11-11 | 2013-12-06 | HCMEF2Z3390 FS+90d, HCMEF1Z3395 | 48.88d | 0d | HCRA - Global | EFFORT [20 h]; Mechnical Skilled Labours [30 h] | 712.5 | B5 | 22 | MEP | C | MEP |
|  | 2 | **Third Floor** |  |  | 2013-04-04 | 2014-04-15 |  |  |  |  |  |  |  |  |  |  |  |
| HCMEF3000 |  | Start Third Floor EM Works | milestone | 0d | 2013-04-06 | 2013-04-06 | HCFWF3Z1093, HCFWF3Z11093 | 88d | 2d |  |  |  | B5 |  | MEP | C | MEP |
| HCMEF30000 |  | End Third Floor EM Works | milestone | 0d | 2014-04-10 | 2014-04-10 | HCMEF3Z1085, HCMEF3Z1115, HCMEF3Z1365, HCMEF3Z1395 | 45d |  |  |  |  | B5 |  | MEP | C | MEP |
|  | 4 | **Zone 1** |  |  | 2013-04-04 | 2014-04-15 |  |  |  |  |  |  |  |  |  |  |  |
|  | 7 | **Drainage** |  |  | 2013-04-08 | 2014-01-03 |  |  |  |  |  |  |  |  |  |  |  |
| HCMEF3Z1065 |  | F3 Z1 :All Vertical Piping Works |  | 10d | 2013-04-08 | 2013-04-19 | HCMEF3000 | 73.88d | 0d | HCRA - Global | EFFORT [10 h]; Mechnical Skilled Labours [15 h] | 356.25 | B5 | 22 | MEP | C | MEP |
| HCMEF3Z1075 |  | F3 Z1 :All Horizantal Piping Works |  | 30d | 2013-04-22 | 2013-05-31 | HCMEF3Z1065 | 73.88d | 45d | HCRA - Global | EFFORT [30 h]; Mechnical Skilled Labours [45 h] | 1,068.75 | B5 | 22 | MEP | C | MEP |
| HCMEF3Z1085 |  | F3 Z1 :Mechanical Final Fix |  | 20d | 2013-12-09 | 2014-01-03 | HCMEF3Z1075 FS+90d, HCMEF2Z1080 | 28.88d | 0d | HCRA - Global | EFFORT [20 h]; Mechnical Skilled Labours [30 h] | 712.5 | B5 | 22 | MEP | C | MEP |
|  | 020 | **Electrical Works** |  |  | 2013-04-04 | 2014-04-15 |  |  |  |  |  |  |  |  |  |  |  |
| HCMEF3Z1155 |  | F3 Z1 :Blocks Start Date for All Parts | milestone | 0d | 2013-04-04 | 2013-04-04 | HCFWF3Z1093, HCFWF3Z11093 | 162.12d | 0d | HCRA - 1 - Normal Calendar |  |  | B5 | 26 | MEP | C | MEP |
| HCMEF3Z1215 |  | F3 Z1 :Electrical Coduits & Boards F.F for All Systems |  | 12d | 2013-04-04 | 2013-04-22 | HCMEF3Z1155 | 136d | 17d | HCRA - Global | EFFORT [12 h]; Electrical Skilled Labours [24 h] | 450 | B5 | 26 | MEP | C | MEP |
| HCMEF3Z1175 |  | F3 Z1 :Plastering Finish Date for All Parts | milestone | 0d | 2013-05-23 | 2013-05-23 | HCFWF3Z1097 | 189.12d | 53d | HCRA - 1 - Normal Calendar |  |  | B5 | 26 | MEP | C | MEP |
| HCMEF3Z1225 |  | F3 Z1 :Electrical Boards Seconed Fix |  | 12d | 2013-07-24 | 2013-08-09 | HCMEF3Z1215 FS+50d, HCMEF3Z1175, HCMEF2Z1220 | 119d | 0d | HCRA - Global | EFFORT [12 h]; Electrical Skilled Labours [24 h] | 450 | B5 | 26 | MEP | C | MEP |
| HCMEF3Z1165 |  | F3 Z1 :Tiling Finish Date for All Parts | milestone | 0d | 2013-09-11 | 2013-09-11 | HCFWF3Z1111 | 82.38d | 80.5d | HCRA - 1 - Normal Calendar |  |  | B5 | 26 | MEP | C | MEP |
| HCMEF3Z1245 |  | F3 Z1 :Electrcial Wiring |  | 20d | 2013-12-16 | 2014-01-10 | HCMEF3Z1165, HCMEF2Z1240 | 1.88d | 0d | HCRA - Global | EFFORT [20 h]; Electrical Skilled Labours [40 h] | 750 | B5 | 26 | MEP | C | MEP |
| HCMEF3Z1235 |  | F3 Z1 :Cable Tray Installation |  | 10d | 2014-01-01 | 2014-01-15 | HCMEF3Z1175, HCMEF2Z1230 | 0d |  | HCRA - Global | EFFORT [10 h]; Electrical Skilled Labours [20 h] | 375 | B5 | 26 | MEP | C | MEP |
| HCMEF3Z1255 |  | F3 Z1 :Cable Laying |  | 10d | 2014-01-21 | 2014-02-04 | HCMEF3Z1235, HCMEF2Z1250 | 0d |  | HCRA - Global | EFFORT [10 h]; Electrical Skilled Labours [20 h] | 375 | B5 | 26 | MEP | C | MEP |
| HCMEF3Z1185 |  | F3 Z1 :Gypsum Boards Finish Date for All Parts | milestone | 0d | 2014-02-19 | 2014-02-19 | HCFWF3Z1112, HCFWF3Z1117 | 79d | 35d | HCRA - 1 - Normal Calendar |  |  | B5 | 26 | MEP | C | MEP |
| HCMEF3Z1265 |  | F3 Z1 :Electrical Final Fix for All Systems & Boards (Vertical Elements) |  | 10d | 2014-03-18 | 2014-04-01 | HCMEF3Z1255 FS+30d, HCMEF3Z1245 FS+22d, HCMEF3Z1225 FS+30d, HCMEF3Z1175 FS+60d | 37d | 0d | HCRA - Global | EFFORT [10 h]; Electrical Skilled Labours [20 h] | 375 | B5 | 26 | MEP | C | MEP |
| HCMEF3Z1275 |  | F3 Z1 :Electrical Final Fix for All Systems (Horizantel Elements) |  | 10d | 2014-04-01 | 2014-04-15 | HCMEF3Z1265, HCMEF3Z1245, HCMEF3Z1185 | 37d | 0d | HCRA - Global | EFFORT [10 h]; Electrical Skilled Labours [20 h] | 375 | B5 | 26 | MEP | C | MEP |

| ID | WBS | Activity | Type | Duration | Start | Finish | Predecessors | Total float | Free float | Calendar | Resources | Cost | Bill No. | Division No. | Responsibility | Phase Code | Trade |
| --- | --- | --- | --- | --- | --- | --- | --- | --- | --- | --- | --- | --- | --- | --- | --- | --- | --- |
|  | 2 | **Fire Fighting** |  |  | 2013-04-04 | 2014-02-24 |  |  |  |  |  |  |  |  |  |  |  |
| HCMEF3Z1095 |  | F3 Z1 :Horizontal F.F Piping Work |  | 20d | 2013-04-04 | 2013-05-02 | HCMEF3Z1155 | 155d | 0d | HCRA - Global | EFFORT [20 h]; Mechnical Skilled Labours [30 h] | 712.5 | B5 | 21 | MEP | C | MEP |
| HCMEF3Z1105 |  | F3 Z1 :Fire Hose Cabinets |  | 10d | 2013-05-02 | 2013-05-16 | HCMEF3Z1095 | 155d | 122d | HCRA - Global | EFFORT [10 h]; Mechnical Skilled Labours [15 h] | 356.25 | B5 | 21 | MEP | C | MEP |
| HCMEF3Z1115 |  | F3 Z1 :Sprinklers Final Fix |  | 10d | 2014-02-10 | 2014-02-24 | HCMEF3Z1105 FS+70d, HCMEF2Z1110 | 33d | 0d | HCRA - Global | EFFORT [10 h]; Mechnical Skilled Labours [15 h] | 356.25 | B5 | 21 | MEP | C | MEP |
|  | 1 | **Air Conditioning** |  |  | 2013-10-07 | 2014-04-10 |  |  |  |  |  |  |  |  |  |  |  |
| HCMEF3Z1325 |  | F3 Z1 :Duct Installation& Dusct Accecories Installation, Fan coil Unit |  | 10d | 2013-10-07 | 2013-10-21 | HCMEF3Z1155, HCMEF2Z1320 | 23d | 0d | HCRA - Global | EFFORT [20 h]; Mechnical Skilled Labours [30 h] | 712.5 | B5 | 23 | MEP | C | MEP |
| HCMEF3Z1335 |  | F3 Z1 :Duct Insulation Work |  | 15d | 2013-10-21 | 2013-11-11 | HCMEF3Z1325 | 23d | 0d | HCRA - Global | EFFORT [15 h]; Mechnical Skilled Labours [22.5 h] | 534.38 | B5 | 23 | MEP | C | MEP |
| HCMEF3Z1345 |  | F3 Z1 :Exhaust Fans |  | 15d | 2013-11-11 | 2013-12-02 | HCMEF3Z1335 | 23d | 21d | HCRA - Global | EFFORT [15 h]; Mechnical Skilled Labours [22.5 h] | 534.38 | B5 | 23 | MEP | C | MEP |
| HCMEF3Z1355 |  | F3 Z1 :Grills & Diffusers |  | 10d | 2014-03-11 | 2014-03-25 | HCMEF3Z1345 FS+50d, HCMEF2Z1350 | 2d | 0d | HCRA - Global | EFFORT [10 h]; Mechnical Skilled Labours [15 h] | 356.25 | B5 | 23 | MEP | C | MEP |
| HCMEF3Z1365 |  | F3 Z1 :Mechanical final Fix |  | 10d | 2014-03-27 | 2014-04-10 | HCMEF3Z1355, HCMEF2Z1360 | 0d |  | HCRA - Global | EFFORT [10 h]; Mechnical Skilled Labours [15 h] | 356.25 | B5 | 23 | MEP | C | MEP |
|  | 3 | **Water Network** |  |  | 2013-04-08 | 2014-01-03 |  |  |  |  |  |  |  |  |  |  |  |
| HCMEF3Z1375 |  | F3 Z1 :All Vertical Piping Works |  | 10d | 2013-04-08 | 2013-04-19 | HCMEF3Z1065 SS | 73.88d | 0d | HCRA - Global | EFFORT [10 h]; Mechnical Skilled Labours [15 h] | 356.25 | B5 | 22 | MEP | C | MEP |
| HCMEF3Z1385 |  | F3 Z1 :All Horizantal Piping Works |  | 30d | 2013-04-22 | 2013-05-31 | HCMEF3Z1375 | 73.88d | 45d | HCRA - Global | EFFORT [30 h]; Mechnical Skilled Labours [45 h] | 1,068.75 | B5 | 22 | MEP | C | MEP |
| HCMEF3Z1395 |  | F3 Z1 :Mechanical Final Fix |  | 20d | 2013-12-09 | 2014-01-03 | HCMEF3Z1385 FS+90d, HCMEF2Z1390 | 28.88d | 0d | HCRA - Global | EFFORT [20 h]; Mechnical Skilled Labours [30 h] | 712.5 | B5 | 22 | MEP | C | MEP |
|  | 1 | **Zone 2** |  |  | 2013-04-08 | 2014-04-09 |  |  |  |  |  |  |  |  |  |  |  |
|  | 7 | **Drainage** |  |  | 2013-04-08 | 2014-01-03 |  |  |  |  |  |  |  |  |  |  |  |
| HCMEF3Z2070 |  | F3 Z2 :All Vertical Piping Works |  | 10d | 2013-04-08 | 2013-04-19 | HCMEF3Z1065 SS | 93.88d | 0d | HCRA - Global | EFFORT [10 h]; Mechnical Skilled Labours [15 h] | 356.25 | B5 | 22 | MEP | C | MEP |
| HCMEF3Z2080 |  | F3 Z2 :All Horizantal Piping Works |  | 30d | 2013-04-22 | 2013-05-31 | HCMEF3Z2070 | 93.88d | 45d | HCRA - Global | EFFORT [30 h]; Mechnical Skilled Labours [45 h] | 1,068.75 | B5 | 22 | MEP | C | MEP |
| HCMEF3Z2090 |  | F3 Z2 :Mechanical Final Fix |  | 20d | 2013-12-09 | 2014-01-03 | HCMEF3Z2080 FS+90d, HCMEF2Z2085 | 48.88d | 0d | HCRA - Global | EFFORT [20 h]; Mechnical Skilled Labours [30 h] | 712.5 | B5 | 22 | MEP | C | MEP |
|  | 020 | **Electrical Works** |  |  | 2013-06-02 | 2014-04-09 |  |  |  |  |  |  |  |  |  |  |  |
| HCMEF3Z2160 |  | F3 Z2 :Blocks Start Date for All Parts | milestone | 0d | 2013-06-02 | 2013-06-02 | HCFWF3Z2082, HCFWF3Z21082 | 124d | 0.12d | HCRA - 1 - Normal Calendar |  |  | B5 | 26 | MEP | C | MEP |
| HCMEF3Z2220 |  | F3 Z2 :Electrical Coduits & Boards F.F for All Systems |  | 12d | 2013-06-03 | 2013-06-18 | HCMEF3Z2160 | 103.88d | 6.88d | HCRA - Global | EFFORT [12 h]; Electrical Skilled Labours [24 h] | 450 | B5 | 26 | MEP | C | MEP |
| HCMEF3Z2180 |  | F3 Z2 :Plastering Finish Date for All Parts | milestone | 0d | 2013-08-01 | 2013-08-01 | HCFWF3Z2081 | 142d | 30d | HCRA - 1 - Normal Calendar |  |  | B5 | 26 | MEP | C | MEP |
| HCMEF3Z2230 |  | F3 Z2 :Electrical Boards Seconed Fix |  | 12d | 2013-09-05 | 2013-09-23 | HCMEF3Z2220 FS+50d, HCMEF3Z2180, HCMEF2Z2225 | 97d | 0d | HCRA - Global | EFFORT [12 h]; Electrical Skilled Labours [24 h] | 450 | B5 | 26 | MEP | C | MEP |
| HCMEF3Z2170 |  | F3 Z2 :Tiling Finish Date for All Parts | milestone | 0d | 2013-09-16 | 2013-09-16 | HCFWF3Z2093 | 78d | 47.12d | HCRA - 1 - Normal Calendar |  |  | B5 | 26 | MEP | C | MEP |
| HCMEF3Z2250 |  | F3 Z2 :Electrcial Wiring |  | 20d | 2013-11-11 | 2013-12-06 | HCMEF3Z2170, HCMEF2Z2245 | 26.88d | 0d | HCRA - Global | EFFORT [20 h]; Electrical Skilled Labours [40 h] | 750 | B5 | 26 | MEP | C | MEP |
| HCMEF3Z2240 |  | F3 Z2 :Cable Tray Installation |  | 10d | 2014-01-01 | 2014-01-15 | HCMEF3Z2180, HCMEF2Z2235 | 11d | 0d | HCRA - Global | EFFORT [10 h]; Electrical Skilled Labours [20 h] | 375 | B5 | 26 | MEP | C | MEP |
| HCMEF3Z2260 |  | F3 Z2 :Cable Laying |  | 10d | 2014-01-15 | 2014-01-29 | HCMEF3Z2240, HCMEF2Z2255 | 11d | 0d | HCRA - Global | EFFORT [10 h]; Electrical Skilled Labours [20 h] | 375 | B5 | 26 | MEP | C | MEP |
| HCMEF3Z2190 |  | F3 Z2 :Gypsum Boards Finish Date for All Parts | milestone | 0d | 2014-02-18 | 2014-02-18 | HCFWF3Z2095 | 80d | 31d | HCRA - 1 - Normal Calendar |  |  | B5 | 26 | MEP | C | MEP |
| HCMEF3Z2270 |  | F3 Z2 :Electrical Final Fix for All Systems & Boards (Vertical Elements) |  | 10d | 2014-03-12 | 2014-03-26 | HCMEF3Z2260 FS+30d, HCMEF3Z2250 FS+22d, HCMEF3Z2230 FS+30d, HCMEF3Z2180 FS+60d | 41d | 0d | HCRA - Global | EFFORT [10 h]; Electrical Skilled Labours [20 h] | 375 | B5 | 26 | MEP | C | MEP |
| HCMEF3Z2280 |  | F3 Z2 :Electrical Final Fix for All Systems (Horizantel Elements) |  | 10d | 2014-03-26 | 2014-04-09 | HCMEF3Z2270, HCMEF3Z2250, HCMEF3Z2190 | 41d | 4d | HCRA - Global | EFFORT [10 h]; Electrical Skilled Labours [20 h] | 375 | B5 | 26 | MEP | C | MEP |

| ID | WBS | Activity | Type | Duration | Start | Finish | Predecessors | Total float | Free float | Calendar | Resources | Cost | Bill No. | Division No. | Responsibility | Phase Code | Trade |
| --- | --- | --- | --- | --- | --- | --- | --- | --- | --- | --- | --- | --- | --- | --- | --- | --- | --- |
|  | 2 | **Fire Fighting** |  |  | 2013-06-03 | 2014-02-24 |  |  |  |  |  |  |  |  |  |  |  |
| HCMEF3Z2100 |  | F3 Z2 :Horizontal F.F Piping Work |  | 20d | 2013-06-03 | 2013-06-28 | HCMEF3Z2160 | 123.88d | 0d | HCRA - Global | EFFORT [20 h]; Mechnical Skilled Labours [30 h] | 712.5 | B5 | 21 | MEP | C | MEP |
| HCMEF3Z2110 |  | F3 Z2 :Fire Hose Cabinets |  | 10d | 2013-07-01 | 2013-07-12 | HCMEF3Z2100 | 123.88d | 80.88d | HCRA - Global | EFFORT [10 h]; Mechnical Skilled Labours [15 h] | 356.25 | B5 | 21 | MEP | C | MEP |
| HCMEF3Z2120 |  | F3 Z2 :Sprinklers Final Fix |  | 10d | 2014-02-10 | 2014-02-24 | HCMEF3Z2110 FS+70d, HCMEF2Z2115 | 43d | 0d | HCRA - Global | EFFORT [10 h]; Mechnical Skilled Labours [15 h] | 356.25 | B5 | 21 | MEP | C | MEP |
|  | 1 | **Air Conditioning** |  |  | 2013-09-27 | 2014-04-03 |  |  |  |  |  |  |  |  |  |  |  |
| HCMEF3Z2330 |  | F3 Z2 :Duct Installation& Dusct Accecories Installation, Fan coil Unit |  | 8d | 2013-09-27 | 2013-10-09 | HCMEF3Z2160, HCMEF2Z2325 | 29.12d | 0d | HCRA - Global | EFFORT [20 h]; Mechnical Skilled Labours [30 h] | 712.5 | B5 | 23 | MEP | C | MEP |
| HCMEF3Z2340 |  | F3 Z2 :Duct Insulation Work |  | 15d | 2013-10-09 | 2013-10-30 | HCMEF3Z2330 | 29.12d | 0d | HCRA - Global | EFFORT [15 h]; Mechnical Skilled Labours [22.5 h] | 534.38 | B5 | 23 | MEP | C | MEP |
| HCMEF3Z2350 |  | F3 Z2 :Exhaust Fans |  | 15d | 2013-10-30 | 2013-11-20 | HCMEF3Z2340 | 29.12d | 26d | HCRA - Global | EFFORT [15 h]; Mechnical Skilled Labours [22.5 h] | 534.38 | B5 | 23 | MEP | C | MEP |
| HCMEF3Z2360 |  | F3 Z2 :Grills & Diffusers |  | 10d | 2014-03-06 | 2014-03-20 | HCMEF3Z2350 FS+50d, HCMEF2Z2355 | 3.12d | 0d | HCRA - Global | EFFORT [10 h]; Mechnical Skilled Labours [15 h] | 356.25 | B5 | 23 | MEP | C | MEP |
| HCMEF3Z2370 |  | F3 Z2 :Mechanical final Fix |  | 10d | 2014-03-20 | 2014-04-03 | HCMEF3Z2360, HCMEF2Z2365 | 3.12d | 0d | HCRA - Global | EFFORT [10 h]; Mechnical Skilled Labours [15 h] | 356.25 | B5 | 23 | MEP | C | MEP |
|  | 3 | **Water Network** |  |  | 2013-04-08 | 2014-01-03 |  |  |  |  |  |  |  |  |  |  |  |
| HCMEF3Z2380 |  | F3 Z2 :All Vertical Piping Works |  | 10d | 2013-04-08 | 2013-04-19 | HCMEF3Z2070 SS | 93.88d | 0d | HCRA - Global | EFFORT [10 h]; Mechnical Skilled Labours [15 h] | 356.25 | B5 | 22 | MEP | C | MEP |
| HCMEF3Z2390 |  | F3 Z2 :All Horizantal Piping Works |  | 30d | 2013-04-22 | 2013-05-31 | HCMEF3Z2380 | 93.88d | 45d | HCRA - Global | EFFORT [30 h]; Mechnical Skilled Labours [45 h] | 1,068.75 | B5 | 22 | MEP | C | MEP |
| HCMEF3Z2400 |  | F3 Z2 :Mechanical Final Fix |  | 20d | 2013-12-09 | 2014-01-03 | HCMEF3Z2390 FS+90d, HCMEF2Z2395 | 48.88d | 0d | HCRA - Global | EFFORT [20 h]; Mechnical Skilled Labours [30 h] | 712.5 | B5 | 22 | MEP | C | MEP |
|  | 2 | **Zone 3** |  |  | 2013-04-08 | 2014-04-11 |  |  |  |  |  |  |  |  |  |  |  |
|  | 4 | **Conveying System** |  |  |  |  |  |  |  |  |  |  |  |  |  |  |  |
|  | 7 | **Drainage** |  |  | 2013-04-08 | 2014-01-03 |  |  |  |  |  |  |  |  |  |  |  |
| HCMEF3Z3075 |  | F3 Z3 :All Vertical Piping Works |  | 10d | 2013-04-08 | 2013-04-19 | HCMEF3Z2070 SS | 93.88d | 0d | HCRA - Global | EFFORT [10 h]; Mechnical Skilled Labours [15 h] | 356.25 | B5 | 22 | MEP | C | MEP |
| HCMEF3Z3085 |  | F3 Z3 :All Horizantal Piping Works |  | 30d | 2013-04-22 | 2013-05-31 | HCMEF3Z3075 | 93.88d | 45d | HCRA - Global | EFFORT [30 h]; Mechnical Skilled Labours [45 h] | 1,068.75 | B5 | 22 | MEP | C | MEP |
| HCMEF3Z3095 |  | F3 Z3 :Mechanical Final Fix |  | 20d | 2013-12-09 | 2014-01-03 | HCMEF3Z3085 FS+90d, HCMEF2Z3090 | 48.88d | 0d | HCRA - Global | EFFORT [20 h]; Mechnical Skilled Labours [30 h] | 712.5 | B5 | 22 | MEP | C | MEP |
|  | 020 | **Electrical Works** |  |  | 2013-08-01 | 2014-04-11 |  |  |  |  |  |  |  |  |  |  |  |
| HCMEF3Z3165 |  | F3 Z3 :Blocks Start Date for All Parts | milestone | 0d | 2013-08-01 | 2013-08-01 | HCFWF3Z3126, HCFWF3Z31126 | 87d | 0d | HCRA - 1 - Normal Calendar |  |  | B5 | 26 | MEP | C | MEP |
| HCMEF3Z3225 |  | F3 Z3 :Electrical Coduits & Boards F.F for All Systems |  | 12d | 2013-08-01 | 2013-08-19 | HCMEF3Z3165 | 72d | 11d | HCRA - Global | EFFORT [12 h]; Electrical Skilled Labours [24 h] | 450 | B5 | 26 | MEP | C | MEP |
| HCMEF3Z3185 |  | F3 Z3 :Plastering Finish Date for All Parts | milestone | 0d | 2013-10-26 | 2013-10-26 | HCFWF3Z3099 | 81d | 15d | HCRA - 1 - Normal Calendar |  |  | B5 | 26 | MEP | C | MEP |
| HCMEF3Z3235 |  | F3 Z3 :Electrical Boards Seconed Fix |  | 12d | 2013-11-12 | 2013-11-28 | HCMEF3Z3225 FS+50d, HCMEF3Z3185, HCMEF2Z3230 | 61d | 0d | HCRA - Global | EFFORT [12 h]; Electrical Skilled Labours [24 h] | 450 | B5 | 26 | MEP | C | MEP |
| HCMEF3Z3245 |  | F3 Z3 :Cable Tray Installation |  | 10d | 2014-01-01 | 2014-01-15 | HCMEF3Z3185, HCMEF2Z3240 | 21d | 0d | HCRA - Global | EFFORT [10 h]; Electrical Skilled Labours [20 h] | 375 | B5 | 26 | MEP | C | MEP |
| HCMEF3Z3175 |  | F3 Z3 :Tiling Finish Date for All Parts | milestone | 0d | 2014-01-07 | 2014-01-07 | HCFWF3Z3151 | 56d | 12d | HCRA - 1 - Normal Calendar |  |  | B5 | 26 | MEP | C | MEP |
| HCMEF3Z3265 |  | F3 Z3 :Cable Laying |  | 10d | 2014-01-15 | 2014-01-29 | HCMEF3Z3245, HCMEF2Z3260 | 21d | 0d | HCRA - Global | EFFORT [10 h]; Electrical Skilled Labours [20 h] | 375 | B5 | 26 | MEP | C | MEP |
| HCMEF3Z3255 |  | F3 Z3 :Electrcial Wiring |  | 6d | 2014-01-21 | 2014-01-29 | HCMEF3Z3175, HCMEF2Z3250 | 37d | 5d | HCRA - Global | EFFORT [20 h]; Electrical Skilled Labours [40 h] | 750 | B5 | 26 | MEP | C | MEP |
| HCMEF3Z3275 |  | F3 Z3 :Electrical Final Fix for All Systems & Boards (Vertical Elements) |  | 10d | 2014-03-12 | 2014-03-26 | HCMEF3Z3265 FS+30d, HCMEF3Z3255 FS+22d, HCMEF3Z3235 FS+30d, HCMEF3Z3185 FS+60d | 41d | 2.12d | HCRA - Global | EFFORT [10 h]; Electrical Skilled Labours [20 h] | 375 | B5 | 26 | MEP | C | MEP |
| HCMEF3Z3195 |  | F3 Z3 :Gypsum Boards Finish Date for All Parts | milestone | 0d | 2014-03-30 | 2014-03-30 | HCFWF3Z3120, HCFWF3Z3156 | 46d | 0.12d | HCRA - 1 - Normal Calendar |  |  | B5 | 26 | MEP | C | MEP |
| HCMEF3Z3285 |  | F3 Z3 :Electrical Final Fix for All Systems (Horizantel Elements) |  | 10d | 2014-03-31 | 2014-04-11 | HCMEF3Z3275, HCMEF3Z3255, HCMEF3Z3195 | 38.88d | 1.88d | HCRA - Global | EFFORT [10 h]; Electrical Skilled Labours [20 h] | 375 | B5 | 26 | MEP | C | MEP |

| ID | WBS | Activity | Type | Duration | Start | Finish | Predecessors | Total float | Free float | Calendar | Resources | Cost | Bill No. | Division No. | Responsibility | Phase Code | Trade |
| --- | --- | --- | --- | --- | --- | --- | --- | --- | --- | --- | --- | --- | --- | --- | --- | --- | --- |
|  | 2 | **Fire Fighting** |  |  | 2013-08-01 | 2014-02-24 |  |  |  |  |  |  |  |  |  |  |  |
| HCMEF3Z3105 |  | F3 Z3 :Horizontal F.F Piping Work |  | 20d | 2013-08-01 | 2013-08-29 | HCMEF3Z3165 | 80d | 0d | HCRA - Global | EFFORT [20 h]; Mechnical Skilled Labours [30 h] | 712.5 | B5 | 21 | MEP | C | MEP |
| HCMEF3Z3115 |  | F3 Z3 :Fire Hose Cabinets |  | 10d | 2013-08-29 | 2013-09-12 | HCMEF3Z3105 | 80d | 37d | HCRA - Global | EFFORT [10 h]; Mechnical Skilled Labours [15 h] | 356.25 | B5 | 21 | MEP | C | MEP |
| HCMEF3Z3125 |  | F3 Z3 :Sprinklers Final Fix |  | 10d | 2014-02-10 | 2014-02-24 | HCMEF3Z3115 FS+70d, HCMEF2Z3120 | 43d | 0d | HCRA - Global | EFFORT [10 h]; Mechnical Skilled Labours [15 h] | 356.25 | B5 | 21 | MEP | C | MEP |
|  | 1 | **Air Conditioning** |  |  | 2013-10-09 | 2014-04-03 |  |  |  |  |  |  |  |  |  |  |  |
| HCMEF3Z3335 |  | F3 Z3 :Duct Installation& Dusct Accecories Installation, Fan coil Unit |  | 8d | 2013-10-09 | 2013-10-21 | HCMEF3Z3165, HCMEF2Z3330 | 33d | 0d | HCRA - Global | EFFORT [20 h]; Mechnical Skilled Labours [30 h] | 712.5 | B5 | 23 | MEP | C | MEP |
| HCMEF3Z3345 |  | F3 Z3 :Duct Insulation Work |  | 15d | 2013-10-21 | 2013-11-11 | HCMEF3Z3335 | 33d | 0d | HCRA - Global | EFFORT [15 h]; Mechnical Skilled Labours [22.5 h] | 534.38 | B5 | 23 | MEP | C | MEP |
| HCMEF3Z3355 |  | F3 Z3 :Exhaust Fans |  | 15d | 2013-11-11 | 2013-12-02 | HCMEF3Z3345 | 33d | 18d | HCRA - Global | EFFORT [15 h]; Mechnical Skilled Labours [22.5 h] | 534.38 | B5 | 23 | MEP | C | MEP |
| HCMEF3Z3365 |  | F3 Z3 :Grills & Diffusers |  | 10d | 2014-03-06 | 2014-03-20 | HCMEF3Z3355 FS+50d, HCMEF2Z3360 | 15d | 0d | HCRA - Global | EFFORT [10 h]; Mechnical Skilled Labours [15 h] | 356.25 | B5 | 23 | MEP | C | MEP |
| HCMEF3Z3375 |  | F3 Z3 :Mechanical final Fix |  | 10d | 2014-03-20 | 2014-04-03 | HCMEF3Z3365, HCMEF2Z3370 | 15d | 0d | HCRA - Global | EFFORT [10 h]; Mechnical Skilled Labours [15 h] | 356.25 | B5 | 23 | MEP | C | MEP |
|  | 3 | **Water Network** |  |  | 2013-04-08 | 2014-01-03 |  |  |  |  |  |  |  |  |  |  |  |
| HCMEF3Z3385 |  | F3 Z3 :All Vertical Piping Works |  | 10d | 2013-04-08 | 2013-04-19 | HCMEF3Z3075 SS | 93.88d | 0d | HCRA - Global | EFFORT [10 h]; Mechnical Skilled Labours [15 h] | 356.25 | B5 | 22 | MEP | C | MEP |
| HCMEF3Z3395 |  | F3 Z3 :All Horizantal Piping Works |  | 30d | 2013-04-22 | 2013-05-31 | HCMEF3Z3385 | 93.88d | 45d | HCRA - Global | EFFORT [30 h]; Mechnical Skilled Labours [45 h] | 1,068.75 | B5 | 22 | MEP | C | MEP |
| HCMEF3Z3405 |  | F3 Z3 :Mechanical Final Fix |  | 20d | 2013-12-09 | 2014-01-03 | HCMEF3Z3395 FS+90d, HCMEF2Z3400 | 48.88d | 0d | HCRA - Global | EFFORT [20 h]; Mechnical Skilled Labours [30 h] | 712.5 | B5 | 22 | MEP | C | MEP |
|  | 3 | **Fourth Floor** |  |  | 2013-04-16 | 2014-04-29 |  |  |  |  |  |  |  |  |  |  |  |
| HCMEF4000 |  | Start Fourth Floor EM Works | milestone | 0d | 2013-04-17 | 2013-04-17 | HCFWF4Z1123, HCFWF4Z11123 | 99d | 0d |  |  |  | B5 |  | MEP | C | MEP |
| HCMEF40000 |  | End Fourth Floor EM Works | milestone | 0d | 2014-04-24 | 2014-04-24 | HCMEF4Z1090, HCMEF4Z1120, HCMEF4Z1370, HCMEF4Z1400 | 33d |  |  |  |  | B5 |  | MEP | C | MEP |
|  | 4 | **Zone 1** |  |  | 2013-04-16 | 2014-04-29 |  |  |  |  |  |  |  |  |  |  |  |
|  | 7 | **Drainage** |  |  | 2013-04-17 | 2014-01-31 |  |  |  |  |  |  |  |  |  |  |  |
| HCMEF4Z1070 |  | F4 Z1 :All Vertical Piping Works |  | 10d | 2013-04-17 | 2013-04-30 | HCMEF4000 | 86.88d | 0d | HCRA - Global | EFFORT [10 h]; Mechnical Skilled Labours [15 h] | 356.25 | B5 | 22 | MEP | C | MEP |
| HCMEF4Z1080 |  | F4 Z1 :All Horizantal Piping Works |  | 30d | 2013-05-01 | 2013-06-11 | HCMEF4Z1070 | 86.88d | 58d | HCRA - Global | EFFORT [30 h]; Mechnical Skilled Labours [45 h] | 1,068.75 | B5 | 22 | MEP | C | MEP |
| HCMEF4Z1090 |  | F4 Z1 :Mechanical Final Fix |  | 20d | 2014-01-06 | 2014-01-31 | HCMEF4Z1080 FS+90d, HCMEF3Z1085 | 28.88d | 0d | HCRA - Global | EFFORT [20 h]; Mechnical Skilled Labours [30 h] | 712.5 | B5 | 22 | MEP | C | MEP |
|  | 020 | **Electrical Works** |  |  | 2013-04-16 | 2014-04-29 |  |  |  |  |  |  |  |  |  |  |  |
| HCMEF4Z1160 |  | F4 Z1 :Blocks Start Date for All Parts | milestone | 0d | 2013-04-16 | 2013-04-16 | HCFWF4Z1123, HCFWF4Z11123 | 168d | 0d | HCRA - 1 - Normal Calendar |  |  | B5 | 26 | MEP | C | MEP |
| HCMEF4Z1220 |  | F4 Z1 :Electrical Coduits & Boards F.F for All Systems |  | 12d | 2013-04-16 | 2013-05-02 | HCMEF4Z1160 | 140d | 21d | HCRA - Global | EFFORT [12 h]; Electrical Skilled Labours [24 h] | 450 | B5 | 26 | MEP | C | MEP |
| HCMEF4Z1180 |  | F4 Z1 :Plastering Finish Date for All Parts | milestone | 0d | 2013-06-24 | 2013-06-24 | HCFWF4Z1127 | 174.38d | 39.5d | HCRA - 1 - Normal Calendar |  |  | B5 | 26 | MEP | C | MEP |
| HCMEF4Z1230 |  | F4 Z1 :Electrical Boards Seconed Fix |  | 12d | 2013-08-09 | 2013-08-27 | HCMEF4Z1220 FS+50d, HCMEF4Z1180, HCMEF3Z1225 | 119d | 0d | HCRA - Global | EFFORT [12 h]; Electrical Skilled Labours [24 h] | 450 | B5 | 26 | MEP | C | MEP |
| HCMEF4Z1170 |  | F4 Z1 :Tiling Finish Date for All Parts | milestone | 0d | 2013-10-10 | 2013-10-10 | HCFWF4Z1141 | 80d | 78.12d | HCRA - 1 - Normal Calendar |  |  | B5 | 26 | MEP | C | MEP |
| HCMEF4Z1250 |  | F4 Z1 :Electrcial Wiring |  | 20d | 2014-01-13 | 2014-02-07 | HCMEF4Z1170, HCMEF3Z1245 | 1.88d | 0d | HCRA - Global | EFFORT [20 h]; Electrical Skilled Labours [40 h] | 750 | B5 | 26 | MEP | C | MEP |
| HCMEF4Z1240 |  | F4 Z1 :Cable Tray Installation |  | 10d | 2014-01-15 | 2014-01-29 | HCMEF4Z1180, HCMEF3Z1235 | 0d |  | HCRA - Global | EFFORT [10 h]; Electrical Skilled Labours [20 h] | 375 | B5 | 26 | MEP | C | MEP |
| HCMEF4Z1260 |  | F4 Z1 :Cable Laying |  | 10d | 2014-02-04 | 2014-02-18 | HCMEF4Z1240, HCMEF3Z1255 | 0d |  | HCRA - Global | EFFORT [10 h]; Electrical Skilled Labours [20 h] | 375 | B5 | 26 | MEP | C | MEP |
| HCMEF4Z1190 |  | F4 Z1 :Gypsum Boards Finish Date for All Parts | milestone | 0d | 2014-03-08 | 2014-03-08 | HCFWF4Z1142, HCFWF4Z1147 | 65d | 33d | HCRA - 1 - Normal Calendar |  |  | B5 | 26 | MEP | C | MEP |
| HCMEF4Z1270 |  | F4 Z1 :Electrical Final Fix for All Systems & Boards (Vertical Elements) |  | 10d | 2014-04-01 | 2014-04-15 | HCMEF4Z1260 FS+30d, HCMEF4Z1250 FS+22d, HCMEF4Z1230 FS+30d, HCMEF4Z1180 FS+60d | 27d | 0d | HCRA - Global | EFFORT [10 h]; Electrical Skilled Labours [20 h] | 375 | B5 | 26 | MEP | C | MEP |
| HCMEF4Z1280 |  | F4 Z1 :Electrical Final Fix for All Systems (Horizantel Elements) |  | 10d | 2014-04-15 | 2014-04-29 | HCMEF4Z1270, HCMEF4Z1250, HCMEF4Z1190 | 27d | 0d | HCRA - Global | EFFORT [10 h]; Electrical Skilled Labours [20 h] | 375 | B5 | 26 | MEP | C | MEP |

| ID | WBS | Activity | Type | Duration | Start | Finish | Predecessors | Total float | Free float | Calendar | Resources | Cost | Bill No. | Division No. | Responsibility | Phase Code | Trade |
| --- | --- | --- | --- | --- | --- | --- | --- | --- | --- | --- | --- | --- | --- | --- | --- | --- | --- |
|  | 2 | **Fire Fighting** |  |  | 2013-04-16 | 2014-03-10 |  |  |  |  |  |  |  |  |  |  |  |
| HCMEF4Z1100 |  | F4 Z1 :Horizontal F.F Piping Work |  | 20d | 2013-04-16 | 2013-05-14 | HCMEF4Z1160 | 157d | 0d | HCRA - Global | EFFORT [20 h]; Mechnical Skilled Labours [30 h] | 712.5 | B5 | 21 | MEP | C | MEP |
| HCMEF4Z1110 |  | F4 Z1 :Fire Hose Cabinets |  | 10d | 2013-05-14 | 2013-05-28 | HCMEF4Z1100 | 157d | 124d | HCRA - Global | EFFORT [10 h]; Mechnical Skilled Labours [15 h] | 356.25 | B5 | 21 | MEP | C | MEP |
| HCMEF4Z1120 |  | F4 Z1 :Sprinklers Final Fix |  | 10d | 2014-02-24 | 2014-03-10 | HCMEF4Z1110 FS+70d, HCMEF3Z1115 | 33d | 0d | HCRA - Global | EFFORT [10 h]; Mechnical Skilled Labours [15 h] | 356.25 | B5 | 21 | MEP | C | MEP |
|  | 1 | **Air Conditioning** |  |  | 2013-10-21 | 2014-04-24 |  |  |  |  |  |  |  |  |  |  |  |
| HCMEF4Z1330 |  | F4 Z1 :Duct Installation& Dusct Accecories Installation, Fan coil Unit |  | 10d | 2013-10-21 | 2013-11-04 | HCMEF4Z1160, HCMEF3Z1325 | 23d | 0d | HCRA - Global | EFFORT [20 h]; Mechnical Skilled Labours [30 h] | 712.5 | B5 | 23 | MEP | C | MEP |
| HCMEF4Z1340 |  | F4 Z1 :Duct Insulation Work |  | 15d | 2013-11-04 | 2013-11-25 | HCMEF4Z1330 | 23d | 0d | HCRA - Global | EFFORT [15 h]; Mechnical Skilled Labours [22.5 h] | 534.38 | B5 | 23 | MEP | C | MEP |
| HCMEF4Z1350 |  | F4 Z1 :Exhaust Fans |  | 15d | 2013-11-25 | 2013-12-16 | HCMEF4Z1340 | 23d | 21d | HCRA - Global | EFFORT [15 h]; Mechnical Skilled Labours [22.5 h] | 534.38 | B5 | 23 | MEP | C | MEP |
| HCMEF4Z1360 |  | F4 Z1 :Grills & Diffusers |  | 10d | 2014-03-25 | 2014-04-08 | HCMEF4Z1350 FS+50d, HCMEF3Z1355 | 2d | 0d | HCRA - Global | EFFORT [10 h]; Mechnical Skilled Labours [15 h] | 356.25 | B5 | 23 | MEP | C | MEP |
| HCMEF4Z1370 |  | F4 Z1 :Mechanical final Fix |  | 10d | 2014-04-10 | 2014-04-24 | HCMEF4Z1360, HCMEF3Z1365 | 0d |  | HCRA - Global | EFFORT [10 h]; Mechnical Skilled Labours [15 h] | 356.25 | B5 | 23 | MEP | C | MEP |
|  | 3 | **Water Network** |  |  | 2013-04-17 | 2014-01-31 |  |  |  |  |  |  |  |  |  |  |  |
| HCMEF4Z1380 |  | F4 Z1 :All Vertical Piping Works |  | 10d | 2013-04-17 | 2013-04-30 | HCMEF4Z1070 SS | 86.88d | 0d | HCRA - Global | EFFORT [10 h]; Mechnical Skilled Labours [15 h] | 356.25 | B5 | 22 | MEP | C | MEP |
| HCMEF4Z1390 |  | F4 Z1 :All Horizantal Piping Works |  | 30d | 2013-05-01 | 2013-06-11 | HCMEF4Z1380 | 86.88d | 58d | HCRA - Global | EFFORT [30 h]; Mechnical Skilled Labours [45 h] | 1,068.75 | B5 | 22 | MEP | C | MEP |
| HCMEF4Z1400 |  | F4 Z1 :Mechanical Final Fix |  | 20d | 2014-01-06 | 2014-01-31 | HCMEF4Z1390 FS+90d, HCMEF3Z1395 | 28.88d | 0d | HCRA - Global | EFFORT [20 h]; Mechnical Skilled Labours [30 h] | 712.5 | B5 | 22 | MEP | C | MEP |
|  | 1 | **Zone 2** |  |  | 2013-04-17 | 2014-04-23 |  |  |  |  |  |  |  |  |  |  |  |
|  | 7 | **Drainage** |  |  | 2013-04-17 | 2014-01-31 |  |  |  |  |  |  |  |  |  |  |  |
| HCMEF4Z2075 |  | F4 Z2 :All Vertical Piping Works |  | 10d | 2013-04-17 | 2013-04-30 | HCMEF4Z1070 SS | 95d | 0d | HCRA - Global | EFFORT [10 h]; Mechnical Skilled Labours [15 h] | 356.25 | B5 | 22 | MEP | C | MEP |
| HCMEF4Z2085 |  | F4 Z2 :All Horizantal Piping Works |  | 30d | 2013-05-01 | 2013-06-11 | HCMEF4Z2075 | 106.88d | 58d | HCRA - Global | EFFORT [30 h]; Mechnical Skilled Labours [45 h] | 1,068.75 | B5 | 22 | MEP | C | MEP |
| HCMEF4Z2095 |  | F4 Z2 :Mechanical Final Fix |  | 20d | 2014-01-06 | 2014-01-31 | HCMEF4Z2085 FS+90d, HCMEF3Z2090 | 48.88d | 0d | HCRA - Global | EFFORT [20 h]; Mechnical Skilled Labours [30 h] | 712.5 | B5 | 22 | MEP | C | MEP |
|  | 020 | **Electrical Works** |  |  | 2013-06-13 | 2014-04-23 |  |  |  |  |  |  |  |  |  |  |  |
| HCMEF4Z2165 |  | F4 Z2 :Blocks Start Date for All Parts | milestone | 0d | 2013-06-13 | 2013-06-13 | HCFWF4Z2107, HCFWF4Z21107 | 129d | 0d | HCRA - 1 - Normal Calendar |  |  | B5 | 26 | MEP | C | MEP |
| HCMEF4Z2225 |  | F4 Z2 :Electrical Coduits & Boards F.F for All Systems |  | 12d | 2013-06-13 | 2013-07-01 | HCMEF4Z2165 | 107d | 10d | HCRA - Global | EFFORT [12 h]; Electrical Skilled Labours [24 h] | 450 | B5 | 26 | MEP | C | MEP |
| HCMEF4Z2185 |  | F4 Z2 :Plastering Finish Date for All Parts | milestone | 0d | 2013-09-02 | 2013-09-02 | HCFWF4Z2106 | 127d | 18d | HCRA - 1 - Normal Calendar |  |  | B5 | 26 | MEP | C | MEP |
| HCMEF4Z2235 |  | F4 Z2 :Electrical Boards Seconed Fix |  | 12d | 2013-09-23 | 2013-10-09 | HCMEF4Z2225 FS+50d, HCMEF4Z2185, HCMEF3Z2230 | 97d | 0d | HCRA - Global | EFFORT [12 h]; Electrical Skilled Labours [24 h] | 450 | B5 | 26 | MEP | C | MEP |
| HCMEF4Z2175 |  | F4 Z2 :Tiling Finish Date for All Parts | milestone | 0d | 2013-10-14 | 2013-10-14 | HCFWF4Z2118 | 77d | 46.12d | HCRA - 1 - Normal Calendar |  |  | B5 | 26 | MEP | C | MEP |
| HCMEF4Z2255 |  | F4 Z2 :Electrcial Wiring |  | 20d | 2013-12-09 | 2014-01-03 | HCMEF4Z2175, HCMEF3Z2250 | 26.88d | 0d | HCRA - Global | EFFORT [20 h]; Electrical Skilled Labours [40 h] | 750 | B5 | 26 | MEP | C | MEP |
| HCMEF4Z2245 |  | F4 Z2 :Cable Tray Installation |  | 10d | 2014-01-15 | 2014-01-29 | HCMEF4Z2185, HCMEF3Z2240 | 11d | 0d | HCRA - Global | EFFORT [10 h]; Electrical Skilled Labours [20 h] | 375 | B5 | 26 | MEP | C | MEP |
| HCMEF4Z2265 |  | F4 Z2 :Cable Laying |  | 10d | 2014-01-29 | 2014-02-12 | HCMEF4Z2245, HCMEF3Z2260 | 11d | 0d | HCRA - Global | EFFORT [10 h]; Electrical Skilled Labours [20 h] | 375 | B5 | 26 | MEP | C | MEP |
| HCMEF4Z2195 |  | F4 Z2 :Gypsum Boards Finish Date for All Parts | milestone | 0d | 2014-03-06 | 2014-03-06 | HCFWF4Z2120 | 66d | 29d | HCRA - 1 - Normal Calendar |  |  | B5 | 26 | MEP | C | MEP |
| HCMEF4Z2275 |  | F4 Z2 :Electrical Final Fix for All Systems & Boards (Vertical Elements) |  | 10d | 2014-03-26 | 2014-04-09 | HCMEF4Z2265 FS+30d, HCMEF4Z2255 FS+22d, HCMEF4Z2235 FS+30d, HCMEF4Z2185 FS+60d | 31d | 0d | HCRA - Global | EFFORT [10 h]; Electrical Skilled Labours [20 h] | 375 | B5 | 26 | MEP | C | MEP |
| HCMEF4Z2285 |  | F4 Z2 :Electrical Final Fix for All Systems (Horizantel Elements) |  | 10d | 2014-04-09 | 2014-04-23 | HCMEF4Z2275, HCMEF4Z2255, HCMEF4Z2195 | 31d | 4d | HCRA - Global | EFFORT [10 h]; Electrical Skilled Labours [20 h] | 375 | B5 | 26 | MEP | C | MEP |

| ID | WBS | Activity | Type | Duration | Start | Finish | Predecessors | Total float | Free float | Calendar | Resources | Cost | Bill No. | Division No. | Responsibility | Phase Code | Trade |
| --- | --- | --- | --- | --- | --- | --- | --- | --- | --- | --- | --- | --- | --- | --- | --- | --- | --- |
|  | 2 | **Fire Fighting** |  |  | 2013-06-13 | 2014-03-10 |  |  |  |  |  |  |  |  |  |  |  |
| HCMEF4Z2105 |  | F4 Z2 :Horizontal F.F Piping Work |  | 20d | 2013-06-13 | 2013-07-11 | HCMEF4Z2165 | 125d | 0d | HCRA - Global | EFFORT [20 h]; Mechnical Skilled Labours [30 h] | 712.5 | B5 | 21 | MEP | C | MEP |
| HCMEF4Z2115 |  | F4 Z2 :Fire Hose Cabinets |  | 10d | 2013-07-11 | 2013-07-25 | HCMEF4Z2105 | 125d | 82d | HCRA - Global | EFFORT [10 h]; Mechnical Skilled Labours [15 h] | 356.25 | B5 | 21 | MEP | C | MEP |
| HCMEF4Z2125 |  | F4 Z2 :Sprinklers Final Fix |  | 10d | 2014-02-24 | 2014-03-10 | HCMEF4Z2115 FS+70d, HCMEF3Z2120 | 43d | 0d | HCRA - Global | EFFORT [10 h]; Mechnical Skilled Labours [15 h] | 356.25 | B5 | 21 | MEP | C | MEP |
|  | 1 | **Air Conditioning** |  |  | 2013-10-09 | 2014-04-17 |  |  |  |  |  |  |  |  |  |  |  |
| HCMEF4Z2335 |  | F4 Z2 :Duct Installation& Dusct Accecories Installation, Fan coil Unit |  | 8d | 2013-10-09 | 2013-10-21 | HCMEF4Z2165, HCMEF3Z2330 | 31.12d | 0d | HCRA - Global | EFFORT [20 h]; Mechnical Skilled Labours [30 h] | 712.5 | B5 | 23 | MEP | C | MEP |
| HCMEF4Z2345 |  | F4 Z2 :Duct Insulation Work |  | 15d | 2013-10-21 | 2013-11-11 | HCMEF4Z2335 | 31.12d | 0d | HCRA - Global | EFFORT [15 h]; Mechnical Skilled Labours [22.5 h] | 534.38 | B5 | 23 | MEP | C | MEP |
| HCMEF4Z2355 |  | F4 Z2 :Exhaust Fans |  | 15d | 2013-11-11 | 2013-12-02 | HCMEF4Z2345 | 31.12d | 28d | HCRA - Global | EFFORT [15 h]; Mechnical Skilled Labours [22.5 h] | 534.38 | B5 | 23 | MEP | C | MEP |
| HCMEF4Z2365 |  | F4 Z2 :Grills & Diffusers |  | 10d | 2014-03-20 | 2014-04-03 | HCMEF4Z2355 FS+50d, HCMEF3Z2360 | 3.12d | 0d | HCRA - Global | EFFORT [10 h]; Mechnical Skilled Labours [15 h] | 356.25 | B5 | 23 | MEP | C | MEP |
| HCMEF4Z2375 |  | F4 Z2 :Mechanical final Fix |  | 10d | 2014-04-03 | 2014-04-17 | HCMEF4Z2365, HCMEF3Z2370 | 3.12d | 0d | HCRA - Global | EFFORT [10 h]; Mechnical Skilled Labours [15 h] | 356.25 | B5 | 23 | MEP | C | MEP |
|  | 3 | **Water Network** |  |  | 2013-04-17 | 2014-01-31 |  |  |  |  |  |  |  |  |  |  |  |
| HCMEF4Z2385 |  | F4 Z2 :All Vertical Piping Works |  | 10d | 2013-04-17 | 2013-04-30 | HCMEF4Z2075 SS | 106.88d | 0d | HCRA - Global | EFFORT [10 h]; Mechnical Skilled Labours [15 h] | 356.25 | B5 | 22 | MEP | C | MEP |
| HCMEF4Z2395 |  | F4 Z2 :All Horizantal Piping Works |  | 30d | 2013-05-01 | 2013-06-11 | HCMEF4Z2385 | 106.88d | 58d | HCRA - Global | EFFORT [30 h]; Mechnical Skilled Labours [45 h] | 1,068.75 | B5 | 22 | MEP | C | MEP |
| HCMEF4Z2405 |  | F4 Z2 :Mechanical Final Fix |  | 20d | 2014-01-06 | 2014-01-31 | HCMEF4Z2395 FS+90d, HCMEF3Z2400 | 48.88d | 0d | HCRA - Global | EFFORT [20 h]; Mechnical Skilled Labours [30 h] | 712.5 | B5 | 22 | MEP | C | MEP |
|  | 2 | **Zone 3** |  |  | 2013-04-17 | 2014-04-29 |  |  |  |  |  |  |  |  |  |  |  |
|  | 4 | **Conveying System** |  |  |  |  |  |  |  |  |  |  |  |  |  |  |  |
|  | 7 | **Drainage** |  |  | 2013-04-17 | 2014-01-31 |  |  |  |  |  |  |  |  |  |  |  |
| HCMEF4Z3080 |  | F4 Z3 :All Vertical Piping Works |  | 10d | 2013-04-17 | 2013-04-30 | HCMEF4Z2075 SS | 95d | 0d | HCRA - Global | EFFORT [10 h]; Mechnical Skilled Labours [15 h] | 356.25 | B5 | 22 | MEP | C | MEP |
| HCMEF4Z3090 |  | F4 Z3 :All Horizantal Piping Works |  | 30d | 2013-05-01 | 2013-06-11 | HCMEF4Z3080 | 106.88d | 58d | HCRA - Global | EFFORT [30 h]; Mechnical Skilled Labours [45 h] | 1,068.75 | B5 | 22 | MEP | C | MEP |
| HCMEF4Z3100 |  | F4 Z3 :Mechanical Final Fix |  | 20d | 2014-01-06 | 2014-01-31 | HCMEF4Z3090 FS+90d, HCMEF3Z3095 | 48.88d | 0d | HCRA - Global | EFFORT [20 h]; Mechnical Skilled Labours [30 h] | 712.5 | B5 | 22 | MEP | C | MEP |
|  | 020 | **Electrical Works** |  |  | 2013-08-17 | 2014-04-29 |  |  |  |  |  |  |  |  |  |  |  |
| HCMEF4Z3170 |  | F4 Z3 :Blocks Start Date for All Parts | milestone | 0d | 2013-08-17 | 2013-08-17 | HCFWF4Z3166, HCFWF4Z31166 | 88d | 1.12d | HCRA - 1 - Normal Calendar |  |  | B5 | 26 | MEP | C | MEP |
| HCMEF4Z3230 |  | F4 Z3 :Electrical Coduits & Boards F.F for All Systems |  | 12d | 2013-08-19 | 2013-09-03 | HCMEF4Z3170 | 72.88d | 11.88d | HCRA - Global | EFFORT [12 h]; Electrical Skilled Labours [24 h] | 450 | B5 | 26 | MEP | C | MEP |
| HCMEF4Z3190 |  | F4 Z3 :Plastering Finish Date for All Parts | milestone | 0d | 2013-11-24 | 2013-11-24 | HCFWF4Z3129 | 68d | 4d | HCRA - 1 - Normal Calendar |  |  | B5 | 26 | MEP | C | MEP |
| HCMEF4Z3240 |  | F4 Z3 :Electrical Boards Seconed Fix |  | 12d | 2013-11-28 | 2013-12-16 | HCMEF4Z3230 FS+50d, HCMEF4Z3190, HCMEF3Z3235 | 61d | 4.12d | HCRA - Global | EFFORT [12 h]; Electrical Skilled Labours [24 h] | 450 | B5 | 26 | MEP | C | MEP |
| HCMEF4Z3250 |  | F4 Z3 :Cable Tray Installation |  | 10d | 2014-01-15 | 2014-01-29 | HCMEF4Z3190, HCMEF3Z3245 | 21d | 0d | HCRA - Global | EFFORT [10 h]; Electrical Skilled Labours [20 h] | 375 | B5 | 26 | MEP | C | MEP |
| HCMEF4Z3270 |  | F4 Z3 :Cable Laying |  | 10d | 2014-01-29 | 2014-02-12 | HCMEF4Z3250, HCMEF3Z3265 | 21d | 0d | HCRA - Global | EFFORT [10 h]; Electrical Skilled Labours [20 h] | 375 | B5 | 26 | MEP | C | MEP |
| HCMEF4Z3180 |  | F4 Z3 :Tiling Finish Date for All Parts | milestone | 0d | 2014-02-05 | 2014-02-05 | HCFWF4Z3191 | 37.12d | 0d | HCRA - 1 - Normal Calendar |  |  | B5 | 26 | MEP | C | MEP |
| HCMEF4Z3260 |  | F4 Z3 :Electrcial Wiring |  | 6d | 2014-02-05 | 2014-02-13 | HCMEF4Z3180, HCMEF3Z3255 | 32d | 7d | HCRA - Global | EFFORT [20 h]; Electrical Skilled Labours [40 h] | 750 | B5 | 26 | MEP | C | MEP |
| HCMEF4Z3280 |  | F4 Z3 :Electrical Final Fix for All Systems & Boards (Vertical Elements) |  | 10d | 2014-03-26 | 2014-04-09 | HCMEF4Z3270 FS+30d, HCMEF4Z3260 FS+22d, HCMEF4Z3240 FS+30d, HCMEF4Z3190 FS+60d | 31d | 4d | HCRA - Global | EFFORT [10 h]; Electrical Skilled Labours [20 h] | 375 | B5 | 26 | MEP | C | MEP |
| HCMEF4Z3200 |  | F4 Z3 :Gypsum Boards Finish Date for All Parts | milestone | 0d | 2014-04-15 | 2014-04-15 | HCFWF4Z3155, HCFWF4Z3196 | 32d | 0d | HCRA - 1 - Normal Calendar |  |  | B5 | 26 | MEP | C | MEP |
| HCMEF4Z3290 |  | F4 Z3 :Electrical Final Fix for All Systems (Horizantel Elements) |  | 10d | 2014-04-15 | 2014-04-29 | HCMEF4Z3280, HCMEF4Z3260, HCMEF4Z3200 | 27d | 0d | HCRA - Global | EFFORT [10 h]; Electrical Skilled Labours [20 h] | 375 | B5 | 26 | MEP | C | MEP |

| ID | WBS | Activity | Type | Duration | Start | Finish | Predecessors | Total float | Free float | Calendar | Resources | Cost | Bill No. | Division No. | Responsibility | Phase Code | Trade |
| --- | --- | --- | --- | --- | --- | --- | --- | --- | --- | --- | --- | --- | --- | --- | --- | --- | --- |
|  | 2 | **Fire Fighting** |  |  | 2013-08-19 | 2014-03-10 |  |  |  |  |  |  |  |  |  |  |  |
| HCMEF4Z3110 |  | F4 Z3 :Horizontal F.F Piping Work |  | 20d | 2013-08-19 | 2013-09-13 | HCMEF4Z3170 | 78.88d | 0d | HCRA - Global | EFFORT [20 h]; Mechnical Skilled Labours [30 h] | 712.5 | B5 | 21 | MEP | C | MEP |
| HCMEF4Z3120 |  | F4 Z3 :Fire Hose Cabinets |  | 10d | 2013-09-16 | 2013-09-27 | HCMEF4Z3110 | 78.88d | 35.88d | HCRA - Global | EFFORT [10 h]; Mechnical Skilled Labours [15 h] | 356.25 | B5 | 21 | MEP | C | MEP |
| HCMEF4Z3130 |  | F4 Z3 :Sprinklers Final Fix |  | 10d | 2014-02-24 | 2014-03-10 | HCMEF4Z3120 FS+70d, HCMEF3Z3125 | 43d | 0d | HCRA - Global | EFFORT [10 h]; Mechnical Skilled Labours [15 h] | 356.25 | B5 | 21 | MEP | C | MEP |
|  | 1 | **Air Conditioning** |  |  | 2013-10-21 | 2014-04-17 |  |  |  |  |  |  |  |  |  |  |  |
| HCMEF4Z3340 |  | F4 Z3 :Duct Installation& Dusct Accecories Installation, Fan coil Unit |  | 8d | 2013-10-21 | 2013-10-31 | HCMEF4Z3170, HCMEF4Z3170 SS, HCMEF3Z3335 | 35d | 0d | HCRA - Global | EFFORT [20 h]; Mechnical Skilled Labours [30 h] | 712.5 | B5 | 23 | MEP | C | MEP |
| HCMEF4Z3350 |  | F4 Z3 :Duct Insulation Work |  | 15d | 2013-10-31 | 2013-11-21 | HCMEF4Z3340 | 35d | 0d | HCRA - Global | EFFORT [15 h]; Mechnical Skilled Labours [22.5 h] | 534.38 | B5 | 23 | MEP | C | MEP |
| HCMEF4Z3360 |  | F4 Z3 :Exhaust Fans |  | 15d | 2013-11-21 | 2013-12-12 | HCMEF4Z3350 | 35d | 20d | HCRA - Global | EFFORT [15 h]; Mechnical Skilled Labours [22.5 h] | 534.38 | B5 | 23 | MEP | C | MEP |
| HCMEF4Z3370 |  | F4 Z3 :Grills & Diffusers |  | 10d | 2014-03-20 | 2014-04-03 | HCMEF4Z3360 FS+50d, HCMEF3Z3365 | 15d | 0d | HCRA - Global | EFFORT [10 h]; Mechnical Skilled Labours [15 h] | 356.25 | B5 | 23 | MEP | C | MEP |
| HCMEF4Z3380 |  | F4 Z3 :Mechanical final Fix |  | 10d | 2014-04-03 | 2014-04-17 | HCMEF4Z3370, HCMEF3Z3375 | 15d | 0d | HCRA - Global | EFFORT [10 h]; Mechnical Skilled Labours [15 h] | 356.25 | B5 | 23 | MEP | C | MEP |
|  | 3 | **Water Network** |  |  | 2013-04-17 | 2014-01-31 |  |  |  |  |  |  |  |  |  |  |  |
| HCMEF4Z3390 |  | F4 Z3 :All Vertical Piping Works |  | 10d | 2013-04-17 | 2013-04-30 | HCMEF4Z3080 SS | 106.88d | 0d | HCRA - Global | EFFORT [10 h]; Mechnical Skilled Labours [15 h] | 356.25 | B5 | 22 | MEP | C | MEP |
| HCMEF4Z3400 |  | F4 Z3 :All Horizantal Piping Works |  | 30d | 2013-05-01 | 2013-06-11 | HCMEF4Z3390 | 106.88d | 58d | HCRA - Global | EFFORT [30 h]; Mechnical Skilled Labours [45 h] | 1,068.75 | B5 | 22 | MEP | C | MEP |
| HCMEF4Z3410 |  | F4 Z3 :Mechanical Final Fix |  | 20d | 2014-01-06 | 2014-01-31 | HCMEF4Z3400 FS+90d, HCMEF3Z3405 | 48.88d | 0d | HCRA - Global | EFFORT [20 h]; Mechnical Skilled Labours [30 h] | 712.5 | B5 | 22 | MEP | C | MEP |
|  | 3 | **Zone 4** |  |  | 2013-04-17 | 2014-03-06 |  |  |  |  |  |  |  |  |  |  |  |
|  | 7 | **Drainage** |  |  | 2013-04-17 | 2013-11-12 |  |  |  |  |  |  |  |  |  |  |  |
| HCMEF4Z4085 |  | F4 Z4 :All Vertical Piping Works |  | 10d | 2013-04-17 | 2013-04-30 | HCMEF4Z3080 SS | 95d | 0d | HCRA - Global | EFFORT [10 h]; Mechnical Skilled Labours [15 h] | 356.25 | B5 | 22 | MEP | C | MEP |
| HCMEF4Z4095 |  | F4 Z4 :All Horizantal Piping Works |  | 30d | 2013-05-01 | 2013-06-11 | HCMEF4Z4085 | 106.88d | 0d | HCRA - Global | EFFORT [30 h]; Mechnical Skilled Labours [45 h] | 1,068.75 | B5 | 22 | MEP | C | MEP |
| HCMEF4Z4105 |  | F4 Z4 :Mechanical Final Fix |  | 20d | 2013-10-16 | 2013-11-12 | HCMEF4Z4095 FS+90d, HCMEB1Z4080 | 106.88d | 0d | HCRA - Global | EFFORT [20 h]; Mechnical Skilled Labours [30 h] | 712.5 | B5 | 22 | MEP | C | MEP |
|  | 020 | **Electrical Works** |  |  | 2013-05-30 | 2014-02-26 |  |  |  |  |  |  |  |  |  |  |  |
| HCMEF4Z4175 |  | F4 Z4 :Blocks Start Date for All Parts | milestone | 0d | 2013-05-30 | 2013-05-30 | HCFWF4Z4132, HCFWF4Z41132 | 141d | 0d | HCRA - 1 - Normal Calendar |  |  | B5 | 26 | MEP | C | MEP |
| HCMEF4Z4235 |  | F4 Z4 :Electrical Coduits & Boards F.F for All Systems |  | 12d | 2013-05-30 | 2013-06-17 | HCMEF4Z4175 | 117d | 0d | HCRA - Global | EFFORT [12 h]; Electrical Skilled Labours [24 h] | 450 | B5 | 26 | MEP | C | MEP |
| HCMEF4Z4195 |  | F4 Z4 :Plastering Finish Date for All Parts | milestone | 0d | 2013-06-30 | 2013-06-30 | HCFWF4Z4131 | 182.38d | 49.38d | HCRA - 1 - Normal Calendar |  |  | B5 | 26 | MEP | C | MEP |
| HCMEF4Z4185 |  | F4 Z4 :Tiling Finish Date for All Parts | milestone | 0d | 2013-08-14 | 2013-08-14 | HCFWF4Z4143 | 129.38d | 91.38d | HCRA - 1 - Normal Calendar |  |  | B5 | 26 | MEP | C | MEP |
| HCMEF4Z4245 |  | F4 Z4 :Electrical Boards Seconed Fix |  | 12d | 2013-08-26 | 2013-09-11 | HCMEF4Z4235 FS+50d, HCMEF4Z4195, HCMEB1Z4220 | 117d | 62d | HCRA - Global | EFFORT [12 h]; Electrical Skilled Labours [24 h] | 450 | B5 | 26 | MEP | C | MEP |
| HCMEF4Z4255 |  | F4 Z4 :Cable Tray Installation |  | 10d | 2013-11-20 | 2013-12-04 | HCMEF4Z4195, HCMEB1Z4230 | 51d | 0d | HCRA - Global | EFFORT [10 h]; Electrical Skilled Labours [20 h] | 375 | B5 | 26 | MEP | C | MEP |
| HCMEF4Z4265 |  | F4 Z4 :Electrcial Wiring |  | 20d | 2013-11-28 | 2013-12-26 | HCMEF4Z4185, HCMEB1Z4240 | 33d | 0d | HCRA - Global | EFFORT [20 h]; Electrical Skilled Labours [40 h] | 750 | B5 | 26 | MEP | C | MEP |
| HCMEF4Z4275 |  | F4 Z4 :Cable Laying |  | 10d | 2013-12-04 | 2013-12-18 | HCMEF4Z4255, HCMEB1Z4250 | 51d | 0d | HCRA - Global | EFFORT [10 h]; Electrical Skilled Labours [20 h] | 375 | B5 | 26 | MEP | C | MEP |
| HCMEF4Z4205 |  | F4 Z4 :Gypsum Boards Finish Date for All Parts | milestone | 0d | 2014-01-23 | 2014-01-23 | HCFWF4Z2145 | 102d | 17d | HCRA - 1 - Normal Calendar |  |  | B5 | 26 | MEP | C | MEP |
| HCMEF4Z4285 |  | F4 Z4 :Electrical Final Fix for All Systems & Boards (Vertical Elements) |  | 10d | 2014-01-29 | 2014-02-12 | HCMEF4Z4275 FS+30d, HCMEF4Z4265 FS+22d, HCMEF4Z4245 FS+30d, HCMEF4Z4195 FS+60d | 71d | 0d | HCRA - Global | EFFORT [10 h]; Electrical Skilled Labours [20 h] | 375 | B5 | 26 | MEP | C | MEP |
| HCMEF4Z4295 |  | F4 Z4 :Electrical Final Fix for All Systems (Horizantel Elements) |  | 10d | 2014-02-12 | 2014-02-26 | HCMEF4Z4285, HCMEF4Z4265, HCMEF4Z4205 | 71d | 44d | HCRA - Global | EFFORT [10 h]; Electrical Skilled Labours [20 h] | 375 | B5 | 26 | MEP | C | MEP |

| ID | WBS | Activity | Type | Duration | Start | Finish | Predecessors | Total float | Free float | Calendar | Resources | Cost | Bill No. | Division No. | Responsibility | Phase Code | Trade |
| --- | --- | --- | --- | --- | --- | --- | --- | --- | --- | --- | --- | --- | --- | --- | --- | --- | --- |
|  | 2 | **Fire Fighting** |  |  | 2013-05-30 | 2014-01-13 |  |  |  |  |  |  |  |  |  |  |  |
| HCMEF4Z4115 |  | F4 Z4 :Horizontal F.F Piping Work |  | 20d | 2013-05-30 | 2013-06-27 | HCMEF4Z4175 | 135d | 0d | HCRA - Global | EFFORT [20 h]; Mechnical Skilled Labours [30 h] | 712.5 | B5 | 21 | MEP | C | MEP |
| HCMEF4Z4125 |  | F4 Z4 :Fire Hose Cabinets |  | 10d | 2013-06-27 | 2013-07-11 | HCMEF4Z4115 | 135d | 52d | HCRA - Global | EFFORT [10 h]; Mechnical Skilled Labours [15 h] | 356.25 | B5 | 21 | MEP | C | MEP |
| HCMEF4Z4135 |  | F4 Z4 :Sprinklers Final Fix |  | 10d | 2013-12-30 | 2014-01-13 | HCMEF4Z4125 FS+70d, HCMEB1Z4110 | 83d | 12d | HCRA - Global | EFFORT [10 h]; Mechnical Skilled Labours [15 h] | 356.25 | B5 | 21 | MEP | C | MEP |
|  | 1 | **Air Conditioning** |  |  | 2013-09-27 | 2014-03-06 |  |  |  |  |  |  |  |  |  |  |  |
| HCMEF4Z4345 |  | F4 Z4 :Duct Installation& Dusct Accecories Installation, Fan coil Unit |  | 14d | 2013-09-27 | 2013-10-17 | HCMEF4Z4175, HCMEB1Z4320 | 37d | 0d | HCRA - Global | EFFORT [20 h]; Mechnical Skilled Labours [30 h] | 712.5 | B5 | 23 | MEP | C | MEP |
| HCMEF4Z4355 |  | F4 Z4 :Duct Insulation Work |  | 15d | 2013-10-17 | 2013-11-07 | HCMEF4Z4345 | 45d | 0d | HCRA - Global | EFFORT [15 h]; Mechnical Skilled Labours [22.5 h] | 534.38 | B5 | 23 | MEP | C | MEP |
| HCMEF4Z4365 |  | F4 Z4 :Exhaust Fans |  | 15d | 2013-11-07 | 2013-11-28 | HCMEF4Z4355 | 45d | 0d | HCRA - Global | EFFORT [15 h]; Mechnical Skilled Labours [22.5 h] | 534.38 | B5 | 23 | MEP | C | MEP |
| HCMEF4Z4375 |  | F4 Z4 :Grills & Diffusers |  | 10d | 2014-02-06 | 2014-02-20 | HCMEF4Z4365 FS+50d, HCMEB1Z4350 | 45d | 0d | HCRA - Global | EFFORT [10 h]; Mechnical Skilled Labours [15 h] | 356.25 | B5 | 23 | MEP | C | MEP |
| HCMEF4Z4385 |  | F4 Z4 :Mechanical final Fix |  | 10d | 2014-02-20 | 2014-03-06 | HCMEF4Z4375, HCMEB1Z4360 | 45d | 4d | HCRA - Global | EFFORT [10 h]; Mechnical Skilled Labours [15 h] | 356.25 | B5 | 23 | MEP | C | MEP |
|  | 3 | **Water Network** |  |  | 2013-04-17 | 2013-11-12 |  |  |  |  |  |  |  |  |  |  |  |
| HCMEF4Z4395 |  | F4 Z4 :All Vertical Piping Works |  | 10d | 2013-04-17 | 2013-04-30 | HCMEF4Z4085 SS | 106.88d | 0d | HCRA - Global | EFFORT [10 h]; Mechnical Skilled Labours [15 h] | 356.25 | B5 | 22 | MEP | C | MEP |
| HCMEF4Z4405 |  | F4 Z4 :All Horizantal Piping Works |  | 30d | 2013-05-01 | 2013-06-11 | HCMEF4Z4395 | 106.88d | 0d | HCRA - Global | EFFORT [30 h]; Mechnical Skilled Labours [45 h] | 1,068.75 | B5 | 22 | MEP | C | MEP |
| HCMEF4Z4415 |  | F4 Z4 :Mechanical Final Fix |  | 20d | 2013-10-16 | 2013-11-12 | HCMEF4Z4405 FS+90d, HCMEB1Z4390 | 106.88d | 0d | HCRA - Global | EFFORT [20 h]; Mechnical Skilled Labours [30 h] | 712.5 | B5 | 22 | MEP | C | MEP |
|  | 5 | **Zone 5** |  |  | 2013-04-17 | 2014-04-15 |  |  |  |  |  |  |  |  |  |  |  |
|  | 7 | **Drainage** |  |  | 2013-04-17 | 2013-11-12 |  |  |  |  |  |  |  |  |  |  |  |
| HCMEF4Z5090 |  | F4 Z5 :All Vertical Piping Works |  | 10d | 2013-04-17 | 2013-04-30 | HCMEF4Z4085 SS | 95d | 0d | HCRA - Global | EFFORT [10 h]; Mechnical Skilled Labours [15 h] | 356.25 | B5 | 22 | MEP | C | MEP |
| HCMEF4Z5100 |  | F4 Z5 :All Horizantal Piping Works |  | 30d | 2013-05-01 | 2013-06-11 | HCMEF4Z5090 | 95d | 0d | HCRA - Global | EFFORT [30 h]; Mechnical Skilled Labours [45 h] | 1,068.75 | B5 | 22 | MEP | C | MEP |
| HCMEF4Z5110 |  | F4 Z5 :Mechanical Final Fix |  | 20d | 2013-10-16 | 2013-11-12 | HCMEF4Z5100 FS+90d, HCMEB1Z5085 | 95d | 0d | HCRA - Global | EFFORT [20 h]; Mechnical Skilled Labours [30 h] | 712.5 | B5 | 22 | MEP | C | MEP |
|  | 020 | **Electrical Works** |  |  | 2013-08-31 | 2014-04-15 |  |  |  |  |  |  |  |  |  |  |  |
| HCMEF4Z5180 |  | F4 Z5 :Blocks Start Date for All Parts | milestone | 0d | 2013-08-31 | 2013-08-31 | HCFWF4Z5163, HCFWF4Z51163 | 69d | 1.12d | HCRA - 1 - Normal Calendar |  |  | B5 | 26 | MEP | C | MEP |
| HCMEF4Z5240 |  | F4 Z5 :Electrical Coduits & Boards F.F for All Systems |  | 12d | 2013-09-02 | 2013-09-17 | HCMEF4Z5180 | 62.88d | 0d | HCRA - Global | EFFORT [12 h]; Electrical Skilled Labours [24 h] | 450 | B5 | 26 | MEP | C | MEP |
| HCMEF4Z5200 |  | F4 Z5 :Plastering Finish Date for All Parts | milestone | 0d | 2013-09-30 | 2013-09-30 | HCFWF4Z5172 | 115.38d | 44.38d | HCRA - 1 - Normal Calendar |  |  | B5 | 26 | MEP | C | MEP |
| HCMEF4Z5260 |  | F4 Z5 :Cable Tray Installation |  | 10d | 2013-11-20 | 2013-12-04 | HCMEF4Z5200, HCMEB1Z5235, HCMEB1Z6240 | 61d | 0d | HCRA - Global | EFFORT [10 h]; Electrical Skilled Labours [20 h] | 375 | B5 | 26 | MEP | C | MEP |
| HCMEF4Z5250 |  | F4 Z5 :Electrical Boards Seconed Fix |  | 12d | 2013-11-27 | 2013-12-12 | HCMEF4Z5240 FS+50d, HCMEF4Z5200, HCMEB1Z5225, HCMEB1Z6230 | 62.88d | 0d | HCRA - Global | EFFORT [12 h]; Electrical Skilled Labours [24 h] | 450 | B5 | 26 | MEP | C | MEP |
| HCMEF4Z5280 |  | F4 Z5 :Cable Laying |  | 10d | 2013-12-04 | 2013-12-18 | HCMEF4Z5260, HCMEB1Z5255, HCMEB1Z6260 | 61d | 0d | HCRA - Global | EFFORT [10 h]; Electrical Skilled Labours [20 h] | 375 | B5 | 26 | MEP | C | MEP |
| HCMEF4Z5190 |  | F4 Z5 :Tiling Finish Date for All Parts | milestone | 0d | 2013-12-29 | 2013-12-29 | HCFWF4Z5188, HCFWF4Z5186 | 45.12d | 20.62d | HCRA - 1 - Normal Calendar |  |  | B5 | 26 | MEP | C | MEP |
| HCMEF4Z5270 |  | F4 Z5 :Electrcial Wiring |  | 16d | 2014-01-23 | 2014-02-14 | HCMEF4Z5190, HCMEB1Z5245, HCMEB1Z6250 | 21.38d | 0d | HCRA - Global | EFFORT [20 h]; Electrical Skilled Labours [40 h] | 750 | B5 | 26 | MEP | C | MEP |
| HCMEF4Z5210 |  | F4 Z5 :Gypsum Boards Finish Date for All Parts | milestone | 0d | 2014-03-06 | 2014-03-06 | HCFWF4Z5154, HCFWF4Z5165 | 66.38d | 22d | HCRA - 1 - Normal Calendar |  |  | B5 | 26 | MEP | C | MEP |
| HCMEF4Z5290 |  | F4 Z5 :Electrical Final Fix for All Systems & Boards (Vertical Elements) |  | 10d | 2014-03-18 | 2014-04-01 | HCMEF4Z5280 FS+30d, HCMEF4Z5270 FS+22d, HCMEF4Z5250 FS+30d, HCMEF4Z5200 FS+60d | 37.38d | 0d | HCRA - Global | EFFORT [10 h]; Electrical Skilled Labours [20 h] | 375 | B5 | 26 | MEP | C | MEP |
| HCMEF4Z5300 |  | F4 Z5 :Electrical Final Fix for All Systems (Horizantel Elements) |  | 10d | 2014-04-01 | 2014-04-15 | HCMEF4Z5290, HCMEF4Z5270, HCMEF4Z5210 | 37.38d | 10.38d | HCRA - Global | EFFORT [10 h]; Electrical Skilled Labours [20 h] | 375 | B5 | 26 | MEP | C | MEP |

| ID | WBS | Activity | Type | Duration | Start | Finish | Predecessors | Total float | Free float | Calendar | Resources | Cost | Bill No. | Division No. | Responsibility | Phase Code | Trade |
| --- | --- | --- | --- | --- | --- | --- | --- | --- | --- | --- | --- | --- | --- | --- | --- | --- | --- |
|  | 2 | **Fire Fighting** |  |  | 2013-09-02 | 2014-01-31 |  |  |  |  |  |  |  |  |  |  |  |
| HCMEF4Z5120 |  | F4 Z5 :Horizontal F.F Piping Work |  | 20d | 2013-09-02 | 2013-09-27 | HCMEF4Z5180 | 68.88d | 0d | HCRA - Global | EFFORT [20 h]; Mechnical Skilled Labours [30 h] | 712.5 | B5 | 21 | MEP | C | MEP |
| HCMEF4Z5130 |  | F4 Z5 :Fire Hose Cabinets |  | 10d | 2013-09-30 | 2013-10-11 | HCMEF4Z5120 | 68.88d | 0d | HCRA - Global | EFFORT [10 h]; Mechnical Skilled Labours [15 h] | 356.25 | B5 | 21 | MEP | C | MEP |
| HCMEF4Z5140 |  | F4 Z5 :Sprinklers Final Fix |  | 10d | 2014-01-20 | 2014-01-31 | HCMEF4Z5130 FS+70d, HCMEB1Z5115, HCMEB1Z6340 | 68.88d | 0d | HCRA - Global | EFFORT [10 h]; Mechnical Skilled Labours [15 h] | 356.25 | B5 | 21 | MEP | C | MEP |
|  | 1 | **Air Conditioning** |  |  | 2013-09-27 | 2014-03-06 |  |  |  |  |  |  |  |  |  |  |  |
| HCMEF4Z5350 |  | F4 Z5 :Duct Installation& Dusct Accecories Installation, Fan coil Unit |  | 14d | 2013-09-27 | 2013-10-17 | HCMEF4Z5180, HCMEB1Z5325, HCMEB1Z6350 | 37d | 0d | HCRA - Global | EFFORT [20 h]; Mechnical Skilled Labours [30 h] | 712.5 | B5 | 23 | MEP | C | MEP |
| HCMEF4Z5360 |  | F4 Z5 :Duct Insulation Work |  | 15d | 2013-10-17 | 2013-11-07 | HCMEF4Z5350 | 45d | 0d | HCRA - Global | EFFORT [15 h]; Mechnical Skilled Labours [22.5 h] | 534.38 | B5 | 23 | MEP | C | MEP |
| HCMEF4Z5370 |  | F4 Z5 :Exhaust Fans |  | 15d | 2013-11-07 | 2013-11-28 | HCMEF4Z5360 | 45d | 0d | HCRA - Global | EFFORT [15 h]; Mechnical Skilled Labours [22.5 h] | 534.38 | B5 | 23 | MEP | C | MEP |
| HCMEF4Z5380 |  | F4 Z5 :Grills & Diffusers |  | 10d | 2014-02-06 | 2014-02-20 | HCMEF4Z5370 FS+50d, HCMEB1Z5355, HCMEB1Z5355 FF, HCMEB1Z6390 | 45d | 0d | HCRA - Global | EFFORT [10 h]; Mechnical Skilled Labours [15 h] | 356.25 | B5 | 23 | MEP | C | MEP |
| HCMEF4Z5390 |  | F4 Z5 :Mechanical final Fix |  | 10d | 2014-02-20 | 2014-03-06 | HCMEF4Z5380, HCMEB1Z6090, HCMEB1Z5365, HCMEB1Z6445 | 45d | 4d | HCRA - Global | EFFORT [10 h]; Mechnical Skilled Labours [15 h] | 356.25 | B5 | 23 | MEP | C | MEP |
|  | 3 | **Water Network** |  |  | 2013-04-17 | 2013-11-12 |  |  |  |  |  |  |  |  |  |  |  |
| HCMEF4Z5400 |  | F4 Z5 :All Vertical Piping Works |  | 10d | 2013-04-17 | 2013-04-30 | HCMEF4Z5090 SS | 146.88d | 0d | HCRA - Global | EFFORT [10 h]; Mechnical Skilled Labours [15 h] | 356.25 | B5 | 22 | MEP | C | MEP |
| HCMEF4Z5410 |  | F4 Z5 :All Horizantal Piping Works |  | 30d | 2013-05-01 | 2013-06-11 | HCMEF4Z5400 | 146.88d | 0d | HCRA - Global | EFFORT [30 h]; Mechnical Skilled Labours [45 h] | 1,068.75 | B5 | 22 | MEP | C | MEP |
| HCMEF4Z5420 |  | F4 Z5 :Mechanical Final Fix |  | 20d | 2013-10-16 | 2013-11-12 | HCMEF4Z5410 FS+90d, HCMEB2Z6460 | 146.88d | 119.88d | HCRA - Global | EFFORT [20 h]; Mechnical Skilled Labours [30 h] | 712.5 | B5 | 22 | MEP | C | MEP |
|  | 4 | **Fifth Floor** |  |  | 2013-04-28 | 2014-05-16 |  |  |  |  |  |  |  |  |  |  |  |
| HCMEF5000 |  | Start Fifth Floor EM Works | milestone | 0d | 2013-04-29 | 2013-04-29 | HCFWF5Z1153, HCFWF5Z11153 | 113d | 0d |  |  |  | B5 |  | MEP | C | MEP |
| HCMEF50000 |  | End Fifth Floor EM Works | milestone | 0d | 2014-05-08 | 2014-05-08 | HCMEF5Z1470, HCMEF5Z1485, HCMEF5Z1510, HCMEF5Z1525 | 22d |  |  |  |  | B5 |  | MEP | C | MEP |
|  | 4 | **Zone 1** |  |  | 2013-04-28 | 2014-05-13 |  |  |  |  |  |  |  |  |  |  |  |
|  | 7 | **Drainage** |  |  | 2013-04-29 | 2014-02-28 |  |  |  |  |  |  |  |  |  |  |  |
| HCMEF5Z1460 |  | F5 Z1 :All Vertical Piping Works |  | 10d | 2013-04-29 | 2013-05-10 | HCMEF5000 | 98.88d | 0d | HCRA - Global | EFFORT [10 h]; Mechnical Skilled Labours [15 h] | 356.25 | B5 | 22 | MEP | C | MEP |
| HCMEF5Z1465 |  | F5 Z1 :All Horizantal Piping Works |  | 30d | 2013-05-13 | 2013-06-21 | HCMEF5Z1460 | 98.88d | 70d | HCRA - Global | EFFORT [30 h]; Mechnical Skilled Labours [45 h] | 1,068.75 | B5 | 22 | MEP | C | MEP |
| HCMEF5Z1470 |  | F5 Z1 :Mechanical Final Fix |  | 20d | 2014-02-03 | 2014-02-28 | HCMEF5Z1465 FS+90d, HCMEF4Z1090 | 28.88d | 0d | HCRA - Global | EFFORT [20 h]; Mechnical Skilled Labours [30 h] | 712.5 | B5 | 22 | MEP | C | MEP |
|  | 020 | **Electrical Works** |  |  | 2013-04-28 | 2014-05-13 |  |  |  |  |  |  |  |  |  |  |  |
| HCMEF5Z1310 |  | F5 Z1 :Blocks Start Date for All Parts | milestone | 0d | 2013-04-28 | 2013-04-28 | HCFWF5Z1153, HCFWF5Z11153 | 172d | 0.12d | HCRA - 1 - Normal Calendar |  |  | B5 | 26 | MEP | C | MEP |
| HCMEF5Z1420 |  | F5 Z1 :Electrical Coduits & Boards F.F for All Systems |  | 12d | 2013-04-29 | 2013-05-14 | HCMEF5Z1310 | 143.88d | 24.88d | HCRA - Global | EFFORT [12 h]; Electrical Skilled Labours [24 h] | 450 | B5 | 26 | MEP | C | MEP |
| HCMEF5Z1320 |  | F5 Z1 :Plastering Finish Date for All Parts | milestone | 0d | 2013-07-23 | 2013-07-23 | HCFWF5Z1157 | 161d | 30d | HCRA - 1 - Normal Calendar |  |  | B5 | 26 | MEP | C | MEP |
| HCMEF5Z1425 |  | F5 Z1 :Electrical Boards Seconed Fix |  | 12d | 2013-08-27 | 2013-09-12 | HCMEF5Z1420 FS+50d, HCMEF5Z1320, HCMEF4Z1230 | 119d | 0d | HCRA - Global | EFFORT [12 h]; Electrical Skilled Labours [24 h] | 450 | B5 | 26 | MEP | C | MEP |
| HCMEF5Z1315 |  | F5 Z1 :Tiling Finish Date for All Parts | milestone | 0d | 2013-11-16 | 2013-11-16 | HCFWF5Z1171 | 73.38d | 71.5d | HCRA - 1 - Normal Calendar |  |  | B5 | 26 | MEP | C | MEP |
| HCMEF5Z1430 |  | F5 Z1 :Cable Tray Installation |  | 10d | 2014-01-29 | 2014-02-12 | HCMEF5Z1320, HCMEF4Z1240 | 0d |  | HCRA - Global | EFFORT [10 h]; Electrical Skilled Labours [20 h] | 375 | B5 | 26 | MEP | C | MEP |
| HCMEF5Z1435 |  | F5 Z1 :Electrcial Wiring |  | 20d | 2014-02-10 | 2014-03-07 | HCMEF5Z1315, HCMEF4Z1250 | 1.88d | 0d | HCRA - Global | EFFORT [20 h]; Electrical Skilled Labours [40 h] | 750 | B5 | 26 | MEP | C | MEP |
| HCMEF5Z1440 |  | F5 Z1 :Cable Laying |  | 10d | 2014-02-18 | 2014-03-04 | HCMEF5Z1430, HCMEF4Z1260 | 0d |  | HCRA - Global | EFFORT [10 h]; Electrical Skilled Labours [20 h] | 375 | B5 | 26 | MEP | C | MEP |
| HCMEF5Z1405 |  | F5 Z1 :Gypsum Boards Finish Date for All Parts | milestone | 0d | 2014-03-24 | 2014-03-24 | HCFWF5Z1172, HCFWF5Z1177 | 51d | 31d | HCRA - 1 - Normal Calendar |  |  | B5 | 26 | MEP | C | MEP |
| HCMEF5Z1445 |  | F5 Z1 :Electrical Final Fix for All Systems & Boards (Vertical Elements) |  | 10d | 2014-04-15 | 2014-04-29 | HCMEF5Z1440 FS+30d, HCMEF5Z1435 FS+22d, HCMEF5Z1425 FS+30d, HCMEF5Z1320 FS+60d | 17d | 0d | HCRA - Global | EFFORT [10 h]; Electrical Skilled Labours [20 h] | 375 | B5 | 26 | MEP | C | MEP |
| HCMEF5Z1450 |  | F5 Z1 :Electrical Final Fix for All Systems (Horizantel Elements) |  | 10d | 2014-04-29 | 2014-05-13 | HCMEF5Z1445, HCMEF5Z1435, HCMEF5Z1405 | 17d | 4d | HCRA - Global | EFFORT [10 h]; Electrical Skilled Labours [20 h] | 375 | B5 | 26 | MEP | C | MEP |

| ID | WBS | Activity | Type | Duration | Start | Finish | Predecessors | Total float | Free float | Calendar | Resources | Cost | Bill No. | Division No. | Responsibility | Phase Code | Trade |
| --- | --- | --- | --- | --- | --- | --- | --- | --- | --- | --- | --- | --- | --- | --- | --- | --- | --- |
|  | 2 | **Fire Fighting** |  |  | 2013-04-29 | 2014-03-24 |  |  |  |  |  |  |  |  |  |  |  |
| HCMEF5Z1475 |  | F5 Z1 :Horizontal F.F Piping Work |  | 20d | 2013-04-29 | 2013-05-24 | HCMEF5Z1310 | 158.88d | 0d | HCRA - Global | EFFORT [20 h]; Mechnical Skilled Labours [30 h] | 712.5 | B5 | 21 | MEP | C | MEP |
| HCMEF5Z1480 |  | F5 Z1 :Fire Hose Cabinets |  | 10d | 2013-05-27 | 2013-06-07 | HCMEF5Z1475 | 158.88d | 125.88d | HCRA - Global | EFFORT [10 h]; Mechnical Skilled Labours [15 h] | 356.25 | B5 | 21 | MEP | C | MEP |
| HCMEF5Z1485 |  | F5 Z1 :Sprinklers Final Fix |  | 10d | 2014-03-10 | 2014-03-24 | HCMEF5Z1480 FS+70d, HCMEF4Z1120 | 33d | 0d | HCRA - Global | EFFORT [10 h]; Mechnical Skilled Labours [15 h] | 356.25 | B5 | 21 | MEP | C | MEP |
|  | 1 | **Air Conditioning** |  |  | 2013-11-04 | 2014-05-08 |  |  |  |  |  |  |  |  |  |  |  |
| HCMEF5Z1490 |  | F5 Z1 :Duct Installation& Dusct Accecories Installation, Fan coil Unit |  | 10d | 2013-11-04 | 2013-11-18 | HCMEF5Z1310, HCMEF4Z1330 | 23d | 0d | HCRA - Global | EFFORT [20 h]; Mechnical Skilled Labours [30 h] | 712.5 | B5 | 23 | MEP | C | MEP |
| HCMEF5Z1495 |  | F5 Z1 :Duct Insulation Work |  | 15d | 2013-11-18 | 2013-12-09 | HCMEF5Z1490 | 23d | 0d | HCRA - Global | EFFORT [15 h]; Mechnical Skilled Labours [22.5 h] | 534.38 | B5 | 23 | MEP | C | MEP |
| HCMEF5Z1500 |  | F5 Z1 :Exhaust Fans |  | 15d | 2013-12-09 | 2013-12-30 | HCMEF5Z1495 | 23d | 21d | HCRA - Global | EFFORT [15 h]; Mechnical Skilled Labours [22.5 h] | 534.38 | B5 | 23 | MEP | C | MEP |
| HCMEF5Z1505 |  | F5 Z1 :Grills & Diffusers |  | 10d | 2014-04-08 | 2014-04-22 | HCMEF5Z1500 FS+50d, HCMEF4Z1360 | 2d | 0d | HCRA - Global | EFFORT [10 h]; Mechnical Skilled Labours [15 h] | 356.25 | B5 | 23 | MEP | C | MEP |
| HCMEF5Z1510 |  | F5 Z1 :Mechanical final Fix |  | 10d | 2014-04-24 | 2014-05-08 | HCMEF5Z1505, HCMEF4Z1370 | 0d |  | HCRA - Global | EFFORT [10 h]; Mechnical Skilled Labours [15 h] | 356.25 | B5 | 23 | MEP | C | MEP |
|  | 3 | **Water Network** |  |  | 2013-04-29 | 2014-02-28 |  |  |  |  |  |  |  |  |  |  |  |
| HCMEF5Z1515 |  | F5 Z1 :All Vertical Piping Works |  | 10d | 2013-04-29 | 2013-05-10 | HCMEF5Z1460 SS | 98.88d | 0d | HCRA - Global | EFFORT [10 h]; Mechnical Skilled Labours [15 h] | 356.25 | B5 | 22 | MEP | C | MEP |
| HCMEF5Z1520 |  | F5 Z1 :All Horizantal Piping Works |  | 30d | 2013-05-13 | 2013-06-21 | HCMEF5Z1515 | 98.88d | 70d | HCRA - Global | EFFORT [30 h]; Mechnical Skilled Labours [45 h] | 1,068.75 | B5 | 22 | MEP | C | MEP |
| HCMEF5Z1525 |  | F5 Z1 :Mechanical Final Fix |  | 20d | 2014-02-03 | 2014-02-28 | HCMEF5Z1520 FS+90d, HCMEF4Z1400 | 28.88d | 0d | HCRA - Global | EFFORT [20 h]; Mechnical Skilled Labours [30 h] | 712.5 | B5 | 22 | MEP | C | MEP |
|  | 1 | **Zone 2** |  |  | 2013-04-29 | 2014-05-07 |  |  |  |  |  |  |  |  |  |  |  |
|  | 7 | **Drainage** |  |  | 2013-04-29 | 2014-02-28 |  |  |  |  |  |  |  |  |  |  |  |
| HCMEF5Z2465 |  | F5 Z2 :All Vertical Piping Works |  | 10d | 2013-04-29 | 2013-05-10 | HCMEF5Z1460 SS | 107d | 0d | HCRA - Global | EFFORT [10 h]; Mechnical Skilled Labours [15 h] | 356.25 | B5 | 22 | MEP | C | MEP |
| HCMEF5Z2470 |  | F5 Z2 :All Horizantal Piping Works |  | 30d | 2013-05-13 | 2013-06-21 | HCMEF5Z2465 | 118.88d | 70d | HCRA - Global | EFFORT [30 h]; Mechnical Skilled Labours [45 h] | 1,068.75 | B5 | 22 | MEP | C | MEP |
| HCMEF5Z2475 |  | F5 Z2 :Mechanical Final Fix |  | 20d | 2014-02-03 | 2014-02-28 | HCMEF5Z2470 FS+90d, HCMEF4Z2095 | 48.88d | 0d | HCRA - Global | EFFORT [20 h]; Mechnical Skilled Labours [30 h] | 712.5 | B5 | 22 | MEP | C | MEP |
|  | 020 | **Electrical Works** |  |  | 2013-06-25 | 2014-05-07 |  |  |  |  |  |  |  |  |  |  |  |
| HCMEF5Z2315 |  | F5 Z2 :Blocks Start Date for All Parts | milestone | 0d | 2013-06-25 | 2013-06-25 | HCFWF5Z2157, HCFWF5Z21157 | 133d | 0d | HCRA - 1 - Normal Calendar |  |  | B5 | 26 | MEP | C | MEP |
| HCMEF5Z2425 |  | F5 Z2 :Electrical Coduits & Boards F.F for All Systems |  | 12d | 2013-06-25 | 2013-07-11 | HCMEF5Z2315 | 111d | 14d | HCRA - Global | EFFORT [12 h]; Electrical Skilled Labours [24 h] | 450 | B5 | 26 | MEP | C | MEP |
| HCMEF5Z2325 |  | F5 Z2 :Plastering Finish Date for All Parts | milestone | 0d | 2013-09-30 | 2013-09-30 | HCFWF5Z2156 | 115d | 8d | HCRA - 1 - Normal Calendar |  |  | B5 | 26 | MEP | C | MEP |
| HCMEF5Z2430 |  | F5 Z2 :Electrical Boards Seconed Fix |  | 12d | 2013-10-09 | 2013-10-25 | HCMEF5Z2425 FS+50d, HCMEF5Z2325, HCMEF4Z2235 | 97d | 5.12d | HCRA - Global | EFFORT [12 h]; Electrical Skilled Labours [24 h] | 450 | B5 | 26 | MEP | C | MEP |
| HCMEF5Z2320 |  | F5 Z2 :Tiling Finish Date for All Parts | milestone | 0d | 2013-11-17 | 2013-11-17 | HCFWF5Z2168 | 72d | 40.12d | HCRA - 1 - Normal Calendar |  |  | B5 | 26 | MEP | C | MEP |
| HCMEF5Z2440 |  | F5 Z2 :Electrcial Wiring |  | 20d | 2014-01-06 | 2014-01-31 | HCMEF5Z2320, HCMEF4Z2255 | 26.88d | 0d | HCRA - Global | EFFORT [20 h]; Electrical Skilled Labours [40 h] | 750 | B5 | 26 | MEP | C | MEP |
| HCMEF5Z2435 |  | F5 Z2 :Cable Tray Installation |  | 10d | 2014-01-29 | 2014-02-12 | HCMEF5Z2325, HCMEF4Z2245 | 11d | 0d | HCRA - Global | EFFORT [10 h]; Electrical Skilled Labours [20 h] | 375 | B5 | 26 | MEP | C | MEP |
| HCMEF5Z2445 |  | F5 Z2 :Cable Laying |  | 10d | 2014-02-12 | 2014-02-26 | HCMEF5Z2435, HCMEF4Z2265 | 11d | 0d | HCRA - Global | EFFORT [10 h]; Electrical Skilled Labours [20 h] | 375 | B5 | 26 | MEP | C | MEP |
| HCMEF5Z2410 |  | F5 Z2 :Gypsum Boards Finish Date for All Parts | milestone | 0d | 2014-03-23 | 2014-03-23 | HCFWF5Z2170 | 52d | 27d | HCRA - 1 - Normal Calendar |  |  | B5 | 26 | MEP | C | MEP |
| HCMEF5Z2450 |  | F5 Z2 :Electrical Final Fix for All Systems & Boards (Vertical Elements) |  | 10d | 2014-04-09 | 2014-04-23 | HCMEF5Z2445 FS+30d, HCMEF5Z2440 FS+22d, HCMEF5Z2430 FS+30d, HCMEF5Z2325 FS+60d | 21d | 0d | HCRA - Global | EFFORT [10 h]; Electrical Skilled Labours [20 h] | 375 | B5 | 26 | MEP | C | MEP |
| HCMEF5Z2455 |  | F5 Z2 :Electrical Final Fix for All Systems (Horizantel Elements) |  | 10d | 2014-04-23 | 2014-05-07 | HCMEF5Z2450, HCMEF5Z2440, HCMEF5Z2410 | 21d | 8d | HCRA - Global | EFFORT [10 h]; Electrical Skilled Labours [20 h] | 375 | B5 | 26 | MEP | C | MEP |

| ID | WBS | Activity | Type | Duration | Start | Finish | Predecessors | Total float | Free float | Calendar | Resources | Cost | Bill No. | Division No. | Responsibility | Phase Code | Trade |
| --- | --- | --- | --- | --- | --- | --- | --- | --- | --- | --- | --- | --- | --- | --- | --- | --- | --- |
|  | 2 | **Fire Fighting** |  |  | 2013-06-25 | 2014-03-24 |  |  |  |  |  |  |  |  |  |  |  |
| HCMEF5Z2480 |  | F5 Z2 :Horizontal F.F Piping Work |  | 20d | 2013-06-25 | 2013-07-23 | HCMEF5Z2315 | 127d | 0d | HCRA - Global | EFFORT [20 h]; Mechnical Skilled Labours [30 h] | 712.5 | B5 | 21 | MEP | C | MEP |
| HCMEF5Z2485 |  | F5 Z2 :Fire Hose Cabinets |  | 10d | 2013-07-23 | 2013-08-06 | HCMEF5Z2480 | 127d | 84d | HCRA - Global | EFFORT [10 h]; Mechnical Skilled Labours [15 h] | 356.25 | B5 | 21 | MEP | C | MEP |
| HCMEF5Z2490 |  | F5 Z2 :Sprinklers Final Fix |  | 10d | 2014-03-10 | 2014-03-24 | HCMEF5Z2485 FS+70d, HCMEF4Z2125 | 43d | 0d | HCRA - Global | EFFORT [10 h]; Mechnical Skilled Labours [15 h] | 356.25 | B5 | 21 | MEP | C | MEP |
|  | 1 | **Air Conditioning** |  |  | 2013-10-21 | 2014-05-01 |  |  |  |  |  |  |  |  |  |  |  |
| HCMEF5Z2495 |  | F5 Z2 :Duct Installation& Dusct Accecories Installation, Fan coil Unit |  | 8d | 2013-10-21 | 2013-10-31 | HCMEF5Z2315, HCMEF4Z2335 | 33.12d | 0d | HCRA - Global | EFFORT [20 h]; Mechnical Skilled Labours [30 h] | 712.5 | B5 | 23 | MEP | C | MEP |
| HCMEF5Z2500 |  | F5 Z2 :Duct Insulation Work |  | 15d | 2013-10-31 | 2013-11-21 | HCMEF5Z2495 | 33.12d | 0d | HCRA - Global | EFFORT [15 h]; Mechnical Skilled Labours [22.5 h] | 534.38 | B5 | 23 | MEP | C | MEP |
| HCMEF5Z2505 |  | F5 Z2 :Exhaust Fans |  | 15d | 2013-11-21 | 2013-12-12 | HCMEF5Z2500 | 33.12d | 30d | HCRA - Global | EFFORT [15 h]; Mechnical Skilled Labours [22.5 h] | 534.38 | B5 | 23 | MEP | C | MEP |
| HCMEF5Z2510 |  | F5 Z2 :Grills & Diffusers |  | 10d | 2014-04-03 | 2014-04-17 | HCMEF5Z2505 FS+50d, HCMEF4Z2365 | 3.12d | 0d | HCRA - Global | EFFORT [10 h]; Mechnical Skilled Labours [15 h] | 356.25 | B5 | 23 | MEP | C | MEP |
| HCMEF5Z2515 |  | F5 Z2 :Mechanical final Fix |  | 10d | 2014-04-17 | 2014-05-01 | HCMEF5Z2510, HCMEF4Z2375 | 3.12d | 0d | HCRA - Global | EFFORT [10 h]; Mechnical Skilled Labours [15 h] | 356.25 | B5 | 23 | MEP | C | MEP |
|  | 3 | **Water Network** |  |  | 2013-04-29 | 2014-02-28 |  |  |  |  |  |  |  |  |  |  |  |
| HCMEF5Z2520 |  | F5 Z2 :All Vertical Piping Works |  | 10d | 2013-04-29 | 2013-05-10 | HCMEF5Z2465 SS | 118.88d | 0d | HCRA - Global | EFFORT [10 h]; Mechnical Skilled Labours [15 h] | 356.25 | B5 | 22 | MEP | C | MEP |
| HCMEF5Z2525 |  | F5 Z2 :All Horizantal Piping Works |  | 30d | 2013-05-13 | 2013-06-21 | HCMEF5Z2520 | 118.88d | 70d | HCRA - Global | EFFORT [30 h]; Mechnical Skilled Labours [45 h] | 1,068.75 | B5 | 22 | MEP | C | MEP |
| HCMEF5Z2530 |  | F5 Z2 :Mechanical Final Fix |  | 20d | 2014-02-03 | 2014-02-28 | HCMEF5Z2525 FS+90d, HCMEF4Z2405 | 48.88d | 0d | HCRA - Global | EFFORT [20 h]; Mechnical Skilled Labours [30 h] | 712.5 | B5 | 22 | MEP | C | MEP |
|  | 2 | **Zone 3** |  |  | 2013-04-29 | 2014-05-16 |  |  |  |  |  |  |  |  |  |  |  |
|  | 4 | **Conveying System** |  |  |  |  |  |  |  |  |  |  |  |  |  |  |  |
|  | 7 | **Drainage** |  |  | 2013-04-29 | 2014-02-28 |  |  |  |  |  |  |  |  |  |  |  |
| HCMEF5Z3470 |  | F5 Z3 :All Vertical Piping Works |  | 10d | 2013-04-29 | 2013-05-10 | HCMEF5Z2465 SS | 107d | 0d | HCRA - Global | EFFORT [10 h]; Mechnical Skilled Labours [15 h] | 356.25 | B5 | 22 | MEP | C | MEP |
| HCMEF5Z3475 |  | F5 Z3 :All Horizantal Piping Works |  | 30d | 2013-05-13 | 2013-06-21 | HCMEF5Z3470 | 118.88d | 70d | HCRA - Global | EFFORT [30 h]; Mechnical Skilled Labours [45 h] | 1,068.75 | B5 | 22 | MEP | C | MEP |
| HCMEF5Z3480 |  | F5 Z3 :Mechanical Final Fix |  | 20d | 2014-02-03 | 2014-02-28 | HCMEF5Z3475 FS+90d, HCMEF4Z3100 | 48.88d | 0d | HCRA - Global | EFFORT [20 h]; Mechnical Skilled Labours [30 h] | 712.5 | B5 | 22 | MEP | C | MEP |
|  | 020 | **Electrical Works** |  |  | 2013-08-28 | 2014-05-16 |  |  |  |  |  |  |  |  |  |  |  |
| HCMEF5Z3320 |  | F5 Z3 :Blocks Start Date for All Parts | milestone | 0d | 2013-08-28 | 2013-08-28 | HCFWF5Z3206, HCFWF5Z31206 | 90.12d | 0d | HCRA - 1 - Normal Calendar |  |  | B5 | 26 | MEP | C | MEP |
| HCMEF5Z3430 |  | F5 Z3 :Electrical Coduits & Boards F.F for All Systems |  | 12d | 2013-08-28 | 2013-09-13 | HCMEF5Z3320 | 77d | 20.12d | HCRA - Global | EFFORT [12 h]; Electrical Skilled Labours [24 h] | 450 | B5 | 26 | MEP | C | MEP |
| HCMEF5Z3330 |  | F5 Z3 :Plastering Finish Date for All Parts | milestone | 0d | 2013-12-22 | 2013-12-22 | HCFWF5Z3159 | 57d | 0.12d | HCRA - 1 - Normal Calendar |  |  | B5 | 26 | MEP | C | MEP |
| HCMEF5Z3435 |  | F5 Z3 :Electrical Boards Seconed Fix |  | 12d | 2013-12-23 | 2014-01-07 | HCMEF5Z3430 FS+50d, HCMEF5Z3330, HCMEF4Z3240 | 56.88d | 10.88d | HCRA - Global | EFFORT [12 h]; Electrical Skilled Labours [24 h] | 450 | B5 | 26 | MEP | C | MEP |
| HCMEF5Z3440 |  | F5 Z3 :Cable Tray Installation |  | 10d | 2014-01-29 | 2014-02-12 | HCMEF5Z3330, HCMEF4Z3250 | 21d | 0d | HCRA - Global | EFFORT [10 h]; Electrical Skilled Labours [20 h] | 375 | B5 | 26 | MEP | C | MEP |
| HCMEF5Z3450 |  | F5 Z3 :Cable Laying |  | 10d | 2014-02-12 | 2014-02-26 | HCMEF5Z3440, HCMEF4Z3270 | 21d | 0d | HCRA - Global | EFFORT [10 h]; Electrical Skilled Labours [20 h] | 375 | B5 | 26 | MEP | C | MEP |
| HCMEF5Z3325 |  | F5 Z3 :Tiling Finish Date for All Parts | milestone | 0d | 2014-03-05 | 2014-03-05 | HCFWF5Z3231 | 22d | 0d | HCRA - 1 - Normal Calendar |  |  | B5 | 26 | MEP | C | MEP |
| HCMEF5Z3445 |  | F5 Z3 :Electrcial Wiring |  | 6d | 2014-03-05 | 2014-03-13 | HCMEF5Z3325, HCMEF4Z3260 | 18d | 0d | HCRA - Global | EFFORT [20 h]; Electrical Skilled Labours [40 h] | 750 | B5 | 26 | MEP | C | MEP |
| HCMEF5Z3455 |  | F5 Z3 :Electrical Final Fix for All Systems & Boards (Vertical Elements) |  | 10d | 2014-04-14 | 2014-04-28 | HCMEF5Z3450 FS+30d, HCMEF5Z3445 FS+22d, HCMEF5Z3435 FS+30d, HCMEF5Z3330 FS+60d | 18d | 4.12d | HCRA - Global | EFFORT [10 h]; Electrical Skilled Labours [20 h] | 375 | B5 | 26 | MEP | C | MEP |
| HCMEF5Z3415 |  | F5 Z3 :Gypsum Boards Finish Date for All Parts | milestone | 0d | 2014-05-03 | 2014-05-03 | HCFWF5Z3190, HCFWF5Z3236 | 17d | 1.12d | HCRA - 1 - Normal Calendar |  |  | B5 | 26 | MEP | C | MEP |
| HCMEF5Z3460 |  | F5 Z3 :Electrical Final Fix for All Systems (Horizantel Elements) |  | 10d | 2014-05-05 | 2014-05-16 | HCMEF5Z3455, HCMEF5Z3445, HCMEF5Z3415 | 13.88d | 0.88d | HCRA - Global | EFFORT [10 h]; Electrical Skilled Labours [20 h] | 375 | B5 | 26 | MEP | C | MEP |

| ID | WBS | Activity | Type | Duration | Start | Finish | Predecessors | Total float | Free float | Calendar | Resources | Cost | Bill No. | Division No. | Responsibility | Phase Code | Trade |
| --- | --- | --- | --- | --- | --- | --- | --- | --- | --- | --- | --- | --- | --- | --- | --- | --- | --- |
|  | 2 | **Fire Fighting** |  |  | 2013-08-28 | 2014-03-24 |  |  |  |  |  |  |  |  |  |  |  |
| HCMEF5Z3485 |  | F5 Z3 :Horizontal F.F Piping Work |  | 20d | 2013-08-28 | 2013-09-25 | HCMEF5Z3320 | 81d | 0d | HCRA - Global | EFFORT [20 h]; Mechnical Skilled Labours [30 h] | 712.5 | B5 | 21 | MEP | C | MEP |
| HCMEF5Z3490 |  | F5 Z3 :Fire Hose Cabinets |  | 10d | 2013-09-25 | 2013-10-09 | HCMEF5Z3485 | 81d | 38d | HCRA - Global | EFFORT [10 h]; Mechnical Skilled Labours [15 h] | 356.25 | B5 | 21 | MEP | C | MEP |
| HCMEF5Z3495 |  | F5 Z3 :Sprinklers Final Fix |  | 10d | 2014-03-10 | 2014-03-24 | HCMEF5Z3490 FS+70d, HCMEF4Z3130 | 43d | 0d | HCRA - Global | EFFORT [10 h]; Mechnical Skilled Labours [15 h] | 356.25 | B5 | 21 | MEP | C | MEP |
|  | 1 | **Air Conditioning** |  |  | 2013-10-31 | 2014-05-01 |  |  |  |  |  |  |  |  |  |  |  |
| HCMEF5Z3500 |  | F5 Z3 :Duct Installation& Dusct Accecories Installation, Fan coil Unit |  | 8d | 2013-10-31 | 2013-11-12 | HCMEF5Z3320, HCMEF4Z3340 | 37d | 0d | HCRA - Global | EFFORT [20 h]; Mechnical Skilled Labours [30 h] | 712.5 | B5 | 23 | MEP | C | MEP |
| HCMEF5Z3505 |  | F5 Z3 :Duct Insulation Work |  | 15d | 2013-11-12 | 2013-12-03 | HCMEF5Z3500 | 37d | 0d | HCRA - Global | EFFORT [15 h]; Mechnical Skilled Labours [22.5 h] | 534.38 | B5 | 23 | MEP | C | MEP |
| HCMEF5Z3510 |  | F5 Z3 :Exhaust Fans |  | 15d | 2013-12-03 | 2013-12-24 | HCMEF5Z3505 | 37d | 22d | HCRA - Global | EFFORT [15 h]; Mechnical Skilled Labours [22.5 h] | 534.38 | B5 | 23 | MEP | C | MEP |
| HCMEF5Z3515 |  | F5 Z3 :Grills & Diffusers |  | 10d | 2014-04-03 | 2014-04-17 | HCMEF5Z3510 FS+50d, HCMEF4Z3370 | 15d | 0d | HCRA - Global | EFFORT [10 h]; Mechnical Skilled Labours [15 h] | 356.25 | B5 | 23 | MEP | C | MEP |
| HCMEF5Z3520 |  | F5 Z3 :Mechanical final Fix |  | 10d | 2014-04-17 | 2014-05-01 | HCMEF5Z3515, HCMEF4Z3380 | 15d | 0d | HCRA - Global | EFFORT [10 h]; Mechnical Skilled Labours [15 h] | 356.25 | B5 | 23 | MEP | C | MEP |
|  | 3 | **Water Network** |  |  | 2013-04-29 | 2014-02-28 |  |  |  |  |  |  |  |  |  |  |  |
| HCMEF5Z3525 |  | F5 Z3 :All Vertical Piping Works |  | 10d | 2013-04-29 | 2013-05-10 | HCMEF5Z3470 SS | 118.88d | 0d | HCRA - Global | EFFORT [10 h]; Mechnical Skilled Labours [15 h] | 356.25 | B5 | 22 | MEP | C | MEP |
| HCMEF5Z3530 |  | F5 Z3 :All Horizantal Piping Works |  | 30d | 2013-05-13 | 2013-06-21 | HCMEF5Z3525 | 118.88d | 70d | HCRA - Global | EFFORT [30 h]; Mechnical Skilled Labours [45 h] | 1,068.75 | B5 | 22 | MEP | C | MEP |
| HCMEF5Z3535 |  | F5 Z3 :Mechanical Final Fix |  | 20d | 2014-02-03 | 2014-02-28 | HCMEF5Z3530 FS+90d, HCMEF4Z3410 | 48.88d | 0d | HCRA - Global | EFFORT [20 h]; Mechnical Skilled Labours [30 h] | 712.5 | B5 | 22 | MEP | C | MEP |
|  | 3 | **Zone 4** |  |  | 2013-04-29 | 2014-03-26 |  |  |  |  |  |  |  |  |  |  |  |
|  | 7 | **Drainage** |  |  | 2013-04-29 | 2013-12-10 |  |  |  |  |  |  |  |  |  |  |  |
| HCMEF5Z4475 |  | F5 Z4 :All Vertical Piping Works |  | 10d | 2013-04-29 | 2013-05-10 | HCMEF5Z3470 SS | 107d | 0d | HCRA - Global | EFFORT [10 h]; Mechnical Skilled Labours [15 h] | 356.25 | B5 | 22 | MEP | C | MEP |
| HCMEF5Z4480 |  | F5 Z4 :All Horizantal Piping Works |  | 30d | 2013-05-13 | 2013-06-21 | HCMEF5Z4475 | 118.88d | 12d | HCRA - Global | EFFORT [30 h]; Mechnical Skilled Labours [45 h] | 1,068.75 | B5 | 22 | MEP | C | MEP |
| HCMEF5Z4485 |  | F5 Z4 :Mechanical Final Fix |  | 20d | 2013-11-13 | 2013-12-10 | HCMEF5Z4480 FS+90d, HCMEF4Z4105 | 106.88d | 0d | HCRA - Global | EFFORT [20 h]; Mechnical Skilled Labours [30 h] | 712.5 | B5 | 22 | MEP | C | MEP |
|  | 020 | **Electrical Works** |  |  | 2013-09-11 | 2014-03-24 |  |  |  |  |  |  |  |  |  |  |  |
| HCMEF5Z4325 |  | F5 Z4 :Blocks Start Date for All Parts | milestone | 0d | 2013-09-11 | 2013-09-11 | HCFWF5Z4082, HCFWGFZ4082 | 66d | 0d | HCRA - 1 - Normal Calendar |  |  | B5 | 26 | MEP | C | MEP |
| HCMEF5Z4435 |  | F5 Z4 :Electrical Coduits & Boards F.F for All Systems |  | 12d | 2013-09-11 | 2013-09-27 | HCMEF5Z4325 | 55d | 0d | HCRA - Global | EFFORT [12 h]; Electrical Skilled Labours [24 h] | 450 | B5 | 26 | MEP | C | MEP |
| HCMEF5Z4335 |  | F5 Z4 :Plastering Finish Date for All Parts | milestone | 0d | 2013-10-12 | 2013-10-12 | HCFWF5Z4281 | 105.38d | 45.38d | HCRA - 1 - Normal Calendar |  |  | B5 | 26 | MEP | C | MEP |
| HCMEF5Z4330 |  | F5 Z4 :Tiling Finish Date for All Parts | milestone | 0d | 2013-11-28 | 2013-11-28 | HCFWF5Z4293 | 62.38d | 23.38d | HCRA - 1 - Normal Calendar |  |  | B5 | 26 | MEP | C | MEP |
| HCMEF5Z4445 |  | F5 Z4 :Cable Tray Installation |  | 10d | 2013-12-04 | 2013-12-18 | HCMEF5Z4335, HCMEF4Z4255 | 51d | 0d | HCRA - Global | EFFORT [10 h]; Electrical Skilled Labours [20 h] | 375 | B5 | 26 | MEP | C | MEP |
| HCMEF5Z4440 |  | F5 Z4 :Electrical Boards Seconed Fix |  | 12d | 2013-12-06 | 2013-12-24 | HCMEF5Z4435 FS+50d, HCMEF5Z4335, HCMEF4Z4245 | 55d | 14d | HCRA - Global | EFFORT [12 h]; Electrical Skilled Labours [24 h] | 450 | B5 | 26 | MEP | C | MEP |
| HCMEF5Z4455 |  | F5 Z4 :Cable Laying |  | 10d | 2013-12-18 | 2014-01-01 | HCMEF5Z4445, HCMEF4Z4275 | 51d | 8d | HCRA - Global | EFFORT [10 h]; Electrical Skilled Labours [20 h] | 375 | B5 | 26 | MEP | C | MEP |
| HCMEF5Z4450 |  | F5 Z4 :Electrcial Wiring |  | 20d | 2013-12-26 | 2014-01-23 | HCMEF5Z4330, HCMEF4Z4265 | 33d | 0d | HCRA - Global | EFFORT [20 h]; Electrical Skilled Labours [40 h] | 750 | B5 | 26 | MEP | C | MEP |
| HCMEF5Z4420 |  | F5 Z4 :Gypsum Boards Finish Date for All Parts | milestone | 0d | 2014-02-09 | 2014-02-09 | HCFWF5Z4295 | 88d | 25d | HCRA - 1 - Normal Calendar |  |  | B5 | 26 | MEP | C | MEP |
| HCMEF5Z4460 |  | F5 Z4 :Electrical Final Fix for All Systems & Boards (Vertical Elements) |  | 10d | 2014-02-24 | 2014-03-10 | HCMEF5Z4455 FS+30d, HCMEF5Z4450 FS+22d, HCMEF5Z4440 FS+30d, HCMEF5Z4335 FS+60d | 53d | 0d | HCRA - Global | EFFORT [10 h]; Electrical Skilled Labours [20 h] | 375 | B5 | 26 | MEP | C | MEP |
| HCMEF5Z4465 |  | F5 Z4 :Electrical Final Fix for All Systems (Horizantel Elements) |  | 10d | 2014-03-10 | 2014-03-24 | HCMEF5Z4460, HCMEF5Z4450, HCMEF5Z4420 | 53d | 40d | HCRA - Global | EFFORT [10 h]; Electrical Skilled Labours [20 h] | 375 | B5 | 26 | MEP | C | MEP |

| ID | WBS | Activity | Type | Duration | Start | Finish | Predecessors | Total float | Free float | Calendar | Resources | Cost | Bill No. | Division No. | Responsibility | Phase Code | Trade |
| --- | --- | --- | --- | --- | --- | --- | --- | --- | --- | --- | --- | --- | --- | --- | --- | --- | --- |
|  | 2 | **Fire Fighting** |  |  | 2013-09-11 | 2014-02-12 |  |  |  |  |  |  |  |  |  |  |  |
| HCMEF5Z4490 |  | F5 Z4 :Horizontal F.F Piping Work |  | 20d | 2013-09-11 | 2013-10-09 | HCMEF5Z4325 | 71d | 0d | HCRA - Global | EFFORT [20 h]; Mechnical Skilled Labours [30 h] | 712.5 | B5 | 21 | MEP | C | MEP |
| HCMEF5Z4495 |  | F5 Z4 :Fire Hose Cabinets |  | 10d | 2013-10-09 | 2013-10-23 | HCMEF5Z4490 | 71d | 0d | HCRA - Global | EFFORT [10 h]; Mechnical Skilled Labours [15 h] | 356.25 | B5 | 21 | MEP | C | MEP |
| HCMEF5Z4500 |  | F5 Z4 :Sprinklers Final Fix |  | 10d | 2014-01-29 | 2014-02-12 | HCMEF5Z4495 FS+70d, HCMEF4Z4135 | 71d | 0d | HCRA - Global | EFFORT [10 h]; Mechnical Skilled Labours [15 h] | 356.25 | B5 | 21 | MEP | C | MEP |
|  | 1 | **Air Conditioning** |  |  | 2013-10-17 | 2014-03-26 |  |  |  |  |  |  |  |  |  |  |  |
| HCMEF5Z4505 |  | F5 Z4 :Duct Installation& Dusct Accecories Installation, Fan coil Unit |  | 14d | 2013-10-17 | 2013-11-06 | HCMEF5Z4325, HCMEF4Z4345 | 37d | 0d | HCRA - Global | EFFORT [20 h]; Mechnical Skilled Labours [30 h] | 712.5 | B5 | 23 | MEP | C | MEP |
| HCMEF5Z4510 |  | F5 Z4 :Duct Insulation Work |  | 15d | 2013-11-06 | 2013-11-27 | HCMEF5Z4505 | 41d | 0d | HCRA - Global | EFFORT [15 h]; Mechnical Skilled Labours [22.5 h] | 534.38 | B5 | 23 | MEP | C | MEP |
| HCMEF5Z4515 |  | F5 Z4 :Exhaust Fans |  | 15d | 2013-11-27 | 2013-12-18 | HCMEF5Z4510 | 41d | 0d | HCRA - Global | EFFORT [15 h]; Mechnical Skilled Labours [22.5 h] | 534.38 | B5 | 23 | MEP | C | MEP |
| HCMEF5Z4520 |  | F5 Z4 :Grills & Diffusers |  | 10d | 2014-02-26 | 2014-03-12 | HCMEF5Z4515 FS+50d, HCMEF4Z4375 | 41d | 0d | HCRA - Global | EFFORT [10 h]; Mechnical Skilled Labours [15 h] | 356.25 | B5 | 23 | MEP | C | MEP |
| HCMEF5Z4525 |  | F5 Z4 :Mechanical final Fix |  | 10d | 2014-03-12 | 2014-03-26 | HCMEF5Z4520, HCMEF4Z4385 | 41d | 4d | HCRA - Global | EFFORT [10 h]; Mechnical Skilled Labours [15 h] | 356.25 | B5 | 23 | MEP | C | MEP |
|  | 3 | **Water Network** |  |  | 2013-04-29 | 2013-12-10 |  |  |  |  |  |  |  |  |  |  |  |
| HCMEF5Z4530 |  | F5 Z4 :All Vertical Piping Works |  | 10d | 2013-04-29 | 2013-05-10 | HCMEF5Z4475 SS | 118.88d | 0d | HCRA - Global | EFFORT [10 h]; Mechnical Skilled Labours [15 h] | 356.25 | B5 | 22 | MEP | C | MEP |
| HCMEF5Z4535 |  | F5 Z4 :All Horizantal Piping Works |  | 30d | 2013-05-13 | 2013-06-21 | HCMEF5Z4530 | 118.88d | 12d | HCRA - Global | EFFORT [30 h]; Mechnical Skilled Labours [45 h] | 1,068.75 | B5 | 22 | MEP | C | MEP |
| HCMEF5Z4540 |  | F5 Z4 :Mechanical Final Fix |  | 20d | 2013-11-13 | 2013-12-10 | HCMEF5Z4535 FS+90d, HCMEF4Z4415 | 106.88d | 0d | HCRA - Global | EFFORT [20 h]; Mechnical Skilled Labours [30 h] | 712.5 | B5 | 22 | MEP | C | MEP |
|  | 5 | **Zone 5** |  |  | 2013-04-29 | 2014-05-07 |  |  |  |  |  |  |  |  |  |  |  |
|  | 7 | **Drainage** |  |  | 2013-04-29 | 2013-12-10 |  |  |  |  |  |  |  |  |  |  |  |
| HCMEF5Z5480 |  | F5 Z5 :All Vertical Piping Works |  | 10d | 2013-04-29 | 2013-05-10 | HCMEF5Z4475 SS | 107d | 0d | HCRA - Global | EFFORT [10 h]; Mechnical Skilled Labours [15 h] | 356.25 | B5 | 22 | MEP | C | MEP |
| HCMEF5Z5485 |  | F5 Z5 :All Horizantal Piping Works |  | 30d | 2013-05-13 | 2013-06-21 | HCMEF5Z5480 | 107d | 12d | HCRA - Global | EFFORT [30 h]; Mechnical Skilled Labours [45 h] | 1,068.75 | B5 | 22 | MEP | C | MEP |
| HCMEF5Z5490 |  | F5 Z5 :Mechanical Final Fix |  | 20d | 2013-11-13 | 2013-12-10 | HCMEF5Z5485 FS+90d, HCMEF4Z5110 | 95d | 0d | HCRA - Global | EFFORT [20 h]; Mechnical Skilled Labours [30 h] | 712.5 | B5 | 22 | MEP | C | MEP |
|  | 020 | **Electrical Works** |  |  | 2013-09-11 | 2014-05-07 |  |  |  |  |  |  |  |  |  |  |  |
| HCMEF5Z5330 |  | F5 Z5 :Blocks Start Date for All Parts | milestone | 0d | 2013-09-11 | 2013-09-11 | HCFWF5Z5203, HCFWF5Z51203 | 75d | 0d | HCRA - 1 - Normal Calendar |  |  | B5 | 26 | MEP | C | MEP |
| HCMEF5Z5440 |  | F5 Z5 :Electrical Coduits & Boards F.F for All Systems |  | 12d | 2013-09-11 | 2013-09-27 | HCMEF5Z5330 | 67d | 4.12d | HCRA - Global | EFFORT [12 h]; Electrical Skilled Labours [24 h] | 450 | B5 | 26 | MEP | C | MEP |
| HCMEF5Z5340 |  | F5 Z5 :Plastering Finish Date for All Parts | milestone | 0d | 2013-11-03 | 2013-11-03 | HCFWF5Z5212 | 98d | 26d | HCRA - 1 - Normal Calendar |  |  | B5 | 26 | MEP | C | MEP |
| HCMEF5Z5450 |  | F5 Z5 :Cable Tray Installation |  | 10d | 2013-12-04 | 2013-12-18 | HCMEF5Z5340, HCMEF4Z5260 | 61d | 0d | HCRA - Global | EFFORT [10 h]; Electrical Skilled Labours [20 h] | 375 | B5 | 26 | MEP | C | MEP |
| HCMEF5Z5445 |  | F5 Z5 :Electrical Boards Seconed Fix |  | 12d | 2013-12-13 | 2013-12-30 | HCMEF5Z5440 FS+50d, HCMEF5Z5340, HCMEF4Z5250 | 62.88d | 0d | HCRA - Global | EFFORT [12 h]; Electrical Skilled Labours [24 h] | 450 | B5 | 26 | MEP | C | MEP |
| HCMEF5Z5460 |  | F5 Z5 :Cable Laying |  | 10d | 2013-12-18 | 2014-01-01 | HCMEF5Z5450, HCMEF4Z5280 | 61d | 0d | HCRA - Global | EFFORT [10 h]; Electrical Skilled Labours [20 h] | 375 | B5 | 26 | MEP | C | MEP |
| HCMEF5Z5335 |  | F5 Z5 :Tiling Finish Date for All Parts | milestone | 0d | 2014-02-03 | 2014-02-03 | HCFWF5Z5228, HCFWF5Z5226 | 36d | 9.12d | HCRA - 1 - Normal Calendar |  |  | B5 | 26 | MEP | C | MEP |
| HCMEF5Z5455 |  | F5 Z5 :Electrcial Wiring |  | 16d | 2014-02-14 | 2014-03-10 | HCMEF5Z5335, HCMEF4Z5270 | 21.38d | 0d | HCRA - Global | EFFORT [20 h]; Electrical Skilled Labours [40 h] | 750 | B5 | 26 | MEP | C | MEP |
| HCMEF5Z5425 |  | F5 Z5 :Gypsum Boards Finish Date for All Parts | milestone | 0d | 2014-03-23 | 2014-03-23 | HCFWF5Z5200, HCFWF5Z5189 | 52.38d | 27d | HCRA - 1 - Normal Calendar |  |  | B5 | 26 | MEP | C | MEP |
| HCMEF5Z5465 |  | F5 Z5 :Electrical Final Fix for All Systems & Boards (Vertical Elements) |  | 10d | 2014-04-09 | 2014-04-23 | HCMEF5Z5460 FS+30d, HCMEF5Z5455 FS+22d, HCMEF5Z5445 FS+30d, HCMEF5Z5340 FS+60d | 21.38d | 0d | HCRA - Global | EFFORT [10 h]; Electrical Skilled Labours [20 h] | 375 | B5 | 26 | MEP | C | MEP |
| HCMEF5Z5470 |  | F5 Z5 :Electrical Final Fix for All Systems (Horizantel Elements) |  | 10d | 2014-04-23 | 2014-05-07 | HCMEF5Z5465, HCMEF5Z5455, HCMEF5Z5425 | 21.38d | 8.38d | HCRA - Global | EFFORT [10 h]; Electrical Skilled Labours [20 h] | 375 | B5 | 26 | MEP | C | MEP |

| ID | WBS | Activity | Type | Duration | Start | Finish | Predecessors | Total float | Free float | Calendar | Resources | Cost | Bill No. | Division No. | Responsibility | Phase Code | Trade |
| --- | --- | --- | --- | --- | --- | --- | --- | --- | --- | --- | --- | --- | --- | --- | --- | --- | --- |
|  | 2 | **Fire Fighting** |  |  | 2013-09-11 | 2014-02-14 |  |  |  |  |  |  |  |  |  |  |  |
| HCMEF5Z5495 |  | F5 Z5 :Horizontal F.F Piping Work |  | 20d | 2013-09-11 | 2013-10-09 | HCMEF5Z5330 | 71d | 0d | HCRA - Global | EFFORT [20 h]; Mechnical Skilled Labours [30 h] | 712.5 | B5 | 21 | MEP | C | MEP |
| HCMEF5Z5500 |  | F5 Z5 :Fire Hose Cabinets |  | 10d | 2013-10-09 | 2013-10-23 | HCMEF5Z5495 | 71d | 2.12d | HCRA - Global | EFFORT [10 h]; Mechnical Skilled Labours [15 h] | 356.25 | B5 | 21 | MEP | C | MEP |
| HCMEF5Z5505 |  | F5 Z5 :Sprinklers Final Fix |  | 10d | 2014-02-03 | 2014-02-14 | HCMEF5Z5500 FS+70d, HCMEF4Z5140 | 68.88d | 0d | HCRA - Global | EFFORT [10 h]; Mechnical Skilled Labours [15 h] | 356.25 | B5 | 21 | MEP | C | MEP |
|  | 1 | **Air Conditioning** |  |  | 2013-10-17 | 2014-03-26 |  |  |  |  |  |  |  |  |  |  |  |
| HCMEF5Z5510 |  | F5 Z5 :Duct Installation& Dusct Accecories Installation, Fan coil Unit |  | 14d | 2013-10-17 | 2013-11-06 | HCMEF5Z5330, HCMEF4Z5350 | 37d | 0d | HCRA - Global | EFFORT [20 h]; Mechnical Skilled Labours [30 h] | 712.5 | B5 | 23 | MEP | C | MEP |
| HCMEF5Z5515 |  | F5 Z5 :Duct Insulation Work |  | 15d | 2013-11-06 | 2013-11-27 | HCMEF5Z5510 | 41d | 0d | HCRA - Global | EFFORT [15 h]; Mechnical Skilled Labours [22.5 h] | 534.38 | B5 | 23 | MEP | C | MEP |
| HCMEF5Z5520 |  | F5 Z5 :Exhaust Fans |  | 15d | 2013-11-27 | 2013-12-18 | HCMEF5Z5515 | 41d | 0d | HCRA - Global | EFFORT [15 h]; Mechnical Skilled Labours [22.5 h] | 534.38 | B5 | 23 | MEP | C | MEP |
| HCMEF5Z5525 |  | F5 Z5 :Grills & Diffusers |  | 10d | 2014-02-26 | 2014-03-12 | HCMEF5Z5520 FS+50d, HCMEF4Z5380, HCMEF4Z5380 FF | 41d | 0d | HCRA - Global | EFFORT [10 h]; Mechnical Skilled Labours [15 h] | 356.25 | B5 | 23 | MEP | C | MEP |
| HCMEF5Z5530 |  | F5 Z5 :Mechanical final Fix |  | 10d | 2014-03-12 | 2014-03-26 | HCMEF5Z5525, HCMEF4Z5390 | 41d | 4d | HCRA - Global | EFFORT [10 h]; Mechnical Skilled Labours [15 h] | 356.25 | B5 | 23 | MEP | C | MEP |
|  | 3 | **Water Network** |  |  | 2013-04-29 | 2013-11-22 |  |  |  |  |  |  |  |  |  |  |  |
| HCMEF5Z5535 |  | F5 Z5 :All Vertical Piping Works |  | 10d | 2013-04-29 | 2013-05-10 | HCMEF5Z5480 SS | 138.88d | 0d | HCRA - Global | EFFORT [10 h]; Mechnical Skilled Labours [15 h] | 356.25 | B5 | 22 | MEP | C | MEP |
| HCMEF5Z5540 |  | F5 Z5 :All Horizantal Piping Works |  | 30d | 2013-05-13 | 2013-06-21 | HCMEF5Z5535 | 138.88d | 0d | HCRA - Global | EFFORT [30 h]; Mechnical Skilled Labours [45 h] | 1,068.75 | B5 | 22 | MEP | C | MEP |
| HCMEF5Z5545 |  | F5 Z5 :Mechanical Final Fix |  | 20d | 2013-10-28 | 2013-11-22 | HCMEF5Z5540 FS+90d | 138.88d | 125.88d | HCRA - Global | EFFORT [20 h]; Mechnical Skilled Labours [30 h] | 712.5 | B5 | 22 | MEP | C | MEP |
|  | 5 | **Sixth Floor** |  |  | 2013-05-11 | 2014-06-04 |  |  |  |  |  |  |  |  |  |  |  |
| HCMEF6000 |  | Start Sixth Floor EM Works | milestone | 0d | 2013-05-12 | 2013-05-12 | HCFWF6Z1183, HCFWF6Z11183 | 127d | 1d |  |  |  | B5 |  | MEP | C | MEP |
| HCMEF60000 |  | End Sixth Floor EM Works | milestone | 0d | 2014-05-22 | 2014-05-22 | HCMEF6Z1625, HCMEF6Z1640, HCMEF6Z1665, HCMEF6Z1680, HCMEF6Z5645, HCMEF6Z3675, HCMEF6Z4680 | 10d |  |  |  |  | B5 |  | MEP | C | MEP |
|  | 4 | **Zone 1** |  |  | 2013-05-11 | 2014-06-03 |  |  |  |  |  |  |  |  |  |  |  |
|  | 7 | **Drainage** |  |  | 2013-05-13 | 2014-03-28 |  |  |  |  |  |  |  |  |  |  |  |
| HCMEF6Z1615 |  | F6 Z1 :All Vertical Piping Works |  | 10d | 2013-05-13 | 2013-05-24 | HCMEF6000 | 108.88d | 0d | HCRA - Global | EFFORT [10 h]; Mechnical Skilled Labours [15 h] | 356.25 | B5 | 22 | MEP | C | MEP |
| HCMEF6Z1620 |  | F6 Z1 :All Horizantal Piping Works |  | 30d | 2013-05-27 | 2013-07-05 | HCMEF6Z1615 | 108.88d | 80d | HCRA - Global | EFFORT [30 h]; Mechnical Skilled Labours [45 h] | 1,068.75 | B5 | 22 | MEP | C | MEP |
| HCMEF6Z1625 |  | F6 Z1 :Mechanical Final Fix |  | 20d | 2014-03-03 | 2014-03-28 | HCMEF6Z1620 FS+90d, HCMEF5Z1470 | 28.88d | 10d | HCRA - Global | EFFORT [20 h]; Mechnical Skilled Labours [30 h] | 712.5 | B5 | 22 | MEP | C | MEP |
|  | 020 | **Electrical Works** |  |  | 2013-05-11 | 2014-06-03 |  |  |  |  |  |  |  |  |  |  |  |
| HCMEF6Z1545 |  | F6 Z1 :Blocks Start Date for All Parts | milestone | 0d | 2013-05-11 | 2013-05-11 | HCFWF6Z1183, HCFWF6Z11183 | 175.12d | 1.12d | HCRA - 1 - Normal Calendar |  |  | B5 | 26 | MEP | C | MEP |
| HCMEF6Z1575 |  | F6 Z1 :Electrical Coduits & Boards F.F for All Systems |  | 12d | 2013-05-13 | 2013-05-28 | HCMEF6Z1545 | 145.88d | 26.88d | HCRA - Global | EFFORT [12 h]; Electrical Skilled Labours [24 h] | 450 | B5 | 26 | MEP | C | MEP |
| HCMEF6Z1555 |  | F6 Z1 :Plastering Finish Date for All Parts | milestone | 0d | 2013-08-26 | 2013-08-26 | HCFWF6Z1187 | 144.38d | 15.38d | HCRA - 1 - Normal Calendar |  |  | B5 | 26 | MEP | C | MEP |
| HCMEF6Z1580 |  | F6 Z1 :Electrical Boards Seconed Fix |  | 12d | 2013-09-12 | 2013-09-30 | HCMEF6Z1575 FS+50d, HCMEF6Z1555, HCMEF5Z1425 | 119d | 70d | HCRA - Global | EFFORT [12 h]; Electrical Skilled Labours [24 h] | 450 | B5 | 26 | MEP | C | MEP |
| HCMEF6Z1550 |  | F6 Z1 :Tiling Finish Date for All Parts | milestone | 0d | 2013-12-15 | 2013-12-15 | HCFWF6Z1201 | 73d | 71.12d | HCRA - 1 - Normal Calendar |  |  | B5 | 26 | MEP | C | MEP |
| HCMEF6Z1585 |  | F6 Z1 :Cable Tray Installation |  | 10d | 2014-02-12 | 2014-02-26 | HCMEF6Z1555, HCMEF5Z1430 | 0d |  | HCRA - Global | EFFORT [10 h]; Electrical Skilled Labours [20 h] | 375 | B5 | 26 | MEP | C | MEP |
| HCMEF6Z1595 |  | F6 Z1 :Cable Laying |  | 10d | 2014-03-04 | 2014-03-18 | HCMEF6Z1585, HCMEF5Z1440 | 0d |  | HCRA - Global | EFFORT [10 h]; Electrical Skilled Labours [20 h] | 375 | B5 | 26 | MEP | C | MEP |
| HCMEF6Z1590 |  | F6 Z1 :Electrcial Wiring |  | 20d | 2014-03-10 | 2014-04-04 | HCMEF6Z1550, HCMEF5Z1435 | 1.88d | 0d | HCRA - Global | EFFORT [20 h]; Electrical Skilled Labours [40 h] | 750 | B5 | 26 | MEP | C | MEP |
| HCMEF6Z1560 |  | F6 Z1 :Gypsum Boards Finish Date for All Parts | milestone | 0d | 2014-04-09 | 2014-04-09 | HCFWF6Z1202, HCFWF6Z1207 | 37d | 35.12d | HCRA - 1 - Normal Calendar |  |  | B5 | 26 | MEP | C | MEP |
| HCMEF6Z1600 |  | F6 Z1 :Electrical Final Fix for All Systems & Boards (Vertical Elements) |  | 10d | 2014-05-07 | 2014-05-20 | HCMEF6Z1595 FS+30d, HCMEF6Z1590 FS+22d, HCMEF6Z1580 FS+30d, HCMEF6Z1555 FS+60d | 1.88d | 0d | HCRA - Global | EFFORT [10 h]; Electrical Skilled Labours [20 h] | 375 | B5 | 26 | MEP | C | MEP |
| HCMEF6Z1605 |  | F6 Z1 :Electrical Final Fix for All Systems (Horizantel Elements) |  | 10d | 2014-05-21 | 2014-06-03 | HCMEF6Z1600, HCMEF6Z1590, HCMEF6Z1560 | 1.88d | 0.88d | HCRA - Global | EFFORT [10 h]; Electrical Skilled Labours [20 h] | 375 | B5 | 26 | MEP | C | MEP |

| ID | WBS | Activity | Type | Duration | Start | Finish | Predecessors | Total float | Free float | Calendar | Resources | Cost | Bill No. | Division No. | Responsibility | Phase Code | Trade |
| --- | --- | --- | --- | --- | --- | --- | --- | --- | --- | --- | --- | --- | --- | --- | --- | --- | --- |
|  | 2 | **Fire Fighting** |  |  | 2013-05-13 | 2014-04-07 |  |  |  |  |  |  |  |  |  |  |  |
| HCMEF6Z1630 |  | F6 Z1 :Horizontal F.F Piping Work |  | 20d | 2013-05-13 | 2013-06-07 | HCMEF6Z1545 | 158.88d | 0d | HCRA - Global | EFFORT [20 h]; Mechnical Skilled Labours [30 h] | 712.5 | B5 | 21 | MEP | C | MEP |
| HCMEF6Z1635 |  | F6 Z1 :Fire Hose Cabinets |  | 10d | 2013-06-10 | 2013-06-21 | HCMEF6Z1630 | 158.88d | 125.88d | HCRA - Global | EFFORT [10 h]; Mechnical Skilled Labours [15 h] | 356.25 | B5 | 21 | MEP | C | MEP |
| HCMEF6Z1640 |  | F6 Z1 :Sprinklers Final Fix |  | 10d | 2014-03-24 | 2014-04-07 | HCMEF6Z1635 FS+70d, HCMEF5Z1485 | 33d | 0d | HCRA - Global | EFFORT [10 h]; Mechnical Skilled Labours [15 h] | 356.25 | B5 | 21 | MEP | C | MEP |
|  | 1 | **Air Conditioning** |  |  | 2013-11-18 | 2014-05-22 |  |  |  |  |  |  |  |  |  |  |  |
| HCMEF6Z1645 |  | F6 Z1 :Duct Installation& Dusct Accecories Installation, Fan coil Unit |  | 10d | 2013-11-18 | 2013-12-02 | HCMEF6Z1545, HCMEF5Z1490 | 23d | 0d | HCRA - Global | EFFORT [20 h]; Mechnical Skilled Labours [30 h] | 712.5 | B5 | 23 | MEP | C | MEP |
| HCMEF6Z1650 |  | F6 Z1 :Duct Insulation Work |  | 15d | 2013-12-02 | 2013-12-23 | HCMEF6Z1645 | 23d | 0d | HCRA - Global | EFFORT [15 h]; Mechnical Skilled Labours [22.5 h] | 534.38 | B5 | 23 | MEP | C | MEP |
| HCMEF6Z1655 |  | F6 Z1 :Exhaust Fans |  | 15d | 2013-12-23 | 2014-01-13 | HCMEF6Z1650 | 23d | 21d | HCRA - Global | EFFORT [15 h]; Mechnical Skilled Labours [22.5 h] | 534.38 | B5 | 23 | MEP | C | MEP |
| HCMEF6Z1660 |  | F6 Z1 :Grills & Diffusers |  | 10d | 2014-04-22 | 2014-05-06 | HCMEF6Z1655 FS+50d, HCMEF5Z1505 | 2d | 0d | HCRA - Global | EFFORT [10 h]; Mechnical Skilled Labours [15 h] | 356.25 | B5 | 23 | MEP | C | MEP |
| HCMEF6Z1665 |  | F6 Z1 :Mechanical final Fix |  | 10d | 2014-05-08 | 2014-05-22 | HCMEF6Z1660, HCMEF5Z1510 | 0d |  | HCRA - Global | EFFORT [10 h]; Mechnical Skilled Labours [15 h] | 356.25 | B5 | 23 | MEP | C | MEP |
|  | 3 | **Water Network** |  |  | 2013-05-13 | 2014-03-28 |  |  |  |  |  |  |  |  |  |  |  |
| HCMEF6Z1670 |  | F6 Z1 :All Vertical Piping Works |  | 10d | 2013-05-13 | 2013-05-24 | HCMEF6Z1615 SS | 108.88d | 0d | HCRA - Global | EFFORT [10 h]; Mechnical Skilled Labours [15 h] | 356.25 | B5 | 22 | MEP | C | MEP |
| HCMEF6Z1675 |  | F6 Z1 :All Horizantal Piping Works |  | 30d | 2013-05-27 | 2013-07-05 | HCMEF6Z1670 | 108.88d | 80d | HCRA - Global | EFFORT [30 h]; Mechnical Skilled Labours [45 h] | 1,068.75 | B5 | 22 | MEP | C | MEP |
| HCMEF6Z1680 |  | F6 Z1 :Mechanical Final Fix |  | 20d | 2014-03-03 | 2014-03-28 | HCMEF6Z1675 FS+90d, HCMEF5Z1525 | 28.88d | 10d | HCRA - Global | EFFORT [20 h]; Mechnical Skilled Labours [30 h] | 712.5 | B5 | 22 | MEP | C | MEP |
|  | 1 | **Zone 2** |  |  | 2013-05-13 | 2014-05-21 |  |  |  |  |  |  |  |  |  |  |  |
|  | 7 | **Drainage** |  |  | 2013-05-13 | 2014-03-28 |  |  |  |  |  |  |  |  |  |  |  |
| HCMEF6Z2620 |  | F6 Z2 :All Vertical Piping Works |  | 10d | 2013-05-13 | 2013-05-24 | HCMEF6Z1615 SS | 117d | 0d | HCRA - Global | EFFORT [10 h]; Mechnical Skilled Labours [15 h] | 356.25 | B5 | 22 | MEP | C | MEP |
| HCMEF6Z2625 |  | F6 Z2 :All Horizantal Piping Works |  | 30d | 2013-05-27 | 2013-07-05 | HCMEF6Z2620 | 128.88d | 80d | HCRA - Global | EFFORT [30 h]; Mechnical Skilled Labours [45 h] | 1,068.75 | B5 | 22 | MEP | C | MEP |
| HCMEF6Z2630 |  | F6 Z2 :Mechanical Final Fix |  | 20d | 2014-03-03 | 2014-03-28 | HCMEF6Z2625 FS+90d, HCMEF5Z2475 | 48.88d | 47.88d | HCRA - Global | EFFORT [20 h]; Mechnical Skilled Labours [30 h] | 712.5 | B5 | 22 | MEP | C | MEP |
|  | 020 | **Electrical Works** |  |  | 2013-07-07 | 2014-05-21 |  |  |  |  |  |  |  |  |  |  |  |
| HCMEF6Z2550 |  | F6 Z2 :Blocks Start Date for All Parts | milestone | 0d | 2013-07-07 | 2013-07-07 | HCFWF6Z2207, HCFWF6Z21207 | 135.12d | 0.12d | HCRA - 1 - Normal Calendar |  |  | B5 | 26 | MEP | C | MEP |
| HCMEF6Z2580 |  | F6 Z2 :Electrical Coduits & Boards F.F for All Systems |  | 12d | 2013-07-08 | 2013-07-23 | HCMEF6Z2550 | 114.88d | 23d | HCRA - Global | EFFORT [12 h]; Electrical Skilled Labours [24 h] | 450 | B5 | 26 | MEP | C | MEP |
| HCMEF6Z2560 |  | F6 Z2 :Plastering Finish Date for All Parts | milestone | 0d | 2013-11-02 | 2013-11-02 | HCFWF6Z2206 | 99d | 1.12d | HCRA - 1 - Normal Calendar |  |  | B5 | 26 | MEP | C | MEP |
| HCMEF6Z2585 |  | F6 Z2 :Electrical Boards Seconed Fix |  | 12d | 2013-11-04 | 2013-11-19 | HCMEF6Z2580 FS+50d, HCMEF6Z2560, HCMEF5Z2430 | 91.88d | 80.88d | HCRA - Global | EFFORT [12 h]; Electrical Skilled Labours [24 h] | 450 | B5 | 26 | MEP | C | MEP |
| HCMEF6Z2555 |  | F6 Z2 :Tiling Finish Date for All Parts | milestone | 0d | 2013-12-15 | 2013-12-15 | HCFWF6Z2218 | 73d | 41.12d | HCRA - 1 - Normal Calendar |  |  | B5 | 26 | MEP | C | MEP |
| HCMEF6Z2595 |  | F6 Z2 :Electrcial Wiring |  | 20d | 2014-02-03 | 2014-02-28 | HCMEF6Z2555, HCMEF5Z2440 | 26.88d | 15.88d | HCRA - Global | EFFORT [20 h]; Electrical Skilled Labours [40 h] | 750 | B5 | 26 | MEP | C | MEP |
| HCMEF6Z2590 |  | F6 Z2 :Cable Tray Installation |  | 10d | 2014-02-12 | 2014-02-26 | HCMEF6Z2560, HCMEF5Z2435 | 11d | 0d | HCRA - Global | EFFORT [10 h]; Electrical Skilled Labours [20 h] | 375 | B5 | 26 | MEP | C | MEP |
| HCMEF6Z2600 |  | F6 Z2 :Cable Laying |  | 10d | 2014-02-26 | 2014-03-12 | HCMEF6Z2590, HCMEF5Z2445 | 11d | 0d | HCRA - Global | EFFORT [10 h]; Electrical Skilled Labours [20 h] | 375 | B5 | 26 | MEP | C | MEP |
| HCMEF6Z2565 |  | F6 Z2 :Gypsum Boards Finish Date for All Parts | milestone | 0d | 2014-04-08 | 2014-04-08 | HCFWF6Z2220 | 38d | 25d | HCRA - 1 - Normal Calendar |  |  | B5 | 26 | MEP | C | MEP |
| HCMEF6Z2605 |  | F6 Z2 :Electrical Final Fix for All Systems & Boards (Vertical Elements) |  | 10d | 2014-04-23 | 2014-05-07 | HCMEF6Z2600 FS+30d, HCMEF6Z2595 FS+22d, HCMEF6Z2585 FS+30d, HCMEF6Z2560 FS+60d | 11d | 0d | HCRA - Global | EFFORT [10 h]; Electrical Skilled Labours [20 h] | 375 | B5 | 26 | MEP | C | MEP |
| HCMEF6Z2610 |  | F6 Z2 :Electrical Final Fix for All Systems (Horizantel Elements) |  | 10d | 2014-05-07 | 2014-05-21 | HCMEF6Z2605, HCMEF6Z2595, HCMEF6Z2565 | 11d | 10d | HCRA - Global | EFFORT [10 h]; Electrical Skilled Labours [20 h] | 375 | B5 | 26 | MEP | C | MEP |

| ID | WBS | Activity | Type | Duration | Start | Finish | Predecessors | Total float | Free float | Calendar | Resources | Cost | Bill No. | Division No. | Responsibility | Phase Code | Trade |
| --- | --- | --- | --- | --- | --- | --- | --- | --- | --- | --- | --- | --- | --- | --- | --- | --- | --- |
|  | 2 | **Fire Fighting** |  |  | 2013-07-08 | 2014-04-07 |  |  |  |  |  |  |  |  |  |  |  |
| HCMEF6Z2635 |  | F6 Z2 :Horizontal F.F Piping Work |  | 20d | 2013-07-08 | 2013-08-02 | HCMEF6Z2550 | 128.88d | 0d | HCRA - Global | EFFORT [20 h]; Mechnical Skilled Labours [30 h] | 712.5 | B5 | 21 | MEP | C | MEP |
| HCMEF6Z2640 |  | F6 Z2 :Fire Hose Cabinets |  | 10d | 2013-08-05 | 2013-08-16 | HCMEF6Z2635 | 128.88d | 85.88d | HCRA - Global | EFFORT [10 h]; Mechnical Skilled Labours [15 h] | 356.25 | B5 | 21 | MEP | C | MEP |
| HCMEF6Z2645 |  | F6 Z2 :Sprinklers Final Fix |  | 10d | 2014-03-24 | 2014-04-07 | HCMEF6Z2640 FS+70d, HCMEF5Z2490 | 43d | 42d | HCRA - Global | EFFORT [10 h]; Mechnical Skilled Labours [15 h] | 356.25 | B5 | 21 | MEP | C | MEP |
|  | 1 | **Air Conditioning** |  |  | 2013-10-31 | 2014-05-15 |  |  |  |  |  |  |  |  |  |  |  |
| HCMEF6Z2650 |  | F6 Z2 :Duct Installation& Dusct Accecories Installation, Fan coil Unit |  | 8d | 2013-10-31 | 2013-11-12 | HCMEF6Z2550, HCMEF5Z2495 | 35.12d | 0d | HCRA - Global | EFFORT [20 h]; Mechnical Skilled Labours [30 h] | 712.5 | B5 | 23 | MEP | C | MEP |
| HCMEF6Z2655 |  | F6 Z2 :Duct Insulation Work |  | 15d | 2013-11-12 | 2013-12-03 | HCMEF6Z2650 | 35.12d | 0d | HCRA - Global | EFFORT [15 h]; Mechnical Skilled Labours [22.5 h] | 534.38 | B5 | 23 | MEP | C | MEP |
| HCMEF6Z2660 |  | F6 Z2 :Exhaust Fans |  | 15d | 2013-12-03 | 2013-12-24 | HCMEF6Z2655 | 35.12d | 32d | HCRA - Global | EFFORT [15 h]; Mechnical Skilled Labours [22.5 h] | 534.38 | B5 | 23 | MEP | C | MEP |
| HCMEF6Z2665 |  | F6 Z2 :Grills & Diffusers |  | 10d | 2014-04-17 | 2014-05-01 | HCMEF6Z2660 FS+50d, HCMEF5Z2510 | 3.12d | 0d | HCRA - Global | EFFORT [10 h]; Mechnical Skilled Labours [15 h] | 356.25 | B5 | 23 | MEP | C | MEP |
| HCMEF6Z2670 |  | F6 Z2 :Mechanical final Fix |  | 10d | 2014-05-01 | 2014-05-15 | HCMEF6Z2665, HCMEF5Z2515 | 3.12d | 0d | HCRA - Global | EFFORT [10 h]; Mechnical Skilled Labours [15 h] | 356.25 | B5 | 23 | MEP | C | MEP |
|  | 3 | **Water Network** |  |  | 2013-05-13 | 2014-03-28 |  |  |  |  |  |  |  |  |  |  |  |
| HCMEF6Z2675 |  | F6 Z2 :All Vertical Piping Works |  | 10d | 2013-05-13 | 2013-05-24 | HCMEF6Z2620 SS | 128.88d | 0d | HCRA - Global | EFFORT [10 h]; Mechnical Skilled Labours [15 h] | 356.25 | B5 | 22 | MEP | C | MEP |
| HCMEF6Z2680 |  | F6 Z2 :All Horizantal Piping Works |  | 30d | 2013-05-27 | 2013-07-05 | HCMEF6Z2675 | 128.88d | 80d | HCRA - Global | EFFORT [30 h]; Mechnical Skilled Labours [45 h] | 1,068.75 | B5 | 22 | MEP | C | MEP |
| HCMEF6Z2685 |  | F6 Z2 :Mechanical Final Fix |  | 20d | 2014-03-03 | 2014-03-28 | HCMEF6Z2680 FS+90d, HCMEF5Z2530 | 48.88d | 47.88d | HCRA - Global | EFFORT [20 h]; Mechnical Skilled Labours [30 h] | 712.5 | B5 | 22 | MEP | C | MEP |
|  | 2 | **Zone 3** |  |  | 2013-05-13 | 2014-05-23 |  |  |  |  |  |  |  |  |  |  |  |
|  | 4 | **Conveying System** |  |  |  |  |  |  |  |  |  |  |  |  |  |  |  |
|  | 7 | **Drainage** |  |  | 2013-05-13 | 2014-03-28 |  |  |  |  |  |  |  |  |  |  |  |
| HCMEF6Z3625 |  | F6 Z3 :All Vertical Piping Works |  | 10d | 2013-05-13 | 2013-05-24 | HCMEF6Z2620 SS | 117d | 0d | HCRA - Global | EFFORT [10 h]; Mechnical Skilled Labours [15 h] | 356.25 | B5 | 22 | MEP | C | MEP |
| HCMEF6Z3630 |  | F6 Z3 :All Horizantal Piping Works |  | 30d | 2013-05-27 | 2013-07-05 | HCMEF6Z3625 | 128.88d | 80d | HCRA - Global | EFFORT [30 h]; Mechnical Skilled Labours [45 h] | 1,068.75 | B5 | 22 | MEP | C | MEP |
| HCMEF6Z3635 |  | F6 Z3 :Mechanical Final Fix |  | 20d | 2014-03-03 | 2014-03-28 | HCMEF6Z3630 FS+90d, HCMEF5Z3480 | 48.88d | 47.88d | HCRA - Global | EFFORT [20 h]; Mechnical Skilled Labours [30 h] | 712.5 | B5 | 22 | MEP | C | MEP |
|  | 020 | **Electrical Works** |  |  | 2013-09-09 | 2014-05-23 |  |  |  |  |  |  |  |  |  |  |  |
| HCMEF6Z3555 |  | F6 Z3 :Blocks Start Date for All Parts | milestone | 0d | 2013-09-09 | 2013-09-09 | HCFWF6Z3246, HCFWF6Z31246 | 96d | 0d | HCRA - 1 - Normal Calendar |  |  | B5 | 26 | MEP | C | MEP |
| HCMEF6Z3585 |  | F6 Z3 :Electrical Coduits & Boards F.F for All Systems |  | 12d | 2013-09-09 | 2013-09-25 | HCMEF6Z3555 | 81d | 35d | HCRA - Global | EFFORT [12 h]; Electrical Skilled Labours [24 h] | 450 | B5 | 26 | MEP | C | MEP |
| HCMEF6Z3565 |  | F6 Z3 :Plastering Finish Date for All Parts | milestone | 0d | 2014-01-22 | 2014-01-22 | HCFWF6Z3189 | 46d | 0d | HCRA - 1 - Normal Calendar |  |  | B5 | 26 | MEP | C | MEP |
| HCMEF6Z3590 |  | F6 Z3 :Electrical Boards Seconed Fix |  | 12d | 2014-01-22 | 2014-02-07 | HCMEF6Z3585 FS+50d, HCMEF6Z3565, HCMEF5Z3435 | 46d | 36d | HCRA - Global | EFFORT [12 h]; Electrical Skilled Labours [24 h] | 450 | B5 | 26 | MEP | C | MEP |
| HCMEF6Z3595 |  | F6 Z3 :Cable Tray Installation |  | 10d | 2014-02-12 | 2014-02-26 | HCMEF6Z3565, HCMEF5Z3440 | 23d | 0d | HCRA - Global | EFFORT [10 h]; Electrical Skilled Labours [20 h] | 375 | B5 | 26 | MEP | C | MEP |
| HCMEF6Z3605 |  | F6 Z3 :Cable Laying |  | 10d | 2014-02-26 | 2014-03-12 | HCMEF6Z3595, HCMEF5Z3450 | 23d | 13d | HCRA - Global | EFFORT [10 h]; Electrical Skilled Labours [20 h] | 375 | B5 | 26 | MEP | C | MEP |
| HCMEF6Z3560 |  | F6 Z3 :Tiling Finish Date for All Parts | milestone | 0d | 2014-04-02 | 2014-04-02 | HCFWF6Z3271 | 12d | 0d | HCRA - 1 - Normal Calendar |  |  | B5 | 26 | MEP | C | MEP |
| HCMEF6Z3600 |  | F6 Z3 :Electrcial Wiring |  | 6d | 2014-04-02 | 2014-04-10 | HCMEF6Z3560, HCMEF5Z3445 | 10d | 0d | HCRA - Global | EFFORT [20 h]; Electrical Skilled Labours [40 h] | 750 | B5 | 26 | MEP | C | MEP |
| HCMEF6Z3610 |  | F6 Z3 :Electrical Final Fix for All Systems & Boards (Vertical Elements) |  | 4d | 2014-05-12 | 2014-05-16 | HCMEF6Z3605 FS+30d, HCMEF6Z3600 FS+22d, HCMEF6Z3590 FS+30d, HCMEF6Z3565 FS+60d | 10d | 1d | HCRA - Global | EFFORT [10 h]; Electrical Skilled Labours [20 h] | 375 | B5 | 26 | MEP | C | MEP |
| HCMEF6Z3570 |  | F6 Z3 :Gypsum Boards Finish Date for All Parts | milestone | 0d | 2014-05-19 | 2014-05-19 | HCFWF6Z3225, HCFWF6Z3276 | 9.12d | 0d | HCRA - 1 - Normal Calendar |  |  | B5 | 26 | MEP | C | MEP |
| HCMEF6Z3615 |  | F6 Z3 :Electrical Final Fix for All Systems (Horizantel Elements) |  | 4d | 2014-05-19 | 2014-05-23 | HCMEF6Z3610, HCMEF6Z3600, HCMEF6Z3570 | 9d | 8d | HCRA - Global | EFFORT [10 h]; Electrical Skilled Labours [20 h] | 375 | B5 | 26 | MEP | C | MEP |

| ID | WBS | Activity | Type | Duration | Start | Finish | Predecessors | Total float | Free float | Calendar | Resources | Cost | Bill No. | Division No. | Responsibility | Phase Code | Trade |
| --- | --- | --- | --- | --- | --- | --- | --- | --- | --- | --- | --- | --- | --- | --- | --- | --- | --- |
|  | 2 | **Fire Fighting** |  |  | 2013-09-09 | 2014-04-07 |  |  |  |  |  |  |  |  |  |  |  |
| HCMEF6Z3640 |  | F6 Z3 :Horizontal F.F Piping Work |  | 20d | 2013-09-09 | 2013-10-07 | HCMEF6Z3555 | 83d | 0d | HCRA - Global | EFFORT [20 h]; Mechnical Skilled Labours [30 h] | 712.5 | B5 | 21 | MEP | C | MEP |
| HCMEF6Z3645 |  | F6 Z3 :Fire Hose Cabinets |  | 10d | 2013-10-07 | 2013-10-21 | HCMEF6Z3640 | 83d | 40d | HCRA - Global | EFFORT [10 h]; Mechnical Skilled Labours [15 h] | 356.25 | B5 | 21 | MEP | C | MEP |
| HCMEF6Z3650 |  | F6 Z3 :Sprinklers Final Fix |  | 10d | 2014-03-24 | 2014-04-07 | HCMEF6Z3645 FS+70d, HCMEF5Z3495 | 43d | 42d | HCRA - Global | EFFORT [10 h]; Mechnical Skilled Labours [15 h] | 356.25 | B5 | 21 | MEP | C | MEP |
|  | 1 | **Air Conditioning** |  |  | 2013-11-12 | 2014-05-15 |  |  |  |  |  |  |  |  |  |  |  |
| HCMEF6Z3655 |  | F6 Z3 :Duct Installation& Dusct Accecories Installation, Fan coil Unit |  | 8d | 2013-11-12 | 2013-11-22 | HCMEF6Z3555, HCMEF5Z3500 | 39d | 0d | HCRA - Global | EFFORT [20 h]; Mechnical Skilled Labours [30 h] | 712.5 | B5 | 23 | MEP | C | MEP |
| HCMEF6Z3660 |  | F6 Z3 :Duct Insulation Work |  | 15d | 2013-11-22 | 2013-12-13 | HCMEF6Z3655 | 39d | 0d | HCRA - Global | EFFORT [15 h]; Mechnical Skilled Labours [22.5 h] | 534.38 | B5 | 23 | MEP | C | MEP |
| HCMEF6Z3665 |  | F6 Z3 :Exhaust Fans |  | 15d | 2013-12-13 | 2014-01-03 | HCMEF6Z3660 | 39d | 24d | HCRA - Global | EFFORT [15 h]; Mechnical Skilled Labours [22.5 h] | 534.38 | B5 | 23 | MEP | C | MEP |
| HCMEF6Z3670 |  | F6 Z3 :Grills & Diffusers |  | 10d | 2014-04-17 | 2014-05-01 | HCMEF6Z3665 FS+50d, HCMEF5Z3515 | 15d | 0d | HCRA - Global | EFFORT [10 h]; Mechnical Skilled Labours [15 h] | 356.25 | B5 | 23 | MEP | C | MEP |
| HCMEF6Z3675 |  | F6 Z3 :Mechanical final Fix |  | 10d | 2014-05-01 | 2014-05-15 | HCMEF6Z3670, HCMEF5Z3520 | 15d | 5d | HCRA - Global | EFFORT [10 h]; Mechnical Skilled Labours [15 h] | 356.25 | B5 | 23 | MEP | C | MEP |
|  | 3 | **Water Network** |  |  | 2013-05-13 | 2014-03-28 |  |  |  |  |  |  |  |  |  |  |  |
| HCMEF6Z3680 |  | F6 Z3 :All Vertical Piping Works |  | 10d | 2013-05-13 | 2013-05-24 | HCMEF6Z3625 SS | 128.88d | 0d | HCRA - Global | EFFORT [10 h]; Mechnical Skilled Labours [15 h] | 356.25 | B5 | 22 | MEP | C | MEP |
| HCMEF6Z3685 |  | F6 Z3 :All Horizantal Piping Works |  | 30d | 2013-05-27 | 2013-07-05 | HCMEF6Z3680 | 128.88d | 80d | HCRA - Global | EFFORT [30 h]; Mechnical Skilled Labours [45 h] | 1,068.75 | B5 | 22 | MEP | C | MEP |
| HCMEF6Z3690 |  | F6 Z3 :Mechanical Final Fix |  | 20d | 2014-03-03 | 2014-03-28 | HCMEF6Z3685 FS+90d, HCMEF5Z3535 | 48.88d | 47.88d | HCRA - Global | EFFORT [20 h]; Mechnical Skilled Labours [30 h] | 712.5 | B5 | 22 | MEP | C | MEP |
|  | 3 | **Zone 4** |  |  | 2013-05-13 | 2014-04-21 |  |  |  |  |  |  |  |  |  |  |  |
|  | 7 | **Drainage** |  |  | 2013-05-13 | 2014-01-07 |  |  |  |  |  |  |  |  |  |  |  |
| HCMEF6Z4630 |  | F6 Z4 :All Vertical Piping Works |  | 10d | 2013-05-13 | 2013-05-24 | HCMEF6Z3625 SS | 117d | 0d | HCRA - Global | EFFORT [10 h]; Mechnical Skilled Labours [15 h] | 356.25 | B5 | 22 | MEP | C | MEP |
| HCMEF6Z4635 |  | F6 Z4 :All Horizantal Piping Works |  | 30d | 2013-05-27 | 2013-07-05 | HCMEF6Z4630 | 128.88d | 22d | HCRA - Global | EFFORT [30 h]; Mechnical Skilled Labours [45 h] | 1,068.75 | B5 | 22 | MEP | C | MEP |
| HCMEF6Z4640 |  | F6 Z4 :Mechanical Final Fix |  | 20d | 2013-12-11 | 2014-01-07 | HCMEF6Z4635 FS+90d, HCMEF5Z4485 | 106.88d | 105.88d | HCRA - Global | EFFORT [20 h]; Mechnical Skilled Labours [30 h] | 712.5 | B5 | 22 | MEP | C | MEP |
|  | 020 | **Electrical Works** |  |  | 2013-09-23 | 2014-04-21 |  |  |  |  |  |  |  |  |  |  |  |
| HCMEF6Z4560 |  | F6 Z4 :Blocks Start Date for All Parts | milestone | 0d | 2013-09-23 | 2013-09-23 | HCFWF6Z4232, HCFWF6Z41232 | 68.12d | 0d | HCRA - 1 - Normal Calendar |  |  | B5 | 26 | MEP | C | MEP |
| HCMEF6Z4590 |  | F6 Z4 :Electrical Coduits & Boards F.F for All Systems |  | 12d | 2013-09-23 | 2013-10-09 | HCMEF6Z4560 | 59d | 18d | HCRA - Global | EFFORT [12 h]; Electrical Skilled Labours [24 h] | 450 | B5 | 26 | MEP | C | MEP |
| HCMEF6Z4565 |  | F6 Z4 :Tiling Finish Date for All Parts | milestone | 0d | 2013-12-29 | 2013-12-29 | HCFWF6Z4243 | 61d | 21d | HCRA - 1 - Normal Calendar |  |  | B5 | 26 | MEP | C | MEP |
| HCMEF6Z4570 |  | F6 Z4 :Plastering Finish Date for All Parts | milestone | 0d | 2014-01-13 | 2014-01-13 | HCFWF6Z2242 | 39d | 0d | HCRA - 1 - Normal Calendar |  |  | B5 | 26 | MEP | C | MEP |
| HCMEF6Z4595 |  | F6 Z4 :Electrical Boards Seconed Fix |  | 12d | 2014-01-13 | 2014-01-29 | HCMEF6Z4590 FS+50d, HCMEF6Z4570, HCMEF5Z4440 | 41d | 8d | HCRA - Global | EFFORT [12 h]; Electrical Skilled Labours [24 h] | 450 | B5 | 26 | MEP | C | MEP |
| HCMEF6Z4600 |  | F6 Z4 :Cable Tray Installation |  | 10d | 2014-01-13 | 2014-01-27 | HCMEF6Z4570, HCMEF5Z4445 | 33d | 0d | HCRA - Global | EFFORT [10 h]; Electrical Skilled Labours [20 h] | 375 | B5 | 26 | MEP | C | MEP |
| HCMEF6Z4605 |  | F6 Z4 :Electrcial Wiring |  | 20d | 2014-01-23 | 2014-02-20 | HCMEF6Z4565, HCMEF5Z4450 | 33d | 0d | HCRA - Global | EFFORT [20 h]; Electrical Skilled Labours [40 h] | 750 | B5 | 26 | MEP | C | MEP |
| HCMEF6Z4610 |  | F6 Z4 :Cable Laying |  | 10d | 2014-01-27 | 2014-02-10 | HCMEF6Z4600, HCMEF5Z4455 | 33d | 0d | HCRA - Global | EFFORT [10 h]; Electrical Skilled Labours [20 h] | 375 | B5 | 26 | MEP | C | MEP |
| HCMEF6Z4575 |  | F6 Z4 :Gypsum Boards Finish Date for All Parts | milestone | 0d | 2014-02-25 | 2014-02-25 | HCFWF6Z2245 | 74d | 35d | HCRA - 1 - Normal Calendar |  |  | B5 | 26 | MEP | C | MEP |
| HCMEF6Z4615 |  | F6 Z4 :Electrical Final Fix for All Systems & Boards (Vertical Elements) |  | 10d | 2014-03-24 | 2014-04-07 | HCMEF6Z4610 FS+30d, HCMEF6Z4605 FS+22d, HCMEF6Z4595 FS+30d, HCMEF6Z4570 FS+60d | 33d | 0d | HCRA - Global | EFFORT [10 h]; Electrical Skilled Labours [20 h] | 375 | B5 | 26 | MEP | C | MEP |
| HCMEF6Z4620 |  | F6 Z4 :Electrical Final Fix for All Systems (Horizantel Elements) |  | 10d | 2014-04-07 | 2014-04-21 | HCMEF6Z4615, HCMEF6Z4605, HCMEF6Z4575 | 33d | 32d | HCRA - Global | EFFORT [10 h]; Electrical Skilled Labours [20 h] | 375 | B5 | 26 | MEP | C | MEP |

| ID | WBS | Activity | Type | Duration | Start | Finish | Predecessors | Total float | Free float | Calendar | Resources | Cost | Bill No. | Division No. | Responsibility | Phase Code | Trade |
| --- | --- | --- | --- | --- | --- | --- | --- | --- | --- | --- | --- | --- | --- | --- | --- | --- | --- |
|  | 2 | **Fire Fighting** |  |  | 2013-09-23 | 2014-02-26 |  |  |  |  |  |  |  |  |  |  |  |
| HCMEF6Z4645 |  | F6 Z4 :Horizontal F.F Piping Work |  | 20d | 2013-09-23 | 2013-10-21 | HCMEF6Z4560 | 73d | 0d | HCRA - Global | EFFORT [20 h]; Mechnical Skilled Labours [30 h] | 712.5 | B5 | 21 | MEP | C | MEP |
| HCMEF6Z4650 |  | F6 Z4 :Fire Hose Cabinets |  | 10d | 2013-10-21 | 2013-11-04 | HCMEF6Z4645 | 73d | 2d | HCRA - Global | EFFORT [10 h]; Mechnical Skilled Labours [15 h] | 356.25 | B5 | 21 | MEP | C | MEP |
| HCMEF6Z4655 |  | F6 Z4 :Sprinklers Final Fix |  | 10d | 2014-02-12 | 2014-02-26 | HCMEF6Z4650 FS+70d, HCMEF5Z4500 | 71d | 70d | HCRA - Global | EFFORT [10 h]; Mechnical Skilled Labours [15 h] | 356.25 | B5 | 21 | MEP | C | MEP |
|  | 1 | **Air Conditioning** |  |  | 2013-11-06 | 2014-04-15 |  |  |  |  |  |  |  |  |  |  |  |
| HCMEF6Z4660 |  | F6 Z4 :Duct Installation& Dusct Accecories Installation, Fan coil Unit |  | 14d | 2013-11-06 | 2013-11-26 | HCMEF6Z4560, HCMEF5Z4505 | 37d | 0d | HCRA - Global | EFFORT [20 h]; Mechnical Skilled Labours [30 h] | 712.5 | B5 | 23 | MEP | C | MEP |
| HCMEF6Z4665 |  | F6 Z4 :Duct Insulation Work |  | 15d | 2013-11-26 | 2013-12-17 | HCMEF6Z4660 | 37d | 0d | HCRA - Global | EFFORT [15 h]; Mechnical Skilled Labours [22.5 h] | 534.38 | B5 | 23 | MEP | C | MEP |
| HCMEF6Z4670 |  | F6 Z4 :Exhaust Fans |  | 15d | 2013-12-17 | 2014-01-07 | HCMEF6Z4665 | 37d | 0d | HCRA - Global | EFFORT [15 h]; Mechnical Skilled Labours [22.5 h] | 534.38 | B5 | 23 | MEP | C | MEP |
| HCMEF6Z4675 |  | F6 Z4 :Grills & Diffusers |  | 10d | 2014-03-18 | 2014-04-01 | HCMEF6Z4670 FS+50d, HCMEF5Z4520 | 37d | 0d | HCRA - Global | EFFORT [10 h]; Mechnical Skilled Labours [15 h] | 356.25 | B5 | 23 | MEP | C | MEP |
| HCMEF6Z4680 |  | F6 Z4 :Mechanical final Fix |  | 10d | 2014-04-01 | 2014-04-15 | HCMEF6Z4675, HCMEF5Z4525 | 37d | 27d | HCRA - Global | EFFORT [10 h]; Mechnical Skilled Labours [15 h] | 356.25 | B5 | 23 | MEP | C | MEP |
|  | 3 | **Water Network** |  |  | 2013-05-13 | 2014-01-07 |  |  |  |  |  |  |  |  |  |  |  |
| HCMEF6Z4685 |  | F6 Z4 :All Vertical Piping Works |  | 10d | 2013-05-13 | 2013-05-24 | HCMEF6Z4630 SS | 128.88d | 0d | HCRA - Global | EFFORT [10 h]; Mechnical Skilled Labours [15 h] | 356.25 | B5 | 22 | MEP | C | MEP |
| HCMEF6Z4690 |  | F6 Z4 :All Horizantal Piping Works |  | 30d | 2013-05-27 | 2013-07-05 | HCMEF6Z4685 | 128.88d | 22d | HCRA - Global | EFFORT [30 h]; Mechnical Skilled Labours [45 h] | 1,068.75 | B5 | 22 | MEP | C | MEP |
| HCMEF6Z4695 |  | F6 Z4 :Mechanical Final Fix |  | 20d | 2013-12-11 | 2014-01-07 | HCMEF6Z4690 FS+90d, HCMEF5Z4540 | 106.88d | 105.88d | HCRA - Global | EFFORT [20 h]; Mechnical Skilled Labours [30 h] | 712.5 | B5 | 22 | MEP | C | MEP |
|  | 5 | **Zone 5** |  |  | 2013-05-13 | 2014-06-04 |  |  |  |  |  |  |  |  |  |  |  |
|  | 7 | **Drainage** |  |  | 2013-05-13 | 2014-01-07 |  |  |  |  |  |  |  |  |  |  |  |
| HCMEF6Z5635 |  | F6 Z5 :All Vertical Piping Works |  | 10d | 2013-05-13 | 2013-05-24 | HCMEF6Z4630 SS | 117d | 0d | HCRA - Global | EFFORT [10 h]; Mechnical Skilled Labours [15 h] | 356.25 | B5 | 22 | MEP | C | MEP |
| HCMEF6Z5640 |  | F6 Z5 :All Horizantal Piping Works |  | 30d | 2013-05-27 | 2013-07-05 | HCMEF6Z5635 | 117d | 22d | HCRA - Global | EFFORT [30 h]; Mechnical Skilled Labours [45 h] | 1,068.75 | B5 | 22 | MEP | C | MEP |
| HCMEF6Z5645 |  | F6 Z5 :Mechanical Final Fix |  | 20d | 2013-12-11 | 2014-01-07 | HCMEF6Z5640 FS+90d, HCMEF5Z5490 | 95d | 73d | HCRA - Global | EFFORT [20 h]; Mechnical Skilled Labours [30 h] | 712.5 | B5 | 22 | MEP | C | MEP |
|  | 020 | **Electrical Works** |  |  | 2013-09-23 | 2014-06-04 |  |  |  |  |  |  |  |  |  |  |  |
| HCMEF6Z5565 |  | F6 Z5 :Blocks Start Date for All Parts | milestone | 0d | 2013-09-23 | 2013-09-23 | HCFWF6Z5243, HCFWF6Z51243 | 80.12d | 0d | HCRA - 1 - Normal Calendar |  |  | B5 | 26 | MEP | C | MEP |
| HCMEF6Z5595 |  | F6 Z5 :Electrical Coduits & Boards F.F for All Systems |  | 12d | 2013-09-23 | 2013-10-09 | HCMEF6Z5565 | 71d | 8.12d | HCRA - Global | EFFORT [12 h]; Electrical Skilled Labours [24 h] | 450 | B5 | 26 | MEP | C | MEP |
| HCMEF6Z5575 |  | F6 Z5 :Plastering Finish Date for All Parts | milestone | 0d | 2013-12-04 | 2013-12-04 | HCFWF6Z5252 | 87.38d | 12.38d | HCRA - 1 - Normal Calendar |  |  | B5 | 26 | MEP | C | MEP |
| HCMEF6Z5605 |  | F6 Z5 :Cable Tray Installation |  | 10d | 2013-12-18 | 2014-01-01 | HCMEF6Z5575, HCMEF5Z5450 | 63d | 0d | HCRA - Global | EFFORT [10 h]; Electrical Skilled Labours [20 h] | 375 | B5 | 26 | MEP | C | MEP |
| HCMEF6Z5600 |  | F6 Z5 :Electrical Boards Seconed Fix |  | 12d | 2013-12-31 | 2014-01-15 | HCMEF6Z5595 FS+50d, HCMEF6Z5575, HCMEF5Z5445 | 62.88d | 61.88d | HCRA - Global | EFFORT [12 h]; Electrical Skilled Labours [24 h] | 450 | B5 | 26 | MEP | C | MEP |
| HCMEF6Z5615 |  | F6 Z5 :Cable Laying |  | 10d | 2014-01-01 | 2014-01-15 | HCMEF6Z5605, HCMEF5Z5460 | 63d | 62d | HCRA - Global | EFFORT [10 h]; Electrical Skilled Labours [20 h] | 375 | B5 | 26 | MEP | C | MEP |
| HCMEF6Z5580 |  | F6 Z5 :Gypsum Boards Finish Date for All Parts | milestone | 0d | 2014-04-08 | 2014-04-08 | HCFWF6Z5235, HCFWF6Z5224 | 44.5d | 44.38d | HCRA - 1 - Normal Calendar |  |  | B5 | 26 | MEP | C | MEP |
| HCMEF6Z5570 |  | F6 Z5 :Tiling Finish Date for All Parts | milestone | 0d | 2014-04-17 | 2014-04-17 | HCFWF6Z5268, HCFWF6Z5266 | 0.12d | 0d | HCRA - 1 - Normal Calendar |  |  | B5 | 26 | MEP | C | MEP |
| HCMEF6Z5610 |  | F6 Z5 :Electrcial Wiring |  | 4d | 2014-04-17 | 2014-04-23 | HCMEF6Z5570, HCMEF5Z5455 | 1d | 0d | HCRA - Global | EFFORT [20 h]; Electrical Skilled Labours [40 h] | 750 | B5 | 26 | MEP | C | MEP |
| HCMEF6Z5620 |  | F6 Z5 :Electrical Final Fix for All Systems & Boards (Vertical Elements) |  | 4d | 2014-05-23 | 2014-05-29 | HCMEF6Z5615 FS+30d, HCMEF6Z5610 FS+22d, HCMEF6Z5600 FS+30d, HCMEF6Z5575 FS+60d | 1d | 0d | HCRA - Global | EFFORT [10 h]; Electrical Skilled Labours [20 h] | 375 | B5 | 26 | MEP | C | MEP |
| HCMEF6Z5625 |  | F6 Z5 :Electrical Final Fix for All Systems (Horizantel Elements) |  | 4d | 2014-05-29 | 2014-06-04 | HCMEF6Z5620, HCMEF6Z5610, HCMEF6Z5580 | 1d | 0d | HCRA - Global | EFFORT [10 h]; Electrical Skilled Labours [20 h] | 375 | B5 | 26 | MEP | C | MEP |

| ID | WBS | Activity | Type | Duration | Start | Finish | Predecessors | Total float | Free float | Calendar | Resources | Cost | Bill No. | Division No. | Responsibility | Phase Code | Trade |
| --- | --- | --- | --- | --- | --- | --- | --- | --- | --- | --- | --- | --- | --- | --- | --- | --- | --- |
|  | 2 | **Fire Fighting** |  |  | 2013-09-23 | 2014-02-28 |  |  |  |  |  |  |  |  |  |  |  |
| HCMEF6Z5650 |  | F6 Z5 :Horizontal F.F Piping Work |  | 20d | 2013-09-23 | 2013-10-21 | HCMEF6Z5565, HCMEF6Z5565 SS | 73d | 0d | HCRA - Global | EFFORT [20 h]; Mechnical Skilled Labours [30 h] | 712.5 | B5 | 21 | MEP | C | MEP |
| HCMEF6Z5655 |  | F6 Z5 :Fire Hose Cabinets |  | 10d | 2013-10-21 | 2013-11-04 | HCMEF6Z5650 | 73d | 4.12d | HCRA - Global | EFFORT [10 h]; Mechnical Skilled Labours [15 h] | 356.25 | B5 | 21 | MEP | C | MEP |
| HCMEF6Z5660 |  | F6 Z5 :Sprinklers Final Fix |  | 10d | 2014-02-17 | 2014-02-28 | HCMEF6Z5655 FS+70d, HCMEF5Z5505 | 68.88d | 67.88d | HCRA - Global | EFFORT [10 h]; Mechnical Skilled Labours [15 h] | 356.25 | B5 | 21 | MEP | C | MEP |
|  | 1 | **Air Conditioning** |  |  | 2013-11-06 | 2014-04-15 |  |  |  |  |  |  |  |  |  |  |  |
| HCMEF6Z5665 |  | F6 Z5 :Duct Installation& Dusct Accecories Installation, Fan coil Unit |  | 14d | 2013-11-06 | 2013-11-26 | HCMEF6Z5565, HCMEF5Z5510 | 37d | 0d | HCRA - Global | EFFORT [20 h]; Mechnical Skilled Labours [30 h] | 712.5 | B5 | 23 | MEP | C | MEP |
| HCMEF6Z5670 |  | F6 Z5 :Duct Insulation Work |  | 15d | 2013-11-26 | 2013-12-17 | HCMEF6Z5665 | 37d | 0d | HCRA - Global | EFFORT [15 h]; Mechnical Skilled Labours [22.5 h] | 534.38 | B5 | 23 | MEP | C | MEP |
| HCMEF6Z5675 |  | F6 Z5 :Exhaust Fans |  | 15d | 2013-12-17 | 2014-01-07 | HCMEF6Z5670 | 37d | 0d | HCRA - Global | EFFORT [15 h]; Mechnical Skilled Labours [22.5 h] | 534.38 | B5 | 23 | MEP | C | MEP |
| HCMEF6Z5680 |  | F6 Z5 :Grills & Diffusers |  | 10d | 2014-03-18 | 2014-04-01 | HCMEF6Z5675 FS+50d, HCMEF5Z5525, HCMEF5Z5525 FF | 37d | 0d | HCRA - Global | EFFORT [10 h]; Mechnical Skilled Labours [15 h] | 356.25 | B5 | 23 | MEP | C | MEP |
| HCMEF6Z5685 |  | F6 Z5 :Mechanical final Fix |  | 10d | 2014-04-01 | 2014-04-15 | HCMEF6Z5680, HCMEF5Z5530 | 37d | 36d | HCRA - Global | EFFORT [10 h]; Mechnical Skilled Labours [15 h] | 356.25 | B5 | 23 | MEP | C | MEP |
|  | 3 | **Water Network** |  |  | 2013-05-13 | 2013-12-06 |  |  |  |  |  |  |  |  |  |  |  |
| HCMEF6Z5690 |  | F6 Z5 :All Vertical Piping Works |  | 10d | 2013-05-13 | 2013-05-24 | HCMEF6Z5635 SS | 128.88d | 0d | HCRA - Global | EFFORT [10 h]; Mechnical Skilled Labours [15 h] | 356.25 | B5 | 22 | MEP | C | MEP |
| HCMEF6Z5695 |  | F6 Z5 :All Horizantal Piping Works |  | 30d | 2013-05-27 | 2013-07-05 | HCMEF6Z5690 | 128.88d | 0d | HCRA - Global | EFFORT [30 h]; Mechnical Skilled Labours [45 h] | 1,068.75 | B5 | 22 | MEP | C | MEP |
| HCMEF6Z5700 |  | F6 Z5 :Mechanical Final Fix |  | 20d | 2013-11-11 | 2013-12-06 | HCMEF6Z5695 FS+90d | 128.88d | 127.88d | HCRA - Global | EFFORT [20 h]; Mechnical Skilled Labours [30 h] | 712.5 | B5 | 22 | MEP | C | MEP |
|  | 7 | **Seventh Floor** |  |  | 2013-10-10 | 2014-06-05 |  |  |  |  |  |  |  |  |  |  |  |
| HCMEF7000 |  | F7 :Start Seventh Floor EM Works | milestone | 0d | 2013-10-12 | 2013-10-12 | HCFWF7AZ010 | 10d | 0d |  |  |  | B5 |  | MEP | C | MEP |
| HCMEF70000 |  | F7 :End Seventh Floor EM Works | milestone | 0d | 2014-06-05 | 2014-06-05 | HCMEF7Z1835, HCMEF7Z1820, HCMEF7Z1760, HCMEF7Z1780 | 0d |  |  |  |  | B5 |  | MEP | C | MEP |
|  | 4 | **All Zones** |  |  | 2013-10-10 | 2014-06-05 |  |  |  |  |  |  |  |  |  |  |  |
|  | 4 | **Conveying System** |  |  |  |  |  |  |  |  |  |  |  |  |  |  |  |
|  | 7 | **Drainage** |  |  | 2013-10-14 | 2014-05-09 |  |  |  |  |  |  |  |  |  |  |  |
| HCMEF7Z1770 |  | F7 :All Vertical Piping Works |  | 10d | 2013-10-14 | 2013-10-25 | HCMEF7000 | 10d | 0d | HCRA - Global | EFFORT [10 h]; Mechnical Skilled Labours [15 h] | 356.25 | B5 | 22 | MEP | C | MEP |
| HCMEF7Z1775 |  | F7 :All Horizantal Piping Works |  | 30d | 2013-10-28 | 2013-12-06 | HCMEF7Z1770 | 18.88d | 0d | HCRA - Global | EFFORT [30 h]; Mechnical Skilled Labours [45 h] | 1,068.75 | B5 | 22 | MEP | C | MEP |
| HCMEF7Z1780 |  | F7 :Mechanical Final Fix |  | 20d | 2014-04-14 | 2014-05-09 | HCMEF7Z1775 FS+90d, HCMEF6Z1625 | 18.88d |  | HCRA - Global | EFFORT [20 h]; Mechnical Skilled Labours [30 h] | 712.5 | B5 | 22 | MEP | C | MEP |
|  | 020 | **Electrical Works** |  |  | 2013-10-10 | 2014-06-05 |  |  |  |  |  |  |  |  |  |  |  |
| HCMEF7Z1700 |  | F7 :Blocks Start Date for All Parts | milestone | 0d | 2013-10-10 | 2013-10-10 | HCFWF7AZ010 | 58d | 0d | HCRA - 1 - Normal Calendar |  |  | B5 | 26 | MEP | C | MEP |
| HCMEF7Z1730 |  | F7 :Electrical Coduits & Boards F.F for All Systems |  | 12d | 2013-10-10 | 2013-10-28 | HCMEF7Z1700 | 49d | 0d | HCRA - Global | EFFORT [12 h]; Electrical Skilled Labours [24 h] | 450 | B5 | 26 | MEP | C | MEP |
| HCMEF7Z1710 |  | F7 :Plastering Finish Date for All Parts | milestone | 0d | 2013-12-10 | 2013-12-10 | HCFWF7AZ040 | 66d | 22d | HCRA - 1 - Normal Calendar |  |  | B5 | 26 | MEP | C | MEP |
| HCMEF7Z1735 |  | F7 :Electrical Boards Seconed Fix |  | 12d | 2014-01-06 | 2014-01-22 | HCMEF7Z1730 FS+50d, HCMEF7Z1710, HCMEF6Z1580 | 49d |  | HCRA - Global | EFFORT [12 h]; Electrical Skilled Labours [24 h] | 450 | B5 | 26 | MEP | C | MEP |
| HCMEF7Z1740 |  | F7 :Cable Tray Installation |  | 14d | 2014-02-26 | 2014-03-18 | HCMEF7Z1710, HCMEF6Z1585 | 0d |  | HCRA - Global | EFFORT [10 h]; Electrical Skilled Labours [20 h] | 375 | B5 | 26 | MEP | C | MEP |
| HCMEF7Z1750 |  | F7 :Cable Laying |  | 10d | 2014-03-18 | 2014-04-01 | HCMEF7Z1740, HCMEF6Z1595 | 0d |  | HCRA - Global | EFFORT [10 h]; Electrical Skilled Labours [20 h] | 375 | B5 | 26 | MEP | C | MEP |
| HCMEF7Z1755 |  | F7 :Electrical Final Fix for All Systems & Boards (Vertical Elements) |  | 9d | 2014-05-13 | 2014-05-26 | HCMEF7Z1750 FS+30d, HCMEF7Z1735 FS+30d, HCMEF7Z1710 FS+60d | 0d |  | HCRA - Global | EFFORT [10 h]; Electrical Skilled Labours [20 h] | 375 | B5 | 26 | MEP | C | MEP |
| HCMEF7Z1760 |  | F7 :Electrical Final Fix for All Systems (Horizantel Elements) |  | 8d | 2014-05-26 | 2014-06-05 | HCMEF7Z1755, HCMEF6Z1590 | 0d |  | HCRA - Global | EFFORT [10 h]; Electrical Skilled Labours [20 h] | 375 | B5 | 26 | MEP | C | MEP |

| ID | WBS | Activity | Type | Duration | Start | Finish | Predecessors | Total float | Free float | Calendar | Resources | Cost | Bill No. | Division No. | Responsibility | Phase Code | Trade |
| --- | --- | --- | --- | --- | --- | --- | --- | --- | --- | --- | --- | --- | --- | --- | --- | --- | --- |
|  | 2 | **Fire Fighting** |  |  | 2013-10-10 | 2014-04-21 |  |  |  |  |  |  |  |  |  |  |  |
| HCMEF7Z1785 |  | F7 :Horizontal F.F Piping Work |  | 20d | 2013-10-10 | 2013-11-07 | HCMEF7Z1700 | 60d | 0d | HCRA - Global | EFFORT [20 h]; Mechnical Skilled Labours [30 h] | 712.5 | B5 | 21 | MEP | C | MEP |
| HCMEF7Z1790 |  | F7 :Fire Hose Cabinets |  | 10d | 2013-11-07 | 2013-11-21 | HCMEF7Z1785 | 60d | 27d | HCRA - Global | EFFORT [10 h]; Mechnical Skilled Labours [15 h] | 356.25 | B5 | 21 | MEP | C | MEP |
| HCMEF7Z1795 |  | F7 :Sprinklers Final Fix |  | 10d | 2014-04-07 | 2014-04-21 | HCMEF7Z1790 FS+70d, HCMEF6Z1640 | 33d | 0d | HCRA - Global | EFFORT [10 h]; Mechnical Skilled Labours [15 h] | 356.25 | B5 | 21 | MEP | C | MEP |
|  | 1 | **Air Conditioning** |  |  | 2013-12-02 | 2014-06-05 |  |  |  |  |  |  |  |  |  |  |  |
| HCMEF7Z1800 |  | F7 :Duct Installation& Dusct Accecories Installation, Fan coil Unit |  | 10d | 2013-12-02 | 2013-12-16 | HCMEF7Z1700, HCMEF6Z1645 | 23d | 0d | HCRA - Global | EFFORT [20 h]; Mechnical Skilled Labours [30 h] | 712.5 | B5 | 23 | MEP | C | MEP |
| HCMEF7Z1805 |  | F7 :Duct Insulation Work |  | 15d | 2013-12-16 | 2014-01-06 | HCMEF7Z1800 | 23d | 0d | HCRA - Global | EFFORT [15 h]; Mechnical Skilled Labours [22.5 h] | 534.38 | B5 | 23 | MEP | C | MEP |
| HCMEF7Z1810 |  | F7 :Exhaust Fans |  | 15d | 2014-01-06 | 2014-01-27 | HCMEF7Z1805 | 23d | 21d | HCRA - Global | EFFORT [15 h]; Mechnical Skilled Labours [22.5 h] | 534.38 | B5 | 23 | MEP | C | MEP |
| HCMEF7Z1815 |  | F7 :Grills & Diffusers |  | 10d | 2014-05-06 | 2014-05-20 | HCMEF7Z1810 FS+50d, HCMEF6Z1660 | 2d |  | HCRA - Global | EFFORT [10 h]; Mechnical Skilled Labours [15 h] | 356.25 | B5 | 23 | MEP | C | MEP |
| HCMEF7Z1820 |  | F7 :Mechanical final Fix |  | 10d | 2014-05-22 | 2014-06-05 | HCMEF7Z1815, HCMEF6Z1665 | 0d |  | HCRA - Global | EFFORT [10 h]; Mechnical Skilled Labours [15 h] | 356.25 | B5 | 23 | MEP | C | MEP |
|  | 3 | **Water Network** |  |  | 2013-10-14 | 2014-05-09 |  |  |  |  |  |  |  |  |  |  |  |
| HCMEF7Z1825 |  | F7 :All Vertical Piping Works |  | 10d | 2013-10-14 | 2013-10-25 | HCMEF7Z1770 SS | 10d | 0d | HCRA - Global | EFFORT [10 h]; Mechnical Skilled Labours [15 h] | 356.25 | B5 | 22 | MEP | C | MEP |
| HCMEF7Z1830 |  | F7 :All Horizantal Piping Works |  | 30d | 2013-10-28 | 2013-12-06 | HCMEF7Z1825 | 18.88d | 0d | HCRA - Global | EFFORT [30 h]; Mechnical Skilled Labours [45 h] | 1,068.75 | B5 | 22 | MEP | C | MEP |
| HCMEF7Z1835 |  | F7 :Mechanical Final Fix |  | 20d | 2014-04-14 | 2014-05-09 | HCMEF7Z1830 FS+90d, HCMEF6Z1680 | 18.88d |  | HCRA - Global | EFFORT [20 h]; Mechnical Skilled Labours [30 h] | 712.5 | B5 | 22 | MEP | C | MEP |
|  | 080 | **Roof Level** |  |  | 2013-09-18 | 2014-05-23 |  |  |  |  |  |  |  |  |  |  |  |
| HCMERF00000 |  | RF :Start Roof Floor EM Works | milestone | 0d | 2013-09-18 | 2013-09-18 | HCSW7FZ1090, HCSW7FZ2090, HCSW7FZ3090, HCSW7FZ4090, HCSW7FZ5090 | 37d | 0d |  |  |  | B5 |  | MEP | C | MEP |
| HCMERF000000 |  | RF :End Roof Floor EM Works | milestone | 0d | 2014-04-16 | 2014-04-16 | HCMERF00170 | 41d |  |  |  |  | B5 |  | MEP | C | MEP |
|  | 1 | **Draianage** |  |  | 2013-10-28 | 2014-01-17 |  |  |  |  |  |  |  |  |  |  |  |
| HCMERF00010 |  | RF :All Vertical Piping Works |  | 10d | 2013-10-28 | 2013-11-08 | HCMERF00000, HCMEF7Z1770 | 100d | 0d | HCRA - Global | EFFORT [10 h]; Mechnical Skilled Labours [15 h] | 356.25 | B5 | 22 | MEP | C | MEP |
| HCMERF00020 |  | RF :All Horizantal Piping Works |  | 30d | 2013-11-11 | 2013-12-20 | HCMERF00010 | 100d | 0d | HCRA - Global | EFFORT [30 h]; Mechnical Skilled Labours [45 h] | 1,068.75 | B5 | 22 | MEP | C | MEP |
| HCMERF00030 |  | RF :Mechanical Final Fix |  | 20d | 2013-12-23 | 2014-01-17 | HCMERF00020 | 100d |  | HCRA - Global | EFFORT [20 h]; Mechnical Skilled Labours [30 h] | 712.5 | B5 | 22 | MEP | C | MEP |
|  | 070 | **Air Conditioning** |  |  | 2013-09-18 | 2014-04-17 |  |  |  |  |  |  |  |  |  |  |  |
| HCMERF00040 |  | RF :Duct Work, Fan coil Unit |  | 25d | 2013-09-18 | 2013-10-16 | HCMERF00000 | 152d | 0d | HCRA - 1 - Normal Calendar | EFFORT [25 h]; Mechnical Skilled Labours [37.5 h] | 890.63 | B5 | 23 | MEP | C | MEP |
| HCMERF00050 |  | RF :Water Treatment Unit |  | 20d | 2013-09-18 | 2013-10-10 | HCMERF00040 SS | 152d | 0d | HCRA - 1 - Normal Calendar | EFFORT [20 h]; Mechnical Skilled Labours [30 h] | 712.5 | B5 | 23 | MEP | C | MEP |
| HCMERF00060 |  | RF :Risers Works |  | 180d | 2013-09-18 | 2014-04-17 | HCMERF00140 SS | 42d |  | HCRA - 1 - Normal Calendar | EFFORT [15 h]; Mechnical Skilled Labours [22.5 h] | 534.38 | B5 | 23 | MEP | C | MEP |
| HCMERF00070 |  | RF :Air Handing Unit |  | 30d | 2013-10-12 | 2013-11-14 | HCMERF00050 | 152d | 0d | HCRA - 1 - Normal Calendar | EFFORT [30 h]; Mechnical Skilled Labours [45 h] | 1,068.75 | B5 | 23 | MEP | C | MEP |
| HCMERF00080 |  | RF :Switch Boards |  | 20d | 2013-11-16 | 2013-12-09 | HCMERF00070 | 152d |  | HCRA - 1 - Normal Calendar | EFFORT [20 h]; Mechnical Skilled Labours [30 h] | 712.5 | B5 | 23 | MEP | C | MEP |

| ID | WBS | Activity | Duration | Start | Finish | Predecessors | Total float | Free float | Calendar | Resources | Cost | Bill No. | Division No. | Responsibility | Phase Code | Trade |
| --- | --- | --- | --- | --- | --- | --- | --- | --- | --- | --- | --- | --- | --- | --- | --- | --- |
|  | 2 | **Water Network** |  | 2013-10-28 | 2014-05-23 |  |  |  |  |  |  |  |  |  |  |  |
| HCMERF00090 |  | RF :All Vertical Piping Works | 10d | 2013-10-28 | 2013-11-08 | HCMEF7Z1825 | 10d | 0d | HCRA - Global | EFFORT [10 h]; Mechnical Skilled Labours [15 h] | 356.25 | B5 | 22 | MEP | C | MEP |
| HCMERF00100 |  | RF :All Horizantal Piping Works | 30d | 2013-11-11 | 2013-12-20 | HCMERF00090 | 10d | 0d | HCRA - Global | EFFORT [30 h]; Mechnical Skilled Labours [45 h] | 1,068.75 | B5 | 22 | MEP | C | MEP |
| HCMERF00110 |  | RF :Mechanical Final Fix | 20d | 2014-04-28 | 2014-05-23 | HCMERF00100 FS+90d | 10d |  | HCRA - Global | EFFORT [20 h]; Mechnical Skilled Labours [30 h] | 712.5 | B5 | 22 | MEP | C | MEP |
|  | 3 | **Electrical Works** |  | 2013-09-18 | 2014-04-15 |  |  |  |  |  |  |  |  |  |  |  |
| HCMERF00120 |  | RF :Electrical Conduits & Boards F.F | 12d | 2013-09-18 | 2013-10-03 | HCMERF00000 | 117.88d | 0d | HCRA - Global | EFFORT [12 h]; Electrical Skilled Labours [24 h] | 450 | B5 | 26 | MEP | C | MEP |
| HCMERF00140 |  | RF :All Risers Works | 150d | 2013-09-18 | 2014-04-15 | HCMERF00000 | 35d | 0d | HCRA - Global | EFFORT [15 h]; Electrical Skilled Labours [30 h] | 562.5 | B5 | 26 | MEP | C | MEP |
| HCMERF00150 |  | RF :Electrical Wiring Works | 15d | 2013-10-04 | 2013-10-24 | HCMERF00120, HEPSAME1440 | 117.88d | 0d | HCRA - Global | EFFORT [15 h]; Electrical Skilled Labours [30 h] | 562.5 | B5 | 26 | MEP | C | MEP |
| HCMERF00160 |  | RF :Electrical Boards Second Fix | 12d | 2013-10-25 | 2013-11-11 | HCMERF00150 | 117.88d | 81d | HCRA - Global | EFFORT [12 h]; Electrical Skilled Labours [24 h] | 450 | B5 | 26 | MEP | C | MEP |
| HCMERF00130 |  | RF :Earthing System Works | 20d | 2014-03-19 | 2014-04-15 | HCMERF00140 FF | 38d |  | HCRA - Global | EFFORT [20 h]; Electrical Skilled Labours [40 h] | 750 | B5 | 26 | MEP | C | MEP |
| HCMERF00170 |  | RF :Electrical Final Fix | 15d | 2014-03-26 | 2014-04-15 | HCMERF00160 FS+15d, HCMERF00140 FF | 36.88d | 0d | HCRA - Global | EFFORT [15 h]; Electrical Skilled Labours [30 h] | 562.5 | B5 | 26 | MEP | C | MEP |
|  | SP | **Spicial Systems & Equipment** |  | 2013-04-04 | 2014-06-01 |  |  |  |  |  |  |  |  |  |  |  |
|  | 00 | **Conveying System** |  | 2013-08-22 | 2014-03-05 |  |  |  |  |  |  |  |  |  |  |  |
| HCMEPSSCO010 |  | SPS :Electrical Cables & Motors | 90d | 2013-08-22 | 2013-12-10 | HEPSCVS0020, HCSW7FZ2090 | 86d | 0d |  |  |  |  |  |  |  |  |
| HCMEPSSCO020 |  | SPS :Lifts Rooms Installation | 21d | 2013-12-11 | 2014-01-06 | HCMEPSSCO010, HEPSCVS0010 | 86d | 0d |  |  |  |  |  |  |  |  |
| HCMEPSSCO030 |  | SPS :Final Fix & Fixtures | 21d | 2014-01-07 | 2014-02-01 | HCMEPSSCO020, HEPSCVS0040 | 86d | 0d |  |  |  |  |  |  |  |  |
| HCMEPSSCO040 |  | SPS :Calibration and commissioning | 28d | 2014-02-02 | 2014-03-05 | HCMEPSSCO030 | 86d |  |  |  |  |  |  |  |  |  |
|  | 1 | **Earthing System** |  | 2013-10-14 | 2014-01-07 |  |  |  |  |  |  |  |  |  |  |  |
| HCMEPSSER010 |  | SPS :Earthing System | 60d | 2013-10-14 | 2013-12-29 | HEPSSME1470 | 134d | 0d |  |  |  | B5 | 26 | MEP | C | MEP |
| HCMEPSSER020 |  | SPS :Connect to Main Rod | 7d | 2013-12-30 | 2014-01-07 | HCMEPSSER010 | 134d |  |  |  |  | B5 | 26 | MEP | C | MEP |
|  | 2 | **IT System & Wiring** |  | 2013-10-14 | 2014-03-11 |  |  |  |  |  |  |  |  |  |  |  |
| HCMEPSSIT010 |  | SPS :All Vertical & Horizantal Conduts & Wiring Installations | 30d | 2013-10-14 | 2013-11-23 | HEPSSME1470, HCSW7FZ5090 | 81d | 0d |  |  |  | B5 | 27 | MEP | C | MEP |
| HCMEPSSIT020 |  | SPS :Floor Boxes | 30d | 2013-11-24 | 2013-12-29 | HCMEPSSIT010 | 81d | 0d |  |  |  | B5 | 27 | MEP | C | MEP |
| HCMEPSSIT030 |  | SPS :IT Cabinits & Pach Panels | 30d | 2013-12-30 | 2014-02-04 | HCMEPSSIT020 | 81d | 0d |  |  |  | B5 | 27 | MEP | C | MEP |
| HCMEPSSIT040 |  | SPS :Telecommunication Outlets Installation | 30d | 2014-02-05 | 2014-03-11 | HCMEPSSIT030 | 81d |  |  |  |  | B5 | 27 | MEP | C | MEP |

| ID | WBS | Activity | Duration | Start | Finish | Predecessors | Total float | Free float | Bill No. | Division No. | Responsibility | Phase Code | Trade |
| --- | --- | --- | --- | --- | --- | --- | --- | --- | --- | --- | --- | --- | --- |
|  | 3 | **Audio Vedio System & Wiring** |  | 2014-05-20 | 2014-06-01 |  |  |  |  |  |  |  |  |
| HCMEPSSAV010 |  | SPS :Full Executive Boardrooms hardware & Wiring System | 7d | 2014-05-20 | 2014-05-29 | HEPSSME1470, HCMEF6Z3570 | 14d | 0d | B5 | 27 | MEP | C | MEP |
| HCMEPSSAV020 |  | SPS :Full Auditorium hardware & Wiring System | 7d | 2014-05-20 | 2014-05-29 | HCMEPSSAV010 SS, HCFWB1Z4021 | 14d | 0d | B5 | 27 | MEP | C | MEP |
| HCMEPSSAV030 |  | SPS :Full Modular Conference Room hardware & Wiring System | 7d | 2014-05-20 | 2014-05-29 | HCMEPSSAV020 SS, HCMEF3Z2190 | 14d | 0d | B5 | 27 | MEP | C | MEP |
| HCMEPSSAV040 |  | SPS :Full Large Conference Room hardware & Wiring System | 7d | 2014-05-20 | 2014-05-29 | HCMEPSSAV030 SS, HCMEGFZ2175 | 14d | 0d | B5 | 27 | MEP | C | MEP |
| HCMEPSSAV050 |  | SPS :Full Meduim Conference Room hardware & Wiring System | 7d | 2014-05-20 | 2014-05-29 | HCMEPSSAV040 SS, HCMEGFZ2175 | 14d | 0d | B5 | 27 | MEP | C | MEP |
| HCMEPSSAV060 |  | SPS :Connect to Mains | 2d | 2014-05-31 | 2014-06-01 | HCMEPSSAV050 | 14d |  | B5 | 27 | MEP | C | MEP |
|  | 4 | **Access Control system & Wiring** |  | 2013-10-14 | 2013-11-23 |  |  |  |  |  |  |  |  |
| HCMEPSSAC010 |  | SPS :Main ACS Work Station @ Control room | 7d | 2013-10-14 | 2013-10-26 | HEPSSME1470 | 171d | 0d | B5 | 28 | MEP | C | MEP |
| HCMEPSSAC020 |  | SPS :Vertical & Horizantal Pipes & Cables | 15d | 2013-10-27 | 2013-11-13 | HCMEPSSAC010 | 171d | 0d | B5 | 28 | MEP | C | MEP |
| HCMEPSSAC030 |  | SPS :Final Fixtures (Intercom Units, Locks, Controllers, Cardreader) | 7d | 2013-11-14 | 2013-11-21 | HCMEPSSAC020 | 171d | 0d | B5 | 28 | MEP | C | MEP |
| HCMEPSSAC040 |  | SPS :ACS management Software | 1d | 2013-11-23 | 2013-11-23 | HCMEPSSAC030 | 171d |  | B5 | 28 | MEP | C | MEP |
|  | 5 | **CCTV System** |  | 2013-10-14 | 2013-12-15 |  |  |  |  |  |  |  |  |
| HCMEPSSCV010 |  | SPS :Vertical & Horizantal Conduits | 15d | 2013-10-14 | 2013-11-04 | HEPSSME1470 | 152d | 0d | B5 | 28 | MEP | C | MEP |
| HCMEPSSCV020 |  | SPS :Data & power Cables | 14d | 2013-11-06 | 2013-11-21 | HCMEPSSCV010 | 152d | 0d | B5 | 28 | MEP | C | MEP |
| HCMEPSSCV030 |  | SPS :Main Control system in Security Room with server & software | 10d | 2013-11-23 | 2013-12-03 | HCMEPSSCV020 | 152d | 0d | B5 | 28 | MEP | C | MEP |
| HCMEPSSCV040 |  | SPS :Final Fixtures ( Cameras, Monitors, Remot controls) | 10d | 2013-12-04 | 2013-12-15 | HCMEPSSCV030 | 152d |  | B5 | 28 | MEP | C | MEP |
|  | 6 | **Fire Alarm System** |  | 2013-10-14 | 2013-11-24 |  |  |  |  |  |  |  |  |
| HCMEPSSFA010 |  | SPS :Fire Alarm Control Panel and valves | 2d | 2013-10-14 | 2013-10-20 | HEPSSME1470 | 170d | 0d | B5 | 28 | MEP | C | MEP |
| HCMEPSSFA020 |  | SPS :Vertical & Horizantal Conduts | 15d | 2013-10-21 | 2013-11-07 | HCMEPSSFA010 | 170d | 0d | B5 | 28 | MEP | C | MEP |
| HCMEPSSFA030 |  | SPS :Fire Alarm Cables & Connect to Panel | 7d | 2013-11-09 | 2013-11-16 | HCMEPSSFA020 | 170d | 0d | B5 | 28 | MEP | C | MEP |
| HCMEPSSFA040 |  | SPS :Final Fixtures (Detectors, Sound & Flash Alarms) | 7d | 2013-11-17 | 2013-11-24 | HCMEPSSFA030 | 170d |  | B5 | 28 | MEP | C | MEP |
|  | 7 | **Window Washing System & SunShades** |  | 2013-12-17 | 2014-01-23 |  |  |  |  |  |  |  |  |
| HCMEPSSWW010 |  | SPS :Installation for Window Washing system | 30d | 2013-12-17 | 2014-01-23 | HEPSAME1180, HCFWRFAZ050 | 121d | 2d | B5 |  | MEP | C | MEP |
| HCMEPSSWW020 |  | SPS :Installation of Automated motorized sun screen shades | 10d | 2013-12-19 | 2013-12-31 | HCMEPSSWW010 SS, HCFWRFAZ090 | 139d |  |  |  |  |  |  |

| ID | WBS | Activity | Duration | Start | Finish | Predecessors | Total float | Free float | Bill No. | Responsibility | Phase Code | Trade |
| --- | --- | --- | --- | --- | --- | --- | --- | --- | --- | --- | --- | --- |
|  | 8 | **Prking Control Equipment** |  | 2014-02-11 | 2014-03-17 |  |  |  |  |  |  |  |
| HCMEPSSE010 |  | SPS :Installation for Parking Control Equipment | 30d | 2014-02-11 | 2014-03-17 | HEPSAME1190, HCSW7FZ4090, HCSW7FZ5090 | 76d |  | B5 | MEP | C | MEP |
|  | 9 | **Generators & MDBs** |  | 2014-03-24 | 2014-04-09 |  |  |  |  |  |  |  |
| HCMEPSGN020 |  | SPS :Install Generator With All Fixtures | 14d | 2014-03-24 | 2014-04-09 | HEPSSME1470, HEPSAME1200, HCFWB10001 | 56.5d |  | B5 | MEP | C | MEP |
|  | 10 | **HVAC Main Requirements** |  | 2013-10-12 | 2014-05-22 |  |  |  |  |  |  |  |
| HCMEPSHV030 |  | SPS :BMS & Automation Control System | 3d | 2013-10-12 | 2013-10-14 | HCMEF7000 | 200d | 0d | B5 | MEP | C | MEP |
| HCMEPSHV040 |  | SPS :Automatic retractable and fixed bollards | 3d | 2013-10-12 | 2013-10-14 | HCMEPSHV030 SS, HCMEF7000 | 200d |  |  |  |  |  |
| HCMEPSHV010 |  | SPS :Chillers Installation | 50d | 2014-03-24 | 2014-05-22 | HEPSSME1470, HEPSAME1210, HCFWB10001 | 20.5d | 0d | B5 | MEP | C | MEP |
| HCMEPSHV020 |  | SPS :Boiler Installation On Boiler Room | 14d | 2014-03-24 | 2014-04-09 | HEPSAME1220, HCFWB10001 | 26.5d | 0d | B5 | MEP | C | MEP |
| HCMEPSHV050 |  | SPS :Air Handiling Units All works & connect to mains | 30d | 2014-03-24 | 2014-04-28 | HCMEPSHV010 SS | 40.5d |  |  |  |  |  |
| HCMEPSHV060 |  | SPS :Chimney steel ductwork, Accesss, connect to boiler | 30d | 2014-04-09 | 2014-05-15 | HCMEPSHV020 | 26.5d |  |  |  |  |  |
|  | 11 | **Access Flooring System** |  | 2013-10-14 | 2014-03-23 |  |  |  |  |  |  |  |
| HCMEPSAF010 |  | SPS :Steel Base Structures | 60d | 2013-10-14 | 2013-12-29 | HEPSAFI0560, HCFWB1Z1008, HEPSSME1470 | 61d | 0d |  |  |  |  |
| HCMEPSAF020 |  | SPS :Access Panels | 60d | 2013-12-30 | 2014-03-11 | HCMEPSAF010 | 61d | 0d |  |  |  |  |
| HCMEPSAF030 |  | SPS :Access Flooring Accessories | 10d | 2014-03-12 | 2014-03-23 | HCMEPSAF020 | 61d |  |  |  |  |  |
|  | 12 | **Roller Shutter Doors For Parkings** |  | 2013-10-14 | 2014-02-04 |  |  |  |  |  |  |  |
| HCMEPSRS010 |  | SPS :Motor & Electrical Intallations | 30d | 2013-10-14 | 2013-11-23 | HEPSSME1470, HCFWB4Z1007 | 141d | 0d |  |  |  |  |
| HCMEPSRS020 |  | SPS :Hardware | 30d | 2013-11-24 | 2013-12-29 | HCMEPSRS010 | 141d | 0d |  |  |  |  |
| HCMEPSRS030 |  | SPS :PVC Roller Doors final fix | 30d | 2013-12-30 | 2014-02-04 | HCMEPSRS020, HCFWB4Z1011 | 141d |  |  |  |  |  |
|  | 13 | **plumping spicial systems** |  | 2013-10-14 | 2013-12-04 |  |  |  |  |  |  |  |
| HCMEPSPL030 |  | SPS :Building EM Pumps All Works & Connect to mains | 20d | 2013-10-14 | 2013-11-11 | HEPSSME1470, HCFWB4Z1007 | 161d | 0d |  |  |  |  |
| HCMEPSPL040 |  | SPS :Copper silver ionization water treatment unit | 20d | 2013-10-14 | 2013-11-11 | HCMEPSPL030 SS | 161d | 0d |  |  |  |  |
| HCMEPSPL050 |  | SPS :GRP Tank | 20d | 2013-10-14 | 2013-11-11 | HCMEPSPL040 SS | 161d | 0d |  |  |  |  |
| HCMEPSPL060 |  | SPS :Expansion tank | 20d | 2013-10-14 | 2013-11-11 | HCMEPSPL050 SS | 161d | 0d |  |  |  |  |
| HCMEPSPL070 |  | SPS :Sand Oil intercepter | 20d | 2013-11-12 | 2013-12-04 | HCMEPSPL060 | 161d |  |  |  |  |  |

| ID | WBS | Activity | Duration | Start | Finish | Predecessors | Total float | Free float |
| --- | --- | --- | --- | --- | --- | --- | --- | --- |
|  | 14 | **Grounding Protection system** |  | 2013-10-14 | 2014-02-13 |  |  |  |
| HCMEPSGR070 |  | SPS :Grounding system for building structure - elec | 14d | 2013-10-14 | 2013-11-03 | HEPSSME1470, HCFWB4Z1007 | 103d | 0d |
| HCMEPSGR080 |  | SPS :Grounding system to main/submain electrical panels - elec | 14d | 2013-11-04 | 2013-11-20 | HCMEPSGR070 | 103d | 0d |
| HCMEPSGR090 |  | SPS :Grounding system to MCC panels - elec | 14d | 2013-11-21 | 2013-12-07 | HCMEPSGR080 | 103d | 0d |
| HCMEPSGR100 |  | SPS :Grounding system to Mechanical equipments - elec | 14d | 2013-12-08 | 2013-12-23 | HCMEPSGR090 | 103d | 0d |
| HCMEPSGR110 |  | SPS :Clean grounding system for equipment rooms- comm | 14d | 2013-12-24 | 2014-01-11 | HCMEPSGR100 | 103d | 0d |
| HCMEPSGR120 |  | SPS :Clean grounding system for all floors Telecom rooms - comm | 14d | 2014-01-12 | 2014-01-28 | HCMEPSGR110 | 103d | 0d |
| HCMEPSGR130 |  | SPS :Clean grounding system for low current systems equipment rooms - saf | 14d | 2014-01-29 | 2014-02-13 | HCMEPSGR120 | 103d |  |
|  | 15 | **Busway system** |  | 2013-10-14 | 2014-02-04 |  |  |  |
| HCMEPSBW130 |  | SPS :Enclosed Bus Assemblies (BBT/Busways) | 30d | 2013-10-14 | 2013-11-23 | HEPSSME1470, HCFWB4Z1007 | 111d | 0d |
| HCMEPSBW140 |  | SPS :Tap-off plug in unit type, including MCCB circuit breaker for busway system | 30d | 2013-11-24 | 2013-12-29 | HCMEPSBW130 | 111d | 0d |
| HCMEPSBW150 |  | SPS :Transition Box for connection electrical cables to busway distribution system | 30d | 2013-12-30 | 2014-02-04 | HCMEPSBW140 | 111d |  |
|  | 16 | **Lighting System** |  | 2013-04-04 | 2014-04-27 |  |  |  |
| HCMEPSLS150 |  | SPS :lighting points | 60d | 2013-04-04 | 2013-06-15 | HEPSAME1310, HEPSSME1470 SS+50d | 41d | 0d |
| HCMEPSLS160 |  | SPS :Lighting Fixtures | 60d | 2013-06-16 | 2013-08-27 | HCMEPSLS150 | 41d | 0d |
| HCMEPSLS170 |  | SPS :Exterior Lighting | 60d | 2013-08-28 | 2013-11-11 | HCMEPSLS160 | 41d | 0d |
| HCMEPSLS180 |  | SPS :Emergency & Exit Lighting | 60d | 2013-11-12 | 2014-01-23 | HCMEPSLS170 | 41d | 0d |
| HCMEPSLS190 |  | SPS :Lighting Switches/control | 60d | 2014-01-25 | 2014-04-03 | HCMEPSLS180 | 41d | 0d |
| HCMEPSLS200 |  | SPS :Facility Lightning Protection | 20d | 2014-04-05 | 2014-04-27 | HCMEPSLS190 | 41d |  |
|  | 7 | **Casting and Finishing of Left over slabs** |  | 2013-08-27 | 2014-07-22 |  |  |  |
| HCSWAFAZ000 |  | Construct of left over areas (crane # 3) | 49d | 2013-08-27 | 2013-10-27 | HMMOAZ070 | 0d |  |
| HCFWAFAZ000 |  | Finish Left over areas (Crane #3) | 142d | 2013-10-28 | 2014-04-15 | HCSWAFAZ000 | 0d |  |
| HCSWAFAZ010 |  | Construct of left over areas (crane # 2) | 35d | 2014-02-19 | 2014-03-31 | HMMOAZ060, HCSWAFAZ000 | 13d |  |
| HCFWAFAZ010 |  | Finish Left over areas (Crane #2) | 81d | 2014-04-16 | 2014-07-22 | HCSWAFAZ010, HCFWAFAZ000 | 0d |  |

| ID | WBS | Activity | Duration | Start | Finish | Predecessors | Total float | Free float | Bill No. | Division No. | Responsibility | Phase Code |
| --- | --- | --- | --- | --- | --- | --- | --- | --- | --- | --- | --- | --- |
|  | 6 | **External Works** |  | 2013-09-18 | 2014-05-15 |  |  |  |  |  |  |  |
|  | 1 | **Earth Works** |  | 2013-09-18 | 2013-12-17 |  |  |  |  |  |  |  |
| HCEXWERW010 |  | EXT :External Earth Works | 30d | 2013-09-18 | 2013-10-27 | HCSW7FZ4090, HCSW7FZ5090, HCSWB1Z1310, HCSWB1Z2250, HCSWB1Z3290, HCSWB1Z4130, HCSWB1Z5290, HCSWB1Z6130 | 16d | 0d | B4 | 03 | MC | C |
| HCEXWERW020 |  | EXT :Compacted Base Coarse | 14d | 2013-10-28 | 2013-11-13 | HCEXWERW010 | 20d | 0d |  |  |  |  |
| HCEXWERW030 |  | EXT :SubGrade | 14d | 2013-11-14 | 2013-11-30 | HCEXWERW020 | 20d | 0d |  |  |  |  |
| HCEXWERW040 |  | EXT :Asphalt Paving | 15d | 2013-12-01 | 2013-12-17 | HCEXWERW030 | 20d | 4d |  |  |  |  |
|  | 2 | **Concrete & Water proofing Works** |  | 2013-10-28 | 2013-12-22 |  |  |  |  |  |  |  |
| HCEXWCPW010 |  | EXT :Blinding & Protection to Water proofing | 10d | 2013-10-28 | 2013-11-09 | HCEXWERW010 | 16d | 0d |  |  |  |  |
| HCEXWCPW020 |  | EXT :Foundation Works | 15d | 2013-11-10 | 2013-11-26 | HCEXWCPW010 | 16d | 0d |  |  |  |  |
| HCEXWCPW030 |  | EXT :Walls & Stairs | 15d | 2013-11-27 | 2013-12-14 | HCEXWCPW020 | 16d | 0d |  |  |  |  |
| HCEXWCPW040 |  | EXT :Slab On Grade | 7d | 2013-12-15 | 2013-12-22 | HCEXWCPW030 | 16d | 0d |  |  |  |  |
|  | 3 | **Stones** |  | 2013-12-23 | 2014-02-18 |  |  |  |  |  |  |  |
| HCEXWSTN010 |  | EXT :Gabion walls cell | 14d | 2013-12-23 | 2014-01-09 | HCEXWCPW040 | 89d | 0d |  |  |  |  |
| HCEXWSTN050 |  | EXT :Stone Flooring | 14d | 2013-12-23 | 2014-01-09 | HCEXWCPW040 | 16d | 0d |  |  |  |  |
| HCEXWSTN020 |  | EXT :Stone Cladding With Various finishes | 14d | 2014-01-11 | 2014-01-27 | HCEXWSTN010 | 89d | 0d |  |  |  |  |
| HCEXWSTN030 |  | EXT :Stone Copping With Various Finishes | 14d | 2014-01-18 | 2014-02-02 | HCEXWSTN020 SS+5d, HCEXWSTN020 FF+5d | 89d | 0d |  |  |  |  |
| HCEXWSTN040 |  | EXT :Stone Screen & Seat Walls | 14d | 2014-02-03 | 2014-02-18 | HCEXWSTN030 | 89d |  |  |  |  |  |
|  | 4 | **Landscaping & Pavement** |  | 2013-12-23 | 2014-02-25 |  |  |  |  |  |  |  |
| HCEXWLDP010 |  | EXT :Curbstone | 14d | 2013-12-23 | 2014-01-09 | HCEXWSTN050 SS, HCEXWERW040 | 16d | 0d |  |  |  |  |
| HCEXWLDP020 |  | EXT :Landscape | 25d | 2014-01-11 | 2014-02-09 | HCEXWLDP010 | 83d | 0d |  |  |  |  |
| HCEXWLDP030 |  | EXT :Planters | 14d | 2014-02-10 | 2014-02-25 | HCEXWLDP020 | 83d |  |  |  |  |  |
|  | 5 | **Guard Houses** |  | 2013-11-27 | 2014-04-13 |  |  |  |  |  |  |  |
| HCEXWGRD010 |  | EXT :Guard House Construction Works | 60d | 2013-11-27 | 2014-02-08 | HCEXWCPW020 | 43d | 0d |  |  |  |  |
| HCEXWGRD020 |  | EXT :Guard House Finishing Works | 45d | 2014-02-09 | 2014-04-01 | HCEXWGRD010 | 43d | 0d |  |  |  |  |
| HCEXWGRD030 |  | EXT :Guard House Interior MEP Works | 45d | 2014-02-20 | 2014-04-13 | HCEXWGRD020 SS+10d, HCEXWGRD020 FF+10d | 43d |  |  |  |  |  |

| ID | WBS | Activity | Type | Duration | Start | Finish | Predecessors | Total float | Free float | Bill No. | Division No. | Responsibility | Phase Code |
| --- | --- | --- | --- | --- | --- | --- | --- | --- | --- | --- | --- | --- | --- |
|  | 6 | **Water Features & Pool** |  |  | 2013-12-23 | 2014-05-15 |  |  |  |  |  |  |  |
| HCEXWWFP010 |  | EXT :Water Feature All Works |  | 120d | 2013-12-23 | 2014-05-15 | HCEXWLDP010 SS | 16d | 0d |  |  |  |  |
| HCEXWWFP020 |  | EXT :Reflecting Pool All Works |  | 120d | 2013-12-23 | 2014-05-15 | HCEXWWFP010 SS, HCEXWWFP010 FF | 16d |  |  |  |  |  |
|  | 8 | **Mescellanuous Finishings** |  |  | 2013-12-23 | 2014-04-03 |  |  |  |  |  |  |  |
| HCEXWMFN010 |  | EXT :Wood Decking |  | 35d | 2013-12-23 | 2014-02-04 | HCEXWWFP010 SS | 51d | 0d |  |  |  |  |
| HCEXWMFN020 |  | EXT :Doors & Windows, Steel Security Gates |  | 25d | 2014-02-05 | 2014-03-05 | HCEXWMFN010 | 51d | 0d |  |  |  |  |
| HCEXWMFN030 |  | EXT :Stainless Steel Bollards |  | 25d | 2014-03-06 | 2014-04-03 | HCEXWMFN020 | 51d |  |  |  |  |  |
|  | 7 | **MEP External Works** |  |  | 2013-12-23 | 2014-01-23 |  |  |  |  |  |  |  |
| HCEXWMEP010 |  | EXT :Plumping, Piping All Sizes |  | 5d | 2013-12-23 | 2013-12-29 | HCEXWCPW040, HEPSAME1130 | 121d | 0d |  |  |  |  |
| HCEXWMEP020 |  | EXT :Fire Suppression piping & Hydrants |  | 5d | 2013-12-23 | 2013-12-29 | HCEXWMEP010 SS | 131d | 0d |  |  |  |  |
| HCEXWMEP030 |  | EXT :Manholes & Water Cabinet |  | 15d | 2013-12-23 | 2014-01-11 | HCEXWMEP020 SS | 131d | 0d |  |  |  |  |
| HCEXWMEP040 |  | EXT :Fuel Oil Piping & Valves |  | 5d | 2013-12-23 | 2013-12-29 | HCEXWMEP030 SS | 131d | 0d |  |  |  |  |
| HCEXWMEP050 |  | EXT :Irrigation System All Works |  | 15d | 2013-12-23 | 2014-01-11 | HCEXWMEP040 SS | 131d |  |  |  |  |  |
| HCEXWMEP060 |  | EXT :External Pumps All works & Connect to mains |  | 20d | 2013-12-30 | 2014-01-23 | HCEXWMEP010 | 121d |  |  |  |  |  |
|  | 5 | **Envelope** |  |  | 2013-04-13 | 2014-04-13 |  |  |  |  |  |  |  |
|  | 1 | **Envelope Zone 1** |  |  | 2013-04-13 | 2013-11-20 |  |  |  |  |  |  |  |
| HCEWAFZ1000 |  | ENV :Release (from structure / steel structure works) | milestone | 0d | 2013-04-13 | 2013-04-13 | HCSW7FZ1090 | 154d | 0d | B3 | 05 | ALU | C |
| HCEWAFZ1010 |  | ENV :Survey and setting out |  | 10d | 2013-04-13 | 2013-04-23 | HCEWAFZ1000 | 154d | 0d | B3 | 05 | ALU | C |
| HCEWAFZ1020 |  | ENV :Bracket installation |  | 40d | 2013-04-24 | 2013-06-11 | HCEWAFZ1010, HCSWB1Z1310 | 154d | 0d | B3 | 05 | ALU | C |
| HCEWAFZ1030 |  | ENV :Steel frame installation |  | 40d | 2013-04-30 | 2013-06-17 | HCEWAFZ1020 SS+5d, HCEWAFZ1020 FF+5d | 154d | 0d | B3 | 05 | ALU | C |
| HCEWAFZ1040 |  | ENV :Aluminum panels installation |  | 40d | 2013-05-07 | 2013-06-23 | HCEWAFZ1030 SS+5d, HCEWAFZ1030 FF+5d | 154d | 111d | B3 | 05 | ALU | C |
| HCEWAFZ1050 |  | ENV :Unit installation |  | 40d | 2013-09-24 | 2013-11-14 | HCEWAFZ1040 SS+5d, HCEWAFZ1040 FF+5d, HEPSAAL0010, HEPSAAL0000, HEPSAAL0060, HEPSAAL0070 | 43d | 0d | B3 | 05 | ALU | C |
| HCEWAFZ1060 |  | ENV :Stone installation |  | 40d | 2013-09-30 | 2013-11-20 | HCEWAFZ1050 SS+5d, HCEWAFZ1050 FF+5d | 43d | 0d | B3 | 05 | ALU | C |
|  | 2 | **Envelope Zone 2** |  |  | 2013-06-08 | 2014-01-08 |  |  |  |  |  |  |  |
| HCEWAFZ2000 |  | ENV :Release (from structure / steel structure works) | milestone | 0d | 2013-06-08 | 2013-06-08 | HCSW7FZ2090 | 148d | 0d | B3 | 05 | ALU | C |
| HCEWAFZ2010 |  | ENV :Survey and setting out |  | 10d | 2013-06-08 | 2013-06-18 | HCEWAFZ2000 | 148d | 0d | B3 | 05 | ALU | C |
| HCEWAFZ2020 |  | ENV :Bracket installation |  | 40d | 2013-06-19 | 2013-08-04 | HCEWAFZ2010 | 148d | 0d | B3 | 05 | ALU | C |
| HCEWAFZ2030 |  | ENV :Steel frame installation |  | 40d | 2013-06-25 | 2013-08-13 | HCEWAFZ2020 SS+5d, HCEWAFZ2020 FF+5d | 148d | 70d | B3 | 05 | ALU | C |
| HCEWAFZ2040 |  | ENV :Aluminum panels installation |  | 40d | 2013-09-24 | 2013-11-14 | HCEWAFZ2030 SS+5d, HCEWAFZ2030 FF+5d, HEPSAAL0010 | 78d | 0d | B3 | 05 | ALU | C |
| HCEWAFZ2050 |  | ENV :Unit installation |  | 40d | 2013-09-30 | 2013-11-20 | HCEWAFZ2040 SS+5d, HCEWAFZ2040 FF+5d | 78d | 35d | B3 | 05 | ALU | C |
| HCEWAFZ2060 |  | ENV :Stone installation |  | 40d | 2013-11-21 | 2014-01-08 | HCEWAFZ2050 SS+5d, HCEWAFZ2050 FF+5d, HCEWAFZ1060 | 43d | 0d | B3 | 05 | ALU | C |

| ID | WBS | Activity | Type | Duration | Start | Finish | Predecessors | Total float | Free float | Bill No. | Division No. | Responsibility | Phase Code | Trade |
| --- | --- | --- | --- | --- | --- | --- | --- | --- | --- | --- | --- | --- | --- | --- |
|  | 3 | **Envelope Zone 3** |  |  | 2013-08-12 | 2014-02-25 |  |  |  |  |  |  |  |  |
| HCEWAFZ3000 |  | ENV :Release (from structure / steel structure works) | milestone | 0d | 2013-08-12 | 2013-08-12 | HCSW7FZ3090 | 135d | 0d | B3 | 05 | ALU | C |  |
| HCEWAFZ3010 |  | ENV :Survey and setting out |  | 10d | 2013-08-12 | 2013-08-22 | HCEWAFZ3000 | 135d | 0d | B3 | 05 | ALU | C |  |
| HCEWAFZ3020 |  | ENV :Bracket installation |  | 40d | 2013-08-24 | 2013-10-08 | HCEWAFZ3010 | 135d | 0d | B3 | 05 | ALU | C |  |
| HCEWAFZ3030 |  | ENV :Steel frame installation |  | 40d | 2013-08-29 | 2013-10-14 | HCEWAFZ3020 SS+5d, HCEWAFZ3020 FF+5d | 135d | 0d | B3 | 05 | ALU | C |  |
| HCEWAFZ3040 |  | ENV :Aluminum panels installation |  | 40d | 2013-09-04 | 2013-10-24 | HCEWAFZ3030 SS+5d, HCEWAFZ3030 FF+5d | 135d | 0d | B3 | 05 | ALU | C |  |
| HCEWAFZ3050 |  | ENV :Unit installation |  | 40d | 2013-09-10 | 2013-10-30 | HCEWAFZ3040 SS+5d, HCEWAFZ3040 FF+5d | 135d | 92d | B3 | 05 | ALU | C |  |
| HCEWAFZ3060 |  | ENV :Stone installation |  | 40d | 2014-01-09 | 2014-02-25 | HCEWAFZ3050 SS+5d, HCEWAFZ3050 FF+5d, HCEWAFZ2060 | 43d | 0d | B3 | 05 | ALU | C |  |
|  | 4 | **Envelope Zone 4** |  |  | 2013-09-18 | 2014-04-13 |  |  |  |  |  |  |  |  |
| HCEWAFZ4000 |  | ENV :Release (from structure / steel structure works) | milestone | 0d | 2013-09-18 | 2013-09-18 | HCSW7FZ4090, HCSW7FZ5090, HCSWB1Z6130, HCSWB1Z5290 | 143d | 0d | B3 | 05 | ALU | C |  |
| HCEWAFZ4010 |  | ENV :Survey and setting out |  | 10d | 2013-09-18 | 2013-09-29 | HCEWAFZ4000 | 143d | 0d | B3 | 05 | ALU | C |  |
| HCEWAFZ4020 |  | ENV :Bracket installation |  | 40d | 2013-09-30 | 2013-11-20 | HCEWAFZ4010 | 143d | 0d | B3 | 05 | ALU | C |  |
| HCEWAFZ4030 |  | ENV :Steel frame installation |  | 40d | 2013-10-06 | 2013-11-26 | HCEWAFZ4020 SS+5d, HCEWAFZ4020 FF+5d | 143d | 0d | B3 | 05 | ALU | C |  |
| HCEWAFZ4040 |  | ENV :Aluminum panels installation |  | 40d | 2013-10-12 | 2013-12-02 | HCEWAFZ4030 SS+5d, HCEWAFZ4030 FF+5d | 143d | 87d | B3 | 05 | ALU | C |  |
| HCEWAFZ4050 |  | ENV :Unit installation |  | 40d | 2014-02-05 | 2014-03-23 | HCEWAFZ4040 SS+5d, HCEWAFZ4040 FF+5d, HEPSAAL0030, HEPSAAL0050, HEMSAAL0070 | 56d | 13d | B3 | 05 | ALU | C |  |
| HCEWAFZ4060 |  | ENV :Stone installation |  | 40d | 2014-02-26 | 2014-04-13 | HCEWAFZ4050 SS+5d, HCEWAFZ3060 | 43d |  | B3 | 05 | ALU | C |  |
|  | 5 | **Sky Light area** |  |  | 2013-09-18 | 2014-02-18 |  |  |  |  |  |  |  |  |
| HCEWAFZ5000 |  | ENV :Release (from structure / steel structure works) | milestone | 0d | 2013-09-18 | 2013-09-18 | HCSW7FZ1090, HCSW7FZ2090, HCSW7FZ3090, HCSW7FZ4090, HCSW7FZ5090 | 13d | 0d |  |  | ALU | C | FI |
| HCEWAFZ5010 |  | ENV :Survey and setting out |  | 10d | 2013-09-18 | 2013-09-29 | HCEWAFZ5000 | 13d | 0d |  |  | ALU | C | FI |
| HCEWAFZ5020 |  | ENV :Steel frame installation |  | 30d | 2013-09-30 | 2013-11-09 | HCEWAFZ5010 | 13d | 0d |  |  | ALU | C | FI |
| HCEWAFZ5030 |  | ENV :Glass installation |  | 40d | 2013-11-10 | 2013-12-26 | HCEWAFZ5020 | 13d | 0d |  |  | ALU | C | FI |
| HCEWAFZ5040 |  | ENV :Aluminum panel installation |  | 10d | 2013-12-28 | 2014-01-08 | HCEWAFZ5030 | 13d | 0d |  |  | ALU | C | FI |
| HCEWAFZ5050 |  | ENV :Railing installation |  | 10d | 2014-01-09 | 2014-01-21 | HCEWAFZ5040 | 13d | 0d |  |  | ALU | C | FI |
| HCEWAFZ5060 |  | ENV :Unit installation |  | 10d | 2014-01-22 | 2014-02-02 | HCEWAFZ5050 | 13d | 0d |  |  | ALU | C | FI |
| HCEWAFZ5070 |  | ENV :Cleaning |  | 14d | 2014-02-03 | 2014-02-18 | HCEWAFZ5060 | 89d |  |  |  | ALU | C | FI |

| ID | WBS | Activity | Duration | Start | Finish | Predecessors | Total float | Constraint |
| --- | --- | --- | --- | --- | --- | --- | --- | --- |
|  | 6 | **Handing Over** |  | 2014-06-07 | 2014-07-22 |  |  |  |
| HHAWAFAZ0010 |  | Snag and de-snag | 30d | 2014-06-07 | 2014-07-10 | HCFWB400001, HCFWB300011, HCFWB20001, HCFWB10001, HCFWGF0001, HCFWF10001, HCFWF20001, HCFWF30001, HCFWF40001, HCFWF50001, HCFWF60001, HCFWF70001, HCMEB40000, HCMEB30000, HCMEB20000, HCMEB10000, HCMEGF0000, HCMEF10000, HCMEF20000, HCMEF30000, HCMEF40000, HCMEF50000, HCMEF60000, HCMEF70000, HCMERF000000, HCEWAFZ5070, HCEWAFZ2060, HCEWAFZ4060, HMMOAZ050, HCEXWMFN030, HCEXWLDP030, HCEXWGRD030, HCFWRFAZ100, HCEXWSTN040, HCEXWWFP020, HCMERF00110, HCMERF00030, HCMERF00060, HCMERF00080, HCMERF00130, HCMEF7Z1795, HCMEPSAF030, HCFWF7AZ120 | 0d | as late as possible |
| HHAWAFAZ0020 |  | Test and commision for All systems | 30d | 2014-06-18 | 2014-07-22 | HHAWAFAZ0010 SS+10d, HHAWAFAZ0010 FF+10d, CIDEEL000, HCMEPSSE010, HCMEPSSWW010, HCMEPSSFA040, HCMEPSSCV040, HCMEPSSAC040, HCMEPSSAV060, HCMEPSSIT040, HCMEPSGN020, HCEXWMEP050, HCEXWMEP040, HCEXWMEP030, HCEXWMEP020, HCEXWMEP010, HCMEPSSER020, HCMEPSSCO040, HCMEPSSWW020, HCEXWGRD030, HCMEPSHV010, HCMEPSHV020, HCMEPSHV040, HCEXWMEP060, HCMEPSPL030, HCMEPSPL040, HCMEPSPL050, HCMEPSPL060, HCMEPSPL070, HCMEPSHV050, HCMEPSHV060, HCMEPSGR130, HCMEPSBW150, HCMEPSLS200, HCEXWWFP020, HCMERF00130, HCMERF00110, HCMERF00030, HCMERF00060, HCMERF00080, HCMEF7Z1795, HCMERF00030 FF, HCMERF00060 FF, HCMERF00080 FF, HCMEPSAF030, HCFWF7AZ120, HCEWAFZ1040, HCEWAFZ2040, HCEWAFZ3050, HCEWAFZ4050 | 0d | as late as possible |

## Activity codes

| Code | Value | Meaning |
| --- | --- | --- |
| Bill No. | B0 | Bill No. 0 |
| Bill No. | B1 | Bill No. 1 |
| Bill No. | B2 | Bill No. 2 |
| Bill No. | B3 | Bill No. 3 |
| Bill No. | B4 | Bill No. 4 |
| Bill No. | B5 | Bill No. 5 |
| Division No. | 03 | Division no. 03 |
| Division No. | 04 | Division no. 04 |
| Division No. | 05 | Division no. 05 |
| Division No. | 06 | Division no. 06 |
| Division No. | 07 | Division no. 07 |
| Division No. | 08 | Division no. 08 |
| Division No. | 09 | Division no. 09 |
| Division No. | 10 | Division no. 10 |
| Division No. | 14 | Division no. 14 |
| Division No. | 21 | Division no. 21 |
| Division No. | 22 | Division no. 22 |
| Division No. | 23 | Division no. 23 |
| Division No. | 26 | Division no. 26 |
| Division No. | 27 | Division no. 27 |
| Division No. | 28 | Division no. 28 |
| Division No. | 31 | Division no. 31 |
| Phase Code | C | Construction Phase |
| Phase Code | E | Engineering Phase |
| Phase Code | P | Procurement Phase |
| Responsibility | ALU | Aluminum specialized S/C |
| Responsibility | MC | Main Contractor |
| Responsibility | MEP | MEP specialized S/C |
| Responsibility | SS | Steel Strucure specialized S/C |
| Trade | FI | Finishing |
| Trade | MEP | MEP works |

# Construction Works

Schedule from Primavera P6, 2013-08-01 to 2013-08-01, data date 2013-01-22.
Must finish by 2015-01-31

## Calendars

- Standard 5 Day Workweek: Mon-Sun 07:00-12:00, 13:00-17:00.

## Schedule

| ID | WBS | Activity | Duration | Start | Finish |
| --- | --- | --- | --- | --- | --- |
|  | SW | **Structural Works** |  | 2013-08-01 | 2013-08-01 |
|  | SB | **Substructure** |  | 2013-08-01 | 2013-08-01 |
|  | FD | **Foundation** |  | 2013-08-01 | 2013-08-01 |
|  | EX | **Excavation** |  | 2013-08-01 | 2013-08-01 |
| CR.SW.SB.FD.EX.010 |  | Soil Test | 1d | 2013-08-01 | 2013-08-01 |
| CR.SW.SB.FD.EX.020 |  | Surveying Works | 1d | 2013-08-01 | 2013-08-01 |
| CR.SW.SB.FD.EX.030 |  | Bulk Excavation | 1d | 2013-08-01 | 2013-08-01 |
| CR.SW.SB.FD.EX.040 |  | Tench Exacavation | 1d | 2013-08-01 | 2013-08-01 |
|  | FD | **Foundation works** |  | 2013-08-01 | 2013-08-01 |
| CR.SW.SB.FD.FD.010 |  | Blinding | 1d | 2013-08-01 | 2013-08-01 |
| CR.SW.SB.FD.FD.020 |  | Steel Works | 1d | 2013-08-01 | 2013-08-01 |
| CR.SW.SB.FD.FD.030 |  | Concrete Works | 1d | 2013-08-01 | 2013-08-01 |
| CR.SW.SB.FD.FD.040 |  | Insulation | 1d | 2013-08-01 | 2013-08-01 |
|  | FL | **Filling** |  | 2013-08-01 | 2013-08-01 |
| CR.SW.SB.FD.FL.010 |  | Filling Between Foundations | 1d | 2013-08-01 | 2013-08-01 |
| CR.SW.SB.FD.FL.020 |  | Base Course | 1d | 2013-08-01 | 2013-08-01 |
|  | SOG | **Slab On Grade** |  | 2013-08-01 | 2013-08-01 |
| CR.SW.SB.FD.SOG.010 |  | Steel Works | 1d | 2013-08-01 | 2013-08-01 |
| CR.SW.SB.FD.SOG.020 |  | Concrete Works | 1d | 2013-08-01 | 2013-08-01 |
|  | K2 | **Kabu 2** |  | 2013-08-01 | 2013-08-01 |
|  | CL | **Columns** |  | 2013-08-01 | 2013-08-01 |
| CR.SW.SB.K2.CL.010 |  | Steel Works | 1d | 2013-08-01 | 2013-08-01 |
| CR.SW.SB.K2.CL.020 |  | Concrete Works | 1d | 2013-08-01 | 2013-08-01 |
|  | WL | **Walls** |  | 2013-08-01 | 2013-08-01 |
| CR.SW.SB.K2.WL.010 |  | Steel Works | 1d | 2013-08-01 | 2013-08-01 |
| CR.SW.SB.K2.WL.020 |  | Concrete Works | 1d | 2013-08-01 | 2013-08-01 |

| ID | WBS | Activity | Duration | Start | Finish |
| --- | --- | --- | --- | --- | --- |
|  | SL | **Slabs** |  | 2013-08-01 | 2013-08-01 |
| CR.SW.SB.K2.SL.010 |  | Steel Works | 1d | 2013-08-01 | 2013-08-01 |
| CR.SW.SB.K2.SL.020 |  | Concrete Works | 1d | 2013-08-01 | 2013-08-01 |
| CR.SW.SB.K2.SL.030 |  | Ribs Block | 1d | 2013-08-01 | 2013-08-01 |
|  | K1 | **Kabu 1** |  |  |  |
|  | CL | **Columns** |  |  |  |
|  | WL | **Walls** |  |  |  |
|  | SL | **Slabs** |  |  |  |
|  | SP | **Swimming Pool Structural Works** |  |  |  |
|  | BS | **Basement** |  |  |  |
|  | CL | **Columns** |  |  |  |
|  | WL | **Walls** |  |  |  |
|  | SL | **Slabs** |  |  |  |
|  | SP | **Swimming Pool Structural Works** |  |  |  |
|  | SP | **Superstructure** |  |  |  |
|  | GF | **Ground Floor** |  |  |  |
|  | CL | **Columns** |  |  |  |
|  | WL | **Walls** |  |  |  |
|  | SL | **Slabs** |  |  |  |
|  | F1 | **First Floor** |  |  |  |
|  | CL | **Columns** |  |  |  |
|  | WL | **Walls** |  |  |  |
|  | SL | **Slabs** |  |  |  |
|  | F2 | **Second Floor** |  |  |  |
|  | CL | **Columns** |  |  |  |
|  | WL | **Walls** |  |  |  |
|  | SL | **Slabs** |  |  |  |
|  | F3 | **Third Floor** |  |  |  |
|  | CL | **Columns** |  |  |  |
|  | WL | **Walls** |  |  |  |
|  | SL | **Slabs** |  |  |  |
|  | F4 | **Fourth Floor** |  |  |  |
|  | CL | **Columns** |  |  |  |
|  | WL | **Walls** |  |  |  |
|  | SL | **Slabs** |  |  |  |
|  | F5 | **Fifth Floor** |  |  |  |
|  | CL | **Columns** |  |  |  |
|  | WL | **Walls** |  |  |  |
|  | SL | **Slabs** |  |  |  |
|  | F6 | **Sixth Floor** |  |  |  |
|  | CL | **Columns** |  |  |  |
|  | WL | **Walls** |  |  |  |
|  | SL | **Slabs** |  |  |  |
|  | SFD | **Spicial Foundations for machines** |  |  |  |
|  | RF | **Roof Floor** |  |  |  |
|  | WL | **Walls** |  |  |  |
|  | SL | **Slabs** |  |  |  |
|  | FN | **Finishing Works** |  |  |  |
|  | EL | **Electrical Works** |  |  |  |
|  | MC | **Mechanical Works** |  |  |  |
|  | MS | **Mescellanous** |  |  |  |
